# QTS DC7 TFO - Helix Schedule Update U05 DD23OCT26

Schedule from Primavera P6, 2026-07-01 to 2027-10-27, data date 2026-10-23, A marks actual dates.

## Calendars

- QTS - 6 Day w/ Holidays: Mon-Fri 08:00-12:00, 13:00-17:00; Sat-Sun off. Exceptions (off unless hours are given): 2026-07-03, 2026-07-11 08:00-16:00, 2026-07-18 08:00-16:00, 2026-07-25 08:00-16:00, 2026-08-01 08:00-16:00, 2026-08-08 08:00-16:00, 2026-08-15 08:00-16:00, 2026-08-22 08:00-16:00, 2026-08-29 08:00-16:00, 2026-09-05 08:00-16:00, 2026-09-07, 2026-09-12 08:00-16:00, 2026-09-19 08:00-16:00, 2026-09-26 08:00-16:00, 2026-10-03 08:00-16:00, 2026-10-09 08:00-12:00, 13:00-17:00, 2026-10-10 08:00-16:00, 2026-10-17 08:00-16:00, 2026-10-24 08:00-16:00, 2026-10-31 08:00-16:00, 2026-11-03 08:00-16:00, 2026-11-07 08:00-16:00, 2026-11-13 08:00-12:00, 13:00-17:00, 2026-11-14 08:00-16:00, 2026-11-21 08:00-16:00, 2026-11-26 to 2026-11-27, 2026-12-05 08:00-16:00, 2026-12-12 08:00-16:00, 2026-12-19 08:00-16:00, 2026-12-24 08:00-12:00, 13:00-17:00, 2026-12-25, 2027-01-01, 2027-01-09 08:00-16:00, 2027-01-16 08:00-16:00, 2027-01-18 08:00-12:00, 13:00-17:00, 2027-01-23 08:00-16:00, 2027-01-30 08:00-16:00, 2027-02-06 08:00-16:00, 2027-02-13 08:00-16:00, 2027-02-15 08:00-12:00, 13:00-17:00, 2027-02-20 08:00-16:00, 2027-02-27 08:00-16:00, 2027-03-06 08:00-16:00, 2027-03-13 08:00-16:00, 2027-03-20 08:00-16:00, 2027-03-27 08:00-16:00, 2027-04-03 08:00-16:00, 2027-04-10 08:00-16:00, 2027-04-17 08:00-16:00, 2027-04-24 08:00-16:00, 2027-05-01 08:00-16:00, 2027-05-08 08:00-16:00, 2027-05-15 08:00-16:00, 2027-05-22 08:00-16:00, 2027-05-29 08:00-16:00, 2027-05-31, 2027-06-05 08:00-16:00, 2027-06-12 08:00-16:00, 2027-06-19 08:00-16:00, 2027-06-26 08:00-16:00, 2027-07-02, 2027-07-10 08:00-16:00, 2027-07-17 08:00-16:00, 2027-07-24 08:00-16:00, 2027-07-31 08:00-16:00, 2027-08-07 08:00-16:00, 2027-08-14 08:00-16:00, 2027-08-21 08:00-16:00, 2027-08-28 08:00-16:00, 2027-09-06.
- Calendar 01 - 5 Day w/holidays (No Pats Day): Mon-Fri 08:00-12:00, 13:00-17:00; Sat-Sun off. Exceptions (off unless hours are given): 2026-07-03, 2026-09-07, 2026-10-12, 2026-11-11, 2026-11-26, 2026-12-25, 2027-01-01, 2027-01-18, 2027-02-15, 2027-05-31, 2027-07-05, 2027-09-06, 2027-10-11.
- IAD192 - 6 Day w/Holidays: Mon-Fri 08:00-12:00, 13:00-17:00; Sat-Sun off. Exceptions (off unless hours are given): 2026-07-03, 2026-07-11 08:00-16:00, 2026-07-18 08:00-16:00, 2026-07-25 08:00-16:00, 2026-08-01 08:00-16:00, 2026-08-08 08:00-16:00, 2026-08-15 08:00-16:00, 2026-08-22 08:00-16:00, 2026-08-29 08:00-16:00, 2026-09-05 08:00-16:00, 2026-09-07, 2026-09-12 08:00-16:00, 2026-09-19 08:00-16:00, 2026-09-26 08:00-16:00, 2026-10-03 08:00-16:00, 2026-10-09 08:00-12:00, 13:00-17:00, 2026-10-10 08:00-16:00, 2026-10-17 08:00-16:00, 2026-10-24 08:00-16:00, 2026-10-31 08:00-16:00, 2026-11-03 08:00-16:00, 2026-11-07 08:00-16:00, 2026-11-13 08:00-12:00, 13:00-17:00, 2026-11-14 08:00-16:00, 2026-11-21 08:00-16:00, 2026-11-26 to 2026-11-27, 2026-12-05 08:00-16:00, 2026-12-12 08:00-16:00, 2026-12-19 08:00-16:00, 2026-12-24 08:00-12:00, 13:00-17:00, 2026-12-25, 2027-01-01, 2027-01-09 08:00-16:00, 2027-01-16 08:00-16:00, 2027-01-18 08:00-12:00, 13:00-17:00, 2027-01-23 08:00-16:00, 2027-01-30 08:00-16:00, 2027-02-06 08:00-16:00, 2027-02-13 08:00-16:00, 2027-02-15 08:00-12:00, 13:00-17:00, 2027-02-20 08:00-16:00, 2027-02-27 08:00-16:00, 2027-03-06 08:00-16:00, 2027-03-13 08:00-16:00, 2027-03-20 08:00-16:00, 2027-03-27 08:00-16:00, 2027-04-03 08:00-16:00, 2027-04-10 08:00-16:00, 2027-04-17 08:00-16:00, 2027-04-24 08:00-16:00, 2027-05-01 08:00-16:00, 2027-05-08 08:00-16:00, 2027-05-15 08:00-16:00, 2027-05-22 08:00-16:00, 2027-05-29 08:00-16:00, 2027-05-31, 2027-06-05 08:00-16:00, 2027-06-12 08:00-16:00, 2027-06-19 08:00-16:00, 2027-06-26 08:00-16:00, 2027-07-02, 2027-07-10 08:00-16:00, 2027-07-17 08:00-16:00, 2027-07-24 08:00-16:00, 2027-07-31 08:00-16:00, 2027-08-07 08:00-16:00, 2027-08-14 08:00-16:00, 2027-08-21 08:00-16:00, 2027-08-28 08:00-16:00, 2027-09-06.

## Schedule

| ID | WBS | Activity | Type | Duration | Start | Finish | Predecessors | Complete | Planned start | Planned finish | Total float | Free float | Constraint | QTS - Subcontractor | QTS - AREA |
| --- | --- | --- | --- | --- | --- | --- | --- | --- | --- | --- | --- | --- | --- | --- | --- |
|  | 1 | **EXECUTIVE SUMMARY** |  |  | 2026-08-31 | 2027-10-27 |  |  |  |  |  |  |  |  |  |
|  | 1 | **MILESTONES** |  |  | 2026-08-31 | 2027-10-27 |  |  |  |  |  |  |  |  |  |
|  | DC7.TFO-B-2-1.1.1.6 | **FOH** |  |  | 2026-10-23 | 2026-12-19 |  |  |  |  |  |  |  |  |  |
| DC7.FOH.MS.1030 |  | Start Work - FOH | milestone | 0d | 2026-10-23 | 2026-10-23 |  |  |  |  | 230d | 0d | start on or after 2026-08-26 | HELIX | FOH |
| DC7.FOH.MS.1040 |  | TFO - QC 2.2 Complete FOH | milestone | 0d | 2026-12-19 | 2026-12-19 | FOH-250 FF, FOH-280 FF |  |  |  | 230d | 251d | finish on or after 2026-11-18 | HELIX | FOH |
|  | 1 | **DH1100** |  |  | 2026-08-31 | 2027-04-21 |  |  |  |  |  |  |  |  |  |
| DC7.DH1100.MS.1000 |  | Start Work - DH1100 (Prop. 18 Aug 26) | milestone | 0d | 2026-08-31 A | 2026-08-31 A |  | 100% | 2026-08-28 | 2026-08-28 |  |  | start on or after 2026-08-28 |  | DH1100 |
| DC7.DH1100.MS.1020 |  | TFO - QC 2.2 Complete DH1100 | milestone | 0d | 2027-01-18 | 2027-01-18 | ER-K110-070, ER-J110-070, ER-H110-070, ER-G110-070, ER-F110-070, ER-E110-070, ER-D110-070, ER-C110-070, ER-B110-070, DH-R110-180, DH-R110-170, DH-R110-140, DH-K110-180, DH-K110-170, DH-K110-140, DH-J110-180, DH-J110-170, DH-J110-140, DH-H110-180, DH-H110-170, DH-H110-140, DH-G110-180, DH-G110-170, DH-G110-140, DH-F110-180, DH-F110-170, DH-F110-140, DH-E110-180, DH-E110-170, DH-E110-140, DH-D110-180, DH-D110-170, DH-D110-140, DH-C110-180, DH-C110-170, DH-C110-140, DH-B110-180, DH-B110-170, DH-B110-140, ER-A110-070, ER-R110-120, DH110-PDU-170, ER-R110-100, DH-A110-180, DH-A110-170, DH-A110-140, DH-A110-190 FF, DH-B110-200 FF, DH-C110-210 FF, DH-D110-220 FF, DH-E110-230 FF, DH-F110-240 FF, DH-G110-250 FF, DH-H110-260 FF, DH-J110-270 FF, DH-K110-280 FF, DH-R110-290 FF, DH110-ER-210 FF |  |  |  | -7d | 0d | finish on or before 2027-01-09 | HELIX | DH1100 |
| DC7.DH1100.MS.1030 |  | TFO - Substantial Completion DH1100 (Suffolk 18 Mar 27) | milestone | 0d | 2027-04-21 | 2027-04-21 | CX-DH110-30 |  |  |  | -7d | 150d | finish on or before 2027-04-13 |  | DH1100 |
|  | 2 | **DH1200** |  |  | 2026-09-21 | 2027-05-26 |  |  |  |  |  |  |  |  |  |
| DC7.DH1200.MS.1000 |  | Start Work - DH1200 (Prop 17 Sep 26) | milestone | 0d | 2026-09-21 A | 2026-09-21 A | DH-R110-020 | 100% | 2026-09-29 | 2026-09-29 |  |  | start on or after 2026-09-17 |  | DH1200 |
| DC7.DH1200.MS.1020 |  | TFO - QC 2.2 Complete DH1200 | milestone | 0d | 2027-02-22 | 2027-02-22 | DH-R120-360, DH-R120-300, DH-R120-280, DH-K120-360, DH-K120-300, DH-K120-280, DH-J120-360, DH-J120-300, DH-J120-280, DH-H120-360, DH-H120-300, DH-H120-280, DH-G120-360, DH-G120-300, DH-G120-280, DH-F120-360, DH-F120-300, DH-F120-280, DH-E120-360, DH-E120-300, DH-E120-280, DH-D120-360, DH-D120-300, DH-D120-280, DH-C120-360, DH-C120-300, DH-C120-280, DH-B120-360, DH-B120-300, DH-B120-280, DH-A120-360, DH-A120-300, DH-A120-280, DH120-PDU-320 FF, ER-E120-580 FF, ER-K120-630 FF, DH-R120-370 FF, DH-A120-380 FF, DH-B120-390 FF, DH-C120-400 FF, DH-D120-410 FF, DH-E120-420 FF, DH-F120-430 FF, DH-F120-440 FF, DH-H120-450 FF, DH-J120-460 FF, DH-K120-470 FF, ER-R120-880 FF, ER-A120-540 FF, ER-B120-550 FF, ER-C120-560 FF, ER-D120-570 FF, ER-F120-590 FF, ER-G120-600 FF, ER-H120-610 FF, ER-J120-620 FF, ER-R120-880, ER-A120-540, ER-B120-550, ER-C120-560, ER-D120-570, ER-F120-590, ER-G120-600, ER-H120-610, ER-J120-620, ER-R120-830 FF |  |  |  | -19d | 0d | finish on or before 2027-01-30 | HELIX | DH1200 |
| DC7.DH1200.MS.1030 |  | TFO - Substantial Completion DH1200 (Suffolk 19 Apr 27) | milestone | 0d | 2027-05-26 | 2027-05-26 | CX-DH120-60 |  |  |  | -19d | 120d | finish on or before 2027-05-04 |  | DH1200 |
|  | 3 | **DH1300** |  |  | 2026-09-28 | 2027-07-01 |  |  |  |  |  |  |  |  |  |
| DC7.DH1300.MS.1000 |  | Start Work - DH1300 (Prop 19 Oct 26) | milestone | 0d | 2026-09-28 A | 2026-09-28 A | DH-K120-200 | 100% | 2026-10-19 | 2026-10-19 |  |  | start on or after 2026-10-19 | HELIX | DH1300 |
| DC7.DH1300.MS.1020 |  | TFO - QC 2.2 Complete DH1300 | milestone | 0d | 2027-03-29 | 2027-03-29 | DH-R130-540, DH-R130-480, DH-R130-460, DH-K130-540, DH-K130-480, DH-K130-460, DH-J130-540, DH-J130-480, DH-J130-460, DH-H130-540, DH-H130-480, DH-H130-460, DH-G130-540, DH-G130-480, DH-G130-460, DH-F130-540, DH-F130-480, DH-F130-460, DH-E130-540, DH-E130-480, DH-E130-460, DH-D130-540, DH-D130-480, DH-D130-460, DH-C130-540, DH-C130-480, DH-C130-460, DH-B130-540, DH-B130-480, DH-B130-460, DH-A130-540, DH-A130-480, DH-A130-460, DH-A130-550 FF, DH-B130-560 FF, DH-C130-570 FF, DH-D130-580 FF, DH-E130-590 FF, DH-F130-600 FF, DH-G130-610 FF, DH-H130-620 FF, DH-J130-630 FF, DH-K130-640 FF, DH-R130-650 FF, DH130-PDU-490, ER-E130-580 FF, ER-A130-540 FF, ER-B130-550 FF, ER-C130-560 FF, ER-D130-570 FF, ER-E130-580, ER-F130-590 FF, ER-G130-600 FF, ER-H130-610 FF, ER-J130-620 FF, ER-K130-630 FF, ER-R130-880, DH130-ER-250 FF |  |  |  | -21d | 0d | finish on or before 2027-03-04 | HELIX | DH1300 |
| DC7.DH1300.MS.1030 |  | TFO - Substantial Completion DH1300 (Suffolk 17 May 27) | milestone | 0d | 2027-07-01 | 2027-07-01 | CX-DH130-90 |  |  |  | -21d | 90d | finish on or before 2027-06-07 |  | DH1300 |
|  | 4 | **DH1400** |  |  | 2026-10-01 | 2027-08-07 |  |  |  |  |  |  |  |  |  |
| DC7.DH1400.MS.1000 |  | Start Work - DH1400 (Prop 13 Nov 26) | milestone | 0d | 2026-10-01 A | 2026-10-01 A | DH-R130-380 | 100% | 2026-11-13 | 2026-11-13 |  |  | start on or after 2026-11-13 |  | DH1400 |
| DC7.DH1400.MS.1020 |  | TFO - QC 2.2 Complete DH1400 | milestone | 0d | 2027-05-03 | 2027-05-03 | DH-R140-720, DH-R140-660, DH-R140-640, DH-K140-720, DH-K140-660, DH-K140-640, DH-J140-720, DH-J140-660, DH-J140-640, DH-H140-720, DH-H140-660, DH-H140-640, DH-G140-720, DH-G140-660, DH-G140-640, DH-F140-720, DH-F140-660, DH-F140-640, DH-E140-720, DH-E140-660, DH-E140-640, DH-D140-720, DH-D140-660, DH-D140-640, DH-C140-720, DH-C140-660, DH-C140-640, DH-B140-720, DH-B140-660, DH-B140-640, DH-A140-720, DH-A140-660, DH-A140-640, DH-R140-730 FF, DH-A140-740 FF, DH-B140-750 FF, DH-C140-760 FF, DH-D140-770 FF, DH-E140-780 FF, DH-F140-790 FF, DH-G140-800 FF, DH-H140-810 FF, DH-J140-820 FF, DH-K140-830, DH140-PDU-490 FF, ER-E140-660 FF, ER-R140-1000 FF, ER-A140-620 FF, ER-B140-630 FF, ER-C140-640 FF, ER-D140-650 FF, ER-E140-660, ER-F140-670 FF, ER-G140-680 FF, ER-H140-690 FF, ER-J140-700 FF, ER-K140-710, ER-R140-950 FF, DH140-ER-270 FF |  |  |  | -21d | 0d | finish on or before 2027-04-08 | HELIX | DH1400 |
| DC7.DH1400.MS.1030 |  | TFO - Substantial Completion DH1400 (Suffolk 17 Jun 27) | milestone | 0d | 2027-08-07 | 2027-08-07 | CX-DH140-120 |  |  |  | -21d | 60d | finish on or before 2027-07-14 |  | DH1400 |
|  | 5 | **DH1500** |  |  | 2026-10-05 | 2027-09-15 |  |  |  |  |  |  |  |  |  |
| DC7.DH1500.MS.1000 |  | Start Work - DH1500 (Prop 17 Dec 26) | milestone | 0d | 2026-10-05 A | 2026-10-05 A | DH-K140-560 | 100% | 2026-12-17 | 2026-12-17 |  |  | start on or after 2026-12-17 |  | DH1500 |
| DC7.DH1500.MS.1020 |  | TFO - QC 2.2 Complete DH1500 | milestone | 0d | 2027-06-08 | 2027-06-08 | DH-R150-900, DH-R150-840, DH-R150-820, DH-K150-900, DH-K150-840, DH-K150-820, DH-J150-900, DH-J150-840, DH-J150-820, DH-H150-900, DH-H150-840, DH-H150-820, DH-G150-900, DH-G150-840, DH-G150-820, DH-F150-900, DH-F150-840, DH-F150-820, DH-E150-900, DH-E150-840, DH-E150-820, DH-D150-900, DH-D150-840, DH-D150-820, DH-C150-900, DH-C150-840, DH-C150-820, DH-B150-900, DH-B150-840, DH-B150-820, DH-A150-900, DH-A150-840, DH-A150-820, DH-A150-910 FF, DH-B150-920 FF, DH-C150-930 FF, DH-D150-940 FF, DH-E150-950 FF, DH-F150-960 FF, DH-H150-980 FF, DH-J150-990 FF, DH-K150-1000 FF, DH-R150-1010 FF, DH150-PDU-320 FF, ER-E150-660 FF, ER-R150-1000 FF, DH-F150-970 FF, ER-A150-620 FF, ER-B150-630 FF, ER-C150-640 FF, ER-D150-650 FF, ER-F150-670 FF, ER-G150-680 FF, ER-H150-690 FF, ER-J150-700 FF, ER-K150-710 FF, ER-R150-950 FF, DH150-ER-290 FF |  |  |  | -21d | 0d | finish on or before 2027-05-13 | HELIX | DH1500 |
| DC7.DH1500.MS.1030 |  | TFO - Substantial Completion DH1500 (Suffolk 19 Jul 27) | milestone | 0d | 2027-09-15 | 2027-09-15 | CX-DH150-150 |  |  |  | -21d | 30d | finish on or before 2027-08-18 |  | DH1500 |

| ID | WBS | Activity | Type | Duration | Start | Finish | Predecessors | Complete | Remaining | Planned start | Planned finish | Total float | Free float | Constraint | QTS - AREA | QTS - Subcontractor |
| --- | --- | --- | --- | --- | --- | --- | --- | --- | --- | --- | --- | --- | --- | --- | --- | --- |
|  | 6 | **DH1600** |  |  | 2027-01-15 | 2027-10-27 |  |  |  |  |  |  |  |  |  |  |
| DC7.DH1600.MS.1000 |  | Start Work - DH1600 (Prop 15 Jan 27) | milestone | 0d | 2027-01-15 | 2027-01-15 | DH-R150-740 |  |  |  |  | 51d | 0d | start on or after 2027-01-15 | DH1600 |  |
| DC7.DH1600.MS.1020 |  | TFO - QC 2.2 Complete DH1600 | milestone | 0d | 2027-07-15 | 2027-07-15 | DH-R160-1080, DH-R160-1020, DH-R160-1000, DH-K160-1080, DH-K160-1020, DH-K160-1000, DH-J160-1080, DH-J160-1020, DH-J160-1000, DH-H160-1080, DH-H160-1020, DH-H160-1000, DH-G160-1080, DH-G160-1020, DH-G160-1000, DH-F160-1080, DH-F160-1020, DH-F160-1000, DH-E160-1080, DH-E160-1020, DH-E160-1000, DH-D160-1080, DH-D160-1020, DH-D160-1000, DH-C160-1080, DH-C160-1020, DH-C160-1000, DH-B160-1080, DH-B160-1020, DH-B160-1000, DH-A160-1080, DH-A160-1020, DH-A160-1000, DH-A160-1110 FF, DH-R160-1100 FF, DH-B160-1090 FF, DH-C160-1100 FF, DH-D160-1110 FF, DH-E160-1120 FF, DH-F160-1130 FF, DH-G160-1140 FF, DH-H160-1000 FF, DH-H160-1150 FF, DH-J160-1160 FF, DH-K160-1170 FF, ER-E160-740 FF, ER-K160-790 FF, DH160-PDU-490 FF, ER-R160-1120 FF, ER-A160-700 FF, ER-B160-710 FF, ER-C160-720 FF, ER-D160-730 FF, ER-F160-750 FF, ER-G160-760 FF, ER-H160-770 FF, ER-J160-780 FF, ER-R160-1070 FF |  |  |  |  | -21d | 0d | finish on or before 2027-06-18 | DH1600 | HELIX |
| DC7.DH1600.MS.1030 |  | TFO - Substantial Completion DH1600 (Suffolk 18 Aug 27) | milestone | 0d | 2027-10-27 | 2027-10-27 | CX-DH160-180 FF, DC7.FOH.MS.1040 FF |  |  |  |  | -21d | 0d | finish on or before 2027-09-28 | DH1600 |  |
|  | DC7.TFO-B-2-1.1.1.8 | **BOH** |  |  | 2026-09-25 | 2026-11-09 |  |  |  |  |  |  |  |  |  |  |
| DC7.BOH.MS.1050 |  | Start Work - BOH | milestone | 0d | 2026-09-25 A | 2026-09-25 A | BOH-010 | 100% |  | 2026-10-07 | 2026-10-07 |  |  |  | BOH |  |
| DC7.BOH.MS.1060 |  | TFO - QC 2.2 Complete BOH | milestone | 0d | 2026-11-09 | 2026-11-09 | BOH-080 FF |  |  |  |  | -15d | 283d | finish on or before 2026-10-22 | BOH | HELIX |
|  | 2 | **PROCUREMENT** |  |  | 2026-07-01 | 2027-03-16 |  |  |  |  |  |  |  |  |  |  |
|  | 8 | **Panels** |  |  | 2026-07-01 | 2026-11-30 |  |  |  |  |  |  |  |  |  |  |
| PRC-PNL-70 |  | Panels - PO Execution |  | 11d | 2026-07-01 A | 2026-08-10 A |  | 100% |  | 2026-07-01 | 2026-07-15 |  |  | start on 2026-07-01 |  |  |
| PRC-PNL-80 |  | Panels- Submittals |  | 6d | 2026-07-01 A | 2026-07-16 A | PRC-PNL-70 | 100% |  | 2026-07-16 | 2026-07-22 |  |  |  |  |  |
| PRC-PNL-90 |  | Panels - Approval |  | 6d | 2026-07-23 A | 2026-09-10 A | PRC-PNL-80 | 100% |  | 2026-07-23 | 2026-07-29 |  |  |  |  |  |
| PRC-PNL-100 |  | Panels - Lead Time After Release |  | 75d | 2026-09-10 A | 2026-11-11 | PRC-PNL-90 | 77% | 17d | 2026-07-30 | 2026-10-26 | 12d | 0d |  |  |  |
| PRC-PNL-110 |  | Panels FOH Delivery (HSP-RP-1A, CAFE 1A, HSE-MP-2A&1A) | milestone | 0d | 2026-11-12 | 2026-11-12 | PRC-PNL-100 FS+1d |  |  |  |  | 12d | 0d |  |  |  |
| PRC-PNL-120 |  | UPS Panels Delivery DH1100 | milestone | 0d | 2026-11-12 | 2026-11-12 | PRC-PNL-100 FS+1d |  |  |  |  | 12d | 0d |  |  |  |
| PRC-PNL-130 |  | UPS Panels Delivery DH1200 | milestone | 0d | 2026-11-12 | 2026-11-12 | PRC-PNL-100 FS+1d |  |  |  |  | 40d | 3d |  |  |  |
| PRC-PNL-140 |  | UPS Panels Delivery DH1300 | milestone | 0d | 2026-11-30 | 2026-11-30 | PRC-PNL-100 FS+13d |  |  |  |  | 58d | 0d |  |  |  |
| PRC-PNL-150 |  | UPS Panels Delivery DH1400 | milestone | 0d | 2026-11-30 | 2026-11-30 | PRC-PNL-100 FS+13d |  |  |  |  | 84d | 3d |  |  |  |
| PRC-PNL-160 |  | UPS Panels Delivery DH1500 | milestone | 0d | 2026-11-30 | 2026-11-30 | PRC-PNL-100 FS+13d |  |  |  |  | 114d | 6d |  |  |  |
| PRC-PNL-170 |  | UPS Panels Delivery DH1600 | milestone | 0d | 2026-11-30 | 2026-11-30 | PRC-PNL-100 FS+13d |  |  |  |  | 146d | 9d |  |  |  |
|  | 1 | **Transformers** |  |  | 2026-07-01 | 2026-11-13 |  |  |  |  |  |  |  |  |  |  |
| PRC-PNL-010 |  | Transformers - PO Execution |  | 11d | 2026-07-01 A | 2026-07-29 A |  | 100% |  | 2026-07-01 | 2026-07-15 |  |  | start on 2026-07-01 |  |  |
| PRC-PNL-020 |  | Transformers - Submittals |  | 6d | 2026-07-01 A | 2026-07-22 A | PRC-PNL-010 | 100% |  | 2026-07-16 | 2026-07-22 |  |  |  |  |  |
| PRC-PNL-030 |  | Transformers - Approval |  | 6d | 2026-07-23 A | 2026-07-29 A | PRC-PNL-020 | 100% |  |  |  |  |  |  |  |  |
| PRC-PNL-040 |  | Transformers - Lead Time After Release |  | 63d | 2026-07-30 A | 2026-10-29 | PRC-PNL-030 | 90% | 6d | 2026-07-30 | 2026-10-12 | 24d | 0d |  |  |  |
| PRC-PNL-070 |  | UPS Transformers delivery DH1100 | milestone | 0d | 2026-10-29 | 2026-10-29 | PRC-PNL-040 |  |  |  |  | 24d | 12d |  |  |  |
| PRC-PNL-180 |  | UPS Transformers delivery DH1200 | milestone | 0d | 2026-10-30 | 2026-10-30 | PRC-PNL-040 FS+1d |  |  |  |  | 51d | 14d |  |  |  |
| PRC-PNL-190 |  | UPS Transformers delivery DH1300 | milestone | 0d | 2026-11-07 | 2026-11-07 | PRC-PNL-040 FS+8d |  |  |  |  | 74d | 16d |  |  |  |
| PRC-PNL-200 |  | UPS Transformers delivery DH1400 | milestone | 0d | 2026-11-10 | 2026-11-10 | PRC-PNL-040 FS+10d |  |  |  |  | 98d | 17d |  |  |  |
| PRC-PNL-210 |  | UPS Transformers delivery DH1500 | milestone | 0d | 2026-11-11 | 2026-11-11 | PRC-PNL-040 FS+11d |  |  |  |  | 127d | 19d |  |  |  |
| PRC-PNL-220 |  | UPS Transformers delivery DH1600 | milestone | 0d | 2026-11-13 | 2026-11-13 | PRC-PNL-040 FS+13d |  |  |  |  | 157d | 20d |  |  |  |

Notes:
- PRC-PNL-90: COMMENTS: Approved July 27
- PRC-PNL-070: COMMENTS: 10/21 - Completed, pending shipment - WILL SHIP ON 10/23 TRUCK
- PRC-PNL-180: COMMENTS: 9 NOV -10/21- SCHEDULED TO BE ON TIME PENDING MATS (SEE MATS TAB)
- PRC-PNL-190: COMMENTS: 12 NOV- 10/14 - Pending tube steel to complete build - nipples, panel wall, & gutters not yet scheduled (SEE MATS TAB)
- PRC-PNL-200: COMMENTS: 19 NOV - 10/14 - Pending tube steel to complete build - nipples, panel wall, & gutters not yet scheduled (SEE MATS TAB)
- PRC-PNL-210: COMMENTS: 8/31 - DETAIL SHEETS SENT OUT FOR APPROVAL
- PRC-PNL-220: COMMENTS: 8/31 - DETAIL SHEETS SENT OUT FOR APPROVAL

| ID | WBS | Activity | Type | Duration | Start | Finish | Predecessors | Complete | Remaining | Planned start | Planned finish | Total float | Free float | Constraint | Calendar | COMMENTS |
| --- | --- | --- | --- | --- | --- | --- | --- | --- | --- | --- | --- | --- | --- | --- | --- | --- |
|  | 2 | **PQMs** |  |  | 2026-08-03 | 2027-03-16 |  |  |  |  |  |  |  |  |  |  |
| PRC-PQM-010 |  | PQMs - PO Execution |  | 5d | 2026-08-03 A | 2026-08-20 A |  | 100% |  | 2026-08-03 | 2026-08-07 |  |  | start on or after 2026-08-03 |  |  |
| PRC-PQM-020 |  | PQMs - Submittals |  | 11d | 2026-08-20 A | 2026-08-27 A | PRC-PQM-010 | 100% |  | 2026-08-08 | 2026-08-20 |  |  |  |  |  |
| PRC-PQM-030 |  | PQMs - Approval |  | 6d | 2026-08-28 A | 2026-09-15 A | PRC-PQM-020 | 100% |  | 2026-10-20 | 2026-10-26 |  |  |  |  |  |
| PRC-PQM-040 |  | PQMs - Lead Time After Release |  | 48d | 2026-09-16 A | 2026-11-23 | PRC-PQM-030 | 44% | 27d | 2026-10-27 | 2026-12-24 | 25d | 0d |  |  |  |
| PRC-PQM-050 |  | PQMs -DH1100 Delivery | milestone | 0d | 2026-11-06 | 2026-11-06 | PRC-PQM-040 FS-15d |  |  |  |  | 25d | 7d |  |  | 05 NOV |
| PRC-PQM-060 |  | PQMs -DH1200 Delivery | milestone | 0d | 2026-11-06 | 2026-11-06 | PRC-PQM-040 FS-15d |  |  |  |  | 43d | 47d |  |  | 19 NOV |
| PRC-PQM-070 |  | PQMs -DH1300 Delivery | milestone | 0d | 2026-12-12 | 2026-12-12 | PRC-PQM-040 FS+14d |  |  |  |  | 42d | 48d |  |  | 10 DEC |
| PRC-PQM-080 |  | PQMs -DH1400 Delivery | milestone | 0d | 2027-01-11 | 2027-01-11 | PRC-PQM-040 FS+35d |  |  |  |  | 51d | 57d |  |  | 30 DEC |
| PRC-PQM-090 |  | PQMs -DH1500 Delivery | milestone | 0d | 2027-02-09 | 2027-02-09 | PRC-PQM-040 FS+60d |  |  |  |  | 56d | 62d |  |  |  |
| PRC-PQM-100 |  | PQMs -DH1600 Delivery | milestone | 0d | 2027-03-16 | 2027-03-16 | PRC-PQM-040 FS+90d |  |  |  |  | 56d | 62d |  |  |  |
|  | 7 | **ER-PQMs** |  |  | 2026-08-03 | 2026-10-21 |  |  |  |  |  |  |  |  |  |  |
| PRC-ERPQM-40 |  | ER-PQMs - PO Execution |  | 5d | 2026-08-03 A | 2026-08-20 A |  | 100% |  | 2026-08-03 | 2026-08-07 |  |  | start on or after 2026-08-03 |  |  |
| PRC-ERPQM-50 |  | ER-PQMs - Submittals |  | 11d | 2026-09-04 A | 2026-10-13 A | PRC-ERPQM-40 | 100% |  | 2026-08-08 | 2026-08-20 |  |  |  |  |  |
| PRC-ERPQM-60 |  | ER-PQMs - Approval |  | 6d | 2026-10-13 A | 2026-10-15 A | PRC-ERPQM-50 | 100% |  | 2026-10-26 | 2026-10-31 |  |  |  |  | Not pproved as of 8/7/26 |
| PRC-ERPQM-70 |  | ER-PQMs - Lead Time After Release |  | 37d | 2026-10-16 A | 2026-10-21 A | PRC-ERPQM-60 | 100% |  | 2026-11-02 | 2026-12-17 |  |  |  |  |  |
|  | 3 | **MC Cable** |  |  | 2026-07-01 | 2026-10-07 |  |  |  |  |  |  |  |  |  |  |
| PRC-MCC-010 |  | MC Cable - PO Execution |  | 11d | 2026-07-01 A | 2026-08-20 A |  | 100% |  | 2026-07-01 | 2026-07-15 |  |  | start on 2026-07-01 |  |  |
| PRC-MCC-020 |  | MC Cable - Submittals |  | 6d | 2026-07-21 A | 2026-07-27 A | PRC-MCC-010 | 100% |  | 2026-07-16 | 2026-07-22 |  |  |  |  |  |
| PRC-MCC-030 |  | MC Cable - Approval |  | 6d | 2026-07-23 A | 2026-07-27 A | PRC-MCC-020 | 100% |  | 2026-07-23 | 2026-07-29 |  |  |  |  |  |
| PRC-MCC-040 |  | MC Cable - Lead Time After Release |  | 37d | 2026-08-20 A | 2026-10-07 A | PRC-MCC-030 | 100% |  | 2026-07-30 | 2026-09-11 |  |  |  |  |  |
|  | 4 | **Lights** |  |  | 2026-07-01 | 2026-12-07 |  |  |  |  |  |  |  |  |  |  |
| PRC-LGT-010 |  | Lights - PO Execution |  | 25d | 2026-07-01 A | 2026-07-22 A |  | 100% |  | 2026-07-01 | 2026-07-31 |  |  | start on 2026-07-01 |  |  |
| PRC-LGT-020 |  | Lights - Submittals |  | 11d | 2026-08-18 A | 2026-08-30 A | PRC-LGT-010 | 100% |  | 2026-08-01 | 2026-08-13 |  |  |  |  |  |
| PRC-LGT-030 |  | Lights - Approval |  | 6d | 2026-08-31 A | 2026-09-01 A | PRC-LGT-020 | 100% |  | 2026-10-19 | 2026-10-24 |  |  |  |  |  |
| PRC-LGT-040 |  | Lights - Lead Time After Release |  | 0d | 2026-09-01 A | 2026-10-23 | PRC-LGT-030 |  | 0d | 2026-10-26 | 2026-10-26 | 19d | 0d |  |  |  |
| PRC-LGT-050 |  | DH1100 HAC Isle Modular Lighting | milestone | 0d | 2026-10-13 A | 2026-10-13 A | PRC-LGT-040 SS | 100% |  | 2026-10-26 | 2026-10-26 |  |  |  | IAD192 - 6 Day w/Holidays |  |
| PRC-LGT-60 |  | DH1200 HAC Isle Modular Lighting | milestone | 0d | 2026-10-13 A | 2026-10-13 A | PRC-LGT-040 SS | 100% |  |  |  |  |  |  | IAD192 - 6 Day w/Holidays |  |
| PRC-LGT-70 |  | DH1300 HAC Isle Modular Lighting | milestone | 0d | 2026-10-29 | 2026-10-29 | PRC-LGT-040 SS |  |  |  |  | 59d | 72d | finish on or after 2026-10-29 | IAD192 - 6 Day w/Holidays |  |
| PRC-LGT-80 |  | DH1400 HAC Isle Modular Lighting | milestone | 0d | 2026-11-12 | 2026-11-12 | PRC-LGT-040 SS |  |  |  |  | 77d | 90d | finish on or after 2026-11-12 | IAD192 - 6 Day w/Holidays |  |
| PRC-LGT-90 |  | DH1500 HAC Isle Modular Lighting | milestone | 0d | 2026-11-23 | 2026-11-23 | PRC-LGT-040 SS |  |  |  |  | 98d | 111d | finish on or after 2026-11-23 | IAD192 - 6 Day w/Holidays |  |
| PRC-LGT-100 |  | DH1600 HAC Isle Modular Lighting | milestone | 0d | 2026-12-07 | 2026-12-07 | PRC-LGT-040 SS |  |  |  |  | 119d | 132d | finish on or after 2026-12-07 | IAD192 - 6 Day w/Holidays |  |

| ID | WBS | Activity | Type | Duration | Start | Finish | Predecessors | Complete | Remaining | Planned start | Planned finish | Total float | Free float | Constraint | Calendar |
| --- | --- | --- | --- | --- | --- | --- | --- | --- | --- | --- | --- | --- | --- | --- | --- |
|  | 5 | **Inhibitor Panels** |  |  | 2026-07-01 | 2026-11-23 |  |  |  |  |  |  |  |  |  |
| PRC-INH-010 |  | Inhibitor Panels - PO Execution |  | 27d | 2026-07-01 A | 2026-08-03 A |  | 100% |  |  |  |  |  | start on 2026-07-01 |  |
| PRC-INH-020 |  | Inhibitor Panels - Submittals |  | 11d | 2026-08-11 A | 2026-08-27 A | PRC-INH-010 | 100% |  | 2026-08-04 | 2026-08-15 |  |  |  |  |
| PRC-INH-030 |  | Inhibitor Panels - Approval |  | 6d | 2026-08-27 A | 2026-08-27 A | PRC-INH-020 | 100% |  | 2026-08-17 | 2026-08-22 |  |  |  |  |
| PRC-INH-040 |  | Inhibitor Panels - Lead Time After Release |  | 72d | 2026-08-28 A | 2026-11-23 | PRC-INH-030 | 62% | 27d | 2026-08-24 | 2026-11-16 | 40d | 0d |  |  |
| PRC-INH-050 |  | R110 Inhibitor Panel Delivery | milestone | 0d | 2026-11-07 | 2026-11-07 | PRC-INH-040 FS-14d |  |  |  |  | 40d | 23d |  | IAD192 - 6 Day w/Holidays |
| PRC-INH-50 |  | R120 Inhibitor Panel Delivery | milestone | 0d | 2026-11-07 | 2026-11-07 | PRC-INH-040 FS-14d |  |  |  |  | 58d | 38d |  | IAD192 - 6 Day w/Holidays |
| PRC-INH-60 |  | R130 Inhibitor Panel Delivery | milestone | 0d | 2026-11-17 | 2026-11-17 | PRC-INH-040 FS-6d |  |  |  |  | 78d |  |  | IAD192 - 6 Day w/Holidays |
| PRC-INH-70 |  | R140 Inhibitor Panel Delivery | milestone | 0d | 2026-11-17 | 2026-11-17 | PRC-INH-040 FS-6d |  |  |  |  | 108d | 85d |  | IAD192 - 6 Day w/Holidays |
| PRC-INH-80 |  | R150 Inhibitor Panel Delivery | milestone | 0d | 2026-11-23 | 2026-11-23 | PRC-INH-040 FF |  |  |  |  | 132d | 85d |  | IAD192 - 6 Day w/Holidays |
| PRC-INH-90 |  | R160 Inhibitor Panel Delivery | milestone | 0d | 2026-11-23 | 2026-11-23 | PRC-INH-040 FF |  |  |  |  | 162d | 93d |  | IAD192 - 6 Day w/Holidays |
|  | 6 | **Other Long-Lead** |  |  | 2026-10-23 | 2026-11-13 |  |  |  |  |  |  |  |  |  |
| PR-1010 |  | Busway & Tap Cans - Submittal, Fabrication & Delivery |  | 1d | 2026-10-23 | 2026-10-23 |  |  |  |  |  | 9d | 0d | start on or after 2026-09-21 |  |
| PR-1020 |  | Switchboards / ER Skids - Submittal, Fab & Delivery |  | 1d | 2026-10-23 | 2026-10-23 |  |  |  |  |  | 34d | 0d |  |  |
| PR-1050 |  | UPS Skid - Ship Prefab Assembly to Site |  | 1d | 2026-10-23 | 2026-10-23 |  |  |  |  |  | 28d | 0d | start on or after 2026-10-05 |  |
| PR-1060 |  | HAC Aisle delivery |  | 1d | 2026-10-23 | 2026-10-23 |  |  |  |  |  | 18d | 14d | start on or after 2026-10-10 | IAD192 - 6 Day w/Holidays |
| PR-1030 |  | UPS Transformers & Panels - Submittal, Fab & Delivery |  | 1d | 2026-11-12 | 2026-11-12 | PRC-PNL-100 |  |  |  |  | 279d | 0d |  |  |
| PR-1040 |  | UPS XFMR/Panel - Ship to Prefab Facility |  | 1d | 2026-11-13 | 2026-11-13 | PR-1030 |  |  |  |  | 279d |  | start on or after 2026-10-05 |  |
|  | DC7.TFO-B.2.7 | **MTS** |  |  | 2026-10-15 | 2026-12-31 |  |  |  |  |  |  |  |  |  |
| PR-1000 |  | MTS - Submittal, Fabrication & Delivery DH1100 (30SEP26) | milestone | 0d | 2026-10-15 A | 2026-10-15 A |  | 100% |  | 2026-10-13 | 2026-10-13 |  |  | finish on 2026-09-30 |  |
| PR-1070 |  | MTS - Submittal, Fabrication & Delivery DH1200 (31OCT26) | milestone | 0d | 2026-10-31 | 2026-10-31 |  |  |  |  |  | 0d | 48d | finish on 2026-10-31 |  |
| PR-1080 |  | MTS - Submittal, Fabrication & Delivery DH1300 (31OCT26) | milestone | 0d | 2026-10-31 | 2026-10-31 |  |  |  |  |  | 0d | 78d | finish on 2026-10-31 |  |
| PR-1090 |  | MTS - Submittal, Fabrication & Delivery DH1400 (30NOV26) | milestone | 0d | 2026-11-30 | 2026-11-30 |  |  |  |  |  | 0d | 85d | finish on 2026-11-30 |  |
| PR-1100 |  | MTS - Submittal, Fabrication & Delivery DH1500 (31DEC26) | milestone | 0d | 2026-12-31 | 2026-12-31 |  |  |  |  |  | 0d | 90d | finish on 2026-12-31 |  |
| PR-1110 |  | MTS - Submittal, Fabrication & Delivery DH1600 (31DEC26) | milestone | 0d | 2026-12-31 | 2026-12-31 |  |  |  |  |  | 0d | 120d | finish on 2026-12-31 |  |

| ID | WBS | Activity | Duration | Start | Finish | Predecessors | Complete | Planned start | Planned finish | Total float | Free float | Calendar | COMMENTS | QTS - Subcontractor | QTS - AREA | QTS - DC7 |
| --- | --- | --- | --- | --- | --- | --- | --- | --- | --- | --- | --- | --- | --- | --- | --- | --- |
|  | 3 | **CONSTRUCTION** |  | 2026-07-10 | 2027-10-27 |  |  |  |  |  |  |  |  |  |  |  |
|  | 1 | **FOH** |  | 2026-07-10 | 2026-12-19 |  |  |  |  |  |  |  |  |  |  |  |
| FOH-030 |  | FOH - Wall framing (third party activity) | 1d | 2026-07-10 A | 2026-07-10 A | ADMIN.5305 (other project) | 100% | 2026-10-07 | 2026-10-07 |  |  |  | Waiting for framing crew to start | HELIX | FOH | BB |
| FOH-020 |  | FOH - Overhead conduit install | 1d | 2026-09-29 A | 2026-09-29 A | ADMIN.5309 (other project), DC7.FOH.MS.1030 SS | 100% | 2026-10-07 | 2026-10-07 |  |  |  |  | HELIX | FOH | BB |
| FOH-040 |  | FOH - Layout and boxing | 5d | 2026-11-04 | 2026-11-09 | FOH-030, FOH-020 FS+30d |  |  |  | 230d | 0d |  |  | HELIX | FOH |  |
| FOH-050 |  | FOH - In wall rough in | 5d | 2026-11-10 | 2026-11-14 | FOH-040, DC7.FOH.MS.1030 SS |  |  |  | 230d | 0d |  |  | HELIX | FOH |  |
| FOH-070 |  | FOH - Install Panel PNL-CAFE-1A | 1d | 2026-11-13 | 2026-11-13 | PRC-PNL-110 |  |  |  | 240d | 0d |  |  | HELIX | FOH |  |
| FOH-080 |  | FOH -Install Panel PNL-HSE-MP-2A | 1d | 2026-11-14 | 2026-11-14 | FOH-070, PRC-PNL-110 |  |  |  | 240d | 0d |  |  | HELIX | FOH |  |
| FOH-060 |  | FOH - In wall finishes (tape mud, paint) third party activity | 1d | 2026-11-16 | 2026-11-16 | FOH-050, FOH-030 |  |  |  | 231d | 0d |  |  | HELIX | FOH |  |
| FOH-090 |  | FOH - Install Panel PNL-HSE-RP-1A | 1d | 2026-11-16 | 2026-11-16 | FOH-080, PRC-PNL-110 |  |  |  | 240d | 0d |  |  | HELIX | FOH |  |
| FOH-210 |  | FOH -Pipe Branch Circuits CAFE-1A (Kitchen, Office, Split System, TUG) | 6d | 2026-11-16 | 2026-11-21 | FOH-040, FOH-050 |  |  |  | 230d | 0d |  |  | HELIX | FOH |  |
| FOH-100 |  | FOH -Install Panel PNL-HSE-MP-1A | 1d | 2026-11-17 | 2026-11-17 | FOH-090, PRC-PNL-110 |  |  |  | 243d | 2d |  |  | HELIX | FOH |  |
| FOH-110 |  | FOH -Pipe MP-1A to MP-2A | 2d | 2026-11-17 | 2026-11-18 | FOH-060 |  |  |  | 231d | 0d |  |  | HELIX | FOH |  |
| FOH-120 |  | FOH -Pipe Circuit to ERAD Shredder (at the same time as pnl HSERP1A | 5d | 2026-11-17 | 2026-11-21 | FOH-060 |  |  |  | 247d | 0d |  |  | HELIX | FOH |  |
| FOH-130 |  | FOH -Pipe RP-1A to CAFE-1A | 6d | 2026-11-19 | 2026-11-25 | FOH-110, FOH-060 |  |  |  | 231d | 0d |  |  | HELIX | FOH |  |
| FOH-140 |  | FOH -Pull feeder from MP1-A to MP-2A | 1d | 2026-11-19 | 2026-11-19 | FOH-110 |  |  |  | 241d | 0d |  |  | HELIX | FOH |  |
| FOH-150 |  | FOH -Terminate Feeder MP1-A to MP-2A | 1d | 2026-11-20 | 2026-11-20 | FOH-140, FOH-080, FOH-100 |  |  |  | 241d | 11d |  |  | HELIX | FOH |  |
| FOH-160 |  | FOH -Pipe MP-2A Branch Circuits (FPT, VAV, Forklift Charger) | 6d | 2026-11-23 | 2026-12-02 | FOH-040, FOH-210 |  |  |  | 230d | 0d |  |  | HELIX | FOH |  |
| FOH-170 |  | FOH -Pull Circuit to ERAD Shredder | 2d | 2026-11-23 | 2026-11-24 | FOH-120 |  |  |  | 247d | 0d |  |  | HELIX | FOH |  |
| FOH-220 |  | FOH -Pull CAFE-1A Branch Circuits | 4d | 2026-11-23 | 2026-11-30 | FOH-050, FOH-210 |  |  |  | 232d | 1d |  |  | HELIX | FOH |  |
| FOH-180 |  | FOH -Terminate Circuit / Install Devices - ERAD | 1d | 2026-11-25 | 2026-11-25 | FOH-170 |  |  |  | 247d | 17d |  |  | HELIX | FOH |  |
| FOH-190 |  | FOH -Pull feeder from RP1-A to CAFE 1A | 1d | 2026-11-30 | 2026-11-30 | FOH-130 |  |  |  | 231d | 0d |  |  | HELIX | FOH |  |
| FOH-200 |  | FOH -Terminate Feeder RP1-A to CAFE 1A | 1d | 2026-12-01 | 2026-12-01 | FOH-190, FOH-070, FOH-090 |  |  |  | 231d | 0d |  |  | HELIX | FOH |  |
| FOH-240 |  | FOH -Terminate Circuits / Install Devices CAFE 1A | 4d | 2026-12-02 | 2026-12-05 | FOH-060, FOH-220, FOH-200 |  |  |  | 231d | 1d |  |  | HELIX | FOH |  |
| FOH-230 |  | FOH -Pull MP-2A Branch Circuits | 4d | 2026-12-03 | 2026-12-07 | FOH-160 |  |  |  | 230d | 0d |  |  | HELIX | FOH |  |
| FOH-250 |  | FOH -Terminate Circuits / Install Devices MP2A | 4d | 2026-12-08 | 2026-12-11 | FOH-060, FOH-240, FOH-230, FOH-150 |  |  |  | 230d | 0d |  |  | HELIX | FOH |  |
| FOH-260 |  | FOH - Install Firestopping | 4d | 2026-12-12 | 2026-12-16 | FOH-250 |  |  |  | 230d | 0d | IAD192 - 6 Day w/Holidays |  | HELIX | FOH |  |
| FOH-270 |  | FOH - Firestopping inspection | 2d | 2026-12-17 | 2026-12-18 | FOH-260 |  |  |  | 230d | 0d | IAD192 - 6 Day w/Holidays |  | HELIX | FOH |  |
| FOH-280 |  | FOH - QC 2.2 Checklist | 1d | 2026-12-19 | 2026-12-19 | FOH-270, FOH-180 |  |  |  | 230d | 0d | IAD192 - 6 Day w/Holidays |  | HELIX | FOH |  |

| ID | WBS | Activity | Type | Duration | Start | Finish | Predecessors | Complete | Remaining | Planned start | Planned finish | Total float | Free float | Constraint | Calendar | MSP Activity ID | QTS - Subcontractor | QTS - AREA | QTS - Resp | QTS - DC7 | QTS - DASH | COMMENTS |
| --- | --- | --- | --- | --- | --- | --- | --- | --- | --- | --- | --- | --- | --- | --- | --- | --- | --- | --- | --- | --- | --- | --- |
|  | 3 | **DH 1100** |  |  | 2026-08-31 | 2027-04-21 |  |  |  |  |  |  |  |  |  |  |  |  |  |  |  |  |
|  | 1 | **SKID INSTALATION DH1100 FROM TFO SCHEDULE** |  |  | 2026-09-30 | 2026-10-28 |  |  |  |  |  |  |  |  |  |  |  |  |  |  |  |  |
| ER.5101.1190 |  | DH100/Electrical Room #5101 // Set Skid - SKID-A110 |  | 1d | 2026-09-30 A | 2026-09-30 A | ER.5101.3109, ER.5101.1190 (other project) | 100% |  | 2026-09-25 | 2026-09-25 |  |  |  | Calendar 01 - 5 Day w/holidays (No Pats Day) | 1107 | HELIX | DH1100 | TBD | BB | ER |  |
| ER.5101.3036 |  | DH100/Electrical Room #5101 // Set Skid - SKID-B110 |  | 1d | 2026-09-30 A | 2026-09-30 A | ER.5101.1190 SS, ER.5101.3036 (other project) | 100% |  | 2026-09-25 | 2026-09-25 |  |  |  | Calendar 01 - 5 Day w/holidays (No Pats Day) | 1107 | HELIX | DH1100 | TBD | BB | ER |  |
| ER.5101.3037 |  | DH100/Electrical Room #5101 // Set Skid - SKID-C110 |  | 1d | 2026-09-30 A | 2026-09-30 A | ER.5101.3036 SS, ER.5101.3037 (other project) | 100% |  | 2026-09-25 | 2026-09-25 |  |  |  | Calendar 01 - 5 Day w/holidays (No Pats Day) | 1107 | HELIX | DH1100 | TBD | BB | ER |  |
| ER.5101.3038 |  | DH100/Electrical Room #5101 // Set Skid - SKID-D110 |  | 1d | 2026-09-30 A | 2026-09-30 A | ER.5101.3037 SS, ER.5101.3038 (other project) | 100% |  | 2026-09-25 | 2026-09-25 |  |  |  | Calendar 01 - 5 Day w/holidays (No Pats Day) | 1107 | HELIX | DH1100 | TBD | BB | ER |  |
| ER.5101.3039 |  | DH100/Electrical Room #5101 // Set Skid - SKID-E110 |  | 1d | 2026-09-30 A | 2026-09-30 A | ER.5101.3038 SS, ER.5101.3039 (other project) | 100% |  | 2026-09-25 | 2026-09-25 |  |  |  | Calendar 01 - 5 Day w/holidays (No Pats Day) | 1107 | HELIX | DH1100 | TBD | BB | ER |  |
| ER.5101.3040 |  | DH100/Electrcal Room #5104 // Set Skid - SKID-F110 |  | 1d | 2026-09-30 A | 2026-09-30 A | ER.5101.3039, ER.5101.3111, ER.5101.3040 (other project) | 100% |  | 2026-09-28 | 2026-09-28 |  |  |  | Calendar 01 - 5 Day w/holidays (No Pats Day) | 1107 | HELIX | DH1100 | TBD | BB | ER |  |
| ER.5101.3041 |  | DH100/Electrcal Room #5104 // Set Skid - SKID-G110 |  | 1d | 2026-10-23 | 2026-10-23 | ER.5101.3040 SS, ER.5101.3041 (other project) |  |  |  |  | 30d | 0d |  | Calendar 01 - 5 Day w/holidays (No Pats Day) | 1107 | HELIX | DH1100 | TBD | BB | ER |  |
| ER.5101.3109 |  | DH100/Electrical Room #5101 // DH1100 - OFCI Skid Ship Date (08/31/26) First Shipment | milestone | 0d | 2026-10-23 | 2026-10-23 | ER.5101.3109 (other project) FF |  |  |  |  | 29d | 0d | finish on or after 2026-09-02 | Calendar 01 - 5 Day w/holidays (No Pats Day) | 1180 |  | DH1100 |  | BB | ER |  |
| ER.5101.3111 |  | DH100/Electrcal Room #5104 // DH1100 - OFCI Skid Ship Date (09/02/26) 2ND Shipment | milestone | 0d | 2026-10-23 | 2026-10-23 | ER.5101.3111 (other project) FF |  |  |  |  | 30d | 0d | finish on or after 2026-09-08 | Calendar 01 - 5 Day w/holidays (No Pats Day) | 1180 |  | DH1100 |  | BB | ER |  |
| ER.5101.3042 |  | DH100/Electrcal Room #5104 // Set Skid - SKID-H110 |  | 1d | 2026-10-26 | 2026-10-26 | ER.5101.3041, ER.5101.3042 (other project) |  |  |  |  | 30d | 0d |  | Calendar 01 - 5 Day w/holidays (No Pats Day) | 1107 | HELIX | DH1100 | TBD | BB | ER |  |
| ER.5101.3043 |  | DH100/Electrcal Room #5104 // Set Skid - SKID-J110 |  | 1d | 2026-10-27 | 2026-10-27 | ER.5101.3042, ER.5101.3043 (other project) |  |  |  |  | 30d | 0d |  | Calendar 01 - 5 Day w/holidays (No Pats Day) | 1107 | HELIX | DH1100 | TBD | BB | ER |  |
| ER.5101.3044 |  | DH100/Electrcal Room #5104 // Set Skid - SKID-K110 |  | 1d | 2026-10-28 | 2026-10-28 | ER.5101.3043, ER.5101.3044 (other project) |  |  |  |  | 30d | 0d |  | Calendar 01 - 5 Day w/holidays (No Pats Day) | 1107 | HELIX | DH1100 | TBD | BB | ER |  |
|  | 4 | **DATA HALL** |  |  | 2026-08-31 | 2027-01-18 |  |  |  |  |  |  |  |  |  |  |  |  |  |  |  |  |
|  | 1 | **LINE-UPS** |  |  | 2026-08-31 | 2027-01-18 |  |  |  |  |  |  |  |  |  |  |  |  |  |  |  |  |
|  | 1 | **A110** |  |  | 2026-08-31 | 2026-12-15 |  |  |  |  |  |  |  |  |  |  |  |  |  |  |  |  |
| DH-A110-010 |  | A110 - Install Supplemental Steel (overhead support for strut/trapeze) |  | 6d | 2026-08-31 A | 2026-09-21 A | DC7.DH1100.MS.1000 SS | 100% |  | 2026-08-28 | 2026-09-03 |  |  | start on or after 2026-08-28 |  |  | HELIX | DH1100 |  |  |  |  |
| DH-A110-020 |  | A110 - Hang Trapeze System / Strut Racking |  | 7d | 2026-09-10 A | 2026-09-25 A | DH-A110-010 | 100% |  | 2026-09-04 | 2026-09-12 |  |  |  |  |  | HELIX | DH1100 |  |  |  |  |
| DH-A110-060 |  | A110 - Hang Starline Bus |  | 10d | 2026-10-10 A | 2026-10-20 A | PR-1010, DH-A110-020 | 100% |  | 2026-10-14 | 2026-10-24 |  |  |  |  |  | HELIX | DH1100 |  |  |  | OFCI ITEM, Havent receive it by the owner |
| DH-A110-040 |  | A110 - HAC Aisle Structure Set by others |  | 3d | 2026-10-12 A | 2026-10-13 A | DH-A110-030, PR-1060 | 100% |  | 2026-10-30 | 2026-11-02 |  |  |  |  |  | HELIX | DH1100 |  |  |  |  |
| DH-A110-030 |  | A110 - Pull MC Cable from PDU to MTS |  | 15d | 2026-10-14 A | 2026-11-09 | PRC-MCC-040 FS-20d, DH-A110-020, DH-R110-020 |  | 15d | 2026-10-07 | 2026-10-23 | -21d | 0d |  |  |  | HELIX | DH1100 |  |  |  | Part of the material on site (30 spools) |
| DH-A110-050 |  | A110 - HAC Aisle Light install |  | 6d | 2026-10-16 A | 2026-10-21 A | DH-A110-040, PRC-LGT-050 | 100% |  | 2026-10-28 | 2026-11-03 |  |  |  |  |  | HELIX | DH1100 |  |  |  |  |
| DH-A110-070 |  | A110 - HAC Aisle Structure Raised by others |  | 1d | 2026-10-22 A | 2026-10-22 A | DH-A110-060, DH-A110-040, DH-A110-050 | 100% |  | 2026-11-03 | 2026-11-03 |  |  |  |  |  | HELIX | DH1100 |  |  |  |  |
| DH-A110-080 |  | A110 - Set MTS |  | 4d | 2026-11-10 | 2026-11-13 | PR-1000, DH-A110-070 |  |  |  |  | 18d | 0d |  |  |  | HELIX | DH1100 |  |  |  |  |
| DH-A110-090 |  | A110 - Set DH PQM |  | 4d | 2026-11-14 | 2026-11-18 | DH-A110-080, PRC-PQM-050 |  |  |  |  | 18d | 0d |  |  |  | HELIX | DH1100 |  |  |  |  |
| DH-A110-100 |  | A110 - Pipe Data Hall PQM |  | 6d | 2026-11-19 | 2026-11-25 | DH-A110-090 |  |  |  |  | 18d | 0d |  |  |  | HELIX | DH1100 |  |  |  |  |
| DH-A110-110 |  | A110 - Connect MC Cables to MTS |  | 6d | 2026-11-30 | 2026-12-05 | DH-A110-100, DH-A110-090, DH-A110-080 |  |  |  |  | 18d | 0d |  |  |  | HELIX | DH1100 |  |  |  |  |
| DH-A110-120 |  | A110 - Pull Wire for DH PQM |  | 3d | 2026-11-30 | 2026-12-02 | DH-A110-100 |  |  |  |  | 18d | 0d |  |  |  | HELIX | DH1100 |  |  |  |  |
| DH-A110-130 |  | A110 - Terminate DH PQM |  | 4d | 2026-12-03 | 2026-12-07 | DH-A110-120 |  |  |  |  | 18d | 0d |  |  |  | HELIX | DH1100 |  |  |  |  |
| DH-A110-140 |  | A110 - Terminate MC Cables at MTS |  | 7d | 2026-12-07 | 2026-12-14 | DH-A110-110 |  |  |  |  | 18d | 0d |  |  |  | HELIX | DH1100 |  |  |  |  |
| DH-A110-150 |  | A110 - Pull MC Cable from MTS to Starline |  | 3d | 2026-12-07 | 2026-12-09 | DH-A110-110 |  |  |  |  | 19d | 0d |  |  |  | HELIX | DH1100 |  |  |  |  |
| DH-A110-160 |  | A110 - HAC Lighting Switches / Emergency Relay at the same time when set MTS and PQM |  | 3d | 2026-12-08 | 2026-12-10 | DH-A110-130 |  |  |  |  | 18d | 0d |  |  |  | HELIX | DH1100 |  |  |  |  |
| DH-A110-170 |  | A110 - Terminate MC Cables at Starline |  | 3d | 2026-12-10 | 2026-12-12 | DH-A110-150, DH-A110-110 |  |  |  |  | 19d | 1d |  |  |  | HELIX | DH1100 |  |  |  |  |
| DH-A110-180 |  | A110 - Terminate Lighting Wiring |  | 3d | 2026-12-11 | 2026-12-14 | DH-A110-160 |  |  |  |  | 18d | 0d |  |  |  | HELIX | DH1100 |  |  |  |  |
| DH-A110-190 |  | A110 - QC 2.2 Checklist |  | 1d | 2026-12-15 | 2026-12-15 | DH-A110-180, DH-A110-170, DH-A110-140 |  |  |  |  | 18d | 25d |  |  |  | HELIX | DH1100 |  |  |  |  |

| ID | WBS | Activity | Duration | Start | Finish | Predecessors | Complete | Remaining | Planned start | Planned finish | Total float | Free float | QTS - Subcontractor | QTS - AREA | QTS - DC7 |
| --- | --- | --- | --- | --- | --- | --- | --- | --- | --- | --- | --- | --- | --- | --- | --- |
|  | 2 | **B110** |  | 2026-08-31 | 2026-12-16 |  |  |  |  |  |  |  |  |  |  |
| DH-B110-010 |  | B110 - Install Supplemental Steel (overhead support for strut/trapeze) | 6d | 2026-08-31 A | 2026-09-21 A | DC7.DH1100.MS.1000 | 100% |  | 2026-08-28 | 2026-09-03 |  |  | HELIX | DH1100 |  |
| DH-B110-020 |  | B110 - Hang Trapeze System / Strut Racking | 7d | 2026-09-10 A | 2026-09-25 A | DH-B110-010 | 100% |  | 2026-09-04 | 2026-09-12 |  |  | HELIX | DH1100 |  |
| DH-B110-050 |  | B110 - HAC Aisle Light install | 6d | 2026-10-12 A | 2026-10-22 A | DH-B110-040, PRC-LGT-050 | 100% |  | 2026-10-28 | 2026-11-03 |  |  | HELIX | DH1100 |  |
| DH-B110-040 |  | B110 - HAC Aisle Structure Set by others | 3d | 2026-10-14 A | 2026-10-15 A | DH-B110-030, PR-1060 | 100% |  | 2026-10-30 | 2026-11-02 |  |  | HELIX | DH1100 |  |
| DH-B110-060 |  | B110 - Hang Starline Bus | 10d | 2026-10-20 A | 2026-10-22 A | PR-1010, DH-B110-020 | 100% |  | 2026-10-14 | 2026-10-24 |  |  | HELIX | DH1100 |  |
| DH-B110-030 |  | B110 - Pull MC Cable from PDU to MTS | 15d | 2026-10-22 A | 2026-11-09 | DH-A110-030 SS, PRC-MCC-040 FS-20d, DH-B110-020 |  | 15d | 2026-10-13 | 2026-10-29 | -21d | 0d | HELIX | DH1100 | BB |
| DH-B110-070 |  | B110 - HAC Aisle Structure Raised by others | 1d | 2026-11-10 | 2026-11-10 | DH-B110-060, DH-B110-040, DH-B110-050 |  |  |  |  | 17d | 0d | HELIX | DH1100 |  |
| DH-B110-080 |  | B110 - Set MTS | 4d | 2026-11-11 | 2026-11-14 | PR-1000, DH-B110-070 |  |  |  |  | 17d | 0d | HELIX | DH1100 |  |
| DH-B110-090 |  | B110 - Set DH PQM | 4d | 2026-11-16 | 2026-11-19 | DH-B110-080 |  |  |  |  | 17d | 0d | HELIX | DH1100 |  |
| DH-B110-100 |  | B110 - Pipe Data Hall PQM | 6d | 2026-11-20 | 2026-11-30 | DH-B110-090 |  |  |  |  | 17d | 0d | HELIX | DH1100 |  |
| DH-B110-110 |  | B110 - Connect MC Cables to MTS | 6d | 2026-12-01 | 2026-12-07 | DH-B110-100, DH-B110-090, DH-B110-080 |  |  |  |  | 17d | 0d | HELIX | DH1100 |  |
| DH-B110-120 |  | B110 - Pull Wire for DH PQM | 3d | 2026-12-01 | 2026-12-03 | DH-B110-100 |  |  |  |  | 18d | 0d | HELIX | DH1100 |  |
| DH-B110-130 |  | B110 - Terminate DH PQM | 4d | 2026-12-04 | 2026-12-08 | DH-B110-120 |  |  |  |  | 18d | 0d | HELIX | DH1100 |  |
| DH-B110-140 |  | B110 - Terminate MC Cables at MTS | 7d | 2026-12-08 | 2026-12-15 | DH-B110-110 |  |  |  |  | 17d | 0d | HELIX | DH1100 |  |
| DH-B110-150 |  | B110 - Pull MC Cable from MTS to Starline | 3d | 2026-12-08 | 2026-12-10 | DH-B110-110 |  |  |  |  | 18d | 0d | HELIX | DH1100 |  |
| DH-B110-160 |  | B110 - HAC Lighting Switches / Emergency Relay at the same time when set MTS and PQM | 3d | 2026-12-09 | 2026-12-11 | DH-B110-130 |  |  |  |  | 18d | 0d | HELIX | DH1100 |  |
| DH-B110-170 |  | B110 - Terminate MC Cables at Starline | 3d | 2026-12-11 | 2026-12-14 | DH-B110-150, DH-B110-110 |  |  |  |  | 18d | 1d | HELIX | DH1100 |  |
| DH-B110-180 |  | B110 - Terminate Lighting Wiring | 3d | 2026-12-12 | 2026-12-15 | DH-B110-160 |  |  |  |  | 18d | 1d | HELIX | DH1100 |  |
| DH-B110-200 |  | B110 - QC 2.2 Checklist | 1d | 2026-12-16 | 2026-12-16 | DH-B110-140, DH-B110-170, DH-B110-180 FF |  |  |  |  | 17d | 24d | HELIX | DH1100 |  |
|  | 3 | **C110** |  | 2026-08-31 | 2026-12-16 |  |  |  |  |  |  |  |  |  |  |
| DH-C110-010 |  | C110 - Install Supplemental Steel (overhead support for strut/trapeze) | 6d | 2026-08-31 A | 2026-09-21 A | DH-B110-010 SS, DC7.DH1100.MS.1000 | 100% |  | 2026-08-28 | 2026-09-03 |  |  | HELIX | DH1100 |  |
| DH-C110-020 |  | C110 - Hang Trapeze System / Strut Racking | 7d | 2026-09-10 A | 2026-09-25 A | DH-C110-010 | 100% |  | 2026-09-04 | 2026-09-12 |  |  | HELIX | DH1100 |  |
| DH-C110-040 |  | C110 - HAC Aisle Structure Set by others | 3d | 2026-10-16 A | 2026-10-17 A | DH-C110-030, PR-1060 | 100% |  | 2026-10-30 | 2026-11-02 |  |  | HELIX | DH1100 |  |
| DH-C110-060 |  | C110 - Hang Starline Bus | 10d | 2026-10-20 A | 2026-10-22 A | PR-1010, DH-C110-020 | 100% |  | 2026-10-14 | 2026-10-24 |  |  | HELIX | DH1100 |  |
| DH-C110-050 |  | C110 - HAC Aisle Light install | 6d | 2026-10-22 A | 2026-10-22 A | DH-B110-050 SS, DH-C110-040, PRC-LGT-050 | 100% |  | 2026-11-03 | 2026-11-09 |  |  | HELIX | DH1100 |  |
| DH-C110-030 |  | C110 - Pull MC Cable from PDU to MTS | 15d | 2026-10-23 | 2026-11-09 | DH-B110-030 SS, PRC-MCC-040 FS-20d, DH-C110-020 |  |  |  |  | -21d | 0d | HELIX | DH1100 | BB |
| DH-C110-070 |  | C110 - HAC Aisle Structure Raised by others | 1d | 2026-11-10 | 2026-11-10 | DH-C110-060, DH-C110-040, DH-C110-050 |  |  |  |  | 17d | 0d | HELIX | DH1100 |  |
| DH-C110-080 |  | C110 - Set MTS | 4d | 2026-11-11 | 2026-11-14 | PR-1000, DH-C110-070 |  |  |  |  | 17d | 0d | HELIX | DH1100 |  |
| DH-C110-090 |  | C110 - Set DH PQM | 4d | 2026-11-16 | 2026-11-19 | DH-C110-080 |  |  |  |  | 17d | 0d | HELIX | DH1100 |  |
| DH-C110-100 |  | C110 - Pipe Data Hall PQM | 6d | 2026-11-20 | 2026-11-30 | DH-C110-090 |  |  |  |  | 17d | 0d | HELIX | DH1100 |  |
| DH-C110-110 |  | C110 - Connect MC Cables to MTS | 6d | 2026-12-01 | 2026-12-07 | DH-C110-100, DH-C110-090, DH-C110-080 |  |  |  |  | 17d | 0d | HELIX | DH1100 |  |
| DH-C110-120 |  | C110 - Pull Wire for DH PQM | 3d | 2026-12-01 | 2026-12-03 | DH-C110-100 |  |  |  |  | 17d | 0d | HELIX | DH1100 |  |
| DH-C110-130 |  | C110 - Terminate DH PQM | 4d | 2026-12-04 | 2026-12-08 | DH-C110-120 |  |  |  |  | 17d | 0d | HELIX | DH1100 |  |
| DH-C110-140 |  | C110 - Terminate MC Cables at MTS | 7d | 2026-12-08 | 2026-12-15 | DH-C110-110 |  |  |  |  | 17d | 0d | HELIX | DH1100 |  |
| DH-C110-150 |  | C110 - Pull MC Cable from MTS to Starline | 3d | 2026-12-08 | 2026-12-10 | DH-C110-110 |  |  |  |  | 18d | 0d | HELIX | DH1100 |  |
| DH-C110-160 |  | C110 - HAC Lighting Switches / Emergency Relay at the same time when set MTS and PQM | 3d | 2026-12-09 | 2026-12-11 | DH-C110-130 |  |  |  |  | 17d | 0d | HELIX | DH1100 |  |
| DH-C110-170 |  | C110 - Terminate MC Cables at Starline | 3d | 2026-12-11 | 2026-12-14 | DH-C110-150, DH-C110-110 |  |  |  |  | 18d | 1d | HELIX | DH1100 |  |
| DH-C110-180 |  | C110 - Terminate Lighting Wiring | 3d | 2026-12-12 | 2026-12-15 | DH-C110-160 |  |  |  |  | 17d | 0d | HELIX | DH1100 |  |
| DH-C110-210 |  | C110 - QC 2.2 Checklist | 1d | 2026-12-16 | 2026-12-16 | DH-C110-180, DH-C110-170, DH-C110-140 |  |  |  |  | 17d | 24d | HELIX | DH1100 |  |

| ID | WBS | Activity | Duration | Start | Finish | Predecessors | Complete | Remaining | Planned start | Planned finish | Total float | Free float | QTS - Subcontractor | QTS - AREA | QTS - DC7 |
| --- | --- | --- | --- | --- | --- | --- | --- | --- | --- | --- | --- | --- | --- | --- | --- |
|  | 4 | **D110** |  | 2026-08-31 | 2026-12-23 |  |  |  |  |  |  |  |  |  |  |
| DH-D110-010 |  | D110 - Install Supplemental Steel (overhead support for strut/trapeze) | 6d | 2026-08-31 A | 2026-09-04 A | DH-C110-010 SS, DC7.DH1100.MS.1000 | 100% |  | 2026-08-31 | 2026-09-05 |  |  | HELIX | DH1100 |  |
| DH-D110-020 |  | D110 - Hang Trapeze System / Strut Racking | 7d | 2026-09-08 A | 2026-09-25 A | DH-D110-010 | 100% |  | 2026-09-04 | 2026-09-12 |  |  | HELIX | DH1100 |  |
| DH-D110-040 |  | D110 - HAC Aisle Structure Set by others | 3d | 2026-10-21 A | 2026-10-22 A | DH-D110-030, PR-1060 | 100% |  | 2026-10-30 | 2026-11-02 |  |  | HELIX | DH1100 |  |
| DH-D110-030 |  | D110 - Pull MC Cable from PDU to MTS | 15d | 2026-10-23 | 2026-11-09 | DH-C110-030 SS, PRC-MCC-040 FS-20d, DH-D110-020 |  |  |  |  | -21d | 0d | HELIX | DH1100 | BB |
| DH-D110-050 |  | D110 - HAC Aisle Light install | 6d | 2026-10-23 A | 2026-11-16 | DH-C110-050 SS, DH-D110-040, PRC-LGT-050 |  | 6d | 2026-11-03 | 2026-11-09 | 4d | 0d | HELIX | DH1100 |  |
| DH-D110-060 |  | D110 - Hang Starline Bus | 10d | 2026-10-23 A | 2026-11-04 | PR-1010, DH-D110-020 |  | 10d | 2026-10-14 | 2026-10-24 | 21d | 10d | HELIX | DH1100 |  |
| DH-D110-070 |  | D110 - HAC Aisle Structure Raised by others | 1d | 2026-11-17 | 2026-11-17 | DH-D110-060, DH-D110-040, DH-D110-050 |  |  |  |  | 11d | 0d | HELIX | DH1100 |  |
| DH-D110-080 |  | D110 - Set MTS | 4d | 2026-11-18 | 2026-11-21 | PR-1000, DH-D110-070 |  |  |  |  | 11d | 0d | HELIX | DH1100 |  |
| DH-D110-090 |  | D110 - Set DH PQM | 4d | 2026-11-23 | 2026-11-30 | DH-D110-080 |  |  |  |  | 11d | 0d | HELIX | DH1100 |  |
| DH-D110-100 |  | D110 - Pipe Data Hall PQM | 6d | 2026-12-01 | 2026-12-07 | DH-D110-090 |  |  |  |  | 11d | 0d | HELIX | DH1100 |  |
| DH-D110-110 |  | D110 - Connect MC Cables to MTS | 6d | 2026-12-08 | 2026-12-14 | DH-D110-100, DH-D110-090, DH-D110-080 |  |  |  |  | 11d | 0d | HELIX | DH1100 |  |
| DH-D110-120 |  | D110 - Pull Wire for DH PQM | 3d | 2026-12-08 | 2026-12-10 | DH-D110-100 |  |  |  |  | 11d | 0d | HELIX | DH1100 |  |
| DH-D110-130 |  | D110 - Terminate DH PQM | 4d | 2026-12-11 | 2026-12-15 | DH-D110-120 |  |  |  |  | 11d | 0d | HELIX | DH1100 |  |
| DH-D110-140 |  | D110 - Terminate MC Cables at MTS | 7d | 2026-12-15 | 2026-12-22 | DH-D110-110 |  |  |  |  | 11d | 0d | HELIX | DH1100 |  |
| DH-D110-150 |  | D110 - Pull MC Cable from MTS to Starline | 3d | 2026-12-15 | 2026-12-17 | DH-D110-110 |  |  |  |  | 12d | 0d | HELIX | DH1100 |  |
| DH-D110-160 |  | D110 - HAC Lighting Switches / Emergency Relay at the same time when set MTS and PQM | 3d | 2026-12-16 | 2026-12-18 | DH-D110-130 |  |  |  |  | 11d | 0d | HELIX | DH1100 |  |
| DH-D110-170 |  | D110 - Terminate MC Cables at Starline | 3d | 2026-12-18 | 2026-12-21 | DH-D110-150, DH-D110-110 |  |  |  |  | 12d | 1d | HELIX | DH1100 |  |
| DH-D110-180 |  | D110 - Terminate Lighting Wiring | 3d | 2026-12-19 | 2026-12-22 | DH-D110-160 |  |  |  |  | 11d | 0d | HELIX | DH1100 |  |
| DH-D110-220 |  | D110 - QC 2.2 Checklist | 1d | 2026-12-23 | 2026-12-23 | DH-D110-180, DH-D110-140, DH-D110-170 |  |  |  |  | 11d | 18d | HELIX | DH1100 |  |
|  | 5 | **E110** |  | 2026-08-31 | 2026-12-23 |  |  |  |  |  |  |  |  |  |  |
| DH-E110-010 |  | E110 - Install Supplemental Steel (overhead support for strut/trapeze) | 6d | 2026-08-31 A | 2026-09-04 A | DH-D110-010 SS, DC7.DH1100.MS.1000 | 100% |  | 2026-08-28 | 2026-09-03 |  |  | HELIX | DH1100 |  |
| DH-E110-020 |  | E110 - Hang Trapeze System / Strut Racking | 7d | 2026-09-08 A | 2026-09-25 A | DH-E110-010 | 100% |  | 2026-09-04 | 2026-09-12 |  |  | HELIX | DH1100 |  |
| DH-E110-040 |  | E110 - HAC Aisle Structure Set by others | 3d | 2026-10-21 A | 2026-10-22 A | DH-E110-030, PR-1060 | 100% |  | 2026-10-30 | 2026-11-02 |  |  | HELIX | DH1100 |  |
| DH-E110-030 |  | E110 - Pull MC Cable from PDU to MTS | 15d | 2026-10-23 | 2026-11-09 | DH-D110-030 SS, PRC-MCC-040 FS-20d, DH-E110-020 |  |  |  |  | -21d | 0d | HELIX | DH1100 | BB |
| DH-E110-050 |  | E110 - HAC Aisle Light install | 6d | 2026-10-23 A | 2026-11-16 | DH-D110-050 SS, DH-E110-040, PRC-LGT-050 |  | 6d | 2026-10-23 | 2026-10-29 | 4d | 0d | HELIX | DH1100 |  |
| DH-E110-060 |  | E110 - Hang Starline Bus | 10d | 2026-10-23 A | 2026-11-04 | PR-1010, DH-E110-020 |  | 10d | 2026-10-14 | 2026-10-24 | 9d | 0d | HELIX | DH1100 |  |
| DH-E110-070 |  | E110 - HAC Aisle Structure Raised by others | 1d | 2026-11-17 | 2026-11-17 | DH-E110-060, DH-E110-040, DH-E110-050 |  |  |  |  | 4d | 0d | HELIX | DH1100 |  |
| DH-E110-080 |  | E110 - Set MTS | 4d | 2026-11-18 | 2026-11-21 | PR-1000, DH-E110-070 |  |  |  |  | 4d | 0d | HELIX | DH1100 |  |
| DH-E110-090 |  | E110 - Set DH PQM | 4d | 2026-11-23 | 2026-11-30 | DH-E110-080 |  |  |  |  | 4d | 0d | HELIX | DH1100 |  |
| DH-E110-100 |  | E110 - Pipe Data Hall PQM | 6d | 2026-12-01 | 2026-12-07 | DH-E110-090 |  |  |  |  | 4d | 0d | HELIX | DH1100 |  |
| DH-E110-110 |  | E110 - Connect MC Cables to MTS | 6d | 2026-12-08 | 2026-12-14 | DH-E110-100, DH-E110-090, DH-E110-080 |  |  |  |  | 4d | 0d | HELIX | DH1100 |  |
| DH-E110-120 |  | E110 - Pull Wire for DH PQM | 3d | 2026-12-08 | 2026-12-10 | DH-E110-100 |  |  |  |  | 11d | 0d | HELIX | DH1100 |  |
| DH-E110-130 |  | E110 - Terminate DH PQM | 4d | 2026-12-11 | 2026-12-15 | DH-E110-120 |  |  |  |  | 11d | 0d | HELIX | DH1100 |  |
| DH-E110-140 |  | E110 - Terminate MC Cables at MTS | 7d | 2026-12-15 | 2026-12-22 | DH-E110-110 |  |  |  |  | 11d | 0d | HELIX | DH1100 |  |
| DH-E110-150 |  | E110 - Pull MC Cable from MTS to Starline | 3d | 2026-12-15 | 2026-12-17 | DH-E110-110 |  |  |  |  | 12d | 0d | HELIX | DH1100 |  |
| DH-E110-160 |  | E110 - HAC Lighting Switches / Emergency Relay at the same time when set MTS and PQM | 3d | 2026-12-16 | 2026-12-18 | DH-E110-130 |  |  |  |  | 11d | 0d | HELIX | DH1100 |  |
| DH-E110-170 |  | E110 - Terminate MC Cables at Starline | 3d | 2026-12-18 | 2026-12-21 | DH-E110-150, DH-E110-110 |  |  |  |  | 12d | 1d | HELIX | DH1100 |  |
| DH-E110-180 |  | E110 - Terminate Lighting Wiring | 3d | 2026-12-19 | 2026-12-22 | DH-E110-160 |  |  |  |  | 11d | 0d | HELIX | DH1100 |  |
| DH-E110-230 |  | E110 - QC 2.2 Checklist | 1d | 2026-12-23 | 2026-12-23 | DH-E110-180, DH-E110-140, DH-E110-170 |  |  |  |  | 11d | 18d | HELIX | DH1100 |  |

| ID | WBS | Activity | Duration | Start | Finish | Predecessors | Complete | Remaining | Planned start | Planned finish | Total float | Free float | QTS - Subcontractor | QTS - AREA | QTS - DC7 |
| --- | --- | --- | --- | --- | --- | --- | --- | --- | --- | --- | --- | --- | --- | --- | --- |
|  | 6 | **F110** |  | 2026-09-05 | 2027-01-18 |  |  |  |  |  |  |  |  |  |  |
| DH-F110-010 |  | F110 - Install Supplemental Steel (overhead support for strut/trapeze) | 6d | 2026-09-05 A | 2026-09-21 A | DH-E110-010, DC7.DH1100.MS.1000, DH-E110-020 | 100% |  | 2026-09-14 | 2026-09-19 |  |  | HELIX | DH1100 |  |
| DH-F110-020 |  | F110 - Hang Trapeze System / Strut Racking | 7d | 2026-09-10 A | 2026-09-25 A | DH-F110-010 | 100% |  | 2026-09-21 | 2026-09-28 |  |  | HELIX | DH1100 |  |
| DH-F110-040 |  | F110 - HAC Aisle Structure Set by others | 3d | 2026-10-23 A | 2026-12-03 | DH-E110-040, DH-F110-030, PR-1060 |  | 3d | 2026-11-17 | 2026-11-19 | -8d | 0d | HELIX | DH1100 |  |
| DH-F110-060 |  | F110 - Hang Starline Bus | 10d | 2026-11-05 | 2026-11-16 | DH-E110-060, PR-1010, DH-F110-020 |  |  |  |  | 9d | 0d | HELIX | DH1100 |  |
| DH-F110-030 |  | F110 - Pull MC Cable from PDU to MTS | 15d | 2026-11-10 | 2026-11-30 | DH-E110-030, PRC-MCC-040, DH-F110-020 |  |  |  |  | -21d | 0d | HELIX | DH1100 | BB |
| DH-F110-050 |  | F110 - HAC Aisle Light install | 6d | 2026-12-04 | 2026-12-10 | DH-E110-050, DH-E110-050 SS, DH-F110-040, PRC-LGT-050 |  |  |  |  | -8d | 0d | HELIX | DH1100 |  |
| DH-F110-070 |  | F110 - HAC Aisle Structure Raised by others | 1d | 2026-12-11 | 2026-12-11 | DH-F110-060, DH-F110-040, DH-F110-050 |  |  |  |  | -7d | 0d | HELIX | DH1100 |  |
| DH-F110-080 |  | F110 - Set MTS | 4d | 2026-12-12 | 2026-12-16 | PR-1000, DH-F110-070 |  |  |  |  | -7d | 0d | HELIX | DH1100 |  |
| DH-F110-090 |  | F110 - Set DH PQM | 4d | 2026-12-17 | 2026-12-21 | DH-F110-080 |  |  |  |  | -7d | 0d | HELIX | DH1100 |  |
| DH-F110-100 |  | F110 - Pipe Data Hall PQM | 6d | 2026-12-22 | 2026-12-30 | DH-F110-090 |  |  |  |  | -7d | 0d | HELIX | DH1100 |  |
| DH-F110-110 |  | F110 - Connect MC Cables to MTS | 6d | 2026-12-31 | 2027-01-08 | DH-F110-100, DH-F110-090, DH-F110-080 |  |  |  |  | -7d | 0d | HELIX | DH1100 |  |
| DH-F110-120 |  | F110 - Pull Wire for DH PQM | 3d | 2026-12-31 | 2027-01-05 | DH-F110-100 |  |  |  |  | -7d | 0d | HELIX | DH1100 |  |
| DH-F110-130 |  | F110 - Terminate DH PQM | 4d | 2027-01-06 | 2027-01-09 | DH-F110-120 |  |  |  |  | -7d | 0d | HELIX | DH1100 |  |
| DH-F110-140 |  | F110 - Terminate MC Cables at MTS | 7d | 2027-01-09 | 2027-01-16 | DH-F110-110 |  |  |  |  | -7d | 0d | HELIX | DH1100 |  |
| DH-F110-150 |  | F110 - Pull MC Cable from MTS to Starline | 3d | 2027-01-09 | 2027-01-12 | DH-F110-110 |  |  |  |  | -6d | 0d | HELIX | DH1100 |  |
| DH-F110-160 |  | F110 - HAC Lighting Switches / Emergency Relay at the same time when set MTS and PQM | 3d | 2027-01-11 | 2027-01-13 | DH-F110-130 |  |  |  |  | -7d | 0d | HELIX | DH1100 |  |
| DH-F110-170 |  | F110 - Terminate MC Cables at Starline | 3d | 2027-01-13 | 2027-01-15 | DH-F110-150, DH-F110-110 |  |  |  |  | -6d | 1d | HELIX | DH1100 |  |
| DH-F110-180 |  | F110 - Terminate Lighting Wiring | 3d | 2027-01-14 | 2027-01-16 | DH-F110-160 |  |  |  |  | -7d | 0d | HELIX | DH1100 |  |
| DH-F110-240 |  | F110 - QC 2.2 Checklist | 1d | 2027-01-18 | 2027-01-18 | DH-F110-180, DH-F110-140, DH-F110-170 |  |  |  |  | -7d | 0d | HELIX | DH1100 |  |
|  | 7 | **G110** |  | 2026-09-05 | 2027-01-18 |  |  |  |  |  |  |  |  |  |  |
| DH-G110-010 |  | G110 - Install Supplemental Steel (overhead support for strut/trapeze) | 6d | 2026-09-05 A | 2026-09-21 A | DH-F110-010 SS, DC7.DH1100.MS.1000 | 100% |  | 2026-09-14 | 2026-09-19 |  |  | HELIX | DH1100 |  |
| DH-G110-020 |  | G110 - Hang Trapeze System / Strut Racking | 7d | 2026-09-10 A | 2026-09-25 A | DH-G110-010 | 100% |  | 2026-09-21 | 2026-09-28 |  |  | HELIX | DH1100 |  |
| DH-G110-060 |  | G110 - Hang Starline Bus | 10d | 2026-11-05 | 2026-11-16 | PR-1010, DH-F110-060 SS, DH-G110-020 |  |  |  |  | 9d | 0d | HELIX | DH1100 |  |
| DH-G110-030 |  | G110 - Pull MC Cable from PDU to MTS | 15d | 2026-11-10 | 2026-11-30 | DH-F110-030 SS, PRC-MCC-040, DH-G110-020 |  |  |  |  | -21d | 0d | HELIX | DH1100 | BB |
| DH-G110-040 |  | G110 - HAC Aisle Structure Set by others | 3d | 2026-12-01 | 2026-12-03 | DH-F110-040 SS, DH-G110-030, PR-1060 |  |  |  |  | -8d | 0d | HELIX | DH1100 |  |
| DH-G110-050 |  | G110 - HAC Aisle Light install | 6d | 2026-12-04 | 2026-12-10 | DH-F110-050 SS, DH-G110-040, PRC-LGT-050 |  |  |  |  | -8d | 0d | HELIX | DH1100 |  |
| DH-G110-070 |  | G110 - HAC Aisle Structure Raised by others | 1d | 2026-12-11 | 2026-12-11 | DH-F110-070 SS, DH-G110-060, DH-G110-040, DH-G110-050 |  |  |  |  | -7d | 0d | HELIX | DH1100 |  |
| DH-G110-080 |  | G110 - Set MTS | 4d | 2026-12-12 | 2026-12-16 | DH-F110-080 SS, PR-1000, DH-G110-070 |  |  |  |  | -7d | 0d | HELIX | DH1100 |  |
| DH-G110-090 |  | G110 - Set DH PQM | 4d | 2026-12-17 | 2026-12-21 | DH-F110-090 SS, DH-G110-080 |  |  |  |  | -7d | 0d | HELIX | DH1100 |  |
| DH-G110-100 |  | G110 - Pipe Data Hall PQM | 6d | 2026-12-22 | 2026-12-30 | DH-G110-090 |  |  |  |  | -7d | 0d | HELIX | DH1100 |  |
| DH-G110-110 |  | G110 - Connect MC Cables to MTS | 6d | 2026-12-31 | 2027-01-08 | DH-G110-100, DH-G110-090, DH-G110-080 |  |  |  |  | -7d | 0d | HELIX | DH1100 |  |
| DH-G110-120 |  | G110 - Pull Wire for DH PQM | 3d | 2026-12-31 | 2027-01-05 | DH-G110-100 |  |  |  |  | -7d | 0d | HELIX | DH1100 |  |
| DH-G110-130 |  | G110 - Terminate DH PQM | 4d | 2027-01-06 | 2027-01-09 | DH-G110-120 |  |  |  |  | -7d | 0d | HELIX | DH1100 |  |
| DH-G110-140 |  | G110 - Terminate MC Cables at MTS | 7d | 2027-01-09 | 2027-01-16 | DH-G110-110 |  |  |  |  | -7d | 0d | HELIX | DH1100 |  |
| DH-G110-150 |  | G110 - Pull MC Cable from MTS to Starline | 3d | 2027-01-09 | 2027-01-12 | DH-G110-110 |  |  |  |  | -6d | 0d | HELIX | DH1100 |  |
| DH-G110-160 |  | G110 - HAC Lighting Switches / Emergency Relay at the same time when set MTS and PQM | 3d | 2027-01-11 | 2027-01-13 | DH-G110-130 |  |  |  |  | -7d | 0d | HELIX | DH1100 |  |
| DH-G110-170 |  | G110 - Terminate MC Cables at Starline | 3d | 2027-01-13 | 2027-01-15 | DH-G110-150, DH-G110-110 |  |  |  |  | -6d | 1d | HELIX | DH1100 |  |
| DH-G110-180 |  | G110 - Terminate Lighting Wiring | 3d | 2027-01-14 | 2027-01-16 | DH-G110-160 |  |  |  |  | -7d | 0d | HELIX | DH1100 |  |
| DH-G110-250 |  | G110 - QC 2.2 Checklist | 1d | 2027-01-18 | 2027-01-18 | DH-G110-180, DH-G110-140, DH-G110-170 |  |  |  |  | -7d | 0d | HELIX | DH1100 |  |

| ID | WBS | Activity | Duration | Start | Finish | Predecessors | Complete | Planned start | Planned finish | Total float | Free float | QTS - Subcontractor | QTS - AREA | QTS - DC7 |
| --- | --- | --- | --- | --- | --- | --- | --- | --- | --- | --- | --- | --- | --- | --- |
|  | 8 | **H110** |  | 2026-09-05 | 2027-01-18 |  |  |  |  |  |  |  |  |  |
| DH-H110-010 |  | H110 - Install Supplemental Steel (overhead support for strut/trapeze) | 6d | 2026-09-05 A | 2026-09-21 A | DH-G110-010 SS, DC7.DH1100.MS.1000 | 100% | 2026-09-14 | 2026-09-19 |  |  | HELIX | DH1100 |  |
| DH-H110-020 |  | H110 - Hang Trapeze System / Strut Racking | 7d | 2026-09-10 A | 2026-09-25 A | DH-H110-010 | 100% | 2026-09-10 | 2026-09-17 |  |  | HELIX | DH1100 |  |
| DH-H110-060 |  | H110 - Hang Starline Bus | 10d | 2026-11-05 | 2026-11-16 | PR-1010, DH-G110-060 SS, DH-H110-020 |  |  |  | 9d | 0d | HELIX | DH1100 |  |
| DH-H110-030 |  | H110 - Pull MC Cable from PDU to MTS | 15d | 2026-11-10 | 2026-11-30 | DH-G110-030 SS, PRC-MCC-040, DH-H110-020 |  |  |  | -21d | 0d | HELIX | DH1100 | BB |
| DH-H110-040 |  | H110 - HAC Aisle Structure Set by others | 3d | 2026-12-01 | 2026-12-03 | DH-H110-030, PR-1060 |  |  |  | -8d | 0d | HELIX | DH1100 |  |
| DH-H110-050 |  | H110 - HAC Aisle Light install | 6d | 2026-12-04 | 2026-12-10 | DH-G110-050 SS, DH-H110-040, PRC-LGT-050 |  |  |  | -8d | 0d | HELIX | DH1100 |  |
| DH-H110-070 |  | H110 - HAC Aisle Structure Raised by others | 1d | 2026-12-11 | 2026-12-11 | DH-H110-060, DH-H110-040, DH-H110-050 |  |  |  | -7d | 0d | HELIX | DH1100 |  |
| DH-H110-080 |  | H110 - Set MTS | 4d | 2026-12-12 | 2026-12-16 | PR-1000, DH-H110-070 |  |  |  | -7d | 0d | HELIX | DH1100 |  |
| DH-H110-090 |  | H110 - Set DH PQM | 4d | 2026-12-17 | 2026-12-21 | DH-H110-080 |  |  |  | -7d | 0d | HELIX | DH1100 |  |
| DH-H110-100 |  | H110 - Pipe Data Hall PQM | 6d | 2026-12-22 | 2026-12-30 | DH-H110-090 |  |  |  | -7d | 0d | HELIX | DH1100 |  |
| DH-H110-110 |  | H110 - Connect MC Cables to MTS | 6d | 2026-12-31 | 2027-01-08 | DH-H110-100, DH-H110-090, DH-H110-080 |  |  |  | -7d | 0d | HELIX | DH1100 |  |
| DH-H110-120 |  | H110 - Pull Wire for DH PQM | 3d | 2026-12-31 | 2027-01-05 | DH-H110-100 |  |  |  | -7d | 0d | HELIX | DH1100 |  |
| DH-H110-130 |  | H110 - Terminate DH PQM | 4d | 2027-01-06 | 2027-01-09 | DH-H110-120 |  |  |  | -7d | 0d | HELIX | DH1100 |  |
| DH-H110-140 |  | H110 - Terminate MC Cables at MTS | 7d | 2027-01-09 | 2027-01-16 | DH-H110-110 |  |  |  | -7d | 0d | HELIX | DH1100 |  |
| DH-H110-150 |  | H110 - Pull MC Cable from MTS to Starline | 3d | 2027-01-09 | 2027-01-12 | DH-H110-110 |  |  |  | -6d | 0d | HELIX | DH1100 |  |
| DH-H110-160 |  | H110 - HAC Lighting Switches / Emergency Relay at the same time when set MTS and PQM | 3d | 2027-01-11 | 2027-01-13 | DH-H110-130 |  |  |  | -7d | 0d | HELIX | DH1100 |  |
| DH-H110-170 |  | H110 - Terminate MC Cables at Starline | 3d | 2027-01-13 | 2027-01-15 | DH-H110-150, DH-H110-110 |  |  |  | -6d | 1d | HELIX | DH1100 |  |
| DH-H110-180 |  | H110 - Terminate Lighting Wiring | 3d | 2027-01-14 | 2027-01-16 | DH-H110-160 |  |  |  | -7d | 0d | HELIX | DH1100 |  |
| DH-H110-260 |  | H110 - QC 2.2 Checklist | 1d | 2027-01-18 | 2027-01-18 | DH-H110-180, DH-H110-140, DH-H110-170 |  |  |  | -7d | 0d | HELIX | DH1100 |  |
|  | 9 | **J110** |  | 2026-09-05 | 2027-01-18 |  |  |  |  |  |  |  |  |  |
| DH-J110-010 |  | J110 - Install Supplemental Steel (overhead support for strut/trapeze) | 6d | 2026-09-05 A | 2026-09-21 A | DH-H110-010 SS, DC7.DH1100.MS.1000 | 100% | 2026-09-14 | 2026-09-19 |  |  | HELIX | DH1100 |  |
| DH-J110-020 |  | J110 - Hang Trapeze System / Strut Racking | 7d | 2026-09-07 A | 2026-09-25 A | DH-J110-010 | 100% | 2026-09-21 | 2026-09-28 |  |  | HELIX | DH1100 |  |
| DH-J110-060 |  | J110 - Hang Starline Bus | 10d | 2026-11-05 | 2026-11-16 | DH-H110-060 SS, PR-1010, DH-J110-020 |  |  |  | 9d | 0d | HELIX | DH1100 |  |
| DH-J110-030 |  | J110 - Pull MC Cable from PDU to MTS | 15d | 2026-11-10 | 2026-11-30 | DH-H110-030 SS, PRC-MCC-040, DH-J110-020 |  |  |  | -21d | 0d | HELIX | DH1100 | BB |
| DH-J110-040 |  | J110 - HAC Aisle Structure Set by others | 3d | 2026-12-01 | 2026-12-03 | DH-J110-030, PR-1060 |  |  |  | -8d | 0d | HELIX | DH1100 |  |
| DH-J110-050 |  | J110 - HAC Aisle Light install | 6d | 2026-12-04 | 2026-12-10 | DH-H110-050 SS, DH-J110-040, PRC-LGT-050 |  |  |  | -8d | 0d | HELIX | DH1100 |  |
| DH-J110-070 |  | J110 - HAC Aisle Structure Raised by others | 1d | 2026-12-11 | 2026-12-11 | DH-J110-060, DH-J110-040, DH-J110-050 |  |  |  | -7d | 0d | HELIX | DH1100 |  |
| DH-J110-080 |  | J110 - Set MTS | 4d | 2026-12-12 | 2026-12-16 | PR-1000, DH-J110-070 |  |  |  | -7d | 0d | HELIX | DH1100 |  |
| DH-J110-090 |  | J110 - Set DH PQM | 4d | 2026-12-17 | 2026-12-21 | DH-J110-080 |  |  |  | -7d | 0d | HELIX | DH1100 |  |
| DH-J110-100 |  | J110 - Pipe Data Hall PQM | 6d | 2026-12-22 | 2026-12-30 | DH-J110-090 |  |  |  | -7d | 0d | HELIX | DH1100 |  |
| DH-J110-110 |  | J110 - Connect MC Cables to MTS | 6d | 2026-12-31 | 2027-01-08 | DH-J110-100, DH-J110-090, DH-J110-080 |  |  |  | -7d | 0d | HELIX | DH1100 |  |
| DH-J110-120 |  | J110 - Pull Wire for DH PQM | 3d | 2026-12-31 | 2027-01-05 | DH-J110-100 |  |  |  | -7d | 0d | HELIX | DH1100 |  |
| DH-J110-130 |  | J110 - Terminate DH PQM | 4d | 2027-01-06 | 2027-01-09 | DH-J110-120 |  |  |  | -7d | 0d | HELIX | DH1100 |  |
| DH-J110-140 |  | J110 - Terminate MC Cables at MTS | 7d | 2027-01-09 | 2027-01-16 | DH-J110-110 |  |  |  | -7d | 0d | HELIX | DH1100 |  |
| DH-J110-150 |  | J110 - Pull MC Cable from MTS to Starline | 3d | 2027-01-09 | 2027-01-12 | DH-J110-110 |  |  |  | -6d | 0d | HELIX | DH1100 |  |
| DH-J110-160 |  | J110 - HAC Lighting Switches / Emergency Relay at the same time when set MTS and PQM | 3d | 2027-01-11 | 2027-01-13 | DH-J110-130 |  |  |  | -7d | 0d | HELIX | DH1100 |  |
| DH-J110-170 |  | J110 - Terminate MC Cables at Starline | 3d | 2027-01-13 | 2027-01-15 | DH-J110-150, DH-J110-110 |  |  |  | -6d | 1d | HELIX | DH1100 |  |
| DH-J110-180 |  | J110 - Terminate Lighting Wiring | 3d | 2027-01-14 | 2027-01-16 | DH-J110-160 |  |  |  | -7d | 0d | HELIX | DH1100 |  |
| DH-J110-270 |  | J110 - QC 2.2 Checklist | 1d | 2027-01-18 | 2027-01-18 | DH-J110-180, DH-J110-140, DH-J110-170 |  |  |  | -7d | 0d | HELIX | DH1100 |  |

| ID | WBS | Activity | Duration | Start | Finish | Predecessors | Complete | Planned start | Planned finish | Total float | Free float | QTS - Subcontractor | QTS - AREA | QTS - DC7 |
| --- | --- | --- | --- | --- | --- | --- | --- | --- | --- | --- | --- | --- | --- | --- |
|  | 10 | **K110** |  | 2026-09-05 | 2027-01-18 |  |  |  |  |  |  |  |  |  |
| DH-K110-010 |  | K110 - Install Supplemental Steel (overhead support for strut/trapeze) | 6d | 2026-09-05 A | 2026-09-21 A | DH-J110-010 SS, DC7.DH1100.MS.1000 | 100% | 2026-09-14 | 2026-09-19 |  |  | HELIX | DH1100 |  |
| DH-K110-020 |  | K110 - Hang Trapeze System / Strut Racking | 7d | 2026-09-07 A | 2026-09-25 A | DH-K110-010 | 100% | 2026-09-21 | 2026-09-28 |  |  | HELIX | DH1100 |  |
| DH-K110-060 |  | K110 - Hang Starline Bus | 10d | 2026-11-05 | 2026-11-16 | PR-1010, DH-J110-060 SS, DH-K110-020 |  |  |  | 9d | 0d | HELIX | DH1100 |  |
| DH-K110-030 |  | K110 - Pull MC Cable from PDU to MTS | 15d | 2026-11-10 | 2026-11-30 | DH-J110-030 SS, PRC-MCC-040, DH-K110-020 |  |  |  | -21d | 0d | HELIX | DH1100 | BB |
| DH-K110-040 |  | K110 - HAC Aisle Structure Set by others | 3d | 2026-12-01 | 2026-12-03 | DH-K110-030, PR-1060 |  |  |  | -5d | 3d | HELIX | DH1100 |  |
| DH-K110-050 |  | K110 - HAC Aisle Light install | 6d | 2026-12-04 | 2026-12-10 | DH-J110-050 SS, DH-K110-040 SS, PRC-LGT-050 |  |  |  | -8d | 0d | HELIX | DH1100 |  |
| DH-K110-070 |  | K110 - HAC Aisle Structure Raised by others | 1d | 2026-12-11 | 2026-12-11 | DH-K110-060, DH-K110-040, DH-K110-050 |  |  |  | -7d | 0d | HELIX | DH1100 |  |
| DH-K110-080 |  | K110 - Set MTS | 4d | 2026-12-12 | 2026-12-16 | PR-1000, DH-K110-070 |  |  |  | -7d | 0d | HELIX | DH1100 |  |
| DH-K110-090 |  | K110 - Set DH PQM | 4d | 2026-12-17 | 2026-12-21 | DH-K110-080 |  |  |  | -7d | 0d | HELIX | DH1100 |  |
| DH-K110-100 |  | K110 - Pipe Data Hall PQM | 6d | 2026-12-22 | 2026-12-30 | DH-K110-090 |  |  |  | -7d | 0d | HELIX | DH1100 |  |
| DH-K110-110 |  | K110 - Connect MC Cables to MTS | 6d | 2026-12-31 | 2027-01-08 | DH-K110-100, DH-K110-090, DH-K110-080 |  |  |  | -7d | 0d | HELIX | DH1100 |  |
| DH-K110-120 |  | K110 - Pull Wire for DH PQM | 3d | 2026-12-31 | 2027-01-05 | DH-K110-100 |  |  |  | -7d | 0d | HELIX | DH1100 |  |
| DH-K110-130 |  | K110 - Terminate DH PQM | 4d | 2027-01-06 | 2027-01-09 | DH-K110-120 |  |  |  | -7d | 0d | HELIX | DH1100 |  |
| DH-K110-140 |  | K110 - Terminate MC Cables at MTS | 7d | 2027-01-09 | 2027-01-16 | DH-K110-110 |  |  |  | -7d | 0d | HELIX | DH1100 |  |
| DH-K110-150 |  | K110 - Pull MC Cable from MTS to Starline | 3d | 2027-01-09 | 2027-01-12 | DH-K110-110 |  |  |  | -6d | 0d | HELIX | DH1100 |  |
| DH-K110-160 |  | K110 - HAC Lighting Switches / Emergency Relay at the same time when set MTS and PQM | 3d | 2027-01-11 | 2027-01-13 | DH-K110-130 |  |  |  | -7d | 0d | HELIX | DH1100 |  |
| DH-K110-170 |  | K110 - Terminate MC Cables at Starline | 3d | 2027-01-13 | 2027-01-15 | DH-K110-150, DH-K110-110 |  |  |  | -6d | 1d | HELIX | DH1100 |  |
| DH-K110-180 |  | K110 - Terminate Lighting Wiring | 3d | 2027-01-14 | 2027-01-16 | DH-K110-160 |  |  |  | -7d | 0d | HELIX | DH1100 |  |
| DH-K110-280 |  | K110 - QC 2.2 Checklist | 1d | 2027-01-18 | 2027-01-18 | DH-K110-180, DH-K110-140, DH-K110-170 |  |  |  | -7d | 0d | HELIX | DH1100 |  |
|  | 11 | **R110** |  | 2026-09-05 | 2027-01-18 |  |  |  |  |  |  |  |  |  |
| DH-R110-010 |  | R110 - Install Supplemental Steel (overhead support for strut/trapeze) | 6d | 2026-09-05 A | 2026-09-21 A | DH-K110-010 SS, DC7.DH1100.MS.1000 | 100% | 2026-09-14 | 2026-09-19 |  |  | HELIX | DH1100 |  |
| DH-R110-020 |  | R110 - Hang Trapeze System / Strut Racking | 7d | 2026-09-07 A | 2026-09-25 A | DH-R110-010 | 100% | 2026-09-21 | 2026-09-28 |  |  | HELIX | DH1100 |  |
| DH-R110-060 |  | R110 - Hang Starline Bus | 10d | 2026-11-05 | 2026-11-16 | PR-1010, DH-K110-060 SS, DH-R110-020 |  |  |  | 9d | 0d | HELIX | DH1100 |  |
| DH-R110-030 |  | R110 - Pull MC Cable from PDU to MTS | 15d | 2026-11-10 | 2026-11-30 | DH-K110-030 SS, PRC-MCC-040, DH-R110-020 |  |  |  | -21d | 0d | HELIX | DH1100 | BB |
| DH-R110-040 |  | R110 - HAC Aisle Structure Set by others | 3d | 2026-12-01 | 2026-12-03 | DH-R110-030, PR-1060 |  |  |  | -8d | 0d | HELIX | DH1100 |  |
| DH-R110-050 |  | R110 - HAC Aisle Light install | 6d | 2026-12-04 | 2026-12-10 | DH-K110-050 SS, DH-R110-040, PRC-LGT-050 |  |  |  | -8d | 0d | HELIX | DH1100 |  |
| DH-R110-070 |  | R110 - HAC Aisle Structure Raised by others | 1d | 2026-12-11 | 2026-12-11 | DH-R110-060, DH-R110-040, DH-R110-050 |  |  |  | -7d | 0d | HELIX | DH1100 |  |
| DH-R110-080 |  | R110 - Set MTS | 4d | 2026-12-12 | 2026-12-16 | PR-1000, DH-R110-070 |  |  |  | -7d | 0d | HELIX | DH1100 |  |
| DH-R110-090 |  | R110 - Set DH PQM | 4d | 2026-12-17 | 2026-12-21 | DH-R110-080 |  |  |  | -7d | 0d | HELIX | DH1100 |  |
| DH-R110-100 |  | R110 - Pipe Data Hall PQM | 6d | 2026-12-22 | 2026-12-30 | DH-R110-090 |  |  |  | -7d | 0d | HELIX | DH1100 |  |
| DH-R110-110 |  | R110 - Connect MC Cables to MTS | 6d | 2026-12-31 | 2027-01-08 | DH-R110-100, DH-R110-090, DH-R110-080 |  |  |  | -7d | 0d | HELIX | DH1100 |  |
| DH-R110-120 |  | R110 - Pull Wire for DH PQM | 3d | 2026-12-31 | 2027-01-05 | DH-R110-100 |  |  |  | -7d | 0d | HELIX | DH1100 |  |
| DH-R110-130 |  | R110 - Terminate DH PQM | 4d | 2027-01-06 | 2027-01-09 | DH-R110-120 |  |  |  | -7d | 0d | HELIX | DH1100 |  |
| DH-R110-140 |  | R110 - Terminate MC Cables at MTS | 7d | 2027-01-09 | 2027-01-16 | DH-R110-110 |  |  |  | -7d | 0d | HELIX | DH1100 |  |
| DH-R110-150 |  | R110 - Pull MC Cable from MTS to Starline | 3d | 2027-01-09 | 2027-01-12 | DH-R110-110 |  |  |  | -6d | 0d | HELIX | DH1100 |  |
| DH-R110-160 |  | R110 - HAC Lighting Switches / Emergency Relay at the same time when set MTS and PQM | 3d | 2027-01-11 | 2027-01-13 | DH-R110-130 |  |  |  | -7d | 0d | HELIX | DH1100 |  |
| DH-R110-170 |  | R110 - Terminate MC Cables at Starline | 3d | 2027-01-13 | 2027-01-15 | DH-R110-150, DH-R110-110 |  |  |  | -6d | 1d | HELIX | DH1100 |  |
| DH-R110-180 |  | R110 - Terminate Lighting Wiring | 3d | 2027-01-14 | 2027-01-16 | DH-R110-160 |  |  |  | -7d | 0d | HELIX | DH1100 |  |
| DH-R110-290 |  | R110 - QC 2.2 Checklist | 1d | 2027-01-18 | 2027-01-18 | DH-R110-180, DH-R110-140, DH-R110-170, DH110-FS-230 |  |  |  | -7d | 0d | HELIX | DH1100 |  |

| ID | WBS | Activity | Duration | Start | Finish | Predecessors | Complete | Total float | Free float | QTS - Subcontractor | QTS - AREA | QTS - DC7 | COMMENTS |
| --- | --- | --- | --- | --- | --- | --- | --- | --- | --- | --- | --- | --- | --- |
|  | 12 | **FIRE STOPPING DH1100** |  | 2026-12-15 | 2027-01-04 |  |  |  |  |  |  |  |  |
| DH110-FS-220 |  | DH1100 // A to E -Install Firestopping | 6d | 2026-12-15 | 2026-12-21 | DH-E110-110 |  | 4d | 0d | HELIX | DH1100 |  |  |
| DH110-FS-240 |  | DH1100 // F to R -Install Firestopping | 6d | 2026-12-22 | 2026-12-30 | DH110-FS-220 |  | 4d | 0d | HELIX | DH1100 |  |  |
| DH110-FS-230 |  | DH1100 // - Firestopping inspection | 2d | 2026-12-31 | 2027-01-04 | DH110-FS-220, DH110-FS-220 FF, DH110-FS-240 |  | 4d | 11d | HELIX | DH1100 |  |  |
|  | 6 | **PDU GALLERY** |  | 2026-10-13 | 2026-12-18 |  |  |  |  |  |  |  |  |
| DH110-PDU-010 |  | DH1100 // PDU - Wall Framing (third party activity) | 1d | 2026-10-13 A | 2026-10-13 A | PDU.1100.1040 (other project) | 100% |  |  |  | DH1100 | BB |  |
| DH110-PDU-020 |  | DH1100 // PDU - Drywall Installation, painting, finishes (third party activity) | 1d | 2026-10-14 A | 2026-10-14 A | DH110-PDU-010, PDU.1100.1100 (other project) | 100% |  |  |  | DH1100 | BB | walls done 100% |
| DH110-PDU-130 |  | DH1100 // PDU - Pipe UPS Circuits / Branch Conduits to Data Hall (PQM, Goal Post, Admin IDF, ICPNL, TPQM) | 10d | 2026-10-23 | 2026-11-03 | DH110-PDU-020 |  | 13d | 0d | HELIX | DH1100 |  |  |
| DH110-PDU-030 |  | DH1100 // PDU - Prefab UPS Skid (offsite assembly) | 1d | 2026-10-24 | 2026-10-24 | DC7.DH1100.MS.1000 SS, PR-1050 |  | 28d | 16d | HELIX | DH1100 |  |  |
| DH110-PDU-080 |  | DH1100 // PDU - Pipe UPS Circuits / Branch Conduits in PDU Gallery (PQM, Goal Post, Admin IDF, ICPNL, TPQM) | 10d | 2026-11-04 | 2026-11-14 | DH110-PDU-020, DH110-PDU-130 |  | 13d | 0d | HELIX | DH1100 |  |  |
| DH110-PDU-040 |  | DH1100 // PDU - Set UPS Skid - Transformers & Panels in PDU Gallery | 3d | 2026-11-13 | 2026-11-16 | DH110-PDU-020, PR-1050, DH110-PDU-030, PRC-PNL-120, PRC-PNL-070 |  | 12d | 0d | HELIX | DH1100 |  |  |
| DH110-PDU-090 |  | DH1100 // PDU - RP Panel Installed | 1d | 2026-11-13 | 2026-11-13 | PRC-PNL-110 |  | 12d | 0d |  | DH1100 | BB |  |
| DH110-PDU-100 |  | DH1100 // PDU - Install pipe cord reel circuits | 10d | 2026-11-14 | 2026-11-25 | DH110-PDU-090 |  | 12d | 0d | HELIX | DH1100 |  |  |
| DH110-PDU-140 |  | DH1100 // PDU - Pull UPS Circuits | 6d | 2026-11-16 | 2026-11-21 | DH110-PDU-080, DH110-PDU-130 |  | 27d | 0d |  | DH1100 | BB |  |
| DH110-PDU-050 |  | DH1100 // PDU - Pipe Feeder from MOD Panel to UPS Transformer | 3d | 2026-11-17 | 2026-11-19 | DH110-PDU-040, DH110-PDU-020, DH110-PDU-080 |  | 12d | 0d | HELIX | DH1100 |  |  |
| DH110-PDU-060 |  | DH1100 // PDU - Pull Feeder from MOD Panel to UPS Transformer | 2d | 2026-11-20 | 2026-11-21 | DH110-PDU-050 |  | 12d | 0d | HELIX | DH1100 |  |  |
| DH110-PDU-070 |  | DH1100 // PDU - Terminate Feeder at MOD Panel and UPS Transformer | 1d | 2026-11-23 | 2026-11-23 | DH110-PDU-060 |  | 12d | 0d | HELIX | DH1100 |  |  |
| DH110-PDU-150 |  | DH1100 // PDU - Terminate UPS Branch Circuits | 4d | 2026-11-23 | 2026-11-30 | DH110-PDU-140, DH110-PDU-040 |  | 27d | 0d | HELIX | DH1100 |  |  |
| DH110-PDU-110 |  | DH1100 // PDU - Pull wire for cord reel circuits | 4d | 2026-11-30 | 2026-12-03 | DH110-PDU-100 |  | 12d | 0d | HELIX | DH1100 |  |  |
| DH110-PDU-160 |  | DH1100 // PDU - Install and Terminate "Goal Post" Receptacles | 3d | 2026-12-01 | 2026-12-03 | DH110-PDU-150 |  | 27d | 12d | HELIX | DH1100 |  |  |
| DH110-PDU-120 |  | DH1100 // PDU - Install cord reel and Terminate | 6d | 2026-12-04 | 2026-12-10 | DH110-PDU-110 |  | 12d | 0d | HELIX | DH1100 |  |  |
| DH110-PDU-180 |  | IDH1100 // PDU -Install Firestopping | 4d | 2026-12-11 | 2026-12-15 | DH110-PDU-120 |  | 12d | 0d | HELIX | DH1100 |  |  |
| DH110-PDU-190 |  | DH1100 // PDU - Firestopping inspection | 2d | 2026-12-16 | 2026-12-17 | DH110-PDU-180 |  | 15d | 0d | HELIX | DH1100 |  |  |
| DH110-PDU-170 |  | DH1100 // PDU - QC 2.2 Checklist | 1d | 2026-12-18 | 2026-12-18 | DH110-PDU-160, DH110-PDU-120, DH110-PDU-070, DH110-PDU-190 |  | 15d | 22d | HELIX | DH1100 |  |  |

| ID | WBS | Activity | Duration | Start | Finish | Predecessors | Complete | Planned start | Planned finish | Total float | Free float | Calendar | QTS - AREA | QTS - DC7 | QTS - Subcontractor |
| --- | --- | --- | --- | --- | --- | --- | --- | --- | --- | --- | --- | --- | --- | --- | --- |
|  | 5 | **ELECTRICAL ROOMS** |  | 2026-09-30 | 2026-12-24 |  |  |  |  |  |  |  |  |  |  |
|  | 1 | **LINE-UPS** |  | 2026-09-30 | 2026-12-24 |  |  |  |  |  |  |  |  |  |  |
|  | 1 | **A110** |  | 2026-09-30 | 2026-12-10 |  |  |  |  |  |  |  |  |  |  |
| ER-A110-010 |  | A110 - Electric Room (ER) Skid Set | 1d | 2026-09-30 A | 2026-09-30 A | DC7.DH1100.MS.1000 SS, PR-1020, ER.5101.3039 | 100% | 2026-09-26 | 2026-09-26 |  |  |  | DH1100 | BB |  |
| ER-A110-020 |  | A110 - Set ER PQM (predecessor skid set) | 1d | 2026-10-24 | 2026-10-24 | ER-A110-010, PRC-ERPQM-70 |  |  |  | 46d | 0d |  | DH1100 |  | HELIX |
| ER-A110-080 |  | A110 - Land and terminate wiring on the PDU | 3d | 2026-11-10 | 2026-11-12 | DH-A110-030, ER-A110-010 |  |  |  | 20d | 0d | IAD192 - 6 Day w/Holidays | DH1100 |  | HELIX |
| ER-A110-040 |  | A110 - Pipe power circuit to ER PQM | 4d | 2026-11-17 | 2026-11-20 | DH110-PDU-040, ER-A110-080 |  |  |  | 22d | 0d |  | DH1100 |  | HELIX |
| ER-A110-030 |  | A110 - Pipe CT&VT PQM control (run conduits) | 6d | 2026-11-21 | 2026-12-01 | ER-A110-040 |  |  |  | 22d | 0d |  | DH1100 |  | HELIX |
| ER-A110-050 |  | A110 - Pull Wire for ER PQM | 3d | 2026-12-02 | 2026-12-04 | ER-A110-040, ER-A110-030, ER-A110-020 |  |  |  | 22d | 0d |  | DH1100 |  | HELIX |
| ER-A110-060 |  | A110 - Terminate ER PQM | 4d | 2026-12-05 | 2026-12-09 | ER-A110-050 |  |  |  | 22d | 0d |  | DH1100 |  | HELIX |
| ER-A110-070 |  | A110 - QC 2.2 Checklist | 1d | 2026-12-10 | 2026-12-10 | ER-A110-060, ER-A110-080 |  |  |  | 22d | 29d |  | DH1100 |  | HELIX |
|  | 2 | **B110** |  | 2026-09-30 | 2026-12-10 |  |  |  |  |  |  |  |  |  |  |
| ER-B110-010 |  | B110 - Electric Room (ER) Skid Set | 1d | 2026-09-30 A | 2026-09-30 A | DC7.DH1100.MS.1000 SS, ER-A110-010, PR-1020 | 100% | 2026-09-28 | 2026-09-28 |  |  |  | DH1100 | BB |  |
| ER-B110-020 |  | B110 - Set ER PQM (predecessor skid set) | 1d | 2026-10-24 | 2026-10-24 | ER-B110-010, PRC-ERPQM-70, ER-A110-020 SS |  |  |  | 46d | 0d |  | DH1100 |  | HELIX |
| ER-B110-80 |  | B110 - Land and terminate wiring on the PDU | 3d | 2026-11-10 | 2026-11-12 | DH-B110-030, ER-B110-010, ER-A110-080 SS |  |  |  | 20d | 0d | IAD192 - 6 Day w/Holidays | DH1100 |  | HELIX |
| ER-B110-040 |  | B110 - Pipe power circuit to ER PQM | 4d | 2026-11-17 | 2026-11-20 | DH110-PDU-040, ER-B110-80 |  |  |  | 22d | 0d |  | DH1100 |  | HELIX |
| ER-B110-030 |  | B110 - Pipe CT&VT PQM control (run conduits) | 6d | 2026-11-21 | 2026-12-01 | ER-B110-040 |  |  |  | 22d | 0d |  | DH1100 |  | HELIX |
| ER-B110-050 |  | B110 - Pull Wire for ER PQM | 3d | 2026-12-02 | 2026-12-04 | ER-B110-040, ER-B110-030, ER-B110-020 |  |  |  | 22d | 0d |  | DH1100 |  | HELIX |
| ER-B110-060 |  | B110 - Terminate ER PQM | 4d | 2026-12-05 | 2026-12-09 | ER-B110-050 |  |  |  | 22d | 0d |  | DH1100 |  | HELIX |
| ER-B110-070 |  | B110 - QC 2.2 Checklist | 1d | 2026-12-10 | 2026-12-10 | ER-B110-060, ER-B110-80 |  |  |  | 22d | 29d |  | DH1100 |  | HELIX |
|  | 3 | **C110** |  | 2026-09-30 | 2026-12-10 |  |  |  |  |  |  |  |  |  |  |
| ER-C110-010 |  | C110 - Electric Room (ER) Skid Set | 1d | 2026-09-30 A | 2026-09-30 A | DC7.DH1100.MS.1000 SS, ER-B110-010, PR-1020 | 100% | 2026-09-29 | 2026-09-29 |  |  |  | DH1100 | BB |  |
| ER-C110-020 |  | C110 - Set ER PQM (predecessor skid set) | 1d | 2026-10-24 | 2026-10-24 | ER-C110-010, PRC-ERPQM-70, ER-B110-020 SS |  |  |  | 46d | 0d |  | DH1100 |  | HELIX |
| ER-C110-90 |  | C110 - Land and terminate wiring on the PDU | 3d | 2026-11-10 | 2026-11-12 | DH-C110-030, ER-C110-010, ER-B110-80 SS |  |  |  | 20d | 0d | IAD192 - 6 Day w/Holidays | DH1100 |  | HELIX |
| ER-C110-040 |  | C110 - Pipe power circuit to ER PQM | 4d | 2026-11-17 | 2026-11-20 | DH110-PDU-040, ER-C110-90 |  |  |  | 22d | 0d |  | DH1100 |  | HELIX |
| ER-C110-030 |  | C110 - Pipe CT&VT PQM control (run conduits) | 6d | 2026-11-21 | 2026-12-01 | ER-C110-040 |  |  |  | 22d | 0d |  | DH1100 |  | HELIX |
| ER-C110-050 |  | C110 - Pull Wire for ER PQM | 3d | 2026-12-02 | 2026-12-04 | ER-C110-040, ER-C110-030, ER-C110-020 |  |  |  | 22d | 0d |  | DH1100 |  | HELIX |
| ER-C110-060 |  | C110 - Terminate ER PQM | 4d | 2026-12-05 | 2026-12-09 | ER-C110-050 |  |  |  | 22d | 0d |  | DH1100 |  | HELIX |
| ER-C110-070 |  | C110 - QC 2.2 Checklist | 1d | 2026-12-10 | 2026-12-10 | ER-C110-060, ER-C110-90 |  |  |  | 22d | 29d |  | DH1100 |  | HELIX |

| ID | WBS | Activity | Duration | Start | Finish | Predecessors | Complete | Planned start | Planned finish | Total float | Free float | Calendar | QTS - AREA | QTS - DC7 | QTS - Subcontractor |
| --- | --- | --- | --- | --- | --- | --- | --- | --- | --- | --- | --- | --- | --- | --- | --- |
|  | 4 | **D110** |  | 2026-09-30 | 2026-12-10 |  |  |  |  |  |  |  |  |  |  |
| ER-D110-010 |  | D110 - Electric Room (ER) Skid Set | 1d | 2026-09-30 A | 2026-09-30 A | DC7.DH1100.MS.1000 SS, ER-C110-010, PR-1020 | 100% |  |  |  |  |  | DH1100 | BB |  |
| ER-D110-020 |  | D110 - Set ER PQM (predecessor skid set) | 1d | 2026-10-24 | 2026-10-24 | ER-D110-010, PRC-ERPQM-70, ER-C110-020 SS |  |  |  | 46d | 0d |  | DH1100 |  | HELIX |
| ER-D110-100 |  | D110 - Land and terminate wiring on the PDU | 3d | 2026-11-10 | 2026-11-12 | ER-D110-010, DH-D110-030, ER-C110-90 SS |  |  |  | 20d | 0d | IAD192 - 6 Day w/Holidays | DH1100 |  | HELIX |
| ER-D110-040 |  | D110 - Pipe power circuit to ER PQM | 4d | 2026-11-17 | 2026-11-20 | DH110-PDU-040, ER-D110-100 |  |  |  | 22d | 0d |  | DH1100 |  | HELIX |
| ER-D110-030 |  | D110 - Pipe CT&VT PQM control (run conduits) | 6d | 2026-11-21 | 2026-12-01 | ER-D110-040 |  |  |  | 22d | 0d |  | DH1100 |  | HELIX |
| ER-D110-050 |  | D110 - Pull Wire for ER PQM | 3d | 2026-12-02 | 2026-12-04 | ER-D110-040, ER-D110-030, ER-D110-020 |  |  |  | 22d | 0d |  | DH1100 |  | HELIX |
| ER-D110-060 |  | D110 - Terminate ER PQM | 4d | 2026-12-05 | 2026-12-09 | ER-D110-050 |  |  |  | 22d | 0d |  | DH1100 |  | HELIX |
| ER-D110-070 |  | D110 - QC 2.2 Checklist | 1d | 2026-12-10 | 2026-12-10 | ER-D110-060, ER-D110-100 |  |  |  | 22d | 29d |  | DH1100 |  | HELIX |
|  | 5 | **E110** |  | 2026-09-30 | 2026-12-10 |  |  |  |  |  |  |  |  |  |  |
| ER-E110-010 |  | E110 - Electric Room (ER) Skid Set | 1d | 2026-09-30 A | 2026-09-30 A | DC7.DH1100.MS.1000 SS, ER-D110-010, PR-1020 | 100% | 2026-10-01 | 2026-10-01 |  |  |  | DH1100 | BB |  |
| ER-E110-020 |  | E110 - Set ER PQM (predecessor skid set) | 1d | 2026-10-24 | 2026-10-24 | ER-E110-010, PRC-ERPQM-70, ER-D110-020 SS |  |  |  | 46d | 3d |  | DH1100 |  | HELIX |
| ER-E110-110 |  | E110 - Land and terminate wiring on the PDU | 3d | 2026-11-10 | 2026-11-12 | ER-E110-010, DH-E110-030, ER-D110-100 SS |  |  |  | 20d | 3d |  | DH1100 |  | HELIX |
| ER-E110-040 |  | E110 - Pipe power circuit to ER PQM | 4d | 2026-11-17 | 2026-11-20 | DH110-PDU-040, ER-E110-110 |  |  |  | 17d | 0d |  | DH1100 |  | HELIX |
| ER-E110-030 |  | E110 - Pipe CT&VT PQM control (run conduits) | 6d | 2026-11-21 | 2026-12-01 | ER-E110-040 |  |  |  | 17d | 0d |  | DH1100 |  | HELIX |
| ER-E110-050 |  | E110 - Pull Wire for ER PQM | 3d | 2026-12-02 | 2026-12-04 | ER-E110-040, ER-E110-030, ER-E110-020 |  |  |  | 17d | 0d |  | DH1100 |  | HELIX |
| ER-E110-060 |  | E110 - Terminate ER PQM | 4d | 2026-12-05 | 2026-12-09 | ER-E110-050 |  |  |  | 17d | 0d |  | DH1100 |  | HELIX |
| ER-E110-070 |  | E110 - QC 2.2 Checklist | 1d | 2026-12-10 | 2026-12-10 | ER-E110-060, ER-E110-110 |  |  |  | 22d | 29d |  | DH1100 |  | HELIX |
|  | 6 | **F110** |  | 2026-09-30 | 2026-12-24 |  |  |  |  |  |  |  |  |  |  |
| ER-F110-010 |  | F110 - Electric Room (ER) Skid Set | 1d | 2026-09-30 A | 2026-09-30 A | DC7.DH1100.MS.1000 SS, ER-E110-010, PR-1020, ER.5101.3044 | 100% | 2026-10-02 | 2026-10-02 |  |  |  | DH1100 | BB |  |
| ER-F110-020 |  | F110 - Set ER PQM (predecessor skid set) | 1d | 2026-10-29 | 2026-10-29 | ER-F110-010, PRC-ERPQM-70, ER-E110-020 |  |  |  | 47d | 0d |  | DH1100 |  | HELIX |
| ER-F110-120 |  | F110 - Land and terminate wiring on the PDU | 3d | 2026-12-01 | 2026-12-03 | ER-F110-010, DH-F110-030, ER-E110-110 |  |  |  | 10d | 0d |  | DH1100 |  | HELIX |
| ER-F110-040 |  | F110 - Pipe power circuit to ER PQM | 4d | 2026-12-04 | 2026-12-08 | DH110-PDU-040, ER-E110-040, ER-F110-120 |  |  |  | 10d | 0d |  | DH1100 |  | HELIX |
| ER-F110-030 |  | F110 - Pipe CT&VT PQM control (run conduits) | 6d | 2026-12-09 | 2026-12-15 | ER-F110-040, ER-E110-030 SS |  |  |  | 10d | 0d |  | DH1100 |  | HELIX |
| ER-F110-050 |  | F110 - Pull Wire for ER PQM | 3d | 2026-12-16 | 2026-12-18 | ER-F110-040, ER-F110-030, ER-F110-020 |  |  |  | 10d | 0d |  | DH1100 |  | HELIX |
| ER-F110-060 |  | F110 - Terminate ER PQM | 4d | 2026-12-19 | 2026-12-23 | ER-F110-050 |  |  |  | 10d | 0d |  | DH1100 |  | HELIX |
| ER-F110-070 |  | F110 - QC 2.2 Checklist | 1d | 2026-12-24 | 2026-12-24 | ER-F110-060, ER-F110-120 |  |  |  | 10d | 17d |  | DH1100 |  | HELIX |

| ID | WBS | Activity | Duration | Start | Finish | Predecessors | Complete | Planned start | Planned finish | Total float | Free float | Constraint | Calendar | QTS - AREA | QTS - DC7 | QTS - Subcontractor |
| --- | --- | --- | --- | --- | --- | --- | --- | --- | --- | --- | --- | --- | --- | --- | --- | --- |
|  | 7 | **G110** |  | 2026-10-01 | 2026-12-24 |  |  |  |  |  |  |  |  |  |  |  |
| ER-G110-010 |  | G110 - Electric Room (ER) Skid Set | 1d | 2026-10-01 A | 2026-10-01 A | DC7.DH1100.MS.1000 SS, ER-F110-010, PR-1020 | 100% | 2026-10-06 | 2026-10-06 |  |  |  |  | DH1100 | BB |  |
| ER-G110-020 |  | G110 - Set ER PQM (predecessor skid set) | 1d | 2026-10-29 | 2026-10-29 | ER-G110-010, PRC-ERPQM-70, ER-F110-020 SS |  |  |  | 47d | 0d |  |  | DH1100 |  | HELIX |
| ER-G110-130 |  | G110 - Land and terminate wiring on the PDU | 3d | 2026-12-01 | 2026-12-03 | ER-G110-010, DH-G110-030, ER-F110-120 SS |  |  |  | 10d | 0d |  | IAD192 - 6 Day w/Holidays | DH1100 |  | HELIX |
| ER-G110-040 |  | G110 - Pipe power circuit to ER PQM | 4d | 2026-12-04 | 2026-12-08 | ER-F110-040 SS, DH110-PDU-040, ER-G110-130 |  |  |  | 10d | 0d | start on or after 2026-11-12 |  | DH1100 |  | HELIX |
| ER-G110-030 |  | G110 - Pipe CT&VT PQM control (run conduits) | 6d | 2026-12-09 | 2026-12-15 | ER-G110-040 |  |  |  | 10d | 0d |  |  | DH1100 |  | HELIX |
| ER-G110-050 |  | G110 - Pull Wire for ER PQM | 3d | 2026-12-16 | 2026-12-18 | ER-G110-040, ER-G110-030, ER-G110-020 |  |  |  | 10d | 0d |  |  | DH1100 |  | HELIX |
| ER-G110-060 |  | G110 - Terminate ER PQM | 4d | 2026-12-19 | 2026-12-23 | ER-G110-050 |  |  |  | 10d | 0d |  |  | DH1100 |  | HELIX |
| ER-G110-070 |  | G110 - QC 2.2 Checklist | 1d | 2026-12-24 | 2026-12-24 | ER-G110-060, ER-G110-130 |  |  |  | 10d | 17d |  |  | DH1100 |  | HELIX |
|  | 8 | **H110** |  | 2026-10-01 | 2026-12-24 |  |  |  |  |  |  |  |  |  |  |  |
| ER-H110-010 |  | H110 - Electric Room (ER) Skid Set | 1d | 2026-10-01 A | 2026-10-01 A | DC7.DH1100.MS.1000 SS, ER-G110-010 SS, PR-1020 | 100% | 2026-10-06 | 2026-10-06 |  |  |  |  | DH1100 | BB |  |
| ER-H110-020 |  | H110 - Set ER PQM (predecessor skid set) | 1d | 2026-10-29 | 2026-10-29 | ER-H110-010, PRC-ERPQM-70, ER-G110-020 SS |  |  |  | 47d | 0d |  |  | DH1100 |  | HELIX |
| ER-H110-140 |  | H110 - Land and terminate wiring on the PDU | 3d | 2026-12-01 | 2026-12-03 | ER-H110-010, DH-H110-030, ER-G110-130 SS |  |  |  | 10d | 0d |  | IAD192 - 6 Day w/Holidays | DH1100 |  | HELIX |
| ER-H110-040 |  | H110 - Pipe power circuit to ER PQM | 4d | 2026-12-04 | 2026-12-08 | ER-G110-040 SS, DH110-PDU-040, ER-H110-140 |  |  |  | 10d | 0d |  |  | DH1100 |  | HELIX |
| ER-H110-030 |  | H110 - Pipe CT&VT PQM control (run conduits) | 6d | 2026-12-09 | 2026-12-15 | ER-H110-040 |  |  |  | 10d | 0d |  |  | DH1100 |  | HELIX |
| ER-H110-050 |  | H110 - Pull Wire for ER PQM | 3d | 2026-12-16 | 2026-12-18 | ER-H110-040, ER-H110-030, ER-H110-020 |  |  |  | 10d | 0d |  |  | DH1100 |  | HELIX |
| ER-H110-060 |  | H110 - Terminate ER PQM | 4d | 2026-12-19 | 2026-12-23 | ER-H110-050 |  |  |  | 10d | 0d |  |  | DH1100 |  | HELIX |
| ER-H110-070 |  | H110 - QC 2.2 Checklist | 1d | 2026-12-24 | 2026-12-24 | ER-H110-060, ER-H110-140 |  |  |  | 10d | 17d |  |  | DH1100 |  | HELIX |
|  | 9 | **J110** |  | 2026-10-01 | 2026-12-24 |  |  |  |  |  |  |  |  |  |  |  |
| ER-J110-010 |  | J110 - Electric Room (ER) Skid Set | 1d | 2026-10-01 A | 2026-10-01 A | DC7.DH1100.MS.1000 SS, ER-H110-010 SS, PR-1020 | 100% | 2026-10-06 | 2026-10-06 |  |  |  |  | DH1100 | BB |  |
| ER-J110-020 |  | J110 - Set ER PQM (predecessor skid set) | 1d | 2026-10-29 | 2026-10-29 | ER-J110-010, PRC-ERPQM-70, ER-H110-020 SS |  |  |  | 47d | 0d |  |  | DH1100 |  | HELIX |
| ER-J110-150 |  | J110 - Land and terminate wiring on the PDU | 3d | 2026-12-01 | 2026-12-03 | ER-J110-010, DH-J110-030, ER-H110-140 SS |  |  |  | 10d | 0d |  | IAD192 - 6 Day w/Holidays | DH1100 |  | HELIX |
| ER-J110-040 |  | J110 - Pipe power circuit to ER PQM | 4d | 2026-12-04 | 2026-12-08 | ER-H110-040 SS, DH110-PDU-040, ER-J110-150 |  |  |  | 10d | 0d |  |  | DH1100 |  | HELIX |
| ER-J110-030 |  | J110 - Pipe CT&VT PQM control (run conduits) | 6d | 2026-12-09 | 2026-12-15 | ER-J110-040 |  |  |  | 10d | 0d |  |  | DH1100 |  | HELIX |
| ER-J110-050 |  | J110 - Pull Wire for ER PQM | 3d | 2026-12-16 | 2026-12-18 | ER-J110-040, ER-J110-030, ER-J110-020 |  |  |  | 10d | 0d |  |  | DH1100 |  | HELIX |
| ER-J110-060 |  | J110 - Terminate ER PQM | 4d | 2026-12-19 | 2026-12-23 | ER-J110-050 |  |  |  | 10d | 0d |  |  | DH1100 |  | HELIX |
| ER-J110-070 |  | J110 - QC 2.2 Checklist | 1d | 2026-12-24 | 2026-12-24 | ER-J110-060, ER-J110-150 |  |  |  | 10d | 17d |  |  | DH1100 |  | HELIX |

| ID | WBS | Activity | Duration | Start | Finish | Predecessors | Complete | Planned start | Planned finish | Total float | Free float | Calendar | QTS - AREA | QTS - DC7 | QTS - Subcontractor |
| --- | --- | --- | --- | --- | --- | --- | --- | --- | --- | --- | --- | --- | --- | --- | --- |
|  | 10 | **K110** |  | 2026-10-01 | 2026-12-24 |  |  |  |  |  |  |  |  |  |  |
| ER-K110-010 |  | K110 - Electric Room (ER) Skid Set | 1d | 2026-10-01 A | 2026-10-01 A | DC7.DH1100.MS.1000 SS, ER-J110-010 SS, PR-1020 | 100% | 2026-10-06 | 2026-10-06 |  |  |  | DH1100 | BB |  |
| ER-K110-020 |  | K110 - Set ER PQM (predecessor skid set) | 1d | 2026-10-29 | 2026-10-29 | ER-K110-010, PRC-ERPQM-70, ER-J110-020 SS |  |  |  | 47d | 37d |  | DH1100 |  | HELIX |
| ER-K110-160 |  | K110 - Land and terminate wiring on the PDU | 3d | 2026-12-01 | 2026-12-03 | ER-K110-010, DH-K110-030, ER-J110-150 SS |  |  |  | 10d | 0d | IAD192 - 6 Day w/Holidays | DH1100 |  | HELIX |
| ER-K110-040 |  | K110 - Pipe power circuit to ER PQM | 4d | 2026-12-04 | 2026-12-08 | ER-J110-040 SS, DH110-PDU-040, ER-K110-160 |  |  |  | 10d | 0d |  | DH1100 |  | HELIX |
| ER-K110-030 |  | K110 - Pipe CT&VT PQM control (run conduits) | 6d | 2026-12-09 | 2026-12-15 | ER-K110-040 |  |  |  | 10d | 0d |  | DH1100 |  | HELIX |
| ER-K110-050 |  | K110 - Pull Wire for ER PQM | 3d | 2026-12-16 | 2026-12-18 | ER-K110-040, ER-K110-030, ER-K110-020, ER-K110-020 FF |  |  |  | 10d | 0d |  | DH1100 |  | HELIX |
| ER-K110-060 |  | K110 - Terminate ER PQM | 4d | 2026-12-19 | 2026-12-23 | ER-K110-050 |  |  |  | 10d | 0d |  | DH1100 |  | HELIX |
| ER-K110-070 |  | K110 - QC 2.2 Checklist | 1d | 2026-12-24 | 2026-12-24 | ER-K110-060, ER-K110-160 |  |  |  | 10d | 17d |  | DH1100 |  | HELIX |
|  | 11 | **R110** |  | 2026-12-01 | 2026-12-16 |  |  |  |  |  |  |  |  |  |  |
| ER-R110-170 |  | R110 - Land and terminate wiring on the PDU | 3d | 2026-12-01 | 2026-12-03 | DH-R110-030, ER-K110-160 SS |  |  |  | 17d | 0d |  | DH1100 |  | HELIX |
| ER-R110-010 |  | R110 - Pipe power circuit to ER PQM | 2d | 2026-12-04 | 2026-12-05 | DC7.DH1100.MS.1000 SS, ER-R110-170 |  |  |  | 17d | 0d |  | DH1100 |  | HELIX |
| ER-R110-020 |  | R110 - Reserve Line Equipment Set | 1d | 2026-12-07 | 2026-12-07 | PR-1020, ER-R110-010 |  |  |  | 17d | 0d |  | DH1100 |  | HELIX |
| ER-R110-050 |  | R110 - Pipe CT&VT PQM control (run conduits) | 2d | 2026-12-07 | 2026-12-08 | ER-R110-010 |  |  |  | 22d | 0d |  | DH1100 |  | HELIX |
| ER-R110-030 |  | R110 - Set ER PQM | 1d | 2026-12-08 | 2026-12-08 | ER-R110-020, PRC-ERPQM-70 |  |  |  | 22d | 0d |  | DH1100 | BB |  |
| ER-R110-040 |  | R110 - Set Inhibitor Panel | 1d | 2026-12-08 | 2026-12-08 | ER-R110-020, PRC-INH-050 |  |  |  | 17d | 0d |  | DH1100 |  | HELIX |
| ER-R110-070 |  | R110 - Pipe Inhibitor Panel (overhead run w/ base build) | 1d | 2026-12-09 | 2026-12-09 | ER-R110-040 |  |  |  | 17d | 0d |  | DH1100 | BB |  |
| ER-R110-090 |  | R110 - Pull Wire for ER PQM | 1d | 2026-12-09 | 2026-12-09 | ER-R110-050, ER-R110-030 |  |  |  | 22d | 0d |  | DH1100 |  | HELIX |
| ER-R110-080 |  | R110 - Pull Wire for Inhibitor Panel | 2d | 2026-12-10 | 2026-12-11 | ER-R110-070 |  |  |  | 17d | 0d |  | DH1100 |  | HELIX |
| ER-R110-100 |  | R110 - Terminate ER PQM | 1d | 2026-12-10 | 2026-12-10 | ER-R110-090 |  |  |  | 22d | 29d |  | DH1100 |  | HELIX |
| ER-R110-110 |  | R110 - Terminate Inhibitor Panel | 3d | 2026-12-12 | 2026-12-15 | ER-R110-080 |  |  |  | 17d | 0d |  | DH1100 |  | HELIX |
| ER-R110-120 |  | R110 - QC 2.2 Checklist | 1d | 2026-12-16 | 2026-12-16 | ER-R110-110, ER-R110-170 |  |  |  | 17d | 24d |  | DH1100 |  | HELIX |
|  | 12 | **FIRE STOPPING** |  | 2026-12-16 | 2026-12-22 |  |  |  |  |  |  |  |  |  |  |
| DH110-ER-200 |  | DH1100 // ER -Install Firestopping | 4d | 2026-12-16 | 2026-12-19 | ER-E110-060, DH110-PDU-180 |  |  |  | 12d | 0d |  | DH1100 |  | HELIX |
| DH110-ER-210 |  | DH1100 // ER - Firestopping inspection | 2d | 2026-12-21 | 2026-12-22 | DH110-ER-200 |  |  |  | 12d | 16d |  | DH1100 |  | HELIX |

| ID | WBS | Activity | Type | Duration | Start | Finish | Predecessors | Complete | Planned start | Planned finish | Total float | Free float | Constraint | Calendar | QTS - Subcontractor | QTS - AREA | MSP Activity ID | QTS - DASH | QTS - Resp | QTS - DC7 |
| --- | --- | --- | --- | --- | --- | --- | --- | --- | --- | --- | --- | --- | --- | --- | --- | --- | --- | --- | --- | --- |
|  | 2 | **COMISSIONING BY OTHERS** |  |  | 2027-01-19 | 2027-04-21 |  |  |  |  |  |  |  |  |  |  |  |  |  |  |
| CX-DH110-10 |  | DH1100 L3 Cx electrical, Mechanical FLS |  | 40d | 2027-01-19 | 2027-03-05 | DC7.DH1100.MS.1020 |  |  |  | -7d | 0d |  |  | HELIX | DH1100 |  |  |  |  |
| CX-DH110-20 |  | DH1100 L4 CxA |  | 25d | 2027-03-06 | 2027-04-03 | CX-DH110-10 |  |  |  | -7d | 0d |  |  | HELIX | DH1100 |  |  |  |  |
| CX-DH110-30 |  | DH1100 L5 CxA IST |  | 15d | 2027-04-05 | 2027-04-21 | CX-DH110-20 |  |  |  | -7d | 0d |  |  | HELIX | DH1100 |  |  |  |  |
|  | 4 | **DH 1200** |  |  | 2026-08-12 | 2027-05-26 |  |  |  |  |  |  |  |  |  |  |  |  |  |  |
|  | 1 | **SKID INSTALATION DH1200 FROM TFO SCHEDULE** |  |  | 2026-10-23 | 2026-10-28 |  |  |  |  |  |  |  |  |  |  |  |  |  |  |
| B120001.3219 |  | DH1200/Electrical Room #5201 // DH1200 - OFCI Skid Ship Date (09/30/2026) First Shipment | milestone | 0d | 2026-10-23 | 2026-10-23 | B120001.3219 (other project) FF |  |  |  | 36d | 0d | finish on or after 2026-09-30 | Calendar 01 - 5 Day w/holidays (No Pats Day) | HELIX | DH1200 | 1180 | ER |  |  |
| B120001.3220 |  | DH1200/Electrical Room #5204 // DH1200 - OFCI Skid Ship Date (10/06/2026) 2ND Shipment | milestone | 0d | 2026-10-23 | 2026-10-23 | B120001.3220 (other project) FF |  |  |  | 49d | 0d | finish on or after 2026-10-06 | Calendar 01 - 5 Day w/holidays (No Pats Day) | HELIX | DH1200 | 1180 | ER |  |  |
| ER.5101.3045 |  | DH1200/Electrical Room #5201 // Set Skid - SKID-A120 |  | 1d | 2026-10-23 | 2026-10-23 | B120001.3219, ER.5101.3045 (other project) |  |  |  | 36d | 0d |  | Calendar 01 - 5 Day w/holidays (No Pats Day) | HELIX | DH1200 | 1107 | ER | TBD |  |
| ER.5101.3050 |  | DH1200/Electrical Room #5204 // Set Skid - SKID-F120 |  | 1d | 2026-10-23 | 2026-10-23 | B120001.3220, ER.5101.3050 (other project) |  |  |  | 49d | 0d |  | Calendar 01 - 5 Day w/holidays (No Pats Day) | HELIX | DH1200 | 1107 | ER | TBD |  |
| ER.5101.3051 |  | DH1200/Electrical Room #5204 // Set Skid - SKID-G120 |  | 1d | 2026-10-23 | 2026-10-23 | ER.5101.3050 SS, ER.5101.3051 (other project) |  |  |  | 49d | 0d |  | Calendar 01 - 5 Day w/holidays (No Pats Day) | HELIX | DH1200 | 1107 | ER | TBD |  |
| ER.5101.3046 |  | DH1200/Electrical Room #5201 // Set Skid - SKID-B120 |  | 1d | 2026-10-26 | 2026-10-26 | ER.5101.3045, ER.5101.3046 (other project) |  |  |  | 36d | 0d |  | Calendar 01 - 5 Day w/holidays (No Pats Day) | HELIX | DH1200 | 1107 | ER | TBD |  |
| ER.5101.3052 |  | DH1200/Electrical Room #5204 // Set Skid - SKID-H120 |  | 1d | 2026-10-26 | 2026-10-26 | ER.5101.3051, ER.5101.3052 (other project) |  |  |  | 49d | 0d |  | Calendar 01 - 5 Day w/holidays (No Pats Day) | HELIX | DH1200 | 1107 | ER | TBD |  |
| ER.5101.3047 |  | DH1200/Electrical Room #5201 // Set Skid - SKID-C120 |  | 1d | 2026-10-27 | 2026-10-27 | ER.5101.3046, ER.5101.3047 (other project) |  |  |  | 36d | 0d |  | Calendar 01 - 5 Day w/holidays (No Pats Day) | HELIX | DH1200 | 1107 | ER | TBD |  |
| ER.5101.3048 |  | DH1200/Electrical Room #5201 // Set Skid - SKID-D120 |  | 1d | 2026-10-27 | 2026-10-27 | ER.5101.3047 SS, ER.5101.3048 (other project) |  |  |  | 36d | 0d |  | Calendar 01 - 5 Day w/holidays (No Pats Day) | HELIX | DH1200 | 1107 | ER | TBD |  |
| ER.5101.3049 |  | DH1200/Electrical Room #5201 // Set Skid - SKID-E120 |  | 1d | 2026-10-27 | 2026-10-27 | ER.5101.3048 SS, ER.5101.3049 (other project) |  |  |  | 36d | 0d |  | Calendar 01 - 5 Day w/holidays (No Pats Day) | HELIX | DH1200 | 1107 | ER | TBD |  |
| ER.5101.3053 |  | DH1200/Electrical Room #5204 // Set Skid - SKID-J120 |  | 1d | 2026-10-27 | 2026-10-27 | ER.5101.3052, ER.5101.3053 (other project) |  |  |  | 49d | 0d |  | Calendar 01 - 5 Day w/holidays (No Pats Day) | HELIX | DH1200 | 1107 | ER | TBD |  |
| ER.5101.3054 |  | DH1200/Electrical Room #5204 // Set Skid - SKID-K120 |  | 1d | 2026-10-28 | 2026-10-28 | ER.5101.3053, ER.5101.3054 (other project) |  |  |  | 49d | 3d |  | Calendar 01 - 5 Day w/holidays (No Pats Day) | HELIX | DH1200 | 1107 | ER | TBD |  |
|  | 4 | **DATA HALL** |  |  | 2026-09-21 | 2027-02-22 |  |  |  |  |  |  |  |  |  |  |  |  |  |  |
|  | 1 | **LINE-UPS** |  |  | 2026-09-21 | 2027-02-22 |  |  |  |  |  |  |  |  |  |  |  |  |  |  |
|  | 11 | **R120** |  |  | 2026-09-21 | 2027-02-04 |  |  |  |  |  |  |  |  |  |  |  |  |  |  |
| DH-R120-190 |  | R120 - Install Supplemental Steel (overhead support for strut/trapeze) |  | 6d | 2026-09-21 A | 2026-09-22 A | DH-R110-010, DH-R110-020, DC7.DH1200.MS.1000 SS | 100% | 2026-09-29 | 2026-10-05 |  |  |  |  | HELIX | DH1200 |  |  |  |  |
| DH-R120-200 |  | R120 - Hang Trapeze System / Strut Racking |  | 7d | 2026-09-23 A | 2026-09-24 A | DH-R120-190 | 100% | 2026-10-06 | 2026-10-13 |  |  |  |  | HELIX | DH1200 |  |  |  |  |
| DH-R120-240 |  | R120 - Hang Starline Bus |  | 10d | 2026-11-17 | 2026-12-01 | DH-R110-060, DH-R120-200 |  |  |  | 9d | 0d |  |  | HELIX | DH1200 |  |  |  |  |
| DH-R120-210 |  | R120 - Pull MC Cable from PDU to MTS |  | 15d | 2026-12-01 | 2026-12-17 | DH-R110-030, DH-R120-200 |  |  |  | -21d | 0d |  |  | HELIX | DH1200 |  |  |  | BB |
| DH-R120-220 |  | R120 - HAC Aisle Structure Set by others |  | 3d | 2026-12-18 | 2026-12-21 | DH-R120-210 |  |  |  | -17d | 0d |  |  | HELIX | DH1200 |  |  |  |  |
| DH-R120-230 |  | R120 - HAC Aisle Light install |  | 6d | 2026-12-22 | 2026-12-30 | DH-R120-220, DH-R110-050, PRC-LGT-60 |  |  |  | -17d | 0d |  |  | HELIX | DH1200 |  |  |  |  |
| DH-R120-250 |  | R120 - HAC Aisle Structure Raised by others |  | 1d | 2026-12-31 | 2026-12-31 | DH-R120-240, DH-R120-220, DH-R120-230 |  |  |  | -4d | 0d |  |  | HELIX | DH1200 |  |  |  |  |
| DH-R120-260 |  | R120 - Set MTS |  | 4d | 2027-01-04 | 2027-01-07 | DH-R120-250, PR-1070 |  |  |  | -4d | 0d |  |  | HELIX | DH1200 |  |  |  |  |
| DH-R120-310 |  | R120 - Set DH PQM |  | 4d | 2027-01-08 | 2027-01-12 | DH-R120-260, PRC-PQM-060 |  |  |  | -4d | 0d |  |  | HELIX | DH1200 |  |  |  |  |
| DH-R120-320 |  | R120 - Pipe Data Hall PQM |  | 6d | 2027-01-13 | 2027-01-19 | DH-R120-310 |  |  |  | -4d | 0d |  |  | HELIX | DH1200 |  |  |  |  |
| DH-R120-270 |  | R120 - Connect MC Cables to MTS |  | 6d | 2027-01-20 | 2027-01-26 | DH-R120-320, DH-R120-310, DH-R120-260 |  |  |  | -4d | 0d |  |  | HELIX | DH1200 |  |  |  |  |
| DH-R120-330 |  | R120 - Pull Wire for DH PQM |  | 3d | 2027-01-20 | 2027-01-22 | DH-R120-320 |  |  |  | -4d | 0d |  |  | HELIX | DH1200 |  |  |  |  |
| DH-R120-340 |  | R120 - Terminate DH PQM |  | 4d | 2027-01-23 | 2027-01-27 | DH-R120-330 |  |  |  | -4d | 0d |  |  | HELIX | DH1200 |  |  |  |  |
| DH-R120-280 |  | R120 - Terminate MC Cables at MTS |  | 7d | 2027-01-27 | 2027-02-03 | DH-R120-270 |  |  |  | -4d | 0d |  |  | HELIX | DH1200 |  |  |  |  |
| DH-R120-290 |  | R120 - Pull MC Cable from MTS to Starline |  | 3d | 2027-01-27 | 2027-01-29 | DH-R120-270 |  |  |  | -3d | 0d |  |  | HELIX | DH1200 |  |  |  |  |
| DH-R120-350 |  | R120 - HAC Lighting Switches / Emergency Relay at the same time when set MTS and PQM |  | 3d | 2027-01-28 | 2027-01-30 | DH-R120-340 |  |  |  | -4d | 0d |  |  | HELIX | DH1200 |  |  |  |  |
| DH-R120-300 |  | R120 - Terminate MC Cables at Starline |  | 3d | 2027-01-30 | 2027-02-02 | DH-R120-290, DH-R120-270 |  |  |  | -3d | 1d |  |  | HELIX | DH1200 |  |  |  |  |
| DH-R120-360 |  | R120 - Terminate Lighting Wiring |  | 3d | 2027-02-01 | 2027-02-03 | DH-R120-350 |  |  |  | -4d | 0d |  |  | HELIX | DH1200 |  |  |  |  |
| DH-R120-370 |  | R120 - QC 2.2 Checklist |  | 1d | 2027-02-04 | 2027-02-04 | DH-R120-360, DH-R120-300, DH-R120-280 |  |  |  | -4d | 15d |  |  | HELIX | DH1200 |  |  |  |  |

| ID | WBS | Activity | Duration | Start | Finish | Predecessors | Complete | Planned start | Planned finish | Total float | Free float | QTS - Subcontractor | QTS - AREA | QTS - DC7 |
| --- | --- | --- | --- | --- | --- | --- | --- | --- | --- | --- | --- | --- | --- | --- |
|  | 1 | **A120** |  | 2026-09-21 | 2027-02-04 |  |  |  |  |  |  |  |  |  |
| DH-A120-190 |  | A120 - Install Supplemental Steel (overhead support for strut/trapeze) | 6d | 2026-09-21 A | 2026-09-22 A | DH-R120-190 SS, DC7.DH1200.MS.1000 | 100% | 2026-09-29 | 2026-10-05 |  |  | HELIX | DH1200 |  |
| DH-A120-200 |  | A120 - Hang Trapeze System / Strut Racking | 7d | 2026-09-23 A | 2026-09-24 A | DH-A120-190 | 100% | 2026-10-06 | 2026-10-13 |  |  | HELIX | DH1200 |  |
| DH-A120-240 |  | A120 - Hang Starline Bus | 10d | 2026-11-17 | 2026-12-01 | DH-R120-240 SS, DH-A120-200 |  |  |  | 9d | 0d | HELIX | DH1200 |  |
| DH-A120-210 |  | A120 - Pull MC Cable from PDU to MTS | 15d | 2026-12-01 | 2026-12-17 | DH-R120-210 SS, DH-A120-200 |  |  |  | -21d | 0d | HELIX | DH1200 | BB |
| DH-A120-220 |  | A120 - HAC Aisle Structure Set by others | 3d | 2026-12-18 | 2026-12-21 | DH-A120-210 |  |  |  | -17d | 0d | HELIX | DH1200 |  |
| DH-A120-230 |  | A120 - HAC Aisle Light install | 6d | 2026-12-22 | 2026-12-30 | DH-A120-220, DH-R120-230 SS, PRC-LGT-60 |  |  |  | -17d | 0d | HELIX | DH1200 |  |
| DH-A120-250 |  | A120 - HAC Aisle Structure Raised by others | 1d | 2026-12-31 | 2026-12-31 | DH-A120-240, DH-A120-220, DH-A120-230 |  |  |  | -4d | 0d | HELIX | DH1200 |  |
| DH-A120-260 |  | A120 - Set MTS | 4d | 2027-01-04 | 2027-01-07 | DH-A120-250 |  |  |  | -4d | 0d | HELIX | DH1200 |  |
| DH-A120-310 |  | A120 - Set DH PQM | 4d | 2027-01-08 | 2027-01-12 | DH-A120-260 |  |  |  | -4d | 0d | HELIX | DH1200 |  |
| DH-A120-320 |  | A120 - Pipe Data Hall PQM | 6d | 2027-01-13 | 2027-01-19 | DH-A120-310 |  |  |  | -4d | 0d | HELIX | DH1200 |  |
| DH-A120-270 |  | A120 - Connect MC Cables to MTS | 6d | 2027-01-20 | 2027-01-26 | DH-A120-320, DH-A120-310, DH-A120-260 |  |  |  | -4d | 0d | HELIX | DH1200 |  |
| DH-A120-330 |  | A120 - Pull Wire for DH PQM | 3d | 2027-01-20 | 2027-01-22 | DH-A120-320 |  |  |  | -4d | 0d | HELIX | DH1200 |  |
| DH-A120-340 |  | A120 - Terminate DH PQM | 4d | 2027-01-23 | 2027-01-27 | DH-A120-330 |  |  |  | -4d | 0d | HELIX | DH1200 |  |
| DH-A120-280 |  | A120 - Terminate MC Cables at MTS | 7d | 2027-01-27 | 2027-02-03 | DH-A120-270 |  |  |  | -4d | 0d | HELIX | DH1200 |  |
| DH-A120-290 |  | A120 - Pull MC Cable from MTS to Starline | 3d | 2027-01-27 | 2027-01-29 | DH-A120-270 |  |  |  | -3d | 0d | HELIX | DH1200 |  |
| DH-A120-350 |  | A120 - HAC Lighting Switches / Emergency Relay at the same time when set MTS and PQM | 3d | 2027-01-28 | 2027-01-30 | DH-A120-340 |  |  |  | -4d | 0d | HELIX | DH1200 |  |
| DH-A120-300 |  | A120 - Terminate MC Cables at Starline | 3d | 2027-01-30 | 2027-02-02 | DH-A120-290, DH-A120-270 |  |  |  | -3d | 1d | HELIX | DH1200 |  |
| DH-A120-360 |  | A120 - Terminate Lighting Wiring | 3d | 2027-02-01 | 2027-02-03 | DH-A120-350 |  |  |  | -4d | 0d | HELIX | DH1200 |  |
| DH-A120-380 |  | A120 - QC 2.2 Checklist | 1d | 2027-02-04 | 2027-02-04 | DH-A120-360, DH-A120-300, DH-A120-280 |  |  |  | -4d | 15d | HELIX | DH1200 |  |
|  | 2 | **B120** |  | 2026-09-21 | 2027-02-04 |  |  |  |  |  |  |  |  |  |
| DH-B120-190 |  | B120 - Install Supplemental Steel (overhead support for strut/trapeze) | 6d | 2026-09-21 A | 2026-09-22 A | DC7.DH1200.MS.1000 SS, DH-A120-190 SS | 100% | 2026-09-25 | 2026-10-01 |  |  | HELIX | DH1200 |  |
| DH-B120-200 |  | B120 - Hang Trapeze System / Strut Racking | 7d | 2026-09-24 A | 2026-09-25 A | DH-B120-190 | 100% | 2026-10-06 | 2026-10-13 |  |  | HELIX | DH1200 |  |
| DH-B120-240 |  | B120 - Hang Starline Bus | 10d | 2026-11-17 | 2026-12-01 | DH-A120-240 SS, DH-B120-200 |  |  |  | 9d | 0d | HELIX | DH1200 |  |
| DH-B120-210 |  | B120 - Pull MC Cable from PDU to MTS | 15d | 2026-12-01 | 2026-12-17 | DH-A120-210 SS, DH-B120-200 |  |  |  | -21d | 0d | HELIX | DH1200 | BB |
| DH-B120-220 |  | B120 - HAC Aisle Structure Set by others | 3d | 2026-12-18 | 2026-12-21 | DH-B120-210 |  |  |  | -17d | 0d | HELIX | DH1200 |  |
| DH-B120-230 |  | B120 - HAC Aisle Light install | 6d | 2026-12-22 | 2026-12-30 | DH-B120-220, DH-A120-230 SS, PRC-LGT-60 |  |  |  | -17d | 0d | HELIX | DH1200 |  |
| DH-B120-250 |  | B120 - HAC Aisle Structure Raised by others | 1d | 2026-12-31 | 2026-12-31 | DH-B120-240, DH-B120-220, DH-B120-230 |  |  |  | -4d | 0d | HELIX | DH1200 |  |
| DH-B120-260 |  | B120 - Set MTS | 4d | 2027-01-04 | 2027-01-07 | DH-B120-250 |  |  |  | -4d | 0d | HELIX | DH1200 |  |
| DH-B120-310 |  | B120 - Set DH PQM | 4d | 2027-01-08 | 2027-01-12 | DH-B120-260 |  |  |  | -4d | 0d | HELIX | DH1200 |  |
| DH-B120-320 |  | B120 - Pipe Data Hall PQM | 6d | 2027-01-13 | 2027-01-19 | DH-B120-310 |  |  |  | -4d | 0d | HELIX | DH1200 |  |
| DH-B120-270 |  | B120 - Connect MC Cables to MTS | 6d | 2027-01-20 | 2027-01-26 | DH-B120-320, DH-B120-310, DH-B120-260 |  |  |  | -4d | 0d | HELIX | DH1200 |  |
| DH-B120-330 |  | B120 - Pull Wire for DH PQM | 3d | 2027-01-20 | 2027-01-22 | DH-B120-320 |  |  |  | -4d | 0d | HELIX | DH1200 |  |
| DH-B120-340 |  | B120 - Terminate DH PQM | 4d | 2027-01-23 | 2027-01-27 | DH-B120-330 |  |  |  | -4d | 0d | HELIX | DH1200 |  |
| DH-B120-280 |  | B120 - Terminate MC Cables at MTS | 7d | 2027-01-27 | 2027-02-03 | DH-B120-270 |  |  |  | -4d | 0d | HELIX | DH1200 |  |
| DH-B120-290 |  | B120 - Pull MC Cable from MTS to Starline | 3d | 2027-01-27 | 2027-01-29 | DH-B120-270 |  |  |  | -3d | 0d | HELIX | DH1200 |  |
| DH-B120-350 |  | B120 - HAC Lighting Switches / Emergency Relay at the same time when set MTS and PQM | 3d | 2027-01-28 | 2027-01-30 | DH-B120-340 |  |  |  | -4d | 0d | HELIX | DH1200 |  |
| DH-B120-300 |  | B120 - Terminate MC Cables at Starline | 3d | 2027-01-30 | 2027-02-02 | DH-B120-290, DH-B120-270 |  |  |  | -3d | 1d | HELIX | DH1200 |  |
| DH-B120-360 |  | B120 - Terminate Lighting Wiring | 3d | 2027-02-01 | 2027-02-03 | DH-B120-350 |  |  |  | -4d | 0d | HELIX | DH1200 |  |
| DH-B120-390 |  | B120 - QC 2.2 Checklist | 1d | 2027-02-04 | 2027-02-04 | DH-B120-360, DH-B120-300, DH-B120-280 |  |  |  | -4d | 15d | HELIX | DH1200 |  |

| ID | WBS | Activity | Duration | Start | Finish | Predecessors | Complete | Planned start | Planned finish | Total float | Free float | QTS - Subcontractor | QTS - AREA | QTS - DC7 |
| --- | --- | --- | --- | --- | --- | --- | --- | --- | --- | --- | --- | --- | --- | --- |
|  | 3 | **C120** |  | 2026-09-21 | 2027-02-11 |  |  |  |  |  |  |  |  |  |
| DH-C120-200 |  | C120 - Hang Trapeze System / Strut Racking | 7d | 2026-09-21 A | 2026-09-23 A | DH-C120-190 | 100% | 2026-09-21 | 2026-09-28 |  |  | HELIX | DH1200 |  |
| DH-C120-190 |  | C120 - Install Supplemental Steel (overhead support for strut/trapeze) | 6d | 2026-09-24 A | 2026-09-25 A | DC7.DH1200.MS.1000 SS, DH-B120-190 SS | 100% | 2026-09-25 | 2026-10-01 |  |  | HELIX | DH1200 |  |
| DH-C120-240 |  | C120 - Hang Starline Bus | 10d | 2026-11-17 | 2026-12-01 | DH-B120-240 SS, DH-C120-200 |  |  |  | 9d | 0d | HELIX | DH1200 |  |
| DH-C120-210 |  | C120 - Pull MC Cable from PDU to MTS | 15d | 2026-12-01 | 2026-12-17 | DH-B120-210 SS, DH-C120-200 |  |  |  | -21d | 0d | HELIX | DH1200 | BB |
| DH-C120-220 |  | C120 - HAC Aisle Structure Set by others | 3d | 2026-12-18 | 2026-12-21 | DH-C120-210 |  |  |  | -8d | 9d | HELIX | DH1200 |  |
| DH-C120-230 |  | C120 - HAC Aisle Light install | 6d | 2026-12-31 | 2027-01-08 | DH-B120-230, DH-C120-220 SS, PRC-LGT-60 |  |  |  | -17d | 0d | HELIX | DH1200 |  |
| DH-C120-250 |  | C120 - HAC Aisle Structure Raised by others | 1d | 2027-01-09 | 2027-01-09 | DH-C120-240, DH-C120-220, DH-C120-230 |  |  |  | -10d | 0d | HELIX | DH1200 |  |
| DH-C120-260 |  | C120 - Set MTS | 4d | 2027-01-11 | 2027-01-14 | DH-C120-250 |  |  |  | -10d | 0d | HELIX | DH1200 |  |
| DH-C120-310 |  | C120 - Set DH PQM | 4d | 2027-01-15 | 2027-01-19 | DH-C120-260 |  |  |  | -10d | 0d | HELIX | DH1200 |  |
| DH-C120-320 |  | C120 - Pipe Data Hall PQM | 6d | 2027-01-20 | 2027-01-26 | DH-C120-310 |  |  |  | -10d | 0d | HELIX | DH1200 |  |
| DH-C120-270 |  | C120 - Connect MC Cables to MTS | 6d | 2027-01-27 | 2027-02-02 | DH-C120-320, DH-C120-310, DH-C120-260 |  |  |  | -10d | 0d | HELIX | DH1200 |  |
| DH-C120-330 |  | C120 - Pull Wire for DH PQM | 3d | 2027-01-27 | 2027-01-29 | DH-C120-320 |  |  |  | -10d | 0d | HELIX | DH1200 |  |
| DH-C120-340 |  | C120 - Terminate DH PQM | 4d | 2027-01-30 | 2027-02-03 | DH-C120-330 |  |  |  | -10d | 0d | HELIX | DH1200 |  |
| DH-C120-280 |  | C120 - Terminate MC Cables at MTS | 7d | 2027-02-03 | 2027-02-10 | DH-C120-270 |  |  |  | -10d | 0d | HELIX | DH1200 |  |
| DH-C120-290 |  | C120 - Pull MC Cable from MTS to Starline | 3d | 2027-02-03 | 2027-02-05 | DH-C120-270 |  |  |  | -9d | 0d | HELIX | DH1200 |  |
| DH-C120-350 |  | C120 - HAC Lighting Switches / Emergency Relay at the same time when set MTS and PQM | 3d | 2027-02-04 | 2027-02-06 | DH-C120-340 |  |  |  | -10d | 0d | HELIX | DH1200 |  |
| DH-C120-300 |  | C120 - Terminate MC Cables at Starline | 3d | 2027-02-06 | 2027-02-09 | DH-C120-290, DH-C120-270 |  |  |  | -9d | 1d | HELIX | DH1200 |  |
| DH-C120-360 |  | C120 - Terminate Lighting Wiring | 3d | 2027-02-08 | 2027-02-10 | DH-C120-350 |  |  |  | -10d | 0d | HELIX | DH1200 |  |
| DH-C120-400 |  | C120 - QC 2.2 Checklist | 1d | 2027-02-11 | 2027-02-11 | DH-C120-360, DH-C120-300, DH-C120-280 |  |  |  | -10d | 9d | HELIX | DH1200 |  |
|  | 4 | **D120** |  | 2026-09-22 | 2027-02-11 |  |  |  |  |  |  |  |  |  |
| DH-D120-190 |  | D120 - Install Supplemental Steel (overhead support for strut/trapeze) | 6d | 2026-09-22 A | 2026-09-23 A | DC7.DH1200.MS.1000 SS, DH-C120-190 SS | 100% | 2026-09-22 | 2026-09-28 |  |  | HELIX | DH1200 |  |
| DH-D120-200 |  | D120 - Hang Trapeze System / Strut Racking | 7d | 2026-09-24 A | 2026-09-25 A | DH-D120-190 | 100% | 2026-10-06 | 2026-10-13 |  |  | HELIX | DH1200 |  |
| DH-D120-240 |  | D120 - Hang Starline Bus | 10d | 2026-11-17 | 2026-12-01 | DH-C120-240 SS, DH-D120-200 |  |  |  | 9d | 0d | HELIX | DH1200 |  |
| DH-D120-210 |  | D120 - Pull MC Cable from PDU to MTS | 15d | 2026-12-01 | 2026-12-17 | DH-C120-210 SS, DH-D120-200 |  |  |  | -21d | 0d | HELIX | DH1200 | BB |
| DH-D120-220 |  | D120 - HAC Aisle Structure Set by others | 3d | 2026-12-18 | 2026-12-21 | DH-D120-210 |  |  |  | -11d | 6d | HELIX | DH1200 |  |
| DH-D120-230 |  | D120 - HAC Aisle Light install | 6d | 2026-12-31 | 2027-01-08 | DH-C120-230 SS, DH-D120-220, PRC-LGT-60 |  |  |  | -17d | 0d | HELIX | DH1200 |  |
| DH-D120-250 |  | D120 - HAC Aisle Structure Raised by others | 1d | 2027-01-09 | 2027-01-09 | DH-D120-240, DH-D120-220, DH-D120-230 |  |  |  | -17d | 0d | HELIX | DH1200 |  |
| DH-D120-260 |  | D120 - Set MTS | 4d | 2027-01-11 | 2027-01-14 | DH-D120-250 |  |  |  | -17d | 0d | HELIX | DH1200 |  |
| DH-D120-310 |  | D120 - Set DH PQM | 4d | 2027-01-15 | 2027-01-19 | DH-D120-260 |  |  |  | -17d | 0d | HELIX | DH1200 |  |
| DH-D120-320 |  | D120 - Pipe Data Hall PQM | 6d | 2027-01-20 | 2027-01-26 | DH-D120-310 |  |  |  | -17d | 0d | HELIX | DH1200 |  |
| DH-D120-270 |  | D120 - Connect MC Cables to MTS | 6d | 2027-01-27 | 2027-02-02 | DH-D120-320, DH-D120-310, DH-D120-260 |  |  |  | -17d | 0d | HELIX | DH1200 |  |
| DH-D120-330 |  | D120 - Pull Wire for DH PQM | 3d | 2027-01-27 | 2027-01-29 | DH-D120-320 |  |  |  | -10d | 0d | HELIX | DH1200 |  |
| DH-D120-340 |  | D120 - Terminate DH PQM | 4d | 2027-01-30 | 2027-02-03 | DH-D120-330 |  |  |  | -10d | 0d | HELIX | DH1200 |  |
| DH-D120-280 |  | D120 - Terminate MC Cables at MTS | 7d | 2027-02-03 | 2027-02-10 | DH-D120-270 |  |  |  | -10d | 0d | HELIX | DH1200 |  |
| DH-D120-290 |  | D120 - Pull MC Cable from MTS to Starline | 3d | 2027-02-03 | 2027-02-05 | DH-D120-270 |  |  |  | -9d | 0d | HELIX | DH1200 |  |
| DH-D120-350 |  | D120 - HAC Lighting Switches / Emergency Relay at the same time when set MTS and PQM | 3d | 2027-02-04 | 2027-02-06 | DH-D120-340 |  |  |  | -10d | 0d | HELIX | DH1200 |  |
| DH-D120-300 |  | D120 - Terminate MC Cables at Starline | 3d | 2027-02-06 | 2027-02-09 | DH-D120-290, DH-D120-270 |  |  |  | -9d | 1d | HELIX | DH1200 |  |
| DH-D120-360 |  | D120 - Terminate Lighting Wiring | 3d | 2027-02-08 | 2027-02-10 | DH-D120-350 |  |  |  | -10d | 0d | HELIX | DH1200 |  |
| DH-D120-410 |  | D120 - QC 2.2 Checklist | 1d | 2027-02-11 | 2027-02-11 | DH-D120-360, DH-D120-300, DH-D120-280 |  |  |  | -10d | 9d | HELIX | DH1200 |  |

| ID | WBS | Activity | Duration | Start | Finish | Predecessors | Complete | Planned start | Planned finish | Total float | Free float | QTS - Subcontractor | QTS - AREA | QTS - DC7 |
| --- | --- | --- | --- | --- | --- | --- | --- | --- | --- | --- | --- | --- | --- | --- |
|  | 5 | **E120** |  | 2026-09-22 | 2027-02-22 |  |  |  |  |  |  |  |  |  |
| DH-E120-190 |  | E120 - Install Supplemental Steel (overhead support for strut/trapeze) | 6d | 2026-09-22 A | 2026-09-23 A | DC7.DH1200.MS.1000 SS, DH-D120-190 SS | 100% | 2026-09-25 | 2026-10-01 |  |  | HELIX | DH1200 |  |
| DH-E120-200 |  | E120 - Hang Trapeze System / Strut Racking | 7d | 2026-09-25 A | 2026-09-26 A | DH-E120-190 | 100% | 2026-10-06 | 2026-10-13 |  |  | HELIX | DH1200 |  |
| DH-E120-240 |  | E120 - Hang Starline Bus | 10d | 2026-12-02 | 2026-12-12 | DH-D120-240, DH-E120-200 |  |  |  | 9d | 0d | HELIX | DH1200 |  |
| DH-E120-210 |  | E120 - Pull MC Cable from PDU to MTS | 15d | 2026-12-18 | 2027-01-08 | DH-D120-210, DH-E120-200 |  |  |  | -21d | 0d | HELIX | DH1200 | BB |
| DH-E120-220 |  | E120 - HAC Aisle Structure Set by others | 3d | 2027-01-09 | 2027-01-12 | DH-E120-210 |  |  |  | -19d | 0d | HELIX | DH1200 |  |
| DH-E120-230 |  | E120 - HAC Aisle Light install | 6d | 2027-01-13 | 2027-01-19 | DH-D120-230, DH-E120-220, PRC-LGT-60 |  |  |  | -19d | 0d | HELIX | DH1200 |  |
| DH-E120-250 |  | E120 - HAC Aisle Structure Raised by others | 1d | 2027-01-20 | 2027-01-20 | DH-E120-240, DH-E120-220, DH-E120-230 |  |  |  | -19d | 0d | HELIX | DH1200 |  |
| DH-E120-260 |  | E120 - Set MTS | 4d | 2027-01-21 | 2027-01-25 | DH-E120-250, PR-1070 |  |  |  | -19d | 0d | HELIX | DH1200 |  |
| DH-E120-310 |  | E120 - Set DH PQM | 4d | 2027-01-26 | 2027-01-29 | DH-E120-260 |  |  |  | -19d | 0d | HELIX | DH1200 |  |
| DH-E120-320 |  | E120 - Pipe Data Hall PQM | 6d | 2027-01-30 | 2027-02-05 | DH-E120-310 |  |  |  | -19d | 0d | HELIX | DH1200 |  |
| DH-E120-270 |  | E120 - Connect MC Cables to MTS | 6d | 2027-02-06 | 2027-02-12 | DH-E120-320, DH-E120-310, DH-E120-260 |  |  |  | -19d | 0d | HELIX | DH1200 |  |
| DH-E120-330 |  | E120 - Pull Wire for DH PQM | 3d | 2027-02-06 | 2027-02-09 | DH-E120-320 |  |  |  | -19d | 0d | HELIX | DH1200 |  |
| DH-E120-340 |  | E120 - Terminate DH PQM | 4d | 2027-02-10 | 2027-02-13 | DH-E120-330 |  |  |  | -19d | 0d | HELIX | DH1200 |  |
| DH-E120-280 |  | E120 - Terminate MC Cables at MTS | 7d | 2027-02-13 | 2027-02-20 | DH-E120-270 |  |  |  | -19d | 0d | HELIX | DH1200 |  |
| DH-E120-290 |  | E120 - Pull MC Cable from MTS to Starline | 3d | 2027-02-13 | 2027-02-16 | DH-E120-270 |  |  |  | -18d | 0d | HELIX | DH1200 |  |
| DH-E120-350 |  | E120 - HAC Lighting Switches / Emergency Relay at the same time when set MTS and PQM | 3d | 2027-02-15 | 2027-02-17 | DH-E120-340 |  |  |  | -19d | 0d | HELIX | DH1200 |  |
| DH-E120-300 |  | E120 - Terminate MC Cables at Starline | 3d | 2027-02-17 | 2027-02-19 | DH-E120-290, DH-E120-270 |  |  |  | -18d | 1d | HELIX | DH1200 |  |
| DH-E120-360 |  | E120 - Terminate Lighting Wiring | 3d | 2027-02-18 | 2027-02-20 | DH-E120-350 |  |  |  | -19d | 0d | HELIX | DH1200 |  |
| DH-E120-420 |  | E120 - QC 2.2 Checklist | 1d | 2027-02-22 | 2027-02-22 | DH-E120-360, DH-E120-300, DH-E120-280 |  |  |  | -19d | 0d | HELIX | DH1200 |  |
|  | 6 | **F120** |  | 2026-09-22 | 2027-02-22 |  |  |  |  |  |  |  |  |  |
| DH-F120-190 |  | F120 - Install Supplemental Steel (overhead support for strut/trapeze) | 6d | 2026-09-22 A | 2026-09-23 A | DC7.DH1200.MS.1000 SS, DH-E120-190, DH-E120-200 | 100% | 2026-10-10 | 2026-10-16 |  |  | HELIX | DH1200 |  |
| DH-F120-200 |  | F120 - Hang Trapeze System / Strut Racking | 7d | 2026-09-25 A | 2026-09-26 A | DH-F120-190 | 100% | 2026-10-21 | 2026-10-28 |  |  | HELIX | DH1200 |  |
| DH-F120-240 |  | F120 - Hang Starline Bus | 10d | 2026-12-02 | 2026-12-12 | DH-E120-240 SS, DH-F120-200 |  |  |  | 9d | 0d | HELIX | DH1200 |  |
| DH-F120-210 |  | F120 - Pull MC Cable from PDU to MTS | 15d | 2026-12-18 | 2027-01-08 | DH-E120-210 SS, DH-F120-200 |  |  |  | -21d | 0d | HELIX | DH1200 | BB |
| DH-F120-220 |  | F120 - HAC Aisle Structure Set by others | 3d | 2027-01-09 | 2027-01-12 | DH-E120-220 SS, DH-F120-210 |  |  |  | -19d | 0d | HELIX | DH1200 |  |
| DH-F120-230 |  | F120 - HAC Aisle Light install | 6d | 2027-01-13 | 2027-01-19 | DH-E120-230 SS, DH-F120-220, PRC-LGT-60 |  |  |  | -19d | 0d | HELIX | DH1200 |  |
| DH-F120-250 |  | F120 - HAC Aisle Structure Raised by others | 1d | 2027-01-20 | 2027-01-20 | DH-F120-240, DH-F120-220, DH-F120-230 |  |  |  | -19d | 0d | HELIX | DH1200 |  |
| DH-F120-260 |  | F120 - Set MTS | 4d | 2027-01-21 | 2027-01-25 | DH-F120-250 |  |  |  | -19d | 0d | HELIX | DH1200 |  |
| DH-F120-310 |  | F120 - Set DH PQM | 4d | 2027-01-26 | 2027-01-29 | DH-F120-260 |  |  |  | -19d | 0d | HELIX | DH1200 |  |
| DH-F120-320 |  | F120 - Pipe Data Hall PQM | 6d | 2027-01-30 | 2027-02-05 | DH-F120-310 |  |  |  | -19d | 0d | HELIX | DH1200 |  |
| DH-F120-270 |  | F120 - Connect MC Cables to MTS | 6d | 2027-02-06 | 2027-02-12 | DH-F120-320, DH-F120-310, DH-F120-260 |  |  |  | -19d | 0d | HELIX | DH1200 |  |
| DH-F120-330 |  | F120 - Pull Wire for DH PQM | 3d | 2027-02-06 | 2027-02-09 | DH-F120-320 |  |  |  | -19d | 0d | HELIX | DH1200 |  |
| DH-F120-340 |  | F120 - Terminate DH PQM | 4d | 2027-02-10 | 2027-02-13 | DH-F120-330 |  |  |  | -19d | 0d | HELIX | DH1200 |  |
| DH-F120-280 |  | F120 - Terminate MC Cables at MTS | 7d | 2027-02-13 | 2027-02-20 | DH-F120-270 |  |  |  | -19d | 0d | HELIX | DH1200 |  |
| DH-F120-290 |  | F120 - Pull MC Cable from MTS to Starline | 3d | 2027-02-13 | 2027-02-16 | DH-F120-270 |  |  |  | -18d | 0d | HELIX | DH1200 |  |
| DH-F120-350 |  | F120 - HAC Lighting Switches / Emergency Relay at the same time when set MTS and PQM | 3d | 2027-02-15 | 2027-02-17 | DH-F120-340 |  |  |  | -19d | 0d | HELIX | DH1200 |  |
| DH-F120-300 |  | F120 - Terminate MC Cables at Starline | 3d | 2027-02-17 | 2027-02-19 | DH-F120-290, DH-F120-270 |  |  |  | -18d | 1d | HELIX | DH1200 |  |
| DH-F120-360 |  | F120 - Terminate Lighting Wiring | 3d | 2027-02-18 | 2027-02-20 | DH-F120-350 |  |  |  | -19d | 0d | HELIX | DH1200 |  |
| DH-F120-430 |  | F120 - QC 2.2 Checklist | 1d | 2027-02-22 | 2027-02-22 | DH-F120-360, DH-F120-300, DH-F120-280 |  |  |  | -19d | 0d | HELIX | DH1200 |  |

| ID | WBS | Activity | Duration | Start | Finish | Predecessors | Complete | Planned start | Planned finish | Total float | Free float | QTS - Subcontractor | QTS - AREA | QTS - DC7 |
| --- | --- | --- | --- | --- | --- | --- | --- | --- | --- | --- | --- | --- | --- | --- |
|  | 7 | **G120** |  | 2026-09-23 | 2027-02-22 |  |  |  |  |  |  |  |  |  |
| DH-G120-190 |  | G120 - Install Supplemental Steel (overhead support for strut/trapeze) | 6d | 2026-09-23 A | 2026-09-24 A | DC7.DH1200.MS.1000 SS, DH-F120-190 SS | 100% | 2026-10-10 | 2026-10-16 |  |  | HELIX | DH1200 |  |
| DH-G120-200 |  | G120 - Hang Trapeze System / Strut Racking | 7d | 2026-09-25 A | 2026-09-26 A | DH-G120-190 | 100% | 2026-10-21 | 2026-10-28 |  |  | HELIX | DH1200 |  |
| DH-G120-240 |  | G120 - Hang Starline Bus | 10d | 2026-12-02 | 2026-12-12 | DH-F120-240 SS, DH-G120-200 |  |  |  | 9d | 0d | HELIX | DH1200 |  |
| DH-G120-210 |  | G120 - Pull MC Cable from PDU to MTS | 15d | 2026-12-18 | 2027-01-08 | DH-F120-210 SS, DH-G120-200 |  |  |  | -21d | 0d | HELIX | DH1200 | BB |
| DH-G120-220 |  | G120 - HAC Aisle Structure Set by others | 3d | 2027-01-09 | 2027-01-12 | DH-F120-220 SS, DH-G120-210 |  |  |  | -19d | 0d | HELIX | DH1200 |  |
| DH-G120-230 |  | G120 - HAC Aisle Light install | 6d | 2027-01-13 | 2027-01-19 | DH-F120-230 SS, DH-G120-220, PRC-LGT-60 |  |  |  | -19d | 0d | HELIX | DH1200 |  |
| DH-G120-250 |  | G120 - HAC Aisle Structure Raised by others | 1d | 2027-01-20 | 2027-01-20 | DH-F120-250 SS, DH-G120-240, DH-G120-220, DH-G120-230 |  |  |  | -19d | 0d | HELIX | DH1200 |  |
| DH-G120-260 |  | G120 - Set MTS | 4d | 2027-01-21 | 2027-01-25 | DH-F120-260 SS, DH-G120-250 |  |  |  | -19d | 0d | HELIX | DH1200 |  |
| DH-G120-310 |  | G120 - Set DH PQM | 4d | 2027-01-26 | 2027-01-29 | DH-F120-310 SS, DH-G120-260 |  |  |  | -19d | 0d | HELIX | DH1200 |  |
| DH-G120-320 |  | G120 - Pipe Data Hall PQM | 6d | 2027-01-30 | 2027-02-05 | DH-G120-310 |  |  |  | -19d | 0d | HELIX | DH1200 |  |
| DH-G120-270 |  | G120 - Connect MC Cables to MTS | 6d | 2027-02-06 | 2027-02-12 | DH-G120-320, DH-G120-310, DH-G120-260 |  |  |  | -19d | 0d | HELIX | DH1200 |  |
| DH-G120-330 |  | G120 - Pull Wire for DH PQM | 3d | 2027-02-06 | 2027-02-09 | DH-G120-320 |  |  |  | -19d | 0d | HELIX | DH1200 |  |
| DH-G120-340 |  | G120 - Terminate DH PQM | 4d | 2027-02-10 | 2027-02-13 | DH-G120-330 |  |  |  | -19d | 0d | HELIX | DH1200 |  |
| DH-G120-280 |  | G120 - Terminate MC Cables at MTS | 7d | 2027-02-13 | 2027-02-20 | DH-G120-270 |  |  |  | -19d | 0d | HELIX | DH1200 |  |
| DH-G120-290 |  | G120 - Pull MC Cable from MTS to Starline | 3d | 2027-02-13 | 2027-02-16 | DH-G120-270 |  |  |  | -18d | 0d | HELIX | DH1200 |  |
| DH-G120-350 |  | G120 - HAC Lighting Switches / Emergency Relay at the same time when set MTS and PQM | 3d | 2027-02-15 | 2027-02-17 | DH-G120-340 |  |  |  | -19d | 0d | HELIX | DH1200 |  |
| DH-G120-300 |  | G120 - Terminate MC Cables at Starline | 3d | 2027-02-17 | 2027-02-19 | DH-G120-290, DH-G120-270 |  |  |  | -18d | 1d | HELIX | DH1200 |  |
| DH-G120-360 |  | G120 - Terminate Lighting Wiring | 3d | 2027-02-18 | 2027-02-20 | DH-G120-350 |  |  |  | -19d | 0d | HELIX | DH1200 |  |
| DH-F120-440 |  | F120 - QC 2.2 Checklist | 1d | 2027-02-22 | 2027-02-22 | DH-G120-360, DH-G120-300, DH-G120-280 |  |  |  | -19d | 0d | HELIX | DH1200 |  |
|  | 8 | **H120** |  | 2026-09-23 | 2027-02-22 |  |  |  |  |  |  |  |  |  |
| DH-H120-190 |  | H120 - Install Supplemental Steel (overhead support for strut/trapeze) | 6d | 2026-09-23 A | 2026-09-24 A | DC7.DH1200.MS.1000 SS, DH-G120-190 SS | 100% | 2026-10-10 | 2026-10-16 |  |  | HELIX | DH1200 |  |
| DH-H120-200 |  | H120 - Hang Trapeze System / Strut Racking | 7d | 2026-09-28 A | 2026-09-29 A | DH-H120-190 | 100% | 2026-10-21 | 2026-10-28 |  |  | HELIX | DH1200 |  |
| DH-H120-240 |  | H120 - Hang Starline Bus | 10d | 2026-12-02 | 2026-12-12 | DH-G120-240 SS, DH-H120-200 |  |  |  | 9d | 0d | HELIX | DH1200 |  |
| DH-H120-210 |  | H120 - Pull MC Cable from PDU to MTS | 15d | 2026-12-18 | 2027-01-08 | DH-G120-210 SS, DH-H120-200 |  |  |  | -21d | 0d | HELIX | DH1200 | BB |
| DH-H120-220 |  | H120 - HAC Aisle Structure Set by others | 3d | 2027-01-09 | 2027-01-12 | DH-H120-210 |  |  |  | -19d | 0d | HELIX | DH1200 |  |
| DH-H120-230 |  | H120 - HAC Aisle Light install | 6d | 2027-01-13 | 2027-01-19 | DH-G120-230 SS, DH-H120-220, PRC-LGT-60 |  |  |  | -19d | 0d | HELIX | DH1200 |  |
| DH-H120-250 |  | H120 - HAC Aisle Structure Raised by others | 1d | 2027-01-20 | 2027-01-20 | DH-H120-240, DH-H120-220, DH-H120-230 |  |  |  | -19d | 0d | HELIX | DH1200 |  |
| DH-H120-260 |  | H120 - Set MTS | 4d | 2027-01-21 | 2027-01-25 | DH-H120-250 |  |  |  | -19d | 0d | HELIX | DH1200 |  |
| DH-H120-310 |  | H120 - Set DH PQM | 4d | 2027-01-26 | 2027-01-29 | DH-H120-260 |  |  |  | -19d | 0d | HELIX | DH1200 |  |
| DH-H120-320 |  | H120 - Pipe Data Hall PQM | 6d | 2027-01-30 | 2027-02-05 | DH-H120-310 |  |  |  | -19d | 0d | HELIX | DH1200 |  |
| DH-H120-270 |  | H120 - Connect MC Cables to MTS | 6d | 2027-02-06 | 2027-02-12 | DH-H120-320, DH-H120-310, DH-H120-260 |  |  |  | -19d | 0d | HELIX | DH1200 |  |
| DH-H120-330 |  | H120 - Pull Wire for DH PQM | 3d | 2027-02-06 | 2027-02-09 | DH-H120-320 |  |  |  | -19d | 0d | HELIX | DH1200 |  |
| DH-H120-340 |  | H120 - Terminate DH PQM | 4d | 2027-02-10 | 2027-02-13 | DH-H120-330 |  |  |  | -19d | 0d | HELIX | DH1200 |  |
| DH-H120-280 |  | H120 - Terminate MC Cables at MTS | 7d | 2027-02-13 | 2027-02-20 | DH-H120-270 |  |  |  | -19d | 0d | HELIX | DH1200 |  |
| DH-H120-290 |  | H120 - Pull MC Cable from MTS to Starline | 3d | 2027-02-13 | 2027-02-16 | DH-H120-270 |  |  |  | -18d | 0d | HELIX | DH1200 |  |
| DH-H120-350 |  | H120 - HAC Lighting Switches / Emergency Relay at the same time when set MTS and PQM | 3d | 2027-02-15 | 2027-02-17 | DH-H120-340 |  |  |  | -19d | 0d | HELIX | DH1200 |  |
| DH-H120-300 |  | H120 - Terminate MC Cables at Starline | 3d | 2027-02-17 | 2027-02-19 | DH-H120-290, DH-H120-270 |  |  |  | -18d | 1d | HELIX | DH1200 |  |
| DH-H120-360 |  | H120 - Terminate Lighting Wiring | 3d | 2027-02-18 | 2027-02-20 | DH-H120-350 |  |  |  | -19d | 0d | HELIX | DH1200 |  |
| DH-H120-450 |  | H120 - QC 2.2 Checklist | 1d | 2027-02-22 | 2027-02-22 | DH-H120-360, DH-H120-300, DH-H120-280 |  |  |  | -19d | 0d | HELIX | DH1200 |  |

| ID | WBS | Activity | Duration | Start | Finish | Predecessors | Complete | Planned start | Planned finish | Total float | Free float | QTS - Subcontractor | QTS - AREA | QTS - DC7 |
| --- | --- | --- | --- | --- | --- | --- | --- | --- | --- | --- | --- | --- | --- | --- |
|  | 9 | **J120** |  | 2026-09-23 | 2027-02-22 |  |  |  |  |  |  |  |  |  |
| DH-J120-190 |  | J120 - Install Supplemental Steel (overhead support for strut/trapeze) | 6d | 2026-09-23 A | 2026-09-24 A | DC7.DH1200.MS.1000 SS, DH-H120-190 SS | 100% | 2026-10-10 | 2026-10-16 |  |  | HELIX | DH1200 |  |
| DH-J120-200 |  | J120 - Hang Trapeze System / Strut Racking | 7d | 2026-09-28 A | 2026-09-29 A | DH-J120-190 | 100% | 2026-10-21 | 2026-10-28 |  |  | HELIX | DH1200 |  |
| DH-J120-240 |  | J120 - Hang Starline Bus | 10d | 2026-12-02 | 2026-12-12 | DH-H120-240 SS, DH-J120-200 |  |  |  | 9d | 0d | HELIX | DH1200 |  |
| DH-J120-210 |  | J120 - Pull MC Cable from PDU to MTS | 15d | 2026-12-18 | 2027-01-08 | DH-H120-210 SS, DH-J120-200 |  |  |  | -21d | 0d | HELIX | DH1200 | BB |
| DH-J120-220 |  | J120 - HAC Aisle Structure Set by others | 3d | 2027-01-09 | 2027-01-12 | DH-J120-210 |  |  |  | -19d | 0d | HELIX | DH1200 |  |
| DH-J120-230 |  | J120 - HAC Aisle Light install | 6d | 2027-01-13 | 2027-01-19 | DH-H120-230 SS, DH-J120-220, PRC-LGT-60 |  |  |  | -19d | 0d | HELIX | DH1200 |  |
| DH-J120-250 |  | J120 - HAC Aisle Structure Raised by others | 1d | 2027-01-20 | 2027-01-20 | DH-J120-240, DH-J120-220, DH-J120-230 |  |  |  | -19d | 0d | HELIX | DH1200 |  |
| DH-J120-260 |  | J120 - Set MTS | 4d | 2027-01-21 | 2027-01-25 | DH-J120-250 |  |  |  | -19d | 0d | HELIX | DH1200 |  |
| DH-J120-310 |  | J120 - Set DH PQM | 4d | 2027-01-26 | 2027-01-29 | DH-J120-260 |  |  |  | -19d | 0d | HELIX | DH1200 |  |
| DH-J120-320 |  | J120 - Pipe Data Hall PQM | 6d | 2027-01-30 | 2027-02-05 | DH-J120-310 |  |  |  | -19d | 0d | HELIX | DH1200 |  |
| DH-J120-270 |  | J120 - Connect MC Cables to MTS | 6d | 2027-02-06 | 2027-02-12 | DH-J120-320, DH-J120-310, DH-J120-260 |  |  |  | -19d | 0d | HELIX | DH1200 |  |
| DH-J120-330 |  | J120 - Pull Wire for DH PQM | 3d | 2027-02-06 | 2027-02-09 | DH-J120-320 |  |  |  | -19d | 0d | HELIX | DH1200 |  |
| DH-J120-340 |  | J120 - Terminate DH PQM | 4d | 2027-02-10 | 2027-02-13 | DH-J120-330 |  |  |  | -19d | 0d | HELIX | DH1200 |  |
| DH-J120-280 |  | J120 - Terminate MC Cables at MTS | 7d | 2027-02-13 | 2027-02-20 | DH-J120-270 |  |  |  | -19d | 0d | HELIX | DH1200 |  |
| DH-J120-290 |  | J120 - Pull MC Cable from MTS to Starline | 3d | 2027-02-13 | 2027-02-16 | DH-J120-270 |  |  |  | -18d | 0d | HELIX | DH1200 |  |
| DH-J120-350 |  | J120 - HAC Lighting Switches / Emergency Relay at the same time when set MTS and PQM | 3d | 2027-02-15 | 2027-02-17 | DH-J120-340 |  |  |  | -19d | 0d | HELIX | DH1200 |  |
| DH-J120-300 |  | J120 - Terminate MC Cables at Starline | 3d | 2027-02-17 | 2027-02-19 | DH-J120-290, DH-J120-270 |  |  |  | -18d | 1d | HELIX | DH1200 |  |
| DH-J120-360 |  | J120 - Terminate Lighting Wiring | 3d | 2027-02-18 | 2027-02-20 | DH-J120-350 |  |  |  | -19d | 0d | HELIX | DH1200 |  |
| DH-J120-460 |  | J120 - QC 2.2 Checklist | 1d | 2027-02-22 | 2027-02-22 | DH-J120-360, DH-J120-300, DH-J120-280 |  |  |  | -19d | 0d | HELIX | DH1200 |  |
|  | 10 | **K120** |  | 2026-09-23 | 2027-02-22 |  |  |  |  |  |  |  |  |  |
| DH-K120-190 |  | K120 - Install Supplemental Steel (overhead support for strut/trapeze) | 6d | 2026-09-23 A | 2026-09-25 A | DC7.DH1200.MS.1000 SS, DH-J120-190 SS | 100% | 2026-10-10 | 2026-10-16 |  |  | HELIX | DH1200 |  |
| DH-K120-200 |  | K120 - Hang Trapeze System / Strut Racking | 7d | 2026-09-28 A | 2026-09-29 A | DH-K120-190 | 100% | 2026-10-17 | 2026-10-24 |  |  | HELIX | DH1200 |  |
| DH-K120-240 |  | K120 - Hang Starline Bus | 10d | 2026-12-02 | 2026-12-12 | DH-J120-240 SS, DH-K120-200 |  |  |  | 9d | 0d | HELIX | DH1200 |  |
| DH-K120-210 |  | K120 - Pull MC Cable from PDU to MTS | 15d | 2026-12-18 | 2027-01-08 | DH-J120-210 SS, DH-K120-200 |  |  |  | -21d | 0d | HELIX | DH1200 | BB |
| DH-K120-220 |  | K120 - HAC Aisle Structure Set by others | 3d | 2027-01-09 | 2027-01-12 | DH-K120-210 |  |  |  | -13d | 6d | HELIX | DH1200 |  |
| DH-K120-230 |  | K120 - HAC Aisle Light install | 6d | 2027-01-13 | 2027-01-19 | DH-J120-230 SS, PRC-LGT-60 |  |  |  | -19d | 0d | HELIX | DH1200 |  |
| DH-K120-250 |  | K120 - HAC Aisle Structure Raised by others | 1d | 2027-01-20 | 2027-01-20 | DH-K120-240, DH-K120-220, DH-K120-230 |  |  |  | -19d | 0d | HELIX | DH1200 |  |
| DH-K120-260 |  | K120 - Set MTS | 4d | 2027-01-21 | 2027-01-25 | DH-K120-250 |  |  |  | -19d | 0d | HELIX | DH1200 |  |
| DH-K120-310 |  | K120 - Set DH PQM | 4d | 2027-01-26 | 2027-01-29 | DH-K120-260 |  |  |  | -19d | 0d | HELIX | DH1200 |  |
| DH-K120-320 |  | K120 - Pipe Data Hall PQM | 6d | 2027-01-30 | 2027-02-05 | DH-K120-310 |  |  |  | -19d | 0d | HELIX | DH1200 |  |
| DH-K120-270 |  | K120 - Connect MC Cables to MTS | 6d | 2027-02-06 | 2027-02-12 | DH-K120-320, DH-K120-310, DH-K120-260 |  |  |  | -19d | 0d | HELIX | DH1200 |  |
| DH-K120-330 |  | K120 - Pull Wire for DH PQM | 3d | 2027-02-06 | 2027-02-09 | DH-K120-320 |  |  |  | -19d | 0d | HELIX | DH1200 |  |
| DH-K120-340 |  | K120 - Terminate DH PQM | 4d | 2027-02-10 | 2027-02-13 | DH-K120-330 |  |  |  | -19d | 0d | HELIX | DH1200 |  |
| DH-K120-280 |  | K120 - Terminate MC Cables at MTS | 7d | 2027-02-13 | 2027-02-20 | DH-K120-270 |  |  |  | -19d | 0d | HELIX | DH1200 |  |
| DH-K120-290 |  | K120 - Pull MC Cable from MTS to Starline | 3d | 2027-02-13 | 2027-02-16 | DH-K120-270 |  |  |  | -18d | 0d | HELIX | DH1200 |  |
| DH-K120-350 |  | K120 - HAC Lighting Switches / Emergency Relay at the same time when set MTS and PQM | 3d | 2027-02-15 | 2027-02-17 | DH-K120-340 |  |  |  | -19d | 0d | HELIX | DH1200 |  |
| DH-K120-300 |  | K120 - Terminate MC Cables at Starline | 3d | 2027-02-17 | 2027-02-19 | DH-K120-290, DH-K120-270 |  |  |  | -18d | 1d | HELIX | DH1200 |  |
| DH-K120-360 |  | K120 - Terminate Lighting Wiring | 3d | 2027-02-18 | 2027-02-20 | DH-K120-350 |  |  |  | -19d | 0d | HELIX | DH1200 |  |
| DH-K120-470 |  | K120 - QC 2.2 Checklist | 1d | 2027-02-22 | 2027-02-22 | DH-K120-360, DH-K120-300, DH-K120-280, DH120-FS-260 |  |  |  | -19d | 0d | HELIX | DH1200 |  |

| ID | WBS | Activity | Duration | Start | Finish | Predecessors | Complete | Planned start | Planned finish | Total float | Free float | Calendar | QTS - Subcontractor | QTS - AREA | QTS - DC7 | COMMENTS |
| --- | --- | --- | --- | --- | --- | --- | --- | --- | --- | --- | --- | --- | --- | --- | --- | --- |
|  | 12 | **FIRE STOPPING DH1200** |  | 2027-02-03 | 2027-02-18 |  |  |  |  |  |  |  |  |  |  |  |
| DH120-FS-250 |  | DH1200 // R to D -Install Firestopping | 6d | 2027-02-03 | 2027-02-09 | DH-D120-270 |  |  |  | -17d | 0d |  | HELIX | DH1200 |  |  |
| DH120-FS-270 |  | DH1200 // E to K -Install Firestopping | 6d | 2027-02-10 | 2027-02-16 | DH120-FS-250 |  |  |  | -17d | 0d |  | HELIX | DH1200 |  |  |
| DH120-FS-260 |  | DH1200 // - Firestopping inspection | 2d | 2027-02-17 | 2027-02-18 | DH120-FS-250, DH120-FS-250 FF, DH120-FS-270 |  |  |  | -17d | 2d |  | HELIX | DH1200 |  |  |
|  | 6 | **PDU GALLERY** |  | 2026-08-12 | 2027-01-16 |  |  |  |  |  |  |  |  |  |  |  |
| DH120-PDU-330 |  | DH1200 // PDU - Wall Framing (third party activity) | 1d | 2026-08-12 A | 2026-08-18 A | B1200100.1040 (other project) | 100% | 2026-10-13 | 2026-10-13 |  |  |  |  | DH1200 | BB |  |
| DH120-PDU-340 |  | DH1200 // PDU - Drywall Installation, painting, finishes (third party activity) | 1d | 2026-10-23 | 2026-10-23 | DH120-PDU-330, B1200100.1100 (other project) |  |  |  | 38d | 20d |  |  | DH1200 | BB | Scheduled to be completed by oct 24th |
| DH120-PDU-180 |  | DH1200 // PDU - Prefab UPS Skid (offsite assembly) | 1d | 2026-10-24 | 2026-10-24 | DC7.DH1200.MS.1000 SS, PR-1050 |  |  |  | 56d | 19d |  | HELIX | DH1200 |  |  |
| DH120-PDU-190 |  | DH1200 // PDU - Set UPS Skid - Transformers & Panels in PDU Gallery | 3d | 2026-11-17 | 2026-11-19 | DH120-PDU-340, DH120-PDU-180, DH110-PDU-040, PRC-PNL-130, PRC-PNL-180 |  |  |  | 37d | 6d |  | HELIX | DH1200 |  |  |
| DH120-PDU-230 |  | DH1200 // PDU - Pipe UPS Circuits / Branch Conduits to Data Hall (PQM, Goal Post, Admin IDF, ICPNL, TPQM) | 10d | 2026-11-24 | 2026-12-08 | DH120-PDU-340, DH110-PDU-070 |  |  |  | 12d | 0d |  | HELIX | DH1200 |  |  |
| DH120-PDU-310 |  | DH1200 // PDU - Pipe UPS Circuits / Branch Conduits in PDU Gallery (PQM, Goal Post, Admin IDF, ICPNL, TPQM) | 10d | 2026-12-09 | 2026-12-19 | DH120-PDU-340, DH120-PDU-230 |  |  |  | 12d | 0d |  | HELIX | DH1200 |  |  |
| DH120-PDU-270 |  | DH1200 // PDU - RP Panel Installed | 1d | 2026-12-11 | 2026-12-11 | DH110-PDU-120, PRC-PNL-110 |  |  |  | 18d | 0d |  |  | DH1200 | BB |  |
| DH120-PDU-280 |  | DH1200 // PDU - Install pipe cord reel circuits | 10d | 2026-12-12 | 2026-12-23 | DH120-PDU-270, DH110-PDU-120 |  |  |  | 18d | 0d |  | HELIX | DH1200 |  |  |
| DH120-PDU-200 |  | DH1200 // PDU - Pipe Feeder from MOD Panel to UPS Transformer | 3d | 2026-12-21 | 2026-12-23 | DH120-PDU-190, DH120-PDU-340, DH120-PDU-310 |  |  |  | 14d | 0d |  | HELIX | DH1200 |  |  |
| DH120-PDU-240 |  | DH1200 // PDU - Pull UPS Circuits | 6d | 2026-12-21 | 2026-12-29 | DH120-PDU-310, DH120-PDU-230 |  |  |  | 12d | 0d |  |  | DH1200 | BB |  |
| DH120-PDU-210 |  | DH1200 // PDU - Pull Feeder from MOD Panel to UPS Transformer | 2d | 2026-12-24 | 2026-12-28 | DH120-PDU-200 |  |  |  | 14d | 0d |  | HELIX | DH1200 |  |  |
| DH120-PDU-290 |  | DH1200 // PDU - Pull wire for cord reel circuits | 4d | 2026-12-24 | 2026-12-30 | DH120-PDU-280 |  |  |  | 18d | 0d |  | HELIX | DH1200 |  |  |
| DH120-PDU-220 |  | DH1200 // PDU - Terminate Feeder at MOD Panel and UPS Transformer | 1d | 2026-12-29 | 2026-12-29 | DH120-PDU-210 |  |  |  | 14d | 0d |  | HELIX | DH1200 |  |  |
| DH120-PDU-250 |  | DH1200 // PDU - Terminate UPS Branch Circuits | 4d | 2026-12-30 | 2027-01-05 | DH120-PDU-240, DH120-PDU-190 |  |  |  | 12d | 0d |  | HELIX | DH1200 |  |  |
| DH120-PDU-300 |  | DH1200 // PDU - Install cord reel and Terminate | 6d | 2026-12-31 | 2027-01-08 | DH120-PDU-290 |  |  |  | 18d | 0d |  | HELIX | DH1200 |  |  |
| DH120-PDU-260 |  | DH1200 // PDU - Install and Terminate "Goal Post" Receptacles | 3d | 2027-01-06 | 2027-01-08 | DH120-PDU-250 |  |  |  | 12d | 0d |  | HELIX | DH1200 |  |  |
| DH120-PDU-350 |  | DH1200 // PDU -Install Firestopping | 4d | 2027-01-09 | 2027-01-13 | DH120-PDU-260 |  |  |  | 12d | 0d | IAD192 - 6 Day w/Holidays | HELIX | DH1200 |  |  |
| DH120-PDU-360 |  | DH1200 // PDU -Firestopping inspection | 2d | 2027-01-14 | 2027-01-15 | DH120-PDU-350 |  |  |  | 12d | 0d | IAD192 - 6 Day w/Holidays | HELIX | DH1200 |  |  |
| DH120-PDU-320 |  | DH1200 // PDU - QC 2.2 Checklist | 1d | 2027-01-16 | 2027-01-16 | DH120-PDU-260, DH120-PDU-300, DH120-PDU-220, DH120-PDU-360 |  |  |  | 12d | 31d |  | HELIX | DH1200 |  |  |

| ID | WBS | Activity | Duration | Start | Finish | Predecessors | Total float | Free float | Calendar | QTS - Subcontractor | QTS - AREA | QTS - DC7 |
| --- | --- | --- | --- | --- | --- | --- | --- | --- | --- | --- | --- | --- |
|  | 5 | **ELECTRICAL ROOMS** |  | 2026-10-28 | 2027-01-22 |  |  |  |  |  |  |  |
|  | 1 | **LINE-UPS** |  | 2026-10-28 | 2027-01-22 |  |  |  |  |  |  |  |
|  | 11 | **R120** |  | 2026-12-18 | 2027-01-07 |  |  |  |  |  |  |  |
| ER-R120-890 |  | R120 - Land and terminate wiring on the PDU | 3d | 2026-12-18 | 2026-12-21 | ER-R110-170, DH-D120-210 | 7d | 0d | IAD192 - 6 Day w/Holidays | HELIX | DH1200 |  |
| ER-R120-780 |  | R120 - Pipe power circuit to ER PQM | 2d | 2026-12-22 | 2026-12-23 | ER-R110-010, ER-K110-040, ER-R120-890 | 12d | 0d |  | HELIX | DH1200 |  |
| ER-R120-790 |  | R120 - Reserve Line Equipment Set | 1d | 2026-12-24 | 2026-12-24 | ER-R120-780 | 12d | 0d |  | HELIX | DH1200 |  |
| ER-R120-800 |  | R120 - Set ER PQM | 1d | 2026-12-28 | 2026-12-28 | ER-R120-790, ER-K110-020 | 12d | 0d |  | HELIX | DH1200 |  |
| ER-R120-840 |  | R120 - Set Inhibitor Panel | 1d | 2026-12-28 | 2026-12-28 | ER-R120-790, PRC-INH-50 | 20d | 0d |  | HELIX | DH1200 |  |
| ER-R120-810 |  | R120 - Pipe CT&VT PQM control (run conduits) | 2d | 2026-12-29 | 2026-12-30 | ER-R120-800, ER-K110-030 | 23d | 0d |  | HELIX | DH1200 |  |
| ER-R120-850 |  | R120 - Pipe Inhibitor Panel (overhead run w/ base build) | 1d | 2026-12-29 | 2026-12-29 | ER-R120-840 | 20d | 0d |  |  | DH1200 | BB |
| ER-R120-860 |  | R120 - Pull Wire for Inhibitor Panel | 2d | 2026-12-30 | 2026-12-31 | ER-R120-850 | 20d | 0d |  | HELIX | DH1200 |  |
| ER-R120-820 |  | R120 - Pull Wire for ER PQM | 1d | 2026-12-31 | 2026-12-31 | ER-R120-810 | 23d | 0d |  | HELIX | DH1200 |  |
| ER-R120-830 |  | R120 - Terminate ER PQM | 1d | 2027-01-04 | 2027-01-04 | ER-R120-820 | 23d | 42d |  | HELIX | DH1200 |  |
| ER-R120-870 |  | R120 - Terminate Inhibitor Panel | 3d | 2027-01-04 | 2027-01-06 | ER-R120-860 | 20d | 0d |  | HELIX | DH1200 |  |
| ER-R120-880 |  | R120 - QC 2.2 Checklist | 1d | 2027-01-07 | 2027-01-07 | ER-R120-870, ER-R120-890 | 20d | 39d |  | HELIX | DH1200 |  |
|  | 1 | **A120** |  | 2026-10-28 | 2027-01-15 |  |  |  |  |  |  |  |
| ER-A120-490 |  | A120 - Electric Room (ER) Skid Set | 1d | 2026-10-28 | 2026-10-28 | DC7.DH1200.MS.1000 SS, ER.5101.3049 | 43d | 0d |  |  | DH1200 | BB |
| ER-A120-550 |  | A120 - Land and terminate wiring on the PDU | 3d | 2026-12-18 | 2026-12-21 | ER-A120-490, ER-R120-890 SS | 7d | 0d | IAD192 - 6 Day w/Holidays | HELIX | DH1200 |  |
| ER-A120-480 |  | A120 - Pipe power circuit to ER PQM | 4d | 2026-12-22 | 2026-12-28 | ER-A120-550 | 13d | 0d |  | HELIX | DH1200 |  |
| ER-A120-500 |  | A120 - Set ER PQM (predecessor skid set) | 1d | 2026-12-28 | 2026-12-28 | ER-A120-490, ER-R120-800 SS | 12d | 0d |  | HELIX | DH1200 |  |
| ER-A120-510 |  | A120 - Pipe CT&VT PQM control (run conduits) | 6d | 2026-12-29 | 2027-01-06 | ER-A120-480 | 13d | 0d |  | HELIX | DH1200 |  |
| ER-A120-520 |  | A120 - Pull Wire for ER PQM | 3d | 2027-01-07 | 2027-01-09 | ER-A120-480, ER-A120-510, ER-A120-500 | 13d | 0d |  | HELIX | DH1200 |  |
| ER-A120-530 |  | A120 - Terminate ER PQM | 4d | 2027-01-11 | 2027-01-14 | ER-A120-520 | 13d | 0d |  | HELIX | DH1200 |  |
| ER-A120-540 |  | A120 - QC 2.2 Checklist | 1d | 2027-01-15 | 2027-01-15 | ER-A120-530, ER-A120-550 | 13d | 32d |  | HELIX | DH1200 |  |

| ID | WBS | Activity | Duration | Start | Finish | Predecessors | Total float | Free float | Calendar | QTS - AREA | QTS - DC7 | QTS - Subcontractor |
| --- | --- | --- | --- | --- | --- | --- | --- | --- | --- | --- | --- | --- |
|  | 2 | **B120** |  | 2026-10-29 | 2027-01-15 |  |  |  |  |  |  |  |
| ER-B120-500 |  | B120 - Electric Room (ER) Skid Set | 1d | 2026-10-29 | 2026-10-29 | ER-A120-490 | 43d | 0d |  | DH1200 | BB |  |
| ER-B120-560 |  | B120 - Land and terminate wiring on the PDU | 3d | 2026-12-18 | 2026-12-21 | ER-B120-500, ER-A120-550 SS | 7d | 0d | IAD192 - 6 Day w/Holidays | DH1200 |  | HELIX |
| ER-B120-490 |  | B120 - Pipe power circuit to ER PQM | 4d | 2026-12-22 | 2026-12-28 | ER-B120-560 | 13d | 0d |  | DH1200 |  | HELIX |
| ER-B120-510 |  | B120 - Set ER PQM (predecessor skid set) | 1d | 2026-12-28 | 2026-12-28 | ER-B120-500, ER-A120-500 SS | 12d | 0d |  | DH1200 |  | HELIX |
| ER-B120-520 |  | B120 - Pipe CT&VT PQM control (run conduits) | 6d | 2026-12-29 | 2027-01-06 | ER-B120-490 | 13d | 0d |  | DH1200 |  | HELIX |
| ER-B120-530 |  | B120 - Pull Wire for ER PQM | 3d | 2027-01-07 | 2027-01-09 | ER-B120-490, ER-B120-520, ER-B120-510 | 13d | 0d |  | DH1200 |  | HELIX |
| ER-B120-540 |  | B120 - Terminate ER PQM | 4d | 2027-01-11 | 2027-01-14 | ER-B120-530 | 13d | 0d |  | DH1200 |  | HELIX |
| ER-B120-550 |  | B120 - QC 2.2 Checklist | 1d | 2027-01-15 | 2027-01-15 | ER-B120-540, ER-B120-560 | 13d | 32d |  | DH1200 |  | HELIX |
|  | 3 | **C120** |  | 2026-10-30 | 2027-01-15 |  |  |  |  |  |  |  |
| ER-C120-510 |  | C120 - Electric Room (ER) Skid Set | 1d | 2026-10-30 | 2026-10-30 | ER-B120-500 | 43d | 0d |  | DH1200 | BB |  |
| ER-C120-570 |  | C120 - Land and terminate wiring on the PDU | 3d | 2026-12-18 | 2026-12-21 | ER-C120-510, ER-B120-560 SS | 7d | 0d | IAD192 - 6 Day w/Holidays | DH1200 |  | HELIX |
| ER-C120-500 |  | C120 - Pipe power circuit to ER PQM | 4d | 2026-12-22 | 2026-12-28 | ER-C120-570 | 13d | 0d |  | DH1200 |  | HELIX |
| ER-C120-520 |  | C120 - Set ER PQM (predecessor skid set) | 1d | 2026-12-28 | 2026-12-28 | ER-C120-510, ER-B120-510 SS | 12d | 0d |  | DH1200 |  | HELIX |
| ER-C120-530 |  | C120 - Pipe CT&VT PQM control (run conduits) | 6d | 2026-12-29 | 2027-01-06 | ER-C120-500 | 13d | 0d |  | DH1200 |  | HELIX |
| ER-C120-540 |  | C120 - Pull Wire for ER PQM | 3d | 2027-01-07 | 2027-01-09 | ER-C120-500, ER-C120-530, ER-C120-520 | 13d | 0d |  | DH1200 |  | HELIX |
| ER-C120-550 |  | C120 - Terminate ER PQM | 4d | 2027-01-11 | 2027-01-14 | ER-C120-540 | 13d | 0d |  | DH1200 |  | HELIX |
| ER-C120-560 |  | C120 - QC 2.2 Checklist | 1d | 2027-01-15 | 2027-01-15 | ER-C120-550, ER-C120-570 | 13d | 32d |  | DH1200 |  | HELIX |
|  | 4 | **D120** |  | 2026-10-31 | 2027-01-15 |  |  |  |  |  |  |  |
| ER-D120-520 |  | D120 - Electric Room (ER) Skid Set | 1d | 2026-10-31 | 2026-10-31 | ER-C120-510 | 43d | 0d |  | DH1200 | BB |  |
| ER-D120-580 |  | D120 - Land and terminate wiring on the PDU | 3d | 2026-12-18 | 2026-12-21 | ER-D120-520, ER-C120-570 SS | 7d | 0d | IAD192 - 6 Day w/Holidays | DH1200 |  | HELIX |
| ER-D120-510 |  | D120 - Pipe power circuit to ER PQM | 4d | 2026-12-22 | 2026-12-28 | ER-D120-580 | 13d | 0d |  | DH1200 |  | HELIX |
| ER-D120-530 |  | D120 - Set ER PQM (predecessor skid set) | 1d | 2026-12-28 | 2026-12-28 | ER-D120-520, ER-C120-520 SS | 12d | 0d |  | DH1200 |  | HELIX |
| ER-D120-540 |  | D120 - Pipe CT&VT PQM control (run conduits) | 6d | 2026-12-29 | 2027-01-06 | ER-D120-510 | 13d | 0d |  | DH1200 |  | HELIX |
| ER-D120-550 |  | D120 - Pull Wire for ER PQM | 3d | 2027-01-07 | 2027-01-09 | ER-D120-510, ER-D120-540, ER-D120-530 | 13d | 0d |  | DH1200 |  | HELIX |
| ER-D120-560 |  | D120 - Terminate ER PQM | 4d | 2027-01-11 | 2027-01-14 | ER-D120-550 | 13d | 0d |  | DH1200 |  | HELIX |
| ER-D120-570 |  | D120 - QC 2.2 Checklist | 1d | 2027-01-15 | 2027-01-15 | ER-D120-560, ER-D120-580 | 13d | 32d |  | DH1200 |  | HELIX |

| ID | WBS | Activity | Duration | Start | Finish | Predecessors | Total float | Free float | Calendar | QTS - AREA | QTS - DC7 | QTS - Subcontractor |
| --- | --- | --- | --- | --- | --- | --- | --- | --- | --- | --- | --- | --- |
|  | 5 | **E120** |  | 2026-11-02 | 2027-01-15 |  |  |  |  |  |  |  |
| ER-E120-530 |  | E120 - Electric Room (ER) Skid Set | 1d | 2026-11-02 | 2026-11-02 | ER-D120-520 | 43d | 0d |  | DH1200 | BB |  |
| ER-E120-590 |  | E120 - Land and terminate wiring on the PDU | 3d | 2026-12-18 | 2026-12-21 | ER-E120-530, ER-D120-580 SS | 7d | 0d |  | DH1200 |  | HELIX |
| ER-E120-520 |  | E120 - Pipe power circuit to ER PQM | 4d | 2026-12-22 | 2026-12-28 | ER-E120-590 | 7d | 0d |  | DH1200 |  | HELIX |
| ER-E120-540 |  | E120 - Set ER PQM (predecessor skid set) | 1d | 2026-12-28 | 2026-12-28 | ER-E120-530, ER-D120-530 SS | 12d | 0d |  | DH1200 |  | HELIX |
| ER-E120-550 |  | E120 - Pipe CT&VT PQM control (run conduits) | 6d | 2026-12-29 | 2027-01-06 | ER-E120-520 | 7d | 0d |  | DH1200 |  | HELIX |
| ER-E120-560 |  | E120 - Pull Wire for ER PQM | 3d | 2027-01-07 | 2027-01-09 | ER-E120-520, ER-E120-550, ER-E120-540 | 13d | 0d |  | DH1200 |  | HELIX |
| ER-E120-570 |  | E120 - Terminate ER PQM | 4d | 2027-01-11 | 2027-01-14 | ER-E120-560 | 13d | 0d |  | DH1200 |  | HELIX |
| ER-E120-580 |  | E120 - QC 2.2 Checklist | 1d | 2027-01-15 | 2027-01-15 | ER-E120-570, ER-E120-590 | 13d | 32d |  | DH1200 |  | HELIX |
|  | 6 | **F120** |  | 2026-11-03 | 2027-01-22 |  |  |  |  |  |  |  |
| ER-F120-540 |  | F120 - Electric Room (ER) Skid Set | 1d | 2026-11-03 | 2026-11-03 | ER-E120-530, ER.5101.3054 | 53d | 0d |  | DH1200 | BB |  |
| ER-F120-550 |  | F120 - Set ER PQM (predecessor skid set) | 1d | 2026-12-29 | 2026-12-29 | ER-F120-540, ER-E120-540 | 12d | 0d |  | DH1200 |  | HELIX |
| ER-F120-530 |  | F120 - Pipe power circuit to ER PQM | 4d | 2026-12-30 | 2027-01-05 | ER-F120-550, ER-E120-520 | 12d | 0d |  | DH1200 |  | HELIX |
| ER-F120-560 |  | F120 - Pipe CT&VT PQM control (run conduits) | 6d | 2027-01-07 | 2027-01-13 | ER-F120-550, ER-F120-530 SS, ER-E120-550 | 7d | 0d |  | DH1200 |  | HELIX |
| ER-F120-600 |  | F120 - Land and terminate wiring on the PDU | 3d | 2027-01-09 | 2027-01-12 | ER-F120-540, ER-E120-590, DH-K120-210 | 15d | 0d |  | DH1200 |  | HELIX |
| ER-F120-570 |  | F120 - Pull Wire for ER PQM | 3d | 2027-01-14 | 2027-01-16 | ER-F120-530, ER-F120-560 | 7d | 0d |  | DH1200 |  | HELIX |
| ER-F120-580 |  | F120 - Terminate ER PQM | 4d | 2027-01-18 | 2027-01-21 | ER-F120-570 | 7d | 0d |  | DH1200 |  | HELIX |
| ER-F120-590 |  | F120 - QC 2.2 Checklist | 1d | 2027-01-22 | 2027-01-22 | ER-F120-580, ER-F120-600 | 7d | 26d |  | DH1200 |  | HELIX |
|  | 7 | **G120** |  | 2026-11-04 | 2027-01-22 |  |  |  |  |  |  |  |
| ER-G120-550 |  | G120 - Electric Room (ER) Skid Set | 1d | 2026-11-04 | 2026-11-04 | ER-F120-540 | 53d | 0d |  | DH1200 | BB |  |
| ER-G120-560 |  | G120 - Set ER PQM (predecessor skid set) | 1d | 2026-12-29 | 2026-12-29 | ER-G120-550, ER-F120-550 SS | 12d | 0d |  | DH1200 |  | HELIX |
| ER-G120-540 |  | G120 - Pipe power circuit to ER PQM | 4d | 2026-12-30 | 2027-01-05 | ER-F120-530 SS, ER-G120-560 | 14d | 0d |  | DH1200 |  | HELIX |
| ER-G120-570 |  | G120 - Pipe CT&VT PQM control (run conduits) | 6d | 2027-01-07 | 2027-01-13 | ER-G120-560, ER-F120-560 SS | 7d | 0d |  | DH1200 |  | HELIX |
| ER-G120-610 |  | G120 - Land and terminate wiring on the PDU | 3d | 2027-01-09 | 2027-01-12 | ER-G120-550, ER-F120-600 SS | 15d | 0d | IAD192 - 6 Day w/Holidays | DH1200 |  | HELIX |
| ER-G120-580 |  | G120 - Pull Wire for ER PQM | 3d | 2027-01-14 | 2027-01-16 | ER-G120-540, ER-G120-570 | 7d | 0d |  | DH1200 |  | HELIX |
| ER-G120-590 |  | G120 - Terminate ER PQM | 4d | 2027-01-18 | 2027-01-21 | ER-G120-580 | 7d | 0d |  | DH1200 |  | HELIX |
| ER-G120-600 |  | G120 - QC 2.2 Checklist | 1d | 2027-01-22 | 2027-01-22 | ER-G120-590, ER-G120-610 | 7d | 26d |  | DH1200 |  | HELIX |

| ID | WBS | Activity | Duration | Start | Finish | Predecessors | Total float | Free float | Calendar | QTS - AREA | QTS - DC7 | QTS - Subcontractor |
| --- | --- | --- | --- | --- | --- | --- | --- | --- | --- | --- | --- | --- |
|  | 8 | **H120** |  | 2026-11-04 | 2027-01-22 |  |  |  |  |  |  |  |
| ER-H120-560 |  | H120 - Electric Room (ER) Skid Set | 1d | 2026-11-04 | 2026-11-04 | ER-G120-550 SS | 53d | 0d |  | DH1200 | BB |  |
| ER-H120-570 |  | H120 - Set ER PQM (predecessor skid set) | 1d | 2026-12-29 | 2026-12-29 | ER-H120-560, ER-G120-560 SS | 12d | 0d |  | DH1200 |  | HELIX |
| ER-H120-550 |  | H120 - Pipe power circuit to ER PQM | 4d | 2026-12-30 | 2027-01-05 | ER-G120-540 SS, ER-H120-570 | 14d | 0d |  | DH1200 |  | HELIX |
| ER-H120-580 |  | H120 - Pipe CT&VT PQM control (run conduits) | 6d | 2027-01-07 | 2027-01-13 | ER-H120-570, ER-G120-570 SS | 7d | 0d |  | DH1200 |  | HELIX |
| ER-H120-620 |  | H120 - Land and terminate wiring on the PDU | 3d | 2027-01-09 | 2027-01-12 | ER-H120-560, ER-G120-610 SS | 15d | 0d | IAD192 - 6 Day w/Holidays | DH1200 |  | HELIX |
| ER-H120-590 |  | H120 - Pull Wire for ER PQM | 3d | 2027-01-14 | 2027-01-16 | ER-H120-550, ER-H120-580 | 7d | 0d |  | DH1200 |  | HELIX |
| ER-H120-600 |  | H120 - Terminate ER PQM | 4d | 2027-01-18 | 2027-01-21 | ER-H120-590 | 7d | 0d |  | DH1200 |  | HELIX |
| ER-H120-610 |  | H120 - QC 2.2 Checklist | 1d | 2027-01-22 | 2027-01-22 | ER-H120-600, ER-H120-620 | 7d | 26d |  | DH1200 |  | HELIX |
|  | 9 | **J120** |  | 2026-11-04 | 2027-01-22 |  |  |  |  |  |  |  |
| ER-J120-570 |  | J120 - Electric Room (ER) Skid Set | 1d | 2026-11-04 | 2026-11-04 | ER-H120-560 SS | 53d | 0d |  | DH1200 | BB |  |
| ER-J120-580 |  | J120 - Set ER PQM (predecessor skid set) | 1d | 2026-12-29 | 2026-12-29 | ER-J120-570, ER-H120-570 SS | 12d | 0d |  | DH1200 |  | HELIX |
| ER-J120-560 |  | J120 - Pipe power circuit to ER PQM | 4d | 2026-12-30 | 2027-01-05 | ER-H120-550 SS, ER-J120-580 | 14d | 0d |  | DH1200 |  | HELIX |
| ER-J120-590 |  | J120 - Pipe CT&VT PQM control (run conduits) | 6d | 2027-01-07 | 2027-01-13 | ER-J120-580, ER-H120-580 SS | 7d | 0d |  | DH1200 |  | HELIX |
| ER-J120-630 |  | J120 - Land and terminate wiring on the PDU | 3d | 2027-01-09 | 2027-01-12 | ER-J120-570, ER-H120-620 SS | 15d | 0d | IAD192 - 6 Day w/Holidays | DH1200 |  | HELIX |
| ER-J120-600 |  | J120 - Pull Wire for ER PQM | 3d | 2027-01-14 | 2027-01-16 | ER-J120-560, ER-J120-590 | 7d | 0d |  | DH1200 |  | HELIX |
| ER-J120-610 |  | J120 - Terminate ER PQM | 4d | 2027-01-18 | 2027-01-21 | ER-J120-600 | 7d | 0d |  | DH1200 |  | HELIX |
| ER-J120-620 |  | J120 - QC 2.2 Checklist | 1d | 2027-01-22 | 2027-01-22 | ER-J120-610, ER-J120-630 | 7d | 26d |  | DH1200 |  | HELIX |
|  | 10 | **K120** |  | 2026-11-04 | 2027-01-22 |  |  |  |  |  |  |  |
| ER-K120-580 |  | K120 - Electric Room (ER) Skid Set | 1d | 2026-11-04 | 2026-11-04 | ER-J120-570 SS | 53d | 41d |  | DH1200 | BB |  |
| ER-K120-590 |  | K120 - Set ER PQM (predecessor skid set) | 1d | 2026-12-29 | 2026-12-29 | ER-K120-580, ER-J120-580 SS | 12d | 0d |  | DH1200 |  | HELIX |
| ER-K120-570 |  | K120 - Pipe power circuit to ER PQM | 4d | 2026-12-30 | 2027-01-05 | ER-J120-560 SS, ER-K120-590 | 14d | 7d |  | DH1200 |  | HELIX |
| ER-K120-600 |  | K120 - Pipe CT&VT PQM control (run conduits) | 6d | 2027-01-07 | 2027-01-13 | ER-K120-590, ER-J120-590 SS | 7d | 0d |  | DH1200 |  | HELIX |
| ER-K120-640 |  | K120 - Land and terminate wiring on the PDU | 3d | 2027-01-09 | 2027-01-12 | ER-K120-580, ER-J120-630 SS | 15d | 8d | IAD192 - 6 Day w/Holidays | DH1200 |  | HELIX |
| ER-K120-610 |  | K120 - Pull Wire for ER PQM | 3d | 2027-01-14 | 2027-01-16 | ER-K120-570, ER-K120-600 | 7d | 0d |  | DH1200 |  | HELIX |
| ER-K120-620 |  | K120 - Terminate ER PQM | 4d | 2027-01-18 | 2027-01-21 | ER-K120-610 | 7d | 0d |  | DH1200 |  | HELIX |
| ER-K120-630 |  | K120 - QC 2.2 Checklist | 1d | 2027-01-22 | 2027-01-22 | ER-K120-620, ER-K120-640 | 7d | 26d |  | DH1200 |  | HELIX |

| ID | WBS | Activity | Type | Duration | Start | Finish | Predecessors | Complete | Planned start | Planned finish | Total float | Free float | Constraint | Calendar | QTS - Subcontractor | QTS - AREA | MSP Activity ID | QTS - DASH | QTS - Resp | COMMENTS | QTS - DC7 |
| --- | --- | --- | --- | --- | --- | --- | --- | --- | --- | --- | --- | --- | --- | --- | --- | --- | --- | --- | --- | --- | --- |
|  | 12 | **FIRE STOPPING** |  |  | 2027-01-15 | 2027-01-21 |  |  |  |  |  |  |  |  |  |  |  |  |  |  |  |
| DH120-ER-220 |  | DH1200 // ER -Install Firestopping |  | 4d | 2027-01-15 | 2027-01-19 | DH110-ER-210, ER-E120-570 |  |  |  | 30d | 0d |  |  | HELIX | DH1200 |  |  |  |  |  |
| DH120-ER-230 |  | DH1200 // ER - Firestopping inspection |  | 2d | 2027-01-20 | 2027-01-21 | DH120-ER-220 |  |  |  | 30d | 26d |  |  | HELIX | DH1200 |  |  |  |  |  |
|  | 2 | **COMISSIONING BY OTHERS** |  |  | 2027-02-23 | 2027-05-26 |  |  |  |  |  |  |  |  |  |  |  |  |  |  |  |
| CX-DH120-40 |  | DH1200 L3 Cx electrical, Mechanical FLS |  | 40d | 2027-02-23 | 2027-04-09 | DC7.DH1200.MS.1020 |  |  |  | -19d | 0d |  |  | HELIX | DH1200 |  |  |  |  |  |
| CX-DH120-50 |  | DH1200 L4 CxA |  | 25d | 2027-04-10 | 2027-05-08 | CX-DH120-40, CX-DH120-40 FF |  |  |  | -19d | 0d |  |  | HELIX | DH1200 |  |  |  |  |  |
| CX-DH120-60 |  | DH1200 L5 CxA IST |  | 15d | 2027-05-10 | 2027-05-26 | CX-DH120-50 |  |  |  | -19d | 0d |  |  | HELIX | DH1200 |  |  |  |  |  |
|  | 5 | **DH 1300** |  |  | 2026-09-17 | 2027-07-01 |  |  |  |  |  |  |  |  |  |  |  |  |  |  |  |
|  | 1 | **SKID INSTALATION DH1300 FROM TFO SCHEDULE** |  |  | 2026-11-02 | 2027-02-16 |  |  |  |  |  |  |  |  |  |  |  |  |  |  |  |
| DH.1300.3069 |  | DH1300/Electrical Room #5301 // DH1300 - OFCI Skid Ship Date (11/2/2026) First Shipment | milestone | 0d | 2026-11-02 | 2026-11-02 | DH.1300.3069 (other project) FF |  |  |  | 60d | 66d | finish on or after 2026-11-02 | Calendar 01 - 5 Day w/holidays (No Pats Day) | HELIX | DH1300 | 1191 | ER |  |  |  |
| DH.1300.3071 |  | DH1300/Electrical Room #5304 // DH1300 - OFCI Skid Ship Date (11/7/2026) 2ND Shipment | milestone | 0d | 2026-11-09 | 2026-11-09 | DH.1300.3071 (other project) FF |  |  |  | 64d | 63d | finish on or after 2026-11-07 | Calendar 01 - 5 Day w/holidays (No Pats Day) | HELIX | DH1300 | 1191 | ER |  |  |  |
| ER.5101.3055 |  | DH1300/Electrical Room #5301 // Set Skid - SKID-A130 |  | 1d | 2027-02-10 | 2027-02-10 | DH.1300.3069, ER.5101.3055 (other project) |  |  |  | -6d | 0d | start on or after 2027-02-10 | Calendar 01 - 5 Day w/holidays (No Pats Day) | HELIX | DH1300 | 1107 | ER | TBD |  |  |
| ER.5101.3056 |  | DH1300/Electrical Room #5301 // Set Skid - SKID-B130 |  | 1d | 2027-02-10 | 2027-02-10 | ER.5101.3055 SS, ER.5101.3056 (other project) |  |  |  | -6d | 0d | start on or after 2027-02-10 | Calendar 01 - 5 Day w/holidays (No Pats Day) | HELIX | DH1300 | 1107 | ER | TBD |  |  |
| ER.5101.3057 |  | DH1300/Electrical Room #5301 // Set Skid - SKID-C130 |  | 1d | 2027-02-10 | 2027-02-10 | ER.5101.3056 SS, ER.5101.3057 (other project) |  |  |  | -6d | 1d | start on or after 2027-02-10 | Calendar 01 - 5 Day w/holidays (No Pats Day) | HELIX | DH1300 | 1107 | ER | TBD |  |  |
| ER.5101.3058 |  | DH1300/Electrical Room #5301 // Set Skid - SKID-D130 |  | 1d | 2027-02-11 | 2027-02-11 | ER.5101.3057 SS, ER.5101.3058 (other project) |  |  |  | -7d | 0d | start on or after 2027-02-11 | Calendar 01 - 5 Day w/holidays (No Pats Day) | HELIX | DH1300 | 1107 | ER | TBD |  |  |
| ER.5101.3059 |  | DH1300/Electrical Room #5301 // Set Skid - SKID-E130 |  | 1d | 2027-02-11 | 2027-02-11 | ER.5101.3058 SS, ER.5101.3059 (other project) |  |  |  | -7d | 0d | start on or after 2027-02-11 | Calendar 01 - 5 Day w/holidays (No Pats Day) | HELIX | DH1300 | 1107 | ER | TBD |  |  |
| ER.5101.3060 |  | DH1300/Electrical Room #5304 // Set Skid - SKID-F130 |  | 1d | 2027-02-11 | 2027-02-11 | DH.1300.3071, ER.5101.3060 (other project) |  |  |  | 1d |  | start on or after 2027-02-11 | Calendar 01 - 5 Day w/holidays (No Pats Day) | HELIX | DH1300 | 1107 | ER | TBD |  |  |
| ER.5101.3061 |  | DH1300/Electrical Room #5304 // Set Skid - SKID-G130 |  | 1d | 2027-02-12 | 2027-02-12 | ER.5101.3060 SS, ER.5101.3061 (other project) |  |  |  | 0d |  | start on or after 2027-02-12 | Calendar 01 - 5 Day w/holidays (No Pats Day) | HELIX | DH1300 | 1107 | ER | TBD |  |  |
| ER.5101.3062 |  | DH1300/Electrical Room #5304 // Set Skid - SKID-H130 |  | 1d | 2027-02-12 | 2027-02-12 | ER.5101.3061 SS, ER.5101.3062 (other project) |  |  |  | 0d |  | start on or after 2027-02-12 | Calendar 01 - 5 Day w/holidays (No Pats Day) | HELIX | DH1300 | 1107 | ER | TBD |  |  |
| ER.5101.3063 |  | DH1300/Electrical Room #5304 // Set Skid - SKID-J130 |  | 1d | 2027-02-12 | 2027-02-12 | ER.5101.3062 SS, ER.5101.3063 (other project) |  |  |  | 0d | 1d | start on or after 2027-02-12 | Calendar 01 - 5 Day w/holidays (No Pats Day) | HELIX | DH1300 | 1107 | ER | TBD |  |  |
| ER.5101.3064 |  | DH1300/Electrical Room #5304 // Set Skid - SKID-K130 |  | 1d | 2027-02-16 | 2027-02-16 | ER.5101.3063 SS, ER.5101.3064 (other project) |  |  |  | -1d | 1d | start on or after 2027-02-15 | Calendar 01 - 5 Day w/holidays (No Pats Day) | HELIX | DH1300 | 1107 | ER | TBD |  |  |
|  | 4 | **DATA HALL** |  |  | 2026-09-28 | 2027-03-29 |  |  |  |  |  |  |  |  |  |  |  |  |  |  |  |
|  | 1 | **LINE-UPS** |  |  | 2026-09-28 | 2027-03-29 |  |  |  |  |  |  |  |  |  |  |  |  |  |  |  |
|  | 1 | **A130** |  |  | 2026-09-28 | 2027-03-11 |  |  |  |  |  |  |  |  |  |  |  |  |  |  |  |
| DH-A130-370 |  | A130 - Install Supplemental Steel (overhead support for strut/trapeze) |  | 6d | 2026-09-28 A | 2026-09-28 A | DH-K120-190, DH-K120-200, DC7.DH1300.MS.1000 SS | 100% | 2026-10-26 | 2026-10-31 |  |  |  |  | HELIX | DH1300 |  |  |  |  |  |
| DH-A130-380 |  | A130 - Hang Trapeze System / Strut Racking |  | 7d | 2026-09-29 A | 2026-09-29 A | DH-A130-370 | 100% | 2026-10-13 | 2026-10-20 |  |  |  |  | HELIX | DH1300 |  |  |  | completed |  |
| DH-A130-420 |  | A130 - Hang Starline Bus |  | 10d | 2026-12-14 | 2026-12-24 | DH-K120-240, DH-A130-380 |  |  |  | 17d | 0d |  |  | HELIX | DH1300 |  |  |  |  |  |
| DH-A130-390 |  | A130 - Pull MC Cable from PDU to MTS |  | 15d | 2027-01-09 | 2027-01-26 | DH-K120-210, DH-A130-380 |  |  |  | -21d | 0d |  |  | HELIX | DH1300 |  |  |  |  | BB |
| DH-A130-400 |  | A130 - HAC Aisle Structure Set by others |  | 3d | 2027-01-27 | 2027-01-29 | DH-A130-390 |  |  |  | -13d | 0d |  |  | HELIX | DH1300 |  |  |  |  |  |
| DH-A130-410 |  | A130 - HAC Aisle Light install |  | 6d | 2027-01-30 | 2027-02-05 | DH-A130-400, DH-K120-230, PRC-LGT-70 |  |  |  | -13d | 0d |  |  | HELIX | DH1300 |  |  |  |  |  |
| DH-A130-430 |  | A130 - HAC Aisle Structure Raised by others |  | 1d | 2027-02-06 | 2027-02-06 | DH-A130-420, DH-A130-400, DH-A130-410 |  |  |  | -6d | 0d |  |  | HELIX | DH1300 |  |  |  |  |  |
| DH-A130-440 |  | A130 - Set MTS |  | 4d | 2027-02-08 | 2027-02-11 | DH-A130-430, PR-1080 |  |  |  | -6d | 0d |  |  | HELIX | DH1300 |  |  |  |  |  |
| DH-A130-490 |  | A130 - Set DH PQM |  | 4d | 2027-02-12 | 2027-02-16 | DH-A130-440, PRC-PQM-070 |  |  |  | -6d | 0d |  |  | HELIX | DH1300 |  |  |  |  |  |
| DH-A130-500 |  | A130 - Pipe Data Hall PQM |  | 6d | 2027-02-17 | 2027-02-23 | DH-A130-490 |  |  |  | -6d | 0d |  |  | HELIX | DH1300 |  |  |  |  |  |
| DH-A130-450 |  | A130 - Connect MC Cables to MTS |  | 6d | 2027-02-24 | 2027-03-02 | DH-A130-500, DH-A130-490, DH-A130-440 |  |  |  | -6d | 0d |  |  | HELIX | DH1300 |  |  |  |  |  |
| DH-A130-510 |  | A130 - Pull Wire for DH PQM |  | 3d | 2027-02-24 | 2027-02-26 | DH-A130-500 |  |  |  | -6d | 0d |  |  | HELIX | DH1300 |  |  |  |  |  |
| DH-A130-520 |  | A130 - Terminate DH PQM |  | 4d | 2027-02-27 | 2027-03-03 | DH-A130-510 |  |  |  | -6d | 0d |  |  | HELIX | DH1300 |  |  |  |  |  |
| DH-A130-460 |  | A130 - Terminate MC Cables at MTS |  | 7d | 2027-03-03 | 2027-03-10 | DH-A130-450 |  |  |  | -6d | 0d |  |  | HELIX | DH1300 |  |  |  |  |  |
| DH-A130-470 |  | A130 - Pull MC Cable from MTS to Starline |  | 3d | 2027-03-03 | 2027-03-05 | DH-A130-450 |  |  |  | -5d | 0d |  |  | HELIX | DH1300 |  |  |  |  |  |
| DH-A130-530 |  | A130 - HAC Lighting Switches / Emergency Relay at the same time when set MTS and PQM |  | 3d | 2027-03-04 | 2027-03-06 | DH-A130-520 |  |  |  | -6d | 0d |  |  | HELIX | DH1300 |  |  |  |  |  |
| DH-A130-480 |  | A130 - Terminate MC Cables at Starline |  | 3d | 2027-03-06 | 2027-03-09 | DH-A130-470, DH-A130-450 |  |  |  | -5d | 1d |  |  | HELIX | DH1300 |  |  |  |  |  |
| DH-A130-540 |  | A130 - Terminate Lighting Wiring |  | 3d | 2027-03-08 | 2027-03-10 | DH-A130-530 |  |  |  | -6d | 0d |  |  | HELIX | DH1300 |  |  |  |  |  |
| DH-A130-550 |  | A130 - QC 2.2 Checklist |  | 1d | 2027-03-11 | 2027-03-11 | DH-A130-540, DH-A130-480, DH-A130-460 |  |  |  | -6d | 15d |  |  | HELIX | DH1300 |  |  |  |  |  |

| ID | WBS | Activity | Duration | Start | Finish | Predecessors | Complete | Planned start | Planned finish | Total float | Free float | QTS - Subcontractor | QTS - AREA | COMMENTS | QTS - DC7 |
| --- | --- | --- | --- | --- | --- | --- | --- | --- | --- | --- | --- | --- | --- | --- | --- |
|  | 2 | **B130** |  | 2026-09-29 | 2027-03-11 |  |  |  |  |  |  |  |  |  |  |
| DH-B130-370 |  | B130 - Install Supplemental Steel (overhead support for strut/trapeze) | 6d | 2026-09-29 A | 2026-09-29 A | DC7.DH1300.MS.1000 SS, DH-A130-370 SS | 100% | 2026-10-26 | 2026-10-31 |  |  | HELIX | DH1300 |  |  |
| DH-B130-380 |  | B130 - Hang Trapeze System / Strut Racking | 7d | 2026-09-29 A | 2026-09-29 A | DH-B130-370 | 100% | 2026-10-13 | 2026-10-20 |  |  | HELIX | DH1300 | completed |  |
| DH-B130-420 |  | B130 - Hang Starline Bus | 10d | 2026-12-14 | 2026-12-24 | DH-A130-420 SS, DH-B130-380 |  |  |  | 17d | 0d | HELIX | DH1300 |  |  |
| DH-B130-390 |  | B130 - Pull MC Cable from PDU to MTS | 15d | 2027-01-09 | 2027-01-26 | DH-A130-390 SS, DH-B130-380 |  |  |  | -21d | 0d | HELIX | DH1300 |  | BB |
| DH-B130-400 |  | B130 - HAC Aisle Structure Set by others | 3d | 2027-01-27 | 2027-01-29 | DH-B130-390 |  |  |  | -13d | 0d | HELIX | DH1300 |  |  |
| DH-B130-410 |  | B130 - HAC Aisle Light install | 6d | 2027-01-30 | 2027-02-05 | DH-B130-400, DH-A130-410 SS, PRC-LGT-70 |  |  |  | -13d | 0d | HELIX | DH1300 |  |  |
| DH-B130-430 |  | B130 - HAC Aisle Structure Raised by others | 1d | 2027-02-06 | 2027-02-06 | DH-B130-420, DH-B130-400, DH-B130-410 |  |  |  | -6d | 0d | HELIX | DH1300 |  |  |
| DH-B130-440 |  | B130 - Set MTS | 4d | 2027-02-08 | 2027-02-11 | DH-B130-430 |  |  |  | -6d | 0d | HELIX | DH1300 |  |  |
| DH-B130-490 |  | B130 - Set DH PQM | 4d | 2027-02-12 | 2027-02-16 | DH-B130-440 |  |  |  | -6d | 0d | HELIX | DH1300 |  |  |
| DH-B130-500 |  | B130 - Pipe Data Hall PQM | 6d | 2027-02-17 | 2027-02-23 | DH-B130-490 |  |  |  | -6d | 0d | HELIX | DH1300 |  |  |
| DH-B130-450 |  | B130 - Connect MC Cables to MTS | 6d | 2027-02-24 | 2027-03-02 | DH-B130-500, DH-B130-490, DH-B130-440 |  |  |  | -6d | 0d | HELIX | DH1300 |  |  |
| DH-B130-510 |  | B130 - Pull Wire for DH PQM | 3d | 2027-02-24 | 2027-02-26 | DH-B130-500 |  |  |  | -6d | 0d | HELIX | DH1300 |  |  |
| DH-B130-520 |  | B130 - Terminate DH PQM | 4d | 2027-02-27 | 2027-03-03 | DH-B130-510 |  |  |  | -6d | 0d | HELIX | DH1300 |  |  |
| DH-B130-460 |  | B130 - Terminate MC Cables at MTS | 7d | 2027-03-03 | 2027-03-10 | DH-B130-450 |  |  |  | -6d | 0d | HELIX | DH1300 |  |  |
| DH-B130-470 |  | B130 - Pull MC Cable from MTS to Starline | 3d | 2027-03-03 | 2027-03-05 | DH-B130-450 |  |  |  | -5d | 0d | HELIX | DH1300 |  |  |
| DH-B130-530 |  | B130 - HAC Lighting Switches / Emergency Relay at the same time when set MTS and PQM | 3d | 2027-03-04 | 2027-03-06 | DH-B130-520 |  |  |  | -6d | 0d | HELIX | DH1300 |  |  |
| DH-B130-480 |  | B130 - Terminate MC Cables at Starline | 3d | 2027-03-06 | 2027-03-09 | DH-B130-470, DH-B130-450 |  |  |  | -5d | 1d | HELIX | DH1300 |  |  |
| DH-B130-540 |  | B130 - Terminate Lighting Wiring | 3d | 2027-03-08 | 2027-03-10 | DH-B130-530 |  |  |  | -6d | 0d | HELIX | DH1300 |  |  |
| DH-B130-560 |  | B130 - QC 2.2 Checklist | 1d | 2027-03-11 | 2027-03-11 | DH-B130-540, DH-B130-480, DH-B130-460 |  |  |  | -6d | 15d | HELIX | DH1300 |  |  |
|  | 3 | **C130** |  | 2026-09-29 | 2027-03-11 |  |  |  |  |  |  |  |  |  |  |
| DH-C130-370 |  | C130 - Install Supplemental Steel (overhead support for strut/trapeze) | 6d | 2026-09-29 A | 2026-09-29 A | DH-B130-370 SS | 100% | 2026-10-19 | 2026-10-24 |  |  | HELIX | DH1300 |  |  |
| DH-C130-380 |  | C130 - Hang Trapeze System / Strut Racking | 7d | 2026-09-30 A | 2026-09-30 A | DH-C130-370 | 100% | 2026-09-30 | 2026-10-07 |  |  | HELIX | DH1300 |  |  |
| DH-C130-420 |  | C130 - Hang Starline Bus | 10d | 2026-12-14 | 2026-12-24 | DH-B130-420 SS, DH-C130-380 |  |  |  | 17d | 0d | HELIX | DH1300 |  |  |
| DH-C130-390 |  | C130 - Pull MC Cable from PDU to MTS | 15d | 2027-01-09 | 2027-01-26 | DH-B130-390 SS, DH-C130-380 |  |  |  | -21d | 0d | HELIX | DH1300 |  | BB |
| DH-C130-400 |  | C130 - HAC Aisle Structure Set by others | 3d | 2027-01-27 | 2027-01-29 | DH-C130-390 |  |  |  | -13d | 0d | HELIX | DH1300 |  |  |
| DH-C130-410 |  | C130 - HAC Aisle Light install | 6d | 2027-01-30 | 2027-02-05 | DH-B130-410 SS, DH-C130-400, PRC-LGT-70 |  |  |  | -13d | 0d | HELIX | DH1300 |  |  |
| DH-C130-430 |  | C130 - HAC Aisle Structure Raised by others | 1d | 2027-02-06 | 2027-02-06 | DH-C130-420, DH-C130-400, DH-C130-410 |  |  |  | -6d | 0d | HELIX | DH1300 |  |  |
| DH-C130-440 |  | C130 - Set MTS | 4d | 2027-02-08 | 2027-02-11 | DH-C130-430 |  |  |  | -6d | 0d | HELIX | DH1300 |  |  |
| DH-C130-490 |  | C130 - Set DH PQM | 4d | 2027-02-12 | 2027-02-16 | DH-C130-440 |  |  |  | -6d | 0d | HELIX | DH1300 |  |  |
| DH-C130-500 |  | C130 - Pipe Data Hall PQM | 6d | 2027-02-17 | 2027-02-23 | DH-C130-490 |  |  |  | -6d | 0d | HELIX | DH1300 |  |  |
| DH-C130-450 |  | C130 - Connect MC Cables to MTS | 6d | 2027-02-24 | 2027-03-02 | DH-C130-500, DH-C130-490, DH-C130-440 |  |  |  | -6d | 0d | HELIX | DH1300 |  |  |
| DH-C130-510 |  | C130 - Pull Wire for DH PQM | 3d | 2027-02-24 | 2027-02-26 | DH-C130-500 |  |  |  | -6d | 0d | HELIX | DH1300 |  |  |
| DH-C130-520 |  | C130 - Terminate DH PQM | 4d | 2027-02-27 | 2027-03-03 | DH-C130-510 |  |  |  | -6d | 0d | HELIX | DH1300 |  |  |
| DH-C130-460 |  | C130 - Terminate MC Cables at MTS | 7d | 2027-03-03 | 2027-03-10 | DH-C130-450 |  |  |  | -6d | 0d | HELIX | DH1300 |  |  |
| DH-C130-470 |  | C130 - Pull MC Cable from MTS to Starline | 3d | 2027-03-03 | 2027-03-05 | DH-C130-450 |  |  |  | -5d | 0d | HELIX | DH1300 |  |  |
| DH-C130-530 |  | C130 - HAC Lighting Switches / Emergency Relay at the same time when set MTS and PQM | 3d | 2027-03-04 | 2027-03-06 | DH-C130-520 |  |  |  | -6d | 0d | HELIX | DH1300 |  |  |
| DH-C130-480 |  | C130 - Terminate MC Cables at Starline | 3d | 2027-03-06 | 2027-03-09 | DH-C130-470, DH-C130-450 |  |  |  | -5d | 1d | HELIX | DH1300 |  |  |
| DH-C130-540 |  | C130 - Terminate Lighting Wiring | 3d | 2027-03-08 | 2027-03-10 | DH-C130-530 |  |  |  | -6d | 0d | HELIX | DH1300 |  |  |
| DH-C130-570 |  | C130 - QC 2.2 Checklist | 1d | 2027-03-11 | 2027-03-11 | DH-C130-540, DH-C130-480, DH-C130-460 |  |  |  | -6d | 15d | HELIX | DH1300 |  |  |

| ID | WBS | Activity | Duration | Start | Finish | Predecessors | Complete | Planned start | Planned finish | Total float | Free float | QTS - Subcontractor | QTS - AREA | QTS - DC7 |
| --- | --- | --- | --- | --- | --- | --- | --- | --- | --- | --- | --- | --- | --- | --- |
|  | 4 | **D130** |  | 2026-09-29 | 2027-03-11 |  |  |  |  |  |  |  |  |  |
| DH-D130-370 |  | D130 - Install Supplemental Steel (overhead support for strut/trapeze) | 6d | 2026-09-29 A | 2026-09-29 A | DH-C130-370 SS | 100% | 2026-09-29 | 2026-10-05 |  |  | HELIX | DH1300 |  |
| DH-D130-380 |  | D130 - Hang Trapeze System / Strut Racking | 7d | 2026-09-30 A | 2026-09-30 A | DH-D130-370 | 100% | 2026-10-13 | 2026-10-20 |  |  | HELIX | DH1300 |  |
| DH-D130-420 |  | D130 - Hang Starline Bus | 10d | 2026-12-14 | 2026-12-24 | DH-C130-420 SS, DH-D130-380 |  |  |  | 17d | 0d | HELIX | DH1300 |  |
| DH-D130-390 |  | D130 - Pull MC Cable from PDU to MTS | 15d | 2027-01-09 | 2027-01-26 | DH-C130-390 SS, DH-D130-380 |  |  |  | -21d | 0d | HELIX | DH1300 | BB |
| DH-D130-400 |  | D130 - HAC Aisle Structure Set by others | 3d | 2027-01-27 | 2027-01-29 | DH-D130-390 |  |  |  | -13d | 0d | HELIX | DH1300 |  |
| DH-D130-410 |  | D130 - HAC Aisle Light install | 6d | 2027-01-30 | 2027-02-05 | DH-C130-410 SS, DH-D130-400, PRC-LGT-70 |  |  |  | -13d | 0d | HELIX | DH1300 |  |
| DH-D130-430 |  | D130 - HAC Aisle Structure Raised by others | 1d | 2027-02-06 | 2027-02-06 | DH-D130-420, DH-D130-400, DH-D130-410 |  |  |  | -6d | 0d | HELIX | DH1300 |  |
| DH-D130-440 |  | D130 - Set MTS | 4d | 2027-02-08 | 2027-02-11 | DH-D130-430 |  |  |  | -6d | 0d | HELIX | DH1300 |  |
| DH-D130-490 |  | D130 - Set DH PQM | 4d | 2027-02-12 | 2027-02-16 | DH-D130-440 |  |  |  | -6d | 0d | HELIX | DH1300 |  |
| DH-D130-500 |  | D130 - Pipe Data Hall PQM | 6d | 2027-02-17 | 2027-02-23 | DH-D130-490 |  |  |  | -6d | 0d | HELIX | DH1300 |  |
| DH-D130-450 |  | D130 - Connect MC Cables to MTS | 6d | 2027-02-24 | 2027-03-02 | DH-D130-500, DH-D130-490, DH-D130-440 |  |  |  | -6d | 0d | HELIX | DH1300 |  |
| DH-D130-510 |  | D130 - Pull Wire for DH PQM | 3d | 2027-02-24 | 2027-02-26 | DH-D130-500 |  |  |  | -6d | 0d | HELIX | DH1300 |  |
| DH-D130-520 |  | D130 - Terminate DH PQM | 4d | 2027-02-27 | 2027-03-03 | DH-D130-510 |  |  |  | -6d | 0d | HELIX | DH1300 |  |
| DH-D130-460 |  | D130 - Terminate MC Cables at MTS | 7d | 2027-03-03 | 2027-03-10 | DH-D130-450 |  |  |  | -6d | 0d | HELIX | DH1300 |  |
| DH-D130-470 |  | D130 - Pull MC Cable from MTS to Starline | 3d | 2027-03-03 | 2027-03-05 | DH-D130-450 |  |  |  | -5d | 0d | HELIX | DH1300 |  |
| DH-D130-530 |  | D130 - HAC Lighting Switches / Emergency Relay at the same time when set MTS and PQM | 3d | 2027-03-04 | 2027-03-06 | DH-D130-520 |  |  |  | -6d | 0d | HELIX | DH1300 |  |
| DH-D130-480 |  | D130 - Terminate MC Cables at Starline | 3d | 2027-03-06 | 2027-03-09 | DH-D130-470, DH-D130-450 |  |  |  | -5d | 1d | HELIX | DH1300 |  |
| DH-D130-540 |  | D130 - Terminate Lighting Wiring | 3d | 2027-03-08 | 2027-03-10 | DH-D130-530 |  |  |  | -6d | 0d | HELIX | DH1300 |  |
| DH-D130-580 |  | D130 - QC 2.2 Checklist | 1d | 2027-03-11 | 2027-03-11 | DH-D130-540, DH-D130-480, DH-D130-460 |  |  |  | -6d | 15d | HELIX | DH1300 |  |
|  | 5 | **E130** |  | 2026-09-30 | 2027-03-11 |  |  |  |  |  |  |  |  |  |
| DH-E130-370 |  | E130 - Install Supplemental Steel (overhead support for strut/trapeze) | 6d | 2026-09-30 A | 2026-09-30 A | DH-D130-370 SS | 100% | 2026-10-19 | 2026-10-24 |  |  | HELIX | DH1300 |  |
| DH-E130-380 |  | E130 - Hang Trapeze System / Strut Racking | 7d | 2026-09-30 A | 2026-09-30 A | DH-E130-370 | 100% | 2026-10-13 | 2026-10-20 |  |  | HELIX | DH1300 |  |
| DH-E130-420 |  | E130 - Hang Starline Bus | 10d | 2026-12-14 | 2026-12-24 | DH-D130-420 SS, DH-E130-380 |  |  |  | 17d | 0d | HELIX | DH1300 |  |
| DH-E130-390 |  | E130 - Pull MC Cable from PDU to MTS | 15d | 2027-01-09 | 2027-01-26 | DH-D130-390 SS, DH-E130-380 |  |  |  | -21d | 0d | HELIX | DH1300 | BB |
| DH-E130-400 |  | E130 - HAC Aisle Structure Set by others | 3d | 2027-01-27 | 2027-01-29 | DH-E130-390 |  |  |  | -13d | 0d | HELIX | DH1300 |  |
| DH-E130-410 |  | E130 - HAC Aisle Light install | 6d | 2027-01-30 | 2027-02-05 | DH-D130-410 SS, DH-E130-400, PRC-LGT-70 |  |  |  | -13d | 0d | HELIX | DH1300 |  |
| DH-E130-430 |  | E130 - HAC Aisle Structure Raised by others | 1d | 2027-02-06 | 2027-02-06 | DH-E130-420, DH-E130-400, DH-E130-410 |  |  |  | -13d | 0d | HELIX | DH1300 |  |
| DH-E130-440 |  | E130 - Set MTS | 4d | 2027-02-08 | 2027-02-11 | DH-E130-430 |  |  |  | -13d | 0d | HELIX | DH1300 |  |
| DH-E130-490 |  | E130 - Set DH PQM | 4d | 2027-02-12 | 2027-02-16 | DH-E130-440 |  |  |  | -13d | 0d | HELIX | DH1300 |  |
| DH-E130-500 |  | E130 - Pipe Data Hall PQM | 6d | 2027-02-17 | 2027-02-23 | DH-E130-490 |  |  |  | -13d | 0d | HELIX | DH1300 |  |
| DH-E130-450 |  | E130 - Connect MC Cables to MTS | 6d | 2027-02-24 | 2027-03-02 | DH-E130-500, DH-E130-490, DH-E130-440 |  |  |  | -13d | 0d | HELIX | DH1300 |  |
| DH-E130-510 |  | E130 - Pull Wire for DH PQM | 3d | 2027-02-24 | 2027-02-26 | DH-E130-500 |  |  |  | -6d | 0d | HELIX | DH1300 |  |
| DH-E130-520 |  | E130 - Terminate DH PQM | 4d | 2027-02-27 | 2027-03-03 | DH-E130-510 |  |  |  | -6d | 0d | HELIX | DH1300 |  |
| DH-E130-460 |  | E130 - Terminate MC Cables at MTS | 7d | 2027-03-03 | 2027-03-10 | DH-E130-450 |  |  |  | -6d | 0d | HELIX | DH1300 |  |
| DH-E130-470 |  | E130 - Pull MC Cable from MTS to Starline | 3d | 2027-03-03 | 2027-03-05 | DH-E130-450 |  |  |  | -5d | 0d | HELIX | DH1300 |  |
| DH-E130-530 |  | E130 - HAC Lighting Switches / Emergency Relay at the same time when set MTS and PQM | 3d | 2027-03-04 | 2027-03-06 | DH-E130-520 |  |  |  | -6d | 0d | HELIX | DH1300 |  |
| DH-E130-480 |  | E130 - Terminate MC Cables at Starline | 3d | 2027-03-06 | 2027-03-09 | DH-E130-470, DH-E130-450 |  |  |  | -5d | 1d | HELIX | DH1300 |  |
| DH-E130-540 |  | E130 - Terminate Lighting Wiring | 3d | 2027-03-08 | 2027-03-10 | DH-E130-530 |  |  |  | -6d | 0d | HELIX | DH1300 |  |
| DH-E130-590 |  | E130 - QC 2.2 Checklist | 1d | 2027-03-11 | 2027-03-11 | DH-E130-540, DH-E130-480, DH-E130-460 |  |  |  | -6d | 15d | HELIX | DH1300 |  |

| ID | WBS | Activity | Duration | Start | Finish | Predecessors | Complete | Planned start | Planned finish | Total float | Free float | QTS - Subcontractor | QTS - AREA | QTS - DC7 |
| --- | --- | --- | --- | --- | --- | --- | --- | --- | --- | --- | --- | --- | --- | --- |
|  | 6 | **F130** |  | 2026-09-30 | 2027-03-29 |  |  |  |  |  |  |  |  |  |
| DH-F130-370 |  | F130 - Install Supplemental Steel (overhead support for strut/trapeze) | 6d | 2026-09-30 A | 2026-09-30 A | DH-E130-370, DH-E130-380 | 100% | 2026-10-21 | 2026-10-27 |  |  | HELIX | DH1300 |  |
| DH-F130-380 |  | F130 - Hang Trapeze System / Strut Racking | 7d | 2026-10-01 A | 2026-10-01 A | DH-F130-370 | 100% | 2026-10-28 | 2026-11-04 |  |  | HELIX | DH1300 |  |
| DH-F130-420 |  | F130 - Hang Starline Bus | 10d | 2026-12-28 | 2027-01-09 | DH-E130-420, DH-F130-380 |  |  |  | 17d | 0d | HELIX | DH1300 |  |
| DH-F130-390 |  | F130 - Pull MC Cable from PDU to MTS | 15d | 2027-01-27 | 2027-02-12 | DH-E130-390, DH-F130-380 |  |  |  | -21d | 0d | HELIX | DH1300 | BB |
| DH-F130-400 |  | F130 - HAC Aisle Structure Set by others | 3d | 2027-02-13 | 2027-02-16 | DH-E130-400, DH-F130-390 |  |  |  | -21d | 0d | HELIX | DH1300 |  |
| DH-F130-410 |  | F130 - HAC Aisle Light install | 6d | 2027-02-17 | 2027-02-23 | DH-E130-410, DH-F130-400, PRC-LGT-70 |  |  |  | -21d | 0d | HELIX | DH1300 |  |
| DH-F130-430 |  | F130 - HAC Aisle Structure Raised by others | 1d | 2027-02-24 | 2027-02-24 | DH-F130-420, DH-F130-400, DH-F130-410 |  |  |  | -21d | 0d | HELIX | DH1300 |  |
| DH-F130-440 |  | F130 - Set MTS | 4d | 2027-02-25 | 2027-03-01 | DH-F130-430, PR-1080 |  |  |  | -21d | 0d | HELIX | DH1300 |  |
| DH-F130-490 |  | F130 - Set DH PQM | 4d | 2027-03-02 | 2027-03-05 | DH-F130-440 |  |  |  | -21d | 0d | HELIX | DH1300 |  |
| DH-F130-500 |  | F130 - Pipe Data Hall PQM | 6d | 2027-03-06 | 2027-03-12 | DH-F130-490 |  |  |  | -21d | 0d | HELIX | DH1300 |  |
| DH-F130-450 |  | F130 - Connect MC Cables to MTS | 6d | 2027-03-13 | 2027-03-19 | DH-F130-500, DH-F130-490, DH-F130-440 |  |  |  | -21d | 0d | HELIX | DH1300 |  |
| DH-F130-510 |  | F130 - Pull Wire for DH PQM | 3d | 2027-03-13 | 2027-03-16 | DH-F130-500 |  |  |  | -21d | 0d | HELIX | DH1300 |  |
| DH-F130-520 |  | F130 - Terminate DH PQM | 4d | 2027-03-17 | 2027-03-20 | DH-F130-510 |  |  |  | -21d | 0d | HELIX | DH1300 |  |
| DH-F130-460 |  | F130 - Terminate MC Cables at MTS | 7d | 2027-03-20 | 2027-03-27 | DH-F130-450 |  |  |  | -21d | 0d | HELIX | DH1300 |  |
| DH-F130-470 |  | F130 - Pull MC Cable from MTS to Starline | 3d | 2027-03-20 | 2027-03-23 | DH-F130-450 |  |  |  | -20d | 0d | HELIX | DH1300 |  |
| DH-F130-530 |  | F130 - HAC Lighting Switches / Emergency Relay at the same time when set MTS and PQM | 3d | 2027-03-22 | 2027-03-24 | DH-F130-520 |  |  |  | -21d | 0d | HELIX | DH1300 |  |
| DH-F130-480 |  | F130 - Terminate MC Cables at Starline | 3d | 2027-03-24 | 2027-03-26 | DH-F130-470, DH-F130-450 |  |  |  | -20d | 1d | HELIX | DH1300 |  |
| DH-F130-540 |  | F130 - Terminate Lighting Wiring | 3d | 2027-03-25 | 2027-03-27 | DH-F130-530 |  |  |  | -21d | 0d | HELIX | DH1300 |  |
| DH-F130-600 |  | F130 - QC 2.2 Checklist | 1d | 2027-03-29 | 2027-03-29 | DH-F130-540, DH-F130-480, DH-F130-460 |  |  |  | -21d | 0d | HELIX | DH1300 |  |
|  | 7 | **G130** |  | 2026-09-30 | 2027-03-29 |  |  |  |  |  |  |  |  |  |
| DH-G130-370 |  | G130 - Install Supplemental Steel (overhead support for strut/trapeze) | 6d | 2026-09-30 A | 2026-09-30 A | DH-F130-370 SS | 100% | 2026-10-21 | 2026-10-27 |  |  | HELIX | DH1300 |  |
| DH-G130-380 |  | G130 - Hang Trapeze System / Strut Racking | 7d | 2026-10-01 A | 2026-10-01 A | DH-G130-370 | 100% | 2026-10-28 | 2026-11-04 |  |  | HELIX | DH1300 |  |
| DH-G130-420 |  | G130 - Hang Starline Bus | 10d | 2026-12-28 | 2027-01-09 | DH-F130-420 SS, DH-G130-380 |  |  |  | 17d | 0d | HELIX | DH1300 |  |
| DH-G130-390 |  | G130 - Pull MC Cable from PDU to MTS | 15d | 2027-01-27 | 2027-02-12 | DH-F130-390 SS, DH-G130-380 |  |  |  | -21d | 0d | HELIX | DH1300 | BB |
| DH-G130-400 |  | G130 - HAC Aisle Structure Set by others | 3d | 2027-02-13 | 2027-02-16 | DH-F130-400 SS, DH-G130-390 |  |  |  | -21d | 0d | HELIX | DH1300 |  |
| DH-G130-410 |  | G130 - HAC Aisle Light install | 6d | 2027-02-17 | 2027-02-23 | DH-F130-410 SS, DH-G130-400, PRC-LGT-70 |  |  |  | -21d | 0d | HELIX | DH1300 |  |
| DH-G130-430 |  | G130 - HAC Aisle Structure Raised by others | 1d | 2027-02-24 | 2027-02-24 | DH-F130-430 SS, DH-G130-420, DH-G130-400, DH-G130-410 |  |  |  | -21d | 0d | HELIX | DH1300 |  |
| DH-G130-440 |  | G130 - Set MTS | 4d | 2027-02-25 | 2027-03-01 | DH-F130-440 SS, DH-G130-430 |  |  |  | -21d | 0d | HELIX | DH1300 |  |
| DH-G130-490 |  | G130 - Set DH PQM | 4d | 2027-03-02 | 2027-03-05 | DH-F130-490 SS, DH-G130-440 |  |  |  | -21d | 0d | HELIX | DH1300 |  |
| DH-G130-500 |  | G130 - Pipe Data Hall PQM | 6d | 2027-03-06 | 2027-03-12 | DH-G130-490 |  |  |  | -21d | 0d | HELIX | DH1300 |  |
| DH-G130-450 |  | G130 - Connect MC Cables to MTS | 6d | 2027-03-13 | 2027-03-19 | DH-G130-500, DH-G130-490, DH-G130-440 |  |  |  | -21d | 0d | HELIX | DH1300 |  |
| DH-G130-510 |  | G130 - Pull Wire for DH PQM | 3d | 2027-03-13 | 2027-03-16 | DH-G130-500 |  |  |  | -21d | 0d | HELIX | DH1300 |  |
| DH-G130-520 |  | G130 - Terminate DH PQM | 4d | 2027-03-17 | 2027-03-20 | DH-G130-510 |  |  |  | -21d | 0d | HELIX | DH1300 |  |
| DH-G130-460 |  | G130 - Terminate MC Cables at MTS | 7d | 2027-03-20 | 2027-03-27 | DH-G130-450 |  |  |  | -21d | 0d | HELIX | DH1300 |  |
| DH-G130-470 |  | G130 - Pull MC Cable from MTS to Starline | 3d | 2027-03-20 | 2027-03-23 | DH-G130-450 |  |  |  | -20d | 0d | HELIX | DH1300 |  |
| DH-G130-530 |  | G130 - HAC Lighting Switches / Emergency Relay at the same time when set MTS and PQM | 3d | 2027-03-22 | 2027-03-24 | DH-G130-520 |  |  |  | -21d | 0d | HELIX | DH1300 |  |
| DH-G130-480 |  | G130 - Terminate MC Cables at Starline | 3d | 2027-03-24 | 2027-03-26 | DH-G130-470, DH-G130-450 |  |  |  | -20d | 1d | HELIX | DH1300 |  |
| DH-G130-540 |  | G130 - Terminate Lighting Wiring | 3d | 2027-03-25 | 2027-03-27 | DH-G130-530 |  |  |  | -21d | 0d | HELIX | DH1300 |  |
| DH-G130-610 |  | G130 - QC 2.2 Checklist | 1d | 2027-03-29 | 2027-03-29 | DH-G130-540, DH-G130-480, DH-G130-460 |  |  |  | -21d | 0d | HELIX | DH1300 |  |

| ID | WBS | Activity | Duration | Start | Finish | Predecessors | Complete | Planned start | Planned finish | Total float | Free float | QTS - Subcontractor | QTS - AREA | QTS - DC7 |
| --- | --- | --- | --- | --- | --- | --- | --- | --- | --- | --- | --- | --- | --- | --- |
|  | 8 | **H130** |  | 2026-09-30 | 2027-03-29 |  |  |  |  |  |  |  |  |  |
| DH-H130-370 |  | H130 - Install Supplemental Steel (overhead support for strut/trapeze) | 6d | 2026-09-30 A | 2026-09-30 A | DH-G130-370 SS | 100% | 2026-10-21 | 2026-10-27 |  |  | HELIX | DH1300 |  |
| DH-H130-380 |  | H130 - Hang Trapeze System / Strut Racking | 7d | 2026-10-01 A | 2026-10-01 A | DH-H130-370 | 100% | 2026-10-28 | 2026-11-04 |  |  | HELIX | DH1300 |  |
| DH-H130-420 |  | H130 - Hang Starline Bus | 10d | 2026-12-28 | 2027-01-09 | DH-G130-420 SS, DH-H130-380 |  |  |  | 17d | 0d | HELIX | DH1300 |  |
| DH-H130-390 |  | H130 - Pull MC Cable from PDU to MTS | 15d | 2027-01-27 | 2027-02-12 | DH-G130-390 SS, DH-H130-380 |  |  |  | -21d | 0d | HELIX | DH1300 | BB |
| DH-H130-400 |  | H130 - HAC Aisle Structure Set by others | 3d | 2027-02-13 | 2027-02-16 | DH-H130-390 |  |  |  | -21d | 0d | HELIX | DH1300 |  |
| DH-H130-410 |  | H130 - HAC Aisle Light install | 6d | 2027-02-17 | 2027-02-23 | DH-G130-410 SS, DH-H130-400, PRC-LGT-70 |  |  |  | -21d | 0d | HELIX | DH1300 |  |
| DH-H130-430 |  | H130 - HAC Aisle Structure Raised by others | 1d | 2027-02-24 | 2027-02-24 | DH-H130-420, DH-H130-400, DH-H130-410 |  |  |  | -21d | 0d | HELIX | DH1300 |  |
| DH-H130-440 |  | H130 - Set MTS | 4d | 2027-02-25 | 2027-03-01 | DH-H130-430 |  |  |  | -21d | 0d | HELIX | DH1300 |  |
| DH-H130-490 |  | H130 - Set DH PQM | 4d | 2027-03-02 | 2027-03-05 | DH-H130-440 |  |  |  | -21d | 0d | HELIX | DH1300 |  |
| DH-H130-500 |  | H130 - Pipe Data Hall PQM | 6d | 2027-03-06 | 2027-03-12 | DH-H130-490 |  |  |  | -21d | 0d | HELIX | DH1300 |  |
| DH-H130-450 |  | H130 - Connect MC Cables to MTS | 6d | 2027-03-13 | 2027-03-19 | DH-H130-500, DH-H130-490, DH-H130-440 |  |  |  | -21d | 0d | HELIX | DH1300 |  |
| DH-H130-510 |  | H130 - Pull Wire for DH PQM | 3d | 2027-03-13 | 2027-03-16 | DH-H130-500 |  |  |  | -21d | 0d | HELIX | DH1300 |  |
| DH-H130-520 |  | H130 - Terminate DH PQM | 4d | 2027-03-17 | 2027-03-20 | DH-H130-510 |  |  |  | -21d | 0d | HELIX | DH1300 |  |
| DH-H130-460 |  | H130 - Terminate MC Cables at MTS | 7d | 2027-03-20 | 2027-03-27 | DH-H130-450 |  |  |  | -21d | 0d | HELIX | DH1300 |  |
| DH-H130-470 |  | H130 - Pull MC Cable from MTS to Starline | 3d | 2027-03-20 | 2027-03-23 | DH-H130-450 |  |  |  | -20d | 0d | HELIX | DH1300 |  |
| DH-H130-530 |  | H130 - HAC Lighting Switches / Emergency Relay at the same time when set MTS and PQM | 3d | 2027-03-22 | 2027-03-24 | DH-H130-520 |  |  |  | -21d | 0d | HELIX | DH1300 |  |
| DH-H130-480 |  | H130 - Terminate MC Cables at Starline | 3d | 2027-03-24 | 2027-03-26 | DH-H130-470, DH-H130-450 |  |  |  | -20d | 1d | HELIX | DH1300 |  |
| DH-H130-540 |  | H130 - Terminate Lighting Wiring | 3d | 2027-03-25 | 2027-03-27 | DH-H130-530 |  |  |  | -21d | 0d | HELIX | DH1300 |  |
| DH-H130-620 |  | H130 - QC 2.2 Checklist | 1d | 2027-03-29 | 2027-03-29 | DH-H130-540, DH-H130-480, DH-H130-460 |  |  |  | -21d | 0d | HELIX | DH1300 |  |
|  | 9 | **J130** |  | 2026-10-01 | 2027-03-29 |  |  |  |  |  |  |  |  |  |
| DH-J130-370 |  | J130 - Install Supplemental Steel (overhead support for strut/trapeze) | 6d | 2026-10-01 A | 2026-10-01 A | DH-H130-370 SS | 100% | 2026-10-21 | 2026-10-27 |  |  | HELIX | DH1300 |  |
| DH-J130-380 |  | J130 - Hang Trapeze System / Strut Racking | 7d | 2026-10-02 A | 2026-10-02 A | DH-J130-370 | 100% | 2026-10-28 | 2026-11-04 |  |  | HELIX | DH1300 |  |
| DH-J130-420 |  | J130 - Hang Starline Bus | 10d | 2026-12-28 | 2027-01-09 | DH-H130-420 SS, DH-J130-380 |  |  |  | 17d | 0d | HELIX | DH1300 |  |
| DH-J130-390 |  | J130 - Pull MC Cable from PDU to MTS | 15d | 2027-01-27 | 2027-02-12 | DH-H130-390 SS, DH-J130-380 |  |  |  | -21d | 0d | HELIX | DH1300 | BB |
| DH-J130-400 |  | J130 - HAC Aisle Structure Set by others | 3d | 2027-02-13 | 2027-02-16 | DH-J130-390 |  |  |  | -21d | 0d | HELIX | DH1300 |  |
| DH-J130-410 |  | J130 - HAC Aisle Light install | 6d | 2027-02-17 | 2027-02-23 | DH-H130-410 SS, DH-J130-400, PRC-LGT-70 |  |  |  | -21d | 0d | HELIX | DH1300 |  |
| DH-J130-430 |  | J130 - HAC Aisle Structure Raised by others | 1d | 2027-02-24 | 2027-02-24 | DH-J130-420, DH-J130-400, DH-J130-410 |  |  |  | -21d | 0d | HELIX | DH1300 |  |
| DH-J130-440 |  | J130 - Set MTS | 4d | 2027-02-25 | 2027-03-01 | DH-J130-430 |  |  |  | -21d | 0d | HELIX | DH1300 |  |
| DH-J130-490 |  | J130 - Set DH PQM | 4d | 2027-03-02 | 2027-03-05 | DH-J130-440 |  |  |  | -21d | 0d | HELIX | DH1300 |  |
| DH-J130-500 |  | J130 - Pipe Data Hall PQM | 6d | 2027-03-06 | 2027-03-12 | DH-J130-490 |  |  |  | -21d | 0d | HELIX | DH1300 |  |
| DH-J130-450 |  | J130 - Connect MC Cables to MTS | 6d | 2027-03-13 | 2027-03-19 | DH-J130-500, DH-J130-490, DH-J130-440 |  |  |  | -21d | 0d | HELIX | DH1300 |  |
| DH-J130-510 |  | J130 - Pull Wire for DH PQM | 3d | 2027-03-13 | 2027-03-16 | DH-J130-500 |  |  |  | -21d | 0d | HELIX | DH1300 |  |
| DH-J130-520 |  | J130 - Terminate DH PQM | 4d | 2027-03-17 | 2027-03-20 | DH-J130-510 |  |  |  | -21d | 0d | HELIX | DH1300 |  |
| DH-J130-460 |  | J130 - Terminate MC Cables at MTS | 7d | 2027-03-20 | 2027-03-27 | DH-J130-450 |  |  |  | -21d | 0d | HELIX | DH1300 |  |
| DH-J130-470 |  | J130 - Pull MC Cable from MTS to Starline | 3d | 2027-03-20 | 2027-03-23 | DH-J130-450 |  |  |  | -20d | 0d | HELIX | DH1300 |  |
| DH-J130-530 |  | J130 - HAC Lighting Switches / Emergency Relay at the same time when set MTS and PQM | 3d | 2027-03-22 | 2027-03-24 | DH-J130-520 |  |  |  | -21d | 0d | HELIX | DH1300 |  |
| DH-J130-480 |  | J130 - Terminate MC Cables at Starline | 3d | 2027-03-24 | 2027-03-26 | DH-J130-470, DH-J130-450 |  |  |  | -20d | 1d | HELIX | DH1300 |  |
| DH-J130-540 |  | J130 - Terminate Lighting Wiring | 3d | 2027-03-25 | 2027-03-27 | DH-J130-530 |  |  |  | -21d | 0d | HELIX | DH1300 |  |
| DH-J130-630 |  | J130 - QC 2.2 Checklist | 1d | 2027-03-29 | 2027-03-29 | DH-J130-540, DH-J130-480, DH-J130-460 |  |  |  | -21d | 0d | HELIX | DH1300 |  |

| ID | WBS | Activity | Duration | Start | Finish | Predecessors | Complete | Planned start | Planned finish | Total float | Free float | QTS - Subcontractor | QTS - AREA | QTS - DC7 | COMMENTS |
| --- | --- | --- | --- | --- | --- | --- | --- | --- | --- | --- | --- | --- | --- | --- | --- |
|  | 10 | **K130** |  | 2026-10-01 | 2027-03-29 |  |  |  |  |  |  |  |  |  |  |
| DH-K130-370 |  | K130 - Install Supplemental Steel (overhead support for strut/trapeze) | 6d | 2026-10-01 A | 2026-10-01 A | DH-J130-370 SS | 100% | 2026-10-21 | 2026-10-27 |  |  | HELIX | DH1300 |  |  |
| DH-K130-380 |  | K130 - Hang Trapeze System / Strut Racking | 7d | 2026-10-02 A | 2026-10-02 A | DH-K130-370 | 100% | 2026-10-28 | 2026-11-04 |  |  | HELIX | DH1300 |  |  |
| DH-K130-420 |  | K130 - Hang Starline Bus | 10d | 2026-12-28 | 2027-01-09 | DH-J130-420 SS, DH-K130-380 |  |  |  | 17d | 0d | HELIX | DH1300 |  |  |
| DH-K130-390 |  | K130 - Pull MC Cable from PDU to MTS | 15d | 2027-01-27 | 2027-02-12 | DH-J130-390 SS, DH-K130-380 |  |  |  | -21d | 0d | HELIX | DH1300 | BB |  |
| DH-K130-400 |  | K130 - HAC Aisle Structure Set by others | 3d | 2027-02-13 | 2027-02-16 | DH-K130-390 |  |  |  | -21d | 0d | HELIX | DH1300 |  |  |
| DH-K130-410 |  | K130 - HAC Aisle Light install | 6d | 2027-02-17 | 2027-02-23 | DH-J130-410 SS, DH-K130-400, PRC-LGT-70 |  |  |  | -21d | 0d | HELIX | DH1300 |  |  |
| DH-K130-430 |  | K130 - HAC Aisle Structure Raised by others | 1d | 2027-02-24 | 2027-02-24 | DH-K130-420, DH-K130-400, DH-K130-410 |  |  |  | -21d | 0d | HELIX | DH1300 |  |  |
| DH-K130-440 |  | K130 - Set MTS | 4d | 2027-02-25 | 2027-03-01 | DH-K130-430 |  |  |  | -21d | 0d | HELIX | DH1300 |  |  |
| DH-K130-490 |  | K130 - Set DH PQM | 4d | 2027-03-02 | 2027-03-05 | DH-K130-440 |  |  |  | -21d | 0d | HELIX | DH1300 |  |  |
| DH-K130-500 |  | K130 - Pipe Data Hall PQM | 6d | 2027-03-06 | 2027-03-12 | DH-K130-490 |  |  |  | -21d | 0d | HELIX | DH1300 |  |  |
| DH-K130-450 |  | K130 - Connect MC Cables to MTS | 6d | 2027-03-13 | 2027-03-19 | DH-K130-500, DH-K130-490, DH-K130-440 |  |  |  | -21d | 0d | HELIX | DH1300 |  |  |
| DH-K130-510 |  | K130 - Pull Wire for DH PQM | 3d | 2027-03-13 | 2027-03-16 | DH-K130-500 |  |  |  | -21d | 0d | HELIX | DH1300 |  |  |
| DH-K130-520 |  | K130 - Terminate DH PQM | 4d | 2027-03-17 | 2027-03-20 | DH-K130-510 |  |  |  | -21d | 0d | HELIX | DH1300 |  |  |
| DH-K130-460 |  | K130 - Terminate MC Cables at MTS | 7d | 2027-03-20 | 2027-03-27 | DH-K130-450 |  |  |  | -21d | 0d | HELIX | DH1300 |  |  |
| DH-K130-470 |  | K130 - Pull MC Cable from MTS to Starline | 3d | 2027-03-20 | 2027-03-23 | DH-K130-450 |  |  |  | -20d | 0d | HELIX | DH1300 |  |  |
| DH-K130-530 |  | K130 - HAC Lighting Switches / Emergency Relay at the same time when set MTS and PQM | 3d | 2027-03-22 | 2027-03-24 | DH-K130-520 |  |  |  | -21d | 0d | HELIX | DH1300 |  |  |
| DH-K130-480 |  | K130 - Terminate MC Cables at Starline | 3d | 2027-03-24 | 2027-03-26 | DH-K130-470, DH-K130-450 |  |  |  | -20d | 1d | HELIX | DH1300 |  |  |
| DH-K130-540 |  | K130 - Terminate Lighting Wiring | 3d | 2027-03-25 | 2027-03-27 | DH-K130-530 |  |  |  | -21d | 0d | HELIX | DH1300 |  |  |
| DH-K130-640 |  | K130 - QC 2.2 Checklist | 1d | 2027-03-29 | 2027-03-29 | DH-K130-540, DH-K130-480, DH-K130-460 |  |  |  | -21d | 0d | HELIX | DH1300 |  |  |
|  | 11 | **R130** |  | 2026-10-01 | 2027-03-29 |  |  |  |  |  |  |  |  |  |  |
| DH-R130-370 |  | R130 - Install Supplemental Steel (overhead support for strut/trapeze) | 6d | 2026-10-01 A | 2026-10-01 A | DH-K130-370 SS | 100% | 2026-10-21 | 2026-10-27 |  |  | HELIX | DH1300 |  | WAITING ON DRYWALL |
| DH-R130-380 |  | R130 - Hang Trapeze System / Strut Racking | 7d | 2026-10-23 | 2026-10-30 | DH-R130-370 |  |  |  | 47d | 0d | HELIX | DH1300 |  |  |
| DH-R130-420 |  | R130 - Hang Starline Bus | 10d | 2026-12-28 | 2027-01-09 | DH-K130-420 SS, DH-R130-380 |  |  |  | 17d | 0d | HELIX | DH1300 |  |  |
| DH-R130-390 |  | R130 - Pull MC Cable from PDU to MTS | 15d | 2027-01-27 | 2027-02-12 | DH-K130-390 SS, DH-R130-380 |  |  |  | -21d | 0d | HELIX | DH1300 | BB |  |
| DH-R130-400 |  | R130 - HAC Aisle Structure Set by others | 3d | 2027-02-13 | 2027-02-16 | DH-R130-390 |  |  |  | -21d | 0d | HELIX | DH1300 |  |  |
| DH-R130-410 |  | R130 - HAC Aisle Light install | 6d | 2027-02-17 | 2027-02-23 | DH-K130-410 SS, DH-R130-400, PRC-LGT-70 |  |  |  | -21d | 0d | HELIX | DH1300 |  |  |
| DH-R130-430 |  | R130 - HAC Aisle Structure Raised by others | 1d | 2027-02-24 | 2027-02-24 | DH-R130-420, DH-R130-400, DH-R130-410 |  |  |  | -21d | 0d | HELIX | DH1300 |  |  |
| DH-R130-440 |  | R130 - Set MTS | 4d | 2027-02-25 | 2027-03-01 | DH-R130-430 |  |  |  | -21d | 0d | HELIX | DH1300 |  |  |
| DH-R130-490 |  | R130 - Set DH PQM | 4d | 2027-03-02 | 2027-03-05 | DH-R130-440 |  |  |  | -21d | 0d | HELIX | DH1300 |  |  |
| DH-R130-500 |  | R130 - Pipe Data Hall PQM | 6d | 2027-03-06 | 2027-03-12 | DH-R130-490 |  |  |  | -21d | 0d | HELIX | DH1300 |  |  |
| DH-R130-450 |  | R130 - Connect MC Cables to MTS | 6d | 2027-03-13 | 2027-03-19 | DH-R130-500, DH-R130-490, DH-R130-440 |  |  |  | -21d | 0d | HELIX | DH1300 |  |  |
| DH-R130-510 |  | R130 - Pull Wire for DH PQM | 3d | 2027-03-13 | 2027-03-16 | DH-R130-500 |  |  |  | -21d | 0d | HELIX | DH1300 |  |  |
| DH-R130-520 |  | R130 - Terminate DH PQM | 4d | 2027-03-17 | 2027-03-20 | DH-R130-510 |  |  |  | -21d | 0d | HELIX | DH1300 |  |  |
| DH-R130-460 |  | R130 - Terminate MC Cables at MTS | 7d | 2027-03-20 | 2027-03-27 | DH-R130-450 |  |  |  | -21d | 0d | HELIX | DH1300 |  |  |
| DH-R130-470 |  | R130 - Pull MC Cable from MTS to Starline | 3d | 2027-03-20 | 2027-03-23 | DH-R130-450 |  |  |  | -20d | 0d | HELIX | DH1300 |  |  |
| DH-R130-530 |  | R130 - HAC Lighting Switches / Emergency Relay at the same time when set MTS and PQM | 3d | 2027-03-22 | 2027-03-24 | DH-R130-520 |  |  |  | -21d | 0d | HELIX | DH1300 |  |  |
| DH-R130-480 |  | R130 - Terminate MC Cables at Starline | 3d | 2027-03-24 | 2027-03-26 | DH-R130-470, DH-R130-450 |  |  |  | -20d | 1d | HELIX | DH1300 |  |  |
| DH-R130-540 |  | R130 - Terminate Lighting Wiring | 3d | 2027-03-25 | 2027-03-27 | DH-R130-530 |  |  |  | -21d | 0d | HELIX | DH1300 |  |  |
| DH-R130-650 |  | R130 - QC 2.2 Checklist | 1d | 2027-03-29 | 2027-03-29 | DH-R130-540, DH-R130-480, DH-R130-460, DH130-FS-290 |  |  |  | -21d | 0d | HELIX | DH1300 |  |  |

| ID | WBS | Activity | Duration | Start | Finish | Predecessors | Remaining | Planned start | Planned finish | Total float | Free float | QTS - Subcontractor | QTS - AREA | QTS - DC7 | COMMENTS |
| --- | --- | --- | --- | --- | --- | --- | --- | --- | --- | --- | --- | --- | --- | --- | --- |
|  | 12 | **FIRE STOPPING DH1300** |  | 2027-03-03 | 2027-03-18 |  |  |  |  |  |  |  |  |  |  |
| DH130-FS-280 |  | DH1300 // A to E -Install Firestopping | 6d | 2027-03-03 | 2027-03-09 | DH-E130-450 |  |  |  | -13d | 0d | HELIX | DH1300 |  |  |
| DH130-FS-300 |  | DH1300 // F to R -Install Firestopping | 6d | 2027-03-10 | 2027-03-16 | DH130-FS-280 |  |  |  | -13d | 0d | HELIX | DH1300 |  |  |
| DH130-FS-290 |  | DH1300 // - Firestopping inspection | 2d | 2027-03-17 | 2027-03-18 | DH130-FS-280, DH130-FS-280 FF, DH130-FS-300 |  |  |  | -13d | 8d | HELIX | DH1300 |  |  |
|  | 2 | **PDU GALLERY** |  | 2026-09-17 | 2027-02-16 |  |  |  |  |  |  |  |  |  |  |
| DH130-PDU-500 |  | DH1300 // PDU - Wall Framing (third party activity) | 1d | 2026-09-17 A | 2026-10-23 | DH.13000.1040 (other project) | 1d | 2026-10-13 | 2026-10-13 | 65d | 0d |  | DH1300 | BB |  |
| DH130-PDU-510 |  | DH1300 // PDU - Drywall Installation, painting, finishes (third party activity) | 1d | 2026-10-24 | 2026-10-24 | DH130-PDU-500, DH.13000.1100 (other project) |  |  |  | 65d | 28d |  | DH1300 | BB | scheduled for november |
| DH130-PDU-350 |  | DH1300 // PDU - Prefab UPS Skid (offsite assembly) | 1d | 2026-11-05 | 2026-11-05 | DC7.DH1300.MS.1000 SS, PR-1050 FS+10d |  |  |  | 76d | 18d | HELIX | DH1300 |  |  |
| DH130-PDU-360 |  | DH1300 // PDU - Set UPS Skid - Transformers & Panels in PDU Gallery | 3d | 2026-12-01 | 2026-12-03 | DH130-PDU-510, DH130-PDU-350, DH120-PDU-190, PRC-PNL-140, PRC-PNL-190 |  |  |  | 58d | 0d | HELIX | DH1300 |  |  |
| DH130-PDU-400 |  | DH1300 // PDU - Pipe UPS Circuits / Branch Conduits to Data Hall (PQM, Goal Post, Admin IDF, ICPNL, TPQM) | 10d | 2026-12-30 | 2027-01-12 | DH130-PDU-510, DH120-PDU-220 |  |  |  | 14d | 0d | HELIX | DH1300 |  |  |
| DH130-PDU-440 |  | DH1300 // PDU - RP Panel Installed | 1d | 2027-01-09 | 2027-01-09 | DH120-PDU-300, PRC-PNL-110 |  |  |  | 25d | 0d |  | DH1300 | BB |  |
| DH130-PDU-450 |  | DH1300 // PDU - Install pipe cord reel circuits | 10d | 2027-01-11 | 2027-01-21 | DH130-PDU-440, DH120-PDU-300 |  |  |  | 25d | 0d | HELIX | DH1300 |  |  |
| DH130-PDU-480 |  | DH1300 // PDU - Pipe UPS Circuits / Branch Conduits in PDU Gallery (PQM, Goal Post, Admin IDF, ICPNL, TPQM) | 10d | 2027-01-13 | 2027-01-23 | DH130-PDU-510, DH130-PDU-400 |  |  |  | 14d | 0d | HELIX | DH1300 |  |  |
| DH130-PDU-460 |  | DH1300 // PDU - Pull wire for cord reel circuits | 4d | 2027-01-22 | 2027-01-26 | DH130-PDU-450 |  |  |  | 25d | 0d | HELIX | DH1300 |  |  |
| DH130-PDU-370 |  | DH1300 // PDU - Pipe Feeder from MOD Panel to UPS Transformer | 3d | 2027-01-25 | 2027-01-27 | DH130-PDU-360, DH130-PDU-510, DH130-PDU-480 |  |  |  | 18d | 0d | HELIX | DH1300 |  |  |
| DH130-PDU-410 |  | DH1300 // PDU - Pull UPS Circuits | 6d | 2027-01-25 | 2027-01-30 | DH130-PDU-480, DH130-PDU-400 |  |  |  | 14d | 0d |  | DH1300 | BB |  |
| DH130-PDU-470 |  | DH1300 // PDU - Install cord reel and Terminate | 6d | 2027-01-27 | 2027-02-02 | DH130-PDU-460 |  |  |  | 25d | 0d | HELIX | DH1300 |  |  |
| DH130-PDU-380 |  | DH1300 // PDU - Pull Feeder from MOD Panel to UPS Transformer | 2d | 2027-01-28 | 2027-01-29 | DH130-PDU-370 |  |  |  | 18d | 0d | HELIX | DH1300 |  |  |
| DH130-PDU-390 |  | DH1300 // PDU - Terminate Feeder at MOD Panel and UPS Transformer | 1d | 2027-01-30 | 2027-01-30 | DH130-PDU-380 |  |  |  | 18d | 0d | HELIX | DH1300 |  |  |
| DH130-PDU-420 |  | DH1300 // PDU - Terminate UPS Branch Circuits | 4d | 2027-02-01 | 2027-02-04 | DH130-PDU-410, DH130-PDU-360 |  |  |  | 14d | 0d | HELIX | DH1300 |  |  |
| DH130-PDU-430 |  | DH1300 // PDU - Install and Terminate "Goal Post" Receptacles | 3d | 2027-02-05 | 2027-02-08 | DH130-PDU-420 |  |  |  | 14d | 0d | HELIX | DH1300 |  |  |
| DH130-PDU-520 |  | DH1300 // PDU - Install Firestopping | 4d | 2027-02-09 | 2027-02-12 | DH130-PDU-430, DH120-PDU-360 |  |  |  | 14d | 0d | HELIX | DH1300 |  |  |
| DH130-PDU-530 |  | DH1300 // PDU - Firestopping inspection | 2d | 2027-02-13 | 2027-02-15 | DH130-PDU-520 |  |  |  | 14d | 0d | HELIX | DH1300 |  |  |
| DH130-PDU-490 |  | DH1300 // PDU - QC 2.2 Checklist | 1d | 2027-02-16 | 2027-02-16 | DH130-PDU-430, DH130-PDU-470, DH130-PDU-390, DH130-PDU-530 |  |  |  | 14d | 35d | HELIX | DH1300 |  |  |

| ID | WBS | Activity | Duration | Start | Finish | Predecessors | Total float | Free float | QTS - AREA | QTS - DC7 | QTS - Subcontractor |
| --- | --- | --- | --- | --- | --- | --- | --- | --- | --- | --- | --- |
|  | 5 | **ELECTRICAL ROOMS** |  | 2027-02-12 | 2027-03-13 |  |  |  |  |  |  |
|  | 1 | **LINE-UPS** |  | 2027-02-12 | 2027-03-13 |  |  |  |  |  |  |
|  | 1 | **A130** |  | 2027-02-12 | 2027-03-02 |  |  |  |  |  |  |
| ER-A130-490 |  | A130 - Electric Room (ER) Skid Set | 1d | 2027-02-12 | 2027-02-12 | DC7.DH1300.MS.1000 SS, ER.5101.3059 | -8d | 0d | DH1300 | BB |  |
| ER-A130-500 |  | A130 - Set ER PQM (predecessor skid set) | 1d | 2027-02-13 | 2027-02-13 | ER-A130-490, ER-K120-590, ER-K120-600 | -4d | 0d | DH1300 |  | HELIX |
| ER-A130-550 |  | A130 - Land and terminate wiring on the PDU | 3d | 2027-02-13 | 2027-02-16 | ER-A130-490, ER-K120-640, DH-E130-390 | 8d | 1d | DH1300 |  | HELIX |
| ER-A130-480 |  | A130 - Pipe power circuit to ER PQM | 4d | 2027-02-15 | 2027-02-18 | ER-A130-500, ER-K120-570 | 4d | 2d | DH1300 |  | HELIX |
| ER-A130-510 |  | A130 - Pipe CT&VT PQM control (run conduits) | 6d | 2027-02-15 | 2027-02-20 | ER-A130-500, ER-K120-600 | 2d | 0d | DH1300 |  | HELIX |
| ER-A130-520 |  | A130 - Pull Wire for ER PQM | 3d | 2027-02-22 | 2027-02-24 | ER-A130-480, ER-A130-510 | 2d | 0d | DH1300 |  | HELIX |
| ER-A130-530 |  | A130 - Terminate ER PQM | 4d | 2027-02-25 | 2027-03-01 | ER-A130-520 | 2d | 0d | DH1300 |  | HELIX |
| ER-A130-540 |  | A130 - QC 2.2 Checklist | 1d | 2027-03-02 | 2027-03-02 | ER-A130-530, ER-A130-550 | 2d | 23d | DH1300 |  | HELIX |
|  | 2 | **B130** |  | 2027-02-13 | 2027-03-03 |  |  |  |  |  |  |
| ER-B130-500 |  | B130 - Electric Room (ER) Skid Set | 1d | 2027-02-13 | 2027-02-13 | ER-A130-490 | -8d | 0d | DH1300 | BB |  |
| ER-B130-510 |  | B130 - Set ER PQM (predecessor skid set) | 1d | 2027-02-15 | 2027-02-15 | ER-B130-500, ER-A130-500 SS | -5d | 0d | DH1300 |  | HELIX |
| ER-B130-560 |  | B130 - Land and terminate wiring on the PDU | 3d | 2027-02-15 | 2027-02-17 | ER-B130-500, ER-A130-550 SS | 7d | 1d | DH1300 |  | HELIX |
| ER-B130-490 |  | B130 - Pipe power circuit to ER PQM | 4d | 2027-02-16 | 2027-02-19 | ER-B130-510 | 3d | 2d | DH1300 |  | HELIX |
| ER-B130-520 |  | B130 - Pipe CT&VT PQM control (run conduits) | 6d | 2027-02-16 | 2027-02-22 | ER-B130-510 | 1d | 0d | DH1300 |  | HELIX |
| ER-B130-530 |  | B130 - Pull Wire for ER PQM | 3d | 2027-02-23 | 2027-02-25 | ER-B130-490, ER-B130-520 | 1d | 0d | DH1300 |  | HELIX |
| ER-B130-540 |  | B130 - Terminate ER PQM | 4d | 2027-02-26 | 2027-03-02 | ER-B130-530 | 1d | 0d | DH1300 |  | HELIX |
| ER-B130-550 |  | B130 - QC 2.2 Checklist | 1d | 2027-03-03 | 2027-03-03 | ER-B130-540, ER-B130-560 | 1d | 22d | DH1300 |  | HELIX |
|  | 3 | **C130** |  | 2027-02-15 | 2027-03-04 |  |  |  |  |  |  |
| ER-C130-510 |  | C130 - Electric Room (ER) Skid Set | 1d | 2027-02-15 | 2027-02-15 | ER-B130-500 | -8d | 0d | DH1300 | BB |  |
| ER-C130-520 |  | C130 - Set ER PQM (predecessor skid set) | 1d | 2027-02-16 | 2027-02-16 | ER-C130-510, ER-B130-510 SS | -6d | 0d | DH1300 |  | HELIX |
| ER-C130-570 |  | C130 - Land and terminate wiring on the PDU | 3d | 2027-02-16 | 2027-02-18 | ER-C130-510, ER-B130-560 SS | 6d | 1d | DH1300 |  | HELIX |
| ER-C130-500 |  | C130 - Pipe power circuit to ER PQM | 4d | 2027-02-17 | 2027-02-20 | ER-C130-520 | 2d |  | DH1300 |  | HELIX |
| ER-C130-530 |  | C130 - Pipe CT&VT PQM control (run conduits) | 6d | 2027-02-17 | 2027-02-23 | ER-C130-520 | 0d |  | DH1300 |  | HELIX |
| ER-C130-540 |  | C130 - Pull Wire for ER PQM | 3d | 2027-02-24 | 2027-02-26 | ER-C130-500, ER-C130-530 | 0d |  | DH1300 |  | HELIX |
| ER-C130-550 |  | C130 - Terminate ER PQM | 4d | 2027-02-27 | 2027-03-03 | ER-C130-540 | 0d |  | DH1300 |  | HELIX |
| ER-C130-560 |  | C130 - QC 2.2 Checklist | 1d | 2027-03-04 | 2027-03-04 | ER-C130-550, ER-C130-570 | 0d | 21d | DH1300 |  | HELIX |

| ID | WBS | Activity | Duration | Start | Finish | Predecessors | Total float | Free float | QTS - AREA | QTS - DC7 | QTS - Subcontractor |
| --- | --- | --- | --- | --- | --- | --- | --- | --- | --- | --- | --- |
|  | 4 | **D130** |  | 2027-02-16 | 2027-03-05 |  |  |  |  |  |  |
| ER-D130-520 |  | D130 - Electric Room (ER) Skid Set | 1d | 2027-02-16 | 2027-02-16 | ER-C130-510 | -8d | 0d | DH1300 | BB |  |
| ER-D130-530 |  | D130 - Set ER PQM (predecessor skid set) | 1d | 2027-02-17 | 2027-02-17 | ER-D130-520, ER-C130-520 SS | -7d | 0d | DH1300 |  | HELIX |
| ER-D130-580 |  | D130 - Land and terminate wiring on the PDU | 3d | 2027-02-17 | 2027-02-19 | ER-D130-520, ER-C130-570 SS | 5d | 1d | DH1300 |  | HELIX |
| ER-D130-510 |  | D130 - Pipe power circuit to ER PQM | 4d | 2027-02-18 | 2027-02-22 | ER-D130-530 | 1d | 2d | DH1300 |  | HELIX |
| ER-D130-540 |  | D130 - Pipe CT&VT PQM control (run conduits) | 6d | 2027-02-18 | 2027-02-24 | ER-D130-530 | -1d | 0d | DH1300 |  | HELIX |
| ER-D130-550 |  | D130 - Pull Wire for ER PQM | 3d | 2027-02-25 | 2027-02-27 | ER-D130-510, ER-D130-540 | -1d | 0d | DH1300 |  | HELIX |
| ER-D130-560 |  | D130 - Terminate ER PQM | 4d | 2027-03-01 | 2027-03-04 | ER-D130-550 | -1d | 0d | DH1300 |  | HELIX |
| ER-D130-570 |  | D130 - QC 2.2 Checklist | 1d | 2027-03-05 | 2027-03-05 | ER-D130-560, ER-D130-580 | -1d | 20d | DH1300 |  | HELIX |
|  | 5 | **E130** |  | 2027-02-17 | 2027-03-06 |  |  |  |  |  |  |
| ER-E130-530 |  | E130 - Electric Room (ER) Skid Set | 1d | 2027-02-17 | 2027-02-17 | ER-D130-520 | -8d | 0d | DH1300 | BB |  |
| ER-E130-540 |  | E130 - Set ER PQM (predecessor skid set) | 1d | 2027-02-18 | 2027-02-18 | ER-E130-530, ER-D130-530 SS | -8d | 0d | DH1300 |  | HELIX |
| ER-E130-590 |  | E130 - Land and terminate wiring on the PDU | 3d | 2027-02-18 | 2027-02-20 | ER-E130-530, ER-D130-580 SS | 4d | 0d | DH1300 |  | HELIX |
| ER-E130-520 |  | E130 - Pipe power circuit to ER PQM | 4d | 2027-02-19 | 2027-02-23 | ER-E130-540 | -8d | 0d | DH1300 |  | HELIX |
| ER-E130-550 |  | E130 - Pipe CT&VT PQM control (run conduits) | 6d | 2027-02-19 | 2027-02-25 | ER-E130-540, ER-E130-520 SS | -8d | 0d | DH1300 |  | HELIX |
| ER-E130-560 |  | E130 - Pull Wire for ER PQM | 3d | 2027-02-26 | 2027-03-01 | ER-E130-520, ER-E130-550 | -2d | 0d | DH1300 |  | HELIX |
| ER-E130-570 |  | E130 - Terminate ER PQM | 4d | 2027-03-02 | 2027-03-05 | ER-E130-560 | -2d | 0d | DH1300 |  | HELIX |
| ER-E130-580 |  | E130 - QC 2.2 Checklist | 1d | 2027-03-06 | 2027-03-06 | ER-E130-570, ER-E130-590 | -2d | 19d | DH1300 |  | HELIX |
|  | 6 | **F130** |  | 2027-02-18 | 2027-03-13 |  |  |  |  |  |  |
| ER-F130-540 |  | F130 - Electric Room (ER) Skid Set | 1d | 2027-02-18 | 2027-02-18 | ER-E130-530, ER.5101.3064 | -4d | 0d | DH1300 | BB |  |
| ER-F130-550 |  | F130 - Set ER PQM (predecessor skid set) | 1d | 2027-02-19 | 2027-02-19 | ER-F130-540, ER-E130-540 | -3d | 1d | DH1300 |  | HELIX |
| ER-F130-600 |  | F130 - Land and terminate wiring on the PDU | 3d | 2027-02-22 | 2027-02-24 | ER-F130-540, ER-E130-590, DH-K130-390 | 6d | 0d | DH1300 |  | HELIX |
| ER-F130-530 |  | F130 - Pipe power circuit to ER PQM | 4d | 2027-02-24 | 2027-02-27 | ER-F130-550, ER-E130-520 | -6d | 0d | DH1300 |  | HELIX |
| ER-F130-560 |  | F130 - Pipe CT&VT PQM control (run conduits) | 6d | 2027-02-26 | 2027-03-04 | ER-F130-550, ER-F130-530 SS, ER-E130-550 | -8d | 0d | DH1300 |  | HELIX |
| ER-F130-570 |  | F130 - Pull Wire for ER PQM | 3d | 2027-03-05 | 2027-03-08 | ER-F130-530, ER-F130-560 | -8d | 0d | DH1300 |  | HELIX |
| ER-F130-580 |  | F130 - Terminate ER PQM | 4d | 2027-03-09 | 2027-03-12 | ER-F130-570 | -8d | 0d | DH1300 |  | HELIX |
| ER-F130-590 |  | F130 - QC 2.2 Checklist | 1d | 2027-03-13 | 2027-03-13 | ER-F130-580, ER-F130-600 | -8d | 13d | DH1300 |  | HELIX |

| ID | WBS | Activity | Duration | Start | Finish | Predecessors | Total float | Free float | QTS - AREA | QTS - DC7 | QTS - Subcontractor |
| --- | --- | --- | --- | --- | --- | --- | --- | --- | --- | --- | --- |
|  | 7 | **G130** |  | 2027-02-19 | 2027-03-13 |  |  |  |  |  |  |
| ER-G130-550 |  | G130 - Electric Room (ER) Skid Set | 1d | 2027-02-19 | 2027-02-19 | ER-F130-540 | -4d | 0d | DH1300 | BB |  |
| ER-G130-560 |  | G130 - Set ER PQM (predecessor skid set) | 1d | 2027-02-20 | 2027-02-20 | ER-G130-550, ER-F130-550 SS | -4d | 0d | DH1300 |  | HELIX |
| ER-G130-610 |  | G130 - Land and terminate wiring on the PDU | 3d | 2027-02-22 | 2027-02-24 | ER-G130-550, ER-F130-600 SS | 6d | 0d | DH1300 |  | HELIX |
| ER-G130-540 |  | G130 - Pipe power circuit to ER PQM | 4d | 2027-02-24 | 2027-02-27 | ER-F130-530 SS, ER-G130-560 | -4d | 0d | DH1300 |  | HELIX |
| ER-G130-570 |  | G130 - Pipe CT&VT PQM control (run conduits) | 6d | 2027-02-26 | 2027-03-04 | ER-G130-560, ER-F130-560 SS | -8d | 0d | DH1300 |  | HELIX |
| ER-G130-580 |  | G130 - Pull Wire for ER PQM | 3d | 2027-03-05 | 2027-03-08 | ER-G130-540, ER-G130-570 | -8d | 0d | DH1300 |  | HELIX |
| ER-G130-590 |  | G130 - Terminate ER PQM | 4d | 2027-03-09 | 2027-03-12 | ER-G130-580 | -8d | 0d | DH1300 |  | HELIX |
| ER-G130-600 |  | G130 - QC 2.2 Checklist | 1d | 2027-03-13 | 2027-03-13 | ER-G130-590, ER-G130-610 | -8d | 13d | DH1300 |  | HELIX |
|  | 8 | **H130** |  | 2027-02-19 | 2027-03-13 |  |  |  |  |  |  |
| ER-H130-560 |  | H130 - Electric Room (ER) Skid Set | 1d | 2027-02-19 | 2027-02-19 | ER-G130-550 SS | -4d | 0d | DH1300 | BB |  |
| ER-H130-570 |  | H130 - Set ER PQM (predecessor skid set) | 1d | 2027-02-20 | 2027-02-20 | ER-H130-560, ER-G130-560 SS | -4d | 0d | DH1300 |  | HELIX |
| ER-H130-620 |  | H130 - Land and terminate wiring on the PDU | 3d | 2027-02-22 | 2027-02-24 | ER-H130-560, ER-G130-610 SS | 6d | 0d | DH1300 |  | HELIX |
| ER-H130-550 |  | H130 - Pipe power circuit to ER PQM | 4d | 2027-02-24 | 2027-02-27 | ER-G130-540 SS, ER-H130-570 | -4d | 0d | DH1300 |  | HELIX |
| ER-H130-580 |  | H130 - Pipe CT&VT PQM control (run conduits) | 6d | 2027-02-26 | 2027-03-04 | ER-H130-570, ER-G130-570 SS | -8d | 0d | DH1300 |  | HELIX |
| ER-H130-590 |  | H130 - Pull Wire for ER PQM | 3d | 2027-03-05 | 2027-03-08 | ER-H130-550, ER-H130-580 | -8d | 0d | DH1300 |  | HELIX |
| ER-H130-600 |  | H130 - Terminate ER PQM | 4d | 2027-03-09 | 2027-03-12 | ER-H130-590 | -8d | 0d | DH1300 |  | HELIX |
| ER-H130-610 |  | H130 - QC 2.2 Checklist | 1d | 2027-03-13 | 2027-03-13 | ER-H130-600, ER-H130-620 | -8d | 13d | DH1300 |  | HELIX |
|  | 9 | **J130** |  | 2027-02-19 | 2027-03-13 |  |  |  |  |  |  |
| ER-J130-570 |  | J130 - Electric Room (ER) Skid Set | 1d | 2027-02-19 | 2027-02-19 | ER-H130-560 SS | -4d | 0d | DH1300 | BB |  |
| ER-J130-580 |  | J130 - Set ER PQM (predecessor skid set) | 1d | 2027-02-20 | 2027-02-20 | ER-J130-570, ER-H130-570 SS | -4d | 0d | DH1300 |  | HELIX |
| ER-J130-630 |  | J130 - Land and terminate wiring on the PDU | 3d | 2027-02-22 | 2027-02-24 | ER-J130-570, ER-H130-620 SS | 6d | 0d | DH1300 |  | HELIX |
| ER-J130-560 |  | J130 - Pipe power circuit to ER PQM | 4d | 2027-02-24 | 2027-02-27 | ER-H130-550 SS, ER-J130-580 | -4d | 0d | DH1300 |  | HELIX |
| ER-J130-590 |  | J130 - Pipe CT&VT PQM control (run conduits) | 6d | 2027-02-26 | 2027-03-04 | ER-J130-580, ER-H130-580 SS | -8d | 0d | DH1300 |  | HELIX |
| ER-J130-600 |  | J130 - Pull Wire for ER PQM | 3d | 2027-03-05 | 2027-03-08 | ER-J130-560, ER-J130-590 | -8d | 0d | DH1300 |  | HELIX |
| ER-J130-610 |  | J130 - Terminate ER PQM | 4d | 2027-03-09 | 2027-03-12 | ER-J130-600 | -8d | 0d | DH1300 |  | HELIX |
| ER-J130-620 |  | J130 - QC 2.2 Checklist | 1d | 2027-03-13 | 2027-03-13 | ER-J130-610, ER-J130-630 | -8d | 13d | DH1300 |  | HELIX |

| ID | WBS | Activity | Duration | Start | Finish | Predecessors | Total float | Free float | QTS - AREA | QTS - DC7 | QTS - Subcontractor |
| --- | --- | --- | --- | --- | --- | --- | --- | --- | --- | --- | --- |
|  | 10 | **K130** |  | 2027-02-19 | 2027-03-13 |  |  |  |  |  |  |
| ER-K130-580 |  | K130 - Electric Room (ER) Skid Set | 1d | 2027-02-19 | 2027-02-19 | ER-J130-570 SS | -4d | 0d | DH1300 | BB |  |
| ER-K130-590 |  | K130 - Set ER PQM (predecessor skid set) | 1d | 2027-02-20 | 2027-02-20 | ER-K130-580, ER-J130-580 SS | -4d | 0d | DH1300 |  | HELIX |
| ER-K130-640 |  | K130 - Land and terminate wiring on the PDU | 3d | 2027-02-22 | 2027-02-24 | ER-K130-580, ER-J130-630 SS | 6d | 0d | DH1300 |  | HELIX |
| ER-K130-570 |  | K130 - Pipe power circuit to ER PQM | 4d | 2027-02-24 | 2027-02-27 | ER-J130-560 SS, ER-K130-590 | -4d | 0d | DH1300 |  | HELIX |
| ER-K130-600 |  | K130 - Pipe CT&VT PQM control (run conduits) | 6d | 2027-02-26 | 2027-03-04 | ER-K130-590, ER-J130-590 SS | -8d | 0d | DH1300 |  | HELIX |
| ER-K130-610 |  | K130 - Pull Wire for ER PQM | 3d | 2027-03-05 | 2027-03-08 | ER-K130-570, ER-K130-600 | -8d | 0d | DH1300 |  | HELIX |
| ER-K130-620 |  | K130 - Terminate ER PQM | 4d | 2027-03-09 | 2027-03-12 | ER-K130-610 | -8d | 0d | DH1300 |  | HELIX |
| ER-K130-630 |  | K130 - QC 2.2 Checklist | 1d | 2027-03-13 | 2027-03-13 | ER-K130-620, ER-K130-640 | -8d | 13d | DH1300 |  | HELIX |
|  | 11 | **R130** |  | 2027-02-20 | 2027-03-04 |  |  |  |  |  |  |
| ER-R130-780 |  | R130 - Pipe power circuit to ER PQM | 2d | 2027-02-20 | 2027-02-22 | ER-K130-590 SS | 0d |  | DH1300 |  | HELIX |
| ER-R130-890 |  | R130 - Land and terminate wiring on the PDU | 3d | 2027-02-22 | 2027-02-24 | ER-K130-640 SS | 6d | 5d | DH1300 |  | HELIX |
| ER-R130-790 |  | R130 - Reserve Line Equipment Set | 1d | 2027-02-23 | 2027-02-23 | ER-R130-780 | 0d |  | DH1300 |  | HELIX |
| ER-R130-800 |  | R130 - Set ER PQM | 1d | 2027-02-24 | 2027-02-24 | ER-R130-790 | 2d | 0d | DH1300 | BB |  |
| ER-R130-840 |  | R130 - Set Inhibitor Panel | 1d | 2027-02-24 | 2027-02-24 | ER-R130-790, PRC-INH-60 | 0d |  | DH1300 |  | HELIX |
| ER-R130-810 |  | R130 - Pipe CT&VT PQM control (run conduits) | 2d | 2027-02-25 | 2027-02-26 | ER-R130-800 | 2d | 0d | DH1300 |  | HELIX |
| ER-R130-850 |  | R130 - Pipe Inhibitor Panel (overhead run w/ base build) | 1d | 2027-02-25 | 2027-02-25 | ER-R130-840 | 0d |  | DH1300 | BB |  |
| ER-R130-860 |  | R130 - Pull Wire for Inhibitor Panel | 2d | 2027-02-26 | 2027-02-27 | ER-R130-850 | 0d |  | DH1300 |  | HELIX |
| ER-R130-820 |  | R130 - Pull Wire for ER PQM | 1d | 2027-02-27 | 2027-02-27 | ER-R130-810 | 2d | 0d | DH1300 |  | HELIX |
| ER-R130-830 |  | R130 - Terminate ER PQM | 1d | 2027-03-01 | 2027-03-01 | ER-R130-820 | 2d |  | DH1300 |  | HELIX |
| ER-R130-870 |  | R130 - Terminate Inhibitor Panel | 3d | 2027-03-01 | 2027-03-03 | ER-R130-860 | 0d |  | DH1300 |  | HELIX |
| ER-R130-880 |  | R130 - QC 2.2 Checklist | 1d | 2027-03-04 | 2027-03-04 | ER-R130-870, ER-R130-890, ER-R130-830 | 0d | 21d | DH1300 |  | HELIX |
|  | 12 | **FIRE STOPPING** |  | 2027-02-22 | 2027-02-27 |  |  |  |  |  |  |
| DH130-ER-240 |  | DH1300 // ER -Install Firestopping | 4d | 2027-02-22 | 2027-02-25 | ER-E130-590, DH120-ER-230 | 4d | 0d | DH1300 |  | HELIX |
| DH130-ER-250 |  | DH1300 // ER - Firestopping inspection | 2d | 2027-02-26 | 2027-02-27 | DH130-ER-240 | 4d | 5d | DH1300 |  | HELIX |

| ID | WBS | Activity | Type | Duration | Start | Finish | Predecessors | Complete | Planned start | Planned finish | Total float | Free float | Constraint | Calendar | QTS - Subcontractor | QTS - AREA | MSP Activity ID | QTS - DASH | QTS - Resp | COMMENTS | QTS - DC7 |
| --- | --- | --- | --- | --- | --- | --- | --- | --- | --- | --- | --- | --- | --- | --- | --- | --- | --- | --- | --- | --- | --- |
|  | 3 | **COMISSIONING BY OTHERS** |  |  | 2027-03-30 | 2027-07-01 |  |  |  |  |  |  |  |  |  |  |  |  |  |  |  |
| CX-DH130-70 |  | DH1300 L3 Cx electrical, Mechanical FLS |  | 40d | 2027-03-30 | 2027-05-14 | DC7.DH1300.MS.1020 |  |  |  | -21d | 0d |  |  | HELIX | DH1300 |  |  |  |  |  |
| CX-DH130-80 |  | DH1300 L4 CxA |  | 25d | 2027-05-15 | 2027-06-14 | CX-DH130-70 |  |  |  | -21d | 0d |  |  | HELIX | DH1300 |  |  |  |  |  |
| CX-DH130-90 |  | DH1300 L5 CxA IST |  | 15d | 2027-06-15 | 2027-07-01 | CX-DH130-80 |  |  |  | -21d | 0d |  |  | HELIX | DH1300 |  |  |  |  |  |
|  | 6 | **DH 1400** |  |  | 2026-10-01 | 2027-08-07 |  |  |  |  |  |  |  |  |  |  |  |  |  |  |  |
|  | 1 | **SKID INSTALATION DH1400 FROM TFO SCHEDULE** |  |  | 2026-12-02 | 2027-02-19 |  |  |  |  |  |  |  |  |  |  |  |  |  |  |  |
| DH.1300.3070 |  | DH1400/Electrical Room #5401 // DH1400 - OFCI Skid Ship Date (12/02/2026) First Shipment | milestone | 0d | 2026-12-02 | 2026-12-02 | DH.1300.3070 (other project) FF |  |  |  | 63d | 49d | finish on or after 2026-12-02 | Calendar 01 - 5 Day w/holidays (No Pats Day) | HELIX | DH1400 | 1200 | ER |  |  |  |
| DH.1300.3072 |  | DH1400/Electrical Room #5404 // DH1400 - OFCI Skid Ship Date (12/08/2026) 2ND Shipment | milestone | 0d | 2026-12-08 | 2026-12-08 | DH.1300.3072 (other project) FF |  |  |  | 68d | 47d | finish on or after 2026-12-08 | Calendar 01 - 5 Day w/holidays (No Pats Day) | HELIX | DH1400 | 1200 | ER |  |  |  |
| ER.5101.3065 |  | DH1400/Electrical Room #5401 // Set Skid - SKID-A140 |  | 1d | 2027-02-16 | 2027-02-16 | DH.1300.3070, ER.5101.3065 (other project) |  |  |  | 14d | 0d | start on or after 2027-02-15 | Calendar 01 - 5 Day w/holidays (No Pats Day) | HELIX | DH1400 | 1107 | ER | TBD |  |  |
| ER.5101.3066 |  | DH1400/Electrical Room #5401 // Set Skid - SKID-B140 |  | 1d | 2027-02-16 | 2027-02-16 | ER.5101.3065 SS, ER.5101.3066 (other project) |  |  |  | 14d | 0d | start on or after 2027-02-15 | Calendar 01 - 5 Day w/holidays (No Pats Day) | HELIX | DH1400 | 1107 | ER | TBD |  |  |
| ER.5101.3067 |  | DH1400/Electrical Room #5401 // Set Skid - SKID-C140 |  | 1d | 2027-02-17 | 2027-02-17 | ER.5101.3066, ER.5101.3067 (other project) |  |  |  | 14d | 0d | start on or after 2027-02-17 | Calendar 01 - 5 Day w/holidays (No Pats Day) | HELIX | DH1400 | 1107 | ER | TBD |  |  |
| ER.5101.3068 |  | DH1400/Electrical Room #5401 // Set Skid - SKID-D140 |  | 1d | 2027-02-17 | 2027-02-17 | ER.5101.3067 SS, ER.5101.3068 (other project) |  |  |  | 14d | 1d | start on or after 2027-02-17 | Calendar 01 - 5 Day w/holidays (No Pats Day) | HELIX | DH1400 | 1107 | ER | TBD |  |  |
| ER.5101.3069 |  | DH1400/Electrical Room #5401 // Set Skid - SKID-E140 |  | 1d | 2027-02-18 | 2027-02-18 | ER.5101.3068 SS, ER.5101.3069 (other project) |  |  |  | 13d | 0d | start on or after 2027-02-18 | Calendar 01 - 5 Day w/holidays (No Pats Day) | HELIX | DH1400 | 1107 | ER | TBD |  |  |
| ER.5101.3070 |  | DH1400/Electrical Room #5404 // Set Skid - SKID-F140 |  | 1d | 2027-02-18 | 2027-02-18 | DH.1300.3072 SS, ER.5101.3070 (other project) |  |  |  | 21d | 0d | start on or after 2027-02-18 | Calendar 01 - 5 Day w/holidays (No Pats Day) | HELIX | DH1400 | 1107 | ER | TBD |  |  |
| ER.5101.3071 |  | DH1400/Electrical Room #5404 // Set Skid - SKID-G140 |  | 1d | 2027-02-18 | 2027-02-18 | ER.5101.3070 SS, ER.5101.3071 (other project) |  |  |  | 21d | 1d | start on or after 2027-02-18 | Calendar 01 - 5 Day w/holidays (No Pats Day) | HELIX | DH1400 | 1107 | ER | TBD |  |  |
| ER.5101.3072 |  | DH1400/Electrical Room #5404 // Set Skid - SKID-H140 |  | 1d | 2027-02-19 | 2027-02-19 | ER.5101.3071 SS, ER.5101.3072 (other project) |  |  |  | 20d | 0d | start on or after 2027-02-19 | Calendar 01 - 5 Day w/holidays (No Pats Day) | HELIX | DH1400 | 1107 | ER | TBD |  |  |
| ER.5101.3073 |  | DH1400/Electrical Room #5404 // Set Skid - SKID-J140 |  | 1d | 2027-02-19 | 2027-02-19 | ER.5101.3072 SS, ER.5101.3073 (other project) |  |  |  | 20d | 0d | start on or after 2027-02-19 | Calendar 01 - 5 Day w/holidays (No Pats Day) | HELIX | DH1400 | 1107 | ER | TBD |  |  |
| ER.5101.3074 |  | DH1400/Electrical Room #5404 // Set Skid - SKID-K140 |  | 1d | 2027-02-19 | 2027-02-19 | ER.5101.3073 SS, ER.5101.3074 (other project) |  |  |  | 20d | 3d | start on or after 2027-02-19 | Calendar 01 - 5 Day w/holidays (No Pats Day) | HELIX | DH1400 | 1107 | ER | TBD |  |  |
|  | 4 | **DATA HALL** |  |  | 2026-10-01 | 2027-05-03 |  |  |  |  |  |  |  |  |  |  |  |  |  |  |  |
|  | 1 | **LINE-UPS** |  |  | 2026-10-01 | 2027-05-03 |  |  |  |  |  |  |  |  |  |  |  |  |  |  |  |
|  | 11 | **R140** |  |  | 2026-10-01 | 2027-04-15 |  |  |  |  |  |  |  |  |  |  |  |  |  |  |  |
| DH-R140-550 |  | R140 - Install Supplemental Steel (overhead support for strut/trapeze) |  | 6d | 2026-10-01 A | 2026-10-01 A | DH-R130-370, DH-R130-380, DC7.DH1400.MS.1000 SS | 100% | 2026-11-13 | 2026-11-19 |  |  |  |  | HELIX | DH1400 |  |  |  | Suffolk |  |
| DH-R140-560 |  | R140 - Hang Trapeze System / Strut Racking |  | 7d | 2026-10-31 | 2026-11-07 | DH-R140-550 |  |  |  | 55d | 47d |  |  | HELIX | DH1400 |  |  |  |  |  |
| DH-R140-600 |  | R140 - Hang Starline Bus |  | 10d | 2027-01-11 | 2027-01-21 | DH-R130-420, DH-R140-560 |  |  |  | 27d | 0d |  |  | HELIX | DH1400 |  |  |  |  |  |
| DH-R140-570 |  | R140 - Pull MC Cable from PDU to MTS |  | 15d | 2027-02-13 | 2027-03-02 | DH-R130-390, PRC-MCC-040, DH-R140-560 |  |  |  | -21d | 0d |  |  | HELIX | DH1400 |  |  |  |  | BB |
| DH-R140-580 |  | R140 - HAC Aisle Structure Set by others |  | 3d | 2027-03-03 | 2027-03-05 | DH-R140-570 |  |  |  | -13d | 0d |  |  | HELIX | DH1400 |  |  |  |  |  |
| DH-R140-590 |  | R140 - HAC Aisle Light install |  | 6d | 2027-03-06 | 2027-03-12 | DH-R130-410, DH-R140-580, PRC-LGT-80 |  |  |  | -13d | 0d |  |  | HELIX | DH1400 |  |  |  |  |  |
| DH-R140-610 |  | R140 - HAC Aisle Structure Raised by others |  | 1d | 2027-03-13 | 2027-03-13 | DH-R140-600, DH-R140-580, DH-R140-590 |  |  |  | -6d | 0d |  |  | HELIX | DH1400 |  |  |  |  |  |
| DH-R140-620 |  | R140 - Set MTS |  | 4d | 2027-03-15 | 2027-03-18 | DH-R140-610, PR-1090 |  |  |  | -6d | 0d |  |  | HELIX | DH1400 |  |  |  |  |  |
| DH-R140-670 |  | R140 - Set DH PQM |  | 4d | 2027-03-19 | 2027-03-23 | DH-R140-620, PRC-PQM-080 |  |  |  | -6d | 0d |  |  | HELIX | DH1400 |  |  |  |  |  |
| DH-R140-680 |  | R140 - Pipe Data Hall PQM |  | 6d | 2027-03-24 | 2027-03-30 | DH-R140-670 |  |  |  | -6d | 0d |  |  | HELIX | DH1400 |  |  |  |  |  |
| DH-R140-630 |  | R140 - Connect MC Cables to MTS |  | 6d | 2027-03-31 | 2027-04-06 | DH-R140-680, DH-R140-670, DH-R140-620 |  |  |  | -6d | 0d |  |  | HELIX | DH1400 |  |  |  |  |  |
| DH-R140-690 |  | R140 - Pull Wire for DH PQM |  | 3d | 2027-03-31 | 2027-04-02 | DH-R140-680 |  |  |  | -6d | 0d |  |  | HELIX | DH1400 |  |  |  |  |  |
| DH-R140-700 |  | R140 - Terminate DH PQM |  | 4d | 2027-04-03 | 2027-04-07 | DH-R140-690 |  |  |  | -6d | 0d |  |  | HELIX | DH1400 |  |  |  |  |  |
| DH-R140-640 |  | R140 - Terminate MC Cables at MTS |  | 7d | 2027-04-07 | 2027-04-14 | DH-R140-630 |  |  |  | -6d | 0d |  |  | HELIX | DH1400 |  |  |  |  |  |
| DH-R140-650 |  | R140 - Pull MC Cable from MTS to Starline |  | 3d | 2027-04-07 | 2027-04-09 | DH-R140-630 |  |  |  | -5d | 0d |  |  | HELIX | DH1400 |  |  |  |  |  |
| DH-R140-710 |  | R140 - HAC Lighting Switches / Emergency Relay at the same time when set MTS and PQM |  | 3d | 2027-04-08 | 2027-04-10 | DH-R140-700 |  |  |  | -6d | 0d |  |  | HELIX | DH1400 |  |  |  |  |  |
| DH-R140-660 |  | R140 - Terminate MC Cables at Starline |  | 3d | 2027-04-10 | 2027-04-13 | DH-R140-650, DH-R140-630 |  |  |  | -5d | 1d |  |  | HELIX | DH1400 |  |  |  |  |  |
| DH-R140-720 |  | R140 - Terminate Lighting Wiring |  | 3d | 2027-04-12 | 2027-04-14 | DH-R140-710 |  |  |  | -6d | 0d |  |  | HELIX | DH1400 |  |  |  |  |  |
| DH-R140-730 |  | R140 - QC 2.2 Checklist |  | 1d | 2027-04-15 | 2027-04-15 | DH-R140-720, DH-R140-660, DH-R140-640 |  |  |  | -6d | 15d |  |  | HELIX | DH1400 |  |  |  |  |  |

| ID | WBS | Activity | Duration | Start | Finish | Predecessors | Complete | Planned start | Planned finish | Total float | Free float | COMMENTS | QTS - Subcontractor | QTS - AREA | QTS - DC7 |
| --- | --- | --- | --- | --- | --- | --- | --- | --- | --- | --- | --- | --- | --- | --- | --- |
|  | 1 | **A140** |  | 2026-10-01 | 2027-04-15 |  |  |  |  |  |  |  |  |  |  |
| DH-A140-550 |  | A140 - Install Supplemental Steel (overhead support for strut/trapeze) | 6d | 2026-10-01 A | 2026-10-01 A | DH-R140-550 SS | 100% | 2026-11-13 | 2026-11-19 |  |  | Suffolk | HELIX | DH1400 |  |
| DH-A140-560 |  | A140 - Hang Trapeze System / Strut Racking | 7d | 2026-10-31 | 2026-11-07 | DH-A140-550 |  |  |  | 55d | 47d |  | HELIX | DH1400 |  |
| DH-A140-600 |  | A140 - Hang Starline Bus | 10d | 2027-01-11 | 2027-01-21 | DH-R140-600 SS, DH-A140-560 |  |  |  | 27d | 0d |  | HELIX | DH1400 |  |
| DH-A140-570 |  | A140 - Pull MC Cable from PDU to MTS | 15d | 2027-02-13 | 2027-03-02 | DH-R140-570 SS, DH-A140-560 |  |  |  | -21d | 0d |  | HELIX | DH1400 | BB |
| DH-A140-580 |  | A140 - HAC Aisle Structure Set by others | 3d | 2027-03-03 | 2027-03-05 | DH-R140-580 SS, DH-A140-570 |  |  |  | -13d | 0d |  | HELIX | DH1400 |  |
| DH-A140-590 |  | A140 - HAC Aisle Light install | 6d | 2027-03-06 | 2027-03-12 | DH-A140-580, DH-R140-590 SS, PRC-LGT-80 |  |  |  | -13d | 0d |  | HELIX | DH1400 |  |
| DH-A140-610 |  | A140 - HAC Aisle Structure Raised by others | 1d | 2027-03-13 | 2027-03-13 | DH-A140-600, DH-A140-580, DH-A140-590 |  |  |  | -6d | 0d |  | HELIX | DH1400 |  |
| DH-A140-620 |  | A140 - Set MTS | 4d | 2027-03-15 | 2027-03-18 | DH-A140-610 |  |  |  | -6d | 0d |  | HELIX | DH1400 |  |
| DH-A140-670 |  | A140 - Set DH PQM | 4d | 2027-03-19 | 2027-03-23 | DH-A140-620 |  |  |  | -6d | 0d |  | HELIX | DH1400 |  |
| DH-A140-680 |  | A140 - Pipe Data Hall PQM | 6d | 2027-03-24 | 2027-03-30 | DH-A140-670 |  |  |  | -6d | 0d |  | HELIX | DH1400 |  |
| DH-A140-630 |  | A140 - Connect MC Cables to MTS | 6d | 2027-03-31 | 2027-04-06 | DH-A140-680, DH-A140-670, DH-A140-620 |  |  |  | -6d | 0d |  | HELIX | DH1400 |  |
| DH-A140-690 |  | A140 - Pull Wire for DH PQM | 3d | 2027-03-31 | 2027-04-02 | DH-A140-680 |  |  |  | -6d | 0d |  | HELIX | DH1400 |  |
| DH-A140-700 |  | A140 - Terminate DH PQM | 4d | 2027-04-03 | 2027-04-07 | DH-A140-690 |  |  |  | -6d | 0d |  | HELIX | DH1400 |  |
| DH-A140-640 |  | A140 - Terminate MC Cables at MTS | 7d | 2027-04-07 | 2027-04-14 | DH-A140-630 |  |  |  | -6d | 0d |  | HELIX | DH1400 |  |
| DH-A140-650 |  | A140 - Pull MC Cable from MTS to Starline | 3d | 2027-04-07 | 2027-04-09 | DH-A140-630 |  |  |  | -5d | 0d |  | HELIX | DH1400 |  |
| DH-A140-710 |  | A140 - HAC Lighting Switches / Emergency Relay at the same time when set MTS and PQM | 3d | 2027-04-08 | 2027-04-10 | DH-A140-700 |  |  |  | -6d | 0d |  | HELIX | DH1400 |  |
| DH-A140-660 |  | A140 - Terminate MC Cables at Starline | 3d | 2027-04-10 | 2027-04-13 | DH-A140-650, DH-A140-630 |  |  |  | -5d | 1d |  | HELIX | DH1400 |  |
| DH-A140-720 |  | A140 - Terminate Lighting Wiring | 3d | 2027-04-12 | 2027-04-14 | DH-A140-710 |  |  |  | -6d | 0d |  | HELIX | DH1400 |  |
| DH-A140-740 |  | A140 - QC 2.2 Checklist | 1d | 2027-04-15 | 2027-04-15 | DH-A140-720, DH-A140-660, DH-A140-640 |  |  |  | -6d | 15d |  | HELIX | DH1400 |  |
|  | 2 | **B140** |  | 2026-10-02 | 2027-04-15 |  |  |  |  |  |  |  |  |  |  |
| DH-B140-550 |  | B140 - Install Supplemental Steel (overhead support for strut/trapeze) | 6d | 2026-10-02 A | 2026-10-02 A | DH-A140-550 SS | 100% | 2026-11-13 | 2026-11-19 |  |  | Suffolk | HELIX | DH1400 |  |
| DH-B140-560 |  | B140 - Hang Trapeze System / Strut Racking | 7d | 2026-10-31 | 2026-11-07 | DH-B140-550 |  |  |  | 55d | 47d |  | HELIX | DH1400 |  |
| DH-B140-600 |  | B140 - Hang Starline Bus | 10d | 2027-01-11 | 2027-01-21 | DH-A140-600 SS, DH-B140-560 |  |  |  | 27d | 0d |  | HELIX | DH1400 |  |
| DH-B140-570 |  | B140 - Pull MC Cable from PDU to MTS | 15d | 2027-02-13 | 2027-03-02 | DH-A140-570 SS, DH-B140-560 |  |  |  | -21d | 0d |  | HELIX | DH1400 | BB |
| DH-B140-580 |  | B140 - HAC Aisle Structure Set by others | 3d | 2027-03-03 | 2027-03-05 | DH-B140-570 |  |  |  | -13d | 0d |  | HELIX | DH1400 |  |
| DH-B140-590 |  | B140 - HAC Aisle Light install | 6d | 2027-03-06 | 2027-03-12 | DH-B140-580, DH-A140-590 SS, PRC-LGT-80 |  |  |  | -13d | 0d |  | HELIX | DH1400 |  |
| DH-B140-610 |  | B140 - HAC Aisle Structure Raised by others | 1d | 2027-03-13 | 2027-03-13 | DH-B140-600, DH-B140-580, DH-B140-590 |  |  |  | -6d | 0d |  | HELIX | DH1400 |  |
| DH-B140-620 |  | B140 - Set MTS | 4d | 2027-03-15 | 2027-03-18 | DH-B140-610 |  |  |  | -6d | 0d |  | HELIX | DH1400 |  |
| DH-B140-670 |  | B140 - Set DH PQM | 4d | 2027-03-19 | 2027-03-23 | DH-B140-620 |  |  |  | -6d | 0d |  | HELIX | DH1400 |  |
| DH-B140-680 |  | B140 - Pipe Data Hall PQM | 6d | 2027-03-24 | 2027-03-30 | DH-B140-670 |  |  |  | -6d | 0d |  | HELIX | DH1400 |  |
| DH-B140-630 |  | B140 - Connect MC Cables to MTS | 6d | 2027-03-31 | 2027-04-06 | DH-B140-680, DH-B140-670, DH-B140-620 |  |  |  | -6d | 0d |  | HELIX | DH1400 |  |
| DH-B140-690 |  | B140 - Pull Wire for DH PQM | 3d | 2027-03-31 | 2027-04-02 | DH-B140-680 |  |  |  | -6d | 0d |  | HELIX | DH1400 |  |
| DH-B140-700 |  | B140 - Terminate DH PQM | 4d | 2027-04-03 | 2027-04-07 | DH-B140-690 |  |  |  | -6d | 0d |  | HELIX | DH1400 |  |
| DH-B140-640 |  | B140 - Terminate MC Cables at MTS | 7d | 2027-04-07 | 2027-04-14 | DH-B140-630 |  |  |  | -6d | 0d |  | HELIX | DH1400 |  |
| DH-B140-650 |  | B140 - Pull MC Cable from MTS to Starline | 3d | 2027-04-07 | 2027-04-09 | DH-B140-630 |  |  |  | -5d | 0d |  | HELIX | DH1400 |  |
| DH-B140-710 |  | B140 - HAC Lighting Switches / Emergency Relay at the same time when set MTS and PQM | 3d | 2027-04-08 | 2027-04-10 | DH-B140-700 |  |  |  | -6d | 0d |  | HELIX | DH1400 |  |
| DH-B140-660 |  | B140 - Terminate MC Cables at Starline | 3d | 2027-04-10 | 2027-04-13 | DH-B140-650, DH-B140-630 |  |  |  | -5d | 1d |  | HELIX | DH1400 |  |
| DH-B140-720 |  | B140 - Terminate Lighting Wiring | 3d | 2027-04-12 | 2027-04-14 | DH-B140-710 |  |  |  | -6d | 0d |  | HELIX | DH1400 |  |
| DH-B140-750 |  | B140 - QC 2.2 Checklist | 1d | 2027-04-15 | 2027-04-15 | DH-B140-720, DH-B140-660, DH-B140-640 |  |  |  | -6d | 15d |  | HELIX | DH1400 |  |

| ID | WBS | Activity | Duration | Start | Finish | Predecessors | Complete | Planned start | Planned finish | Total float | Free float | COMMENTS | QTS - Subcontractor | QTS - AREA | QTS - DC7 |
| --- | --- | --- | --- | --- | --- | --- | --- | --- | --- | --- | --- | --- | --- | --- | --- |
|  | 3 | **C140** |  | 2026-10-02 | 2027-04-15 |  |  |  |  |  |  |  |  |  |  |
| DH-C140-550 |  | C140 - Install Supplemental Steel (overhead support for strut/trapeze) | 6d | 2026-10-02 A | 2026-10-02 A | DH-B140-550 SS | 100% | 2026-11-13 | 2026-11-19 |  |  | Suffolk | HELIX | DH1400 |  |
| DH-C140-560 |  | C140 - Hang Trapeze System / Strut Racking | 7d | 2026-10-31 | 2026-11-07 | DH-C140-550 |  |  |  | 55d | 47d |  | HELIX | DH1400 |  |
| DH-C140-600 |  | C140 - Hang Starline Bus | 10d | 2027-01-11 | 2027-01-21 | DH-B140-600 SS, DH-C140-560 |  |  |  | 27d | 0d |  | HELIX | DH1400 |  |
| DH-C140-570 |  | C140 - Pull MC Cable from PDU to MTS | 15d | 2027-02-13 | 2027-03-02 | DH-B140-570 SS, DH-C140-560 |  |  |  | -21d | 0d |  | HELIX | DH1400 | BB |
| DH-C140-580 |  | C140 - HAC Aisle Structure Set by others | 3d | 2027-03-03 | 2027-03-05 | DH-C140-570 |  |  |  | -13d | 0d |  | HELIX | DH1400 |  |
| DH-C140-590 |  | C140 - HAC Aisle Light install | 6d | 2027-03-06 | 2027-03-12 | DH-B140-590 SS, DH-C140-580, PRC-LGT-80 |  |  |  | -13d | 0d |  | HELIX | DH1400 |  |
| DH-C140-610 |  | C140 - HAC Aisle Structure Raised by others | 1d | 2027-03-13 | 2027-03-13 | DH-C140-600, DH-C140-580, DH-C140-590 |  |  |  | -6d | 0d |  | HELIX | DH1400 |  |
| DH-C140-620 |  | C140 - Set MTS | 4d | 2027-03-15 | 2027-03-18 | DH-C140-610 |  |  |  | -6d | 0d |  | HELIX | DH1400 |  |
| DH-C140-670 |  | C140 - Set DH PQM | 4d | 2027-03-19 | 2027-03-23 | DH-C140-620 |  |  |  | -6d | 0d |  | HELIX | DH1400 |  |
| DH-C140-680 |  | C140 - Pipe Data Hall PQM | 6d | 2027-03-24 | 2027-03-30 | DH-C140-670 |  |  |  | -6d | 0d |  | HELIX | DH1400 |  |
| DH-C140-630 |  | C140 - Connect MC Cables to MTS | 6d | 2027-03-31 | 2027-04-06 | DH-C140-680, DH-C140-670, DH-C140-620 |  |  |  | -6d | 0d |  | HELIX | DH1400 |  |
| DH-C140-690 |  | C140 - Pull Wire for DH PQM | 3d | 2027-03-31 | 2027-04-02 | DH-C140-680 |  |  |  | -6d | 0d |  | HELIX | DH1400 |  |
| DH-C140-700 |  | C140 - Terminate DH PQM | 4d | 2027-04-03 | 2027-04-07 | DH-C140-690 |  |  |  | -6d | 0d |  | HELIX | DH1400 |  |
| DH-C140-640 |  | C140 - Terminate MC Cables at MTS | 7d | 2027-04-07 | 2027-04-14 | DH-C140-630 |  |  |  | -6d | 0d |  | HELIX | DH1400 |  |
| DH-C140-650 |  | C140 - Pull MC Cable from MTS to Starline | 3d | 2027-04-07 | 2027-04-09 | DH-C140-630 |  |  |  | -5d | 0d |  | HELIX | DH1400 |  |
| DH-C140-710 |  | C140 - HAC Lighting Switches / Emergency Relay at the same time when set MTS and PQM | 3d | 2027-04-08 | 2027-04-10 | DH-C140-700 |  |  |  | -6d | 0d |  | HELIX | DH1400 |  |
| DH-C140-660 |  | C140 - Terminate MC Cables at Starline | 3d | 2027-04-10 | 2027-04-13 | DH-C140-650, DH-C140-630 |  |  |  | -5d | 1d |  | HELIX | DH1400 |  |
| DH-C140-720 |  | C140 - Terminate Lighting Wiring | 3d | 2027-04-12 | 2027-04-14 | DH-C140-710 |  |  |  | -6d | 0d |  | HELIX | DH1400 |  |
| DH-C140-760 |  | C140 - QC 2.2 Checklist | 1d | 2027-04-15 | 2027-04-15 | DH-C140-720, DH-C140-660, DH-C140-640 |  |  |  | -6d | 15d |  | HELIX | DH1400 |  |
|  | 4 | **D140** |  | 2026-10-02 | 2027-04-15 |  |  |  |  |  |  |  |  |  |  |
| DH-D140-550 |  | D140 - Install Supplemental Steel (overhead support for strut/trapeze) | 6d | 2026-10-02 A | 2026-10-02 A | DH-C140-550 SS | 100% | 2026-11-13 | 2026-11-19 |  |  | Suffolk | HELIX | DH1400 |  |
| DH-D140-560 |  | D140 - Hang Trapeze System / Strut Racking | 7d | 2026-10-03 A | 2026-10-03 A | DH-D140-550 | 100% | 2026-11-20 | 2026-12-01 |  |  |  | HELIX | DH1400 |  |
| DH-D140-600 |  | D140 - Hang Starline Bus | 10d | 2027-01-11 | 2027-01-21 | DH-C140-600 SS, DH-D140-560 |  |  |  | 27d | 0d |  | HELIX | DH1400 |  |
| DH-D140-570 |  | D140 - Pull MC Cable from PDU to MTS | 15d | 2027-02-13 | 2027-03-02 | DH-C140-570 SS, DH-D140-560 |  |  |  | -21d | 0d |  | HELIX | DH1400 | BB |
| DH-D140-580 |  | D140 - HAC Aisle Structure Set by others | 3d | 2027-03-03 | 2027-03-05 | DH-D140-570 |  |  |  | -13d | 0d |  | HELIX | DH1400 |  |
| DH-D140-590 |  | D140 - HAC Aisle Light install | 6d | 2027-03-06 | 2027-03-12 | DH-C140-590 SS, DH-D140-580, PRC-LGT-80 |  |  |  | -13d | 0d |  | HELIX | DH1400 |  |
| DH-D140-610 |  | D140 - HAC Aisle Structure Raised by others | 1d | 2027-03-13 | 2027-03-13 | DH-D140-600, DH-D140-580, DH-D140-590 |  |  |  | -13d | 0d |  | HELIX | DH1400 |  |
| DH-D140-620 |  | D140 - Set MTS | 4d | 2027-03-15 | 2027-03-18 | DH-D140-610 |  |  |  | -13d | 0d |  | HELIX | DH1400 |  |
| DH-D140-670 |  | D140 - Set DH PQM | 4d | 2027-03-19 | 2027-03-23 | DH-D140-620 |  |  |  | -13d | 0d |  | HELIX | DH1400 |  |
| DH-D140-680 |  | D140 - Pipe Data Hall PQM | 6d | 2027-03-24 | 2027-03-30 | DH-D140-670 |  |  |  | -13d | 0d |  | HELIX | DH1400 |  |
| DH-D140-630 |  | D140 - Connect MC Cables to MTS | 6d | 2027-03-31 | 2027-04-06 | DH-D140-680, DH-D140-670, DH-D140-620 |  |  |  | -13d | 0d |  | HELIX | DH1400 |  |
| DH-D140-690 |  | D140 - Pull Wire for DH PQM | 3d | 2027-03-31 | 2027-04-02 | DH-D140-680 |  |  |  | -6d | 0d |  | HELIX | DH1400 |  |
| DH-D140-700 |  | D140 - Terminate DH PQM | 4d | 2027-04-03 | 2027-04-07 | DH-D140-690 |  |  |  | -6d | 0d |  | HELIX | DH1400 |  |
| DH-D140-640 |  | D140 - Terminate MC Cables at MTS | 7d | 2027-04-07 | 2027-04-14 | DH-D140-630 |  |  |  | -6d | 0d |  | HELIX | DH1400 |  |
| DH-D140-650 |  | D140 - Pull MC Cable from MTS to Starline | 3d | 2027-04-07 | 2027-04-09 | DH-D140-630 |  |  |  | -5d | 0d |  | HELIX | DH1400 |  |
| DH-D140-710 |  | D140 - HAC Lighting Switches / Emergency Relay at the same time when set MTS and PQM | 3d | 2027-04-08 | 2027-04-10 | DH-D140-700 |  |  |  | -6d | 0d |  | HELIX | DH1400 |  |
| DH-D140-660 |  | D140 - Terminate MC Cables at Starline | 3d | 2027-04-10 | 2027-04-13 | DH-D140-650, DH-D140-630 |  |  |  | -5d | 1d |  | HELIX | DH1400 |  |
| DH-D140-720 |  | D140 - Terminate Lighting Wiring | 3d | 2027-04-12 | 2027-04-14 | DH-D140-710 |  |  |  | -6d | 0d |  | HELIX | DH1400 |  |
| DH-D140-770 |  | D140 - QC 2.2 Checklist | 1d | 2027-04-15 | 2027-04-15 | DH-D140-720, DH-D140-660, DH-D140-640 |  |  |  | -6d | 15d |  | HELIX | DH1400 |  |

| ID | WBS | Activity | Duration | Start | Finish | Predecessors | Complete | Planned start | Planned finish | Total float | Free float | COMMENTS | QTS - Subcontractor | QTS - AREA | QTS - DC7 |
| --- | --- | --- | --- | --- | --- | --- | --- | --- | --- | --- | --- | --- | --- | --- | --- |
|  | 5 | **E140** |  | 2026-10-03 | 2027-05-03 |  |  |  |  |  |  |  |  |  |  |
| DH-E140-550 |  | E140 - Install Supplemental Steel (overhead support for strut/trapeze) | 6d | 2026-10-03 A | 2026-10-03 A | DH-D140-550 SS | 100% | 2026-11-13 | 2026-11-19 |  |  | Suffolk | HELIX | DH1400 |  |
| DH-E140-560 |  | E140 - Hang Trapeze System / Strut Racking | 7d | 2026-10-03 A | 2026-10-03 A | DH-E140-550 | 100% | 2026-11-20 | 2026-12-01 |  |  |  | HELIX | DH1400 |  |
| DH-E140-600 |  | E140 - Hang Starline Bus | 10d | 2027-01-22 | 2027-02-02 | DH-D140-600, DH-E140-560 |  |  |  | 27d | 0d |  | HELIX | DH1400 |  |
| DH-E140-570 |  | E140 - Pull MC Cable from PDU to MTS | 15d | 2027-03-03 | 2027-03-19 | DH-D140-570, DH-E140-560 |  |  |  | -21d | 0d |  | HELIX | DH1400 | BB |
| DH-E140-580 |  | E140 - HAC Aisle Structure Set by others | 3d | 2027-03-20 | 2027-03-23 | DH-E140-570 |  |  |  | -21d | 0d |  | HELIX | DH1400 |  |
| DH-E140-590 |  | E140 - HAC Aisle Light install | 6d | 2027-03-24 | 2027-03-30 | DH-D140-590, DH-E140-580, PRC-LGT-80 |  |  |  | -21d | 0d |  | HELIX | DH1400 |  |
| DH-E140-610 |  | E140 - HAC Aisle Structure Raised by others | 1d | 2027-03-31 | 2027-03-31 | DH-E140-600, DH-E140-580, DH-E140-590 |  |  |  | -21d | 0d |  | HELIX | DH1400 |  |
| DH-E140-620 |  | E140 - Set MTS | 4d | 2027-04-01 | 2027-04-05 | DH-E140-610, PR-1090 |  |  |  | -21d | 0d |  | HELIX | DH1400 |  |
| DH-E140-670 |  | E140 - Set DH PQM | 4d | 2027-04-06 | 2027-04-09 | DH-E140-620 |  |  |  | -21d | 0d |  | HELIX | DH1400 |  |
| DH-E140-680 |  | E140 - Pipe Data Hall PQM | 6d | 2027-04-10 | 2027-04-16 | DH-E140-670 |  |  |  | -21d | 0d |  | HELIX | DH1400 |  |
| DH-E140-630 |  | E140 - Connect MC Cables to MTS | 6d | 2027-04-17 | 2027-04-23 | DH-E140-680, DH-E140-670, DH-E140-620 |  |  |  | -21d | 0d |  | HELIX | DH1400 |  |
| DH-E140-690 |  | E140 - Pull Wire for DH PQM | 3d | 2027-04-17 | 2027-04-20 | DH-E140-680 |  |  |  | -21d | 0d |  | HELIX | DH1400 |  |
| DH-E140-700 |  | E140 - Terminate DH PQM | 4d | 2027-04-21 | 2027-04-24 | DH-E140-690 |  |  |  | -21d | 0d |  | HELIX | DH1400 |  |
| DH-E140-640 |  | E140 - Terminate MC Cables at MTS | 7d | 2027-04-24 | 2027-05-01 | DH-E140-630 |  |  |  | -21d | 0d |  | HELIX | DH1400 |  |
| DH-E140-650 |  | E140 - Pull MC Cable from MTS to Starline | 3d | 2027-04-24 | 2027-04-27 | DH-E140-630 |  |  |  | -20d | 0d |  | HELIX | DH1400 |  |
| DH-E140-710 |  | E140 - HAC Lighting Switches / Emergency Relay at the same time when set MTS and PQM | 3d | 2027-04-26 | 2027-04-28 | DH-E140-700 |  |  |  | -21d | 0d |  | HELIX | DH1400 |  |
| DH-E140-660 |  | E140 - Terminate MC Cables at Starline | 3d | 2027-04-28 | 2027-04-30 | DH-E140-650, DH-E140-630 |  |  |  | -20d | 1d |  | HELIX | DH1400 |  |
| DH-E140-720 |  | E140 - Terminate Lighting Wiring | 3d | 2027-04-29 | 2027-05-01 | DH-E140-710 |  |  |  | -21d | 0d |  | HELIX | DH1400 |  |
| DH-E140-780 |  | E140 - QC 2.2 Checklist | 1d | 2027-05-03 | 2027-05-03 | DH-E140-720, DH-E140-660, DH-E140-640 |  |  |  | -21d | 0d |  | HELIX | DH1400 |  |
|  | 6 | **F140** |  | 2026-10-03 | 2027-05-03 |  |  |  |  |  |  |  |  |  |  |
| DH-F140-550 |  | F140 - Install Supplemental Steel (overhead support for strut/trapeze) | 6d | 2026-10-03 A | 2026-10-03 A | DH-E140-550, DH-E140-560 | 100% | 2026-12-02 | 2026-12-08 |  |  | Suffolk | HELIX | DH1400 |  |
| DH-F140-560 |  | F140 - Hang Trapeze System / Strut Racking | 7d | 2026-10-05 A | 2026-10-05 A | DH-F140-550 | 100% | 2026-12-09 | 2026-12-16 |  |  |  | HELIX | DH1400 |  |
| DH-F140-600 |  | F140 - Hang Starline Bus | 10d | 2027-01-22 | 2027-02-02 | DH-E140-600 SS, DH-F140-560 |  |  |  | 27d | 0d |  | HELIX | DH1400 |  |
| DH-F140-570 |  | F140 - Pull MC Cable from PDU to MTS | 15d | 2027-03-03 | 2027-03-19 | DH-E140-570 SS, DH-F140-560 |  |  |  | -21d | 0d |  | HELIX | DH1400 | BB |
| DH-F140-580 |  | F140 - HAC Aisle Structure Set by others | 3d | 2027-03-20 | 2027-03-23 | DH-E140-580 SS, DH-F140-570 |  |  |  | -21d | 0d |  | HELIX | DH1400 |  |
| DH-F140-590 |  | F140 - HAC Aisle Light install | 6d | 2027-03-24 | 2027-03-30 | DH-E140-590 SS, DH-F140-580, PRC-LGT-80 |  |  |  | -21d | 0d |  | HELIX | DH1400 |  |
| DH-F140-610 |  | F140 - HAC Aisle Structure Raised by others | 1d | 2027-03-31 | 2027-03-31 | DH-F140-600, DH-F140-580, DH-F140-590 |  |  |  | -21d | 0d |  | HELIX | DH1400 |  |
| DH-F140-620 |  | F140 - Set MTS | 4d | 2027-04-01 | 2027-04-05 | DH-F140-610 |  |  |  | -21d | 0d |  | HELIX | DH1400 |  |
| DH-F140-670 |  | F140 - Set DH PQM | 4d | 2027-04-06 | 2027-04-09 | DH-F140-620 |  |  |  | -21d | 0d |  | HELIX | DH1400 |  |
| DH-F140-680 |  | F140 - Pipe Data Hall PQM | 6d | 2027-04-10 | 2027-04-16 | DH-F140-670 |  |  |  | -21d | 0d |  | HELIX | DH1400 |  |
| DH-F140-630 |  | F140 - Connect MC Cables to MTS | 6d | 2027-04-17 | 2027-04-23 | DH-F140-680, DH-F140-670, DH-F140-620 |  |  |  | -21d | 0d |  | HELIX | DH1400 |  |
| DH-F140-690 |  | F140 - Pull Wire for DH PQM | 3d | 2027-04-17 | 2027-04-20 | DH-F140-680 |  |  |  | -21d | 0d |  | HELIX | DH1400 |  |
| DH-F140-700 |  | F140 - Terminate DH PQM | 4d | 2027-04-21 | 2027-04-24 | DH-F140-690 |  |  |  | -21d | 0d |  | HELIX | DH1400 |  |
| DH-F140-640 |  | F140 - Terminate MC Cables at MTS | 7d | 2027-04-24 | 2027-05-01 | DH-F140-630 |  |  |  | -21d | 0d |  | HELIX | DH1400 |  |
| DH-F140-650 |  | F140 - Pull MC Cable from MTS to Starline | 3d | 2027-04-24 | 2027-04-27 | DH-F140-630 |  |  |  | -20d | 0d |  | HELIX | DH1400 |  |
| DH-F140-710 |  | F140 - HAC Lighting Switches / Emergency Relay at the same time when set MTS and PQM | 3d | 2027-04-26 | 2027-04-28 | DH-F140-700 |  |  |  | -21d | 0d |  | HELIX | DH1400 |  |
| DH-F140-660 |  | F140 - Terminate MC Cables at Starline | 3d | 2027-04-28 | 2027-04-30 | DH-F140-650, DH-F140-630 |  |  |  | -20d | 1d |  | HELIX | DH1400 |  |
| DH-F140-720 |  | F140 - Terminate Lighting Wiring | 3d | 2027-04-29 | 2027-05-01 | DH-F140-710 |  |  |  | -21d | 0d |  | HELIX | DH1400 |  |
| DH-F140-790 |  | F140 - QC 2.2 Checklist | 1d | 2027-05-03 | 2027-05-03 | DH-F140-720, DH-F140-660, DH-F140-640 |  |  |  | -21d | 0d |  | HELIX | DH1400 |  |

| ID | WBS | Activity | Duration | Start | Finish | Predecessors | Complete | Planned start | Planned finish | Total float | Free float | COMMENTS | QTS - Subcontractor | QTS - AREA | QTS - DC7 |
| --- | --- | --- | --- | --- | --- | --- | --- | --- | --- | --- | --- | --- | --- | --- | --- |
|  | 7 | **G140** |  | 2026-10-03 | 2027-05-03 |  |  |  |  |  |  |  |  |  |  |
| DH-G140-550 |  | G140 - Install Supplemental Steel (overhead support for strut/trapeze) | 6d | 2026-10-03 A | 2026-10-03 A | DH-F140-550 SS | 100% | 2026-10-03 | 2026-10-09 |  |  | Suffolk | HELIX | DH1400 |  |
| DH-G140-560 |  | G140 - Hang Trapeze System / Strut Racking | 7d | 2026-10-05 A | 2026-10-05 A | DH-G140-550 | 100% | 2026-12-09 | 2026-12-16 |  |  |  | HELIX | DH1400 |  |
| DH-G140-600 |  | G140 - Hang Starline Bus | 10d | 2027-01-22 | 2027-02-02 | DH-F140-600 SS, DH-G140-560 |  |  |  | 27d | 0d |  | HELIX | DH1400 |  |
| DH-G140-570 |  | G140 - Pull MC Cable from PDU to MTS | 15d | 2027-03-03 | 2027-03-19 | PRC-MCC-040, DH-F140-570 SS, DH-G140-560 |  |  |  | -21d | 0d |  | HELIX | DH1400 | BB |
| DH-G140-580 |  | G140 - HAC Aisle Structure Set by others | 3d | 2027-03-20 | 2027-03-23 | DH-F140-580 SS, DH-G140-570 |  |  |  | -21d | 0d |  | HELIX | DH1400 |  |
| DH-G140-590 |  | G140 - HAC Aisle Light install | 6d | 2027-03-24 | 2027-03-30 | DH-F140-590 SS, DH-G140-580, PRC-LGT-80 |  |  |  | -21d | 0d |  | HELIX | DH1400 |  |
| DH-G140-610 |  | G140 - HAC Aisle Structure Raised by others | 1d | 2027-03-31 | 2027-03-31 | DH-F140-610 SS, DH-G140-600, DH-G140-580, DH-G140-590 |  |  |  | -21d | 0d |  | HELIX | DH1400 |  |
| DH-G140-620 |  | G140 - Set MTS | 4d | 2027-04-01 | 2027-04-05 | DH-F140-620 SS, DH-G140-610 |  |  |  | -21d | 0d |  | HELIX | DH1400 |  |
| DH-G140-670 |  | G140 - Set DH PQM | 4d | 2027-04-06 | 2027-04-09 | DH-F140-670 SS, DH-G140-620 |  |  |  | -21d | 0d |  | HELIX | DH1400 |  |
| DH-G140-680 |  | G140 - Pipe Data Hall PQM | 6d | 2027-04-10 | 2027-04-16 | DH-G140-670 |  |  |  | -21d | 0d |  | HELIX | DH1400 |  |
| DH-G140-630 |  | G140 - Connect MC Cables to MTS | 6d | 2027-04-17 | 2027-04-23 | DH-G140-680, DH-G140-670, DH-G140-620 |  |  |  | -21d | 0d |  | HELIX | DH1400 |  |
| DH-G140-690 |  | G140 - Pull Wire for DH PQM | 3d | 2027-04-17 | 2027-04-20 | DH-G140-680 |  |  |  | -21d | 0d |  | HELIX | DH1400 |  |
| DH-G140-700 |  | G140 - Terminate DH PQM | 4d | 2027-04-21 | 2027-04-24 | DH-G140-690 |  |  |  | -21d | 0d |  | HELIX | DH1400 |  |
| DH-G140-640 |  | G140 - Terminate MC Cables at MTS | 7d | 2027-04-24 | 2027-05-01 | DH-G140-630 |  |  |  | -21d | 0d |  | HELIX | DH1400 |  |
| DH-G140-650 |  | G140 - Pull MC Cable from MTS to Starline | 3d | 2027-04-24 | 2027-04-27 | DH-G140-630 |  |  |  | -20d | 0d |  | HELIX | DH1400 |  |
| DH-G140-710 |  | G140 - HAC Lighting Switches / Emergency Relay at the same time when set MTS and PQM | 3d | 2027-04-26 | 2027-04-28 | DH-G140-700 |  |  |  | -21d | 0d |  | HELIX | DH1400 |  |
| DH-G140-660 |  | G140 - Terminate MC Cables at Starline | 3d | 2027-04-28 | 2027-04-30 | DH-G140-650, DH-G140-630 |  |  |  | -20d | 1d |  | HELIX | DH1400 |  |
| DH-G140-720 |  | G140 - Terminate Lighting Wiring | 3d | 2027-04-29 | 2027-05-01 | DH-G140-710 |  |  |  | -21d | 0d |  | HELIX | DH1400 |  |
| DH-G140-800 |  | G140 - QC 2.2 Checklist | 1d | 2027-05-03 | 2027-05-03 | DH-G140-720, DH-G140-660, DH-G140-640 |  |  |  | -21d | 0d |  | HELIX | DH1400 |  |
|  | 8 | **H140** |  | 2026-10-03 | 2027-05-03 |  |  |  |  |  |  |  |  |  |  |
| DH-H140-550 |  | H140 - Install Supplemental Steel (overhead support for strut/trapeze) | 6d | 2026-10-03 A | 2026-10-05 A | DH-G140-550 SS | 100% | 2026-12-02 | 2026-12-08 |  |  | Suffolk | HELIX | DH1400 |  |
| DH-H140-560 |  | H140 - Hang Trapeze System / Strut Racking | 7d | 2026-10-05 A | 2026-10-06 A | DH-H140-550 | 100% | 2026-12-09 | 2026-12-16 |  |  |  | HELIX | DH1400 |  |
| DH-H140-600 |  | H140 - Hang Starline Bus | 10d | 2027-01-22 | 2027-02-02 | DH-G140-600 SS, DH-H140-560 |  |  |  | 27d | 0d |  | HELIX | DH1400 |  |
| DH-H140-570 |  | H140 - Pull MC Cable from PDU to MTS | 15d | 2027-03-03 | 2027-03-19 | PRC-MCC-040, DH-G140-570 SS, DH-H140-560 |  |  |  | -21d | 0d |  | HELIX | DH1400 | BB |
| DH-H140-580 |  | H140 - HAC Aisle Structure Set by others | 3d | 2027-03-20 | 2027-03-23 | DH-H140-570 |  |  |  | -21d | 0d |  | HELIX | DH1400 |  |
| DH-H140-590 |  | H140 - HAC Aisle Light install | 6d | 2027-03-24 | 2027-03-30 | DH-G140-590 SS, DH-H140-580, PRC-LGT-80 |  |  |  | -21d | 0d |  | HELIX | DH1400 |  |
| DH-H140-610 |  | H140 - HAC Aisle Structure Raised by others | 1d | 2027-03-31 | 2027-03-31 | DH-H140-600, DH-H140-580, DH-H140-590 |  |  |  | -21d | 0d |  | HELIX | DH1400 |  |
| DH-H140-620 |  | H140 - Set MTS | 4d | 2027-04-01 | 2027-04-05 | DH-H140-610 |  |  |  | -21d | 0d |  | HELIX | DH1400 |  |
| DH-H140-670 |  | H140 - Set DH PQM | 4d | 2027-04-06 | 2027-04-09 | DH-H140-620 |  |  |  | -21d | 0d |  | HELIX | DH1400 |  |
| DH-H140-680 |  | H140 - Pipe Data Hall PQM | 6d | 2027-04-10 | 2027-04-16 | DH-H140-670 |  |  |  | -21d | 0d |  | HELIX | DH1400 |  |
| DH-H140-630 |  | H140 - Connect MC Cables to MTS | 6d | 2027-04-17 | 2027-04-23 | DH-H140-680, DH-H140-670, DH-H140-620 |  |  |  | -21d | 0d |  | HELIX | DH1400 |  |
| DH-H140-690 |  | H140 - Pull Wire for DH PQM | 3d | 2027-04-17 | 2027-04-20 | DH-H140-680 |  |  |  | -21d | 0d |  | HELIX | DH1400 |  |
| DH-H140-700 |  | H140 - Terminate DH PQM | 4d | 2027-04-21 | 2027-04-24 | DH-H140-690 |  |  |  | -21d | 0d |  | HELIX | DH1400 |  |
| DH-H140-640 |  | H140 - Terminate MC Cables at MTS | 7d | 2027-04-24 | 2027-05-01 | DH-H140-630 |  |  |  | -21d | 0d |  | HELIX | DH1400 |  |
| DH-H140-650 |  | H140 - Pull MC Cable from MTS to Starline | 3d | 2027-04-24 | 2027-04-27 | DH-H140-630 |  |  |  | -20d | 0d |  | HELIX | DH1400 |  |
| DH-H140-710 |  | H140 - HAC Lighting Switches / Emergency Relay at the same time when set MTS and PQM | 3d | 2027-04-26 | 2027-04-28 | DH-H140-700 |  |  |  | -21d | 0d |  | HELIX | DH1400 |  |
| DH-H140-660 |  | H140 - Terminate MC Cables at Starline | 3d | 2027-04-28 | 2027-04-30 | DH-H140-650, DH-H140-630 |  |  |  | -20d | 1d |  | HELIX | DH1400 |  |
| DH-H140-720 |  | H140 - Terminate Lighting Wiring | 3d | 2027-04-29 | 2027-05-01 | DH-H140-710 |  |  |  | -21d | 0d |  | HELIX | DH1400 |  |
| DH-H140-810 |  | H140 - QC 2.2 Checklist | 1d | 2027-05-03 | 2027-05-03 | DH-H140-720, DH-H140-660, DH-H140-640 |  |  |  | -21d | 0d |  | HELIX | DH1400 |  |

| ID | WBS | Activity | Duration | Start | Finish | Predecessors | Complete | Planned start | Planned finish | Total float | Free float | COMMENTS | QTS - Subcontractor | QTS - AREA | QTS - DC7 |
| --- | --- | --- | --- | --- | --- | --- | --- | --- | --- | --- | --- | --- | --- | --- | --- |
|  | 9 | **J140** |  | 2026-10-05 | 2027-05-03 |  |  |  |  |  |  |  |  |  |  |
| DH-J140-550 |  | J140 - Install Supplemental Steel (overhead support for strut/trapeze) | 6d | 2026-10-05 A | 2026-10-05 A | DH-H140-550 SS | 100% | 2026-12-02 | 2026-12-08 |  |  | Suffolk | HELIX | DH1400 |  |
| DH-J140-560 |  | J140 - Hang Trapeze System / Strut Racking | 7d | 2026-10-06 A | 2026-10-06 A | DH-J140-550 | 100% | 2026-12-09 | 2026-12-16 |  |  |  | HELIX | DH1400 |  |
| DH-J140-600 |  | J140 - Hang Starline Bus | 10d | 2027-01-22 | 2027-02-02 | DH-H140-600 SS, DH-J140-560 |  |  |  | 27d | 0d |  | HELIX | DH1400 |  |
| DH-J140-570 |  | J140 - Pull MC Cable from PDU to MTS | 15d | 2027-03-03 | 2027-03-19 | PRC-MCC-040, DH-H140-570 SS, DH-J140-560 |  |  |  | -21d | 0d |  | HELIX | DH1400 | BB |
| DH-J140-580 |  | J140 - HAC Aisle Structure Set by others | 3d | 2027-03-20 | 2027-03-23 | DH-J140-570 |  |  |  | -21d | 0d |  | HELIX | DH1400 |  |
| DH-J140-590 |  | J140 - HAC Aisle Light install | 6d | 2027-03-24 | 2027-03-30 | DH-H140-590 SS, DH-J140-580, PRC-LGT-80 |  |  |  | -21d | 0d |  | HELIX | DH1400 |  |
| DH-J140-610 |  | J140 - HAC Aisle Structure Raised by others | 1d | 2027-03-31 | 2027-03-31 | DH-J140-600, DH-J140-590 |  |  |  | -21d | 0d |  | HELIX | DH1400 |  |
| DH-J140-620 |  | J140 - Set MTS | 4d | 2027-04-01 | 2027-04-05 | DH-J140-610 |  |  |  | -21d | 0d |  | HELIX | DH1400 |  |
| DH-J140-670 |  | J140 - Set DH PQM | 4d | 2027-04-06 | 2027-04-09 | DH-J140-620 |  |  |  | -21d | 0d |  | HELIX | DH1400 |  |
| DH-J140-680 |  | J140 - Pipe Data Hall PQM | 6d | 2027-04-10 | 2027-04-16 | DH-J140-670 |  |  |  | -21d | 0d |  | HELIX | DH1400 |  |
| DH-J140-630 |  | J140 - Connect MC Cables to MTS | 6d | 2027-04-17 | 2027-04-23 | DH-J140-680, DH-J140-670, DH-J140-620 |  |  |  | -21d | 0d |  | HELIX | DH1400 |  |
| DH-J140-690 |  | J140 - Pull Wire for DH PQM | 3d | 2027-04-17 | 2027-04-20 | DH-J140-680 |  |  |  | -21d | 0d |  | HELIX | DH1400 |  |
| DH-J140-700 |  | J140 - Terminate DH PQM | 4d | 2027-04-21 | 2027-04-24 | DH-J140-690 |  |  |  | -21d | 0d |  | HELIX | DH1400 |  |
| DH-J140-640 |  | J140 - Terminate MC Cables at MTS | 7d | 2027-04-24 | 2027-05-01 | DH-J140-630 |  |  |  | -21d | 0d |  | HELIX | DH1400 |  |
| DH-J140-650 |  | J140 - Pull MC Cable from MTS to Starline | 3d | 2027-04-24 | 2027-04-27 | DH-J140-630 |  |  |  | -20d | 0d |  | HELIX | DH1400 |  |
| DH-J140-710 |  | J140 - HAC Lighting Switches / Emergency Relay at the same time when set MTS and PQM | 3d | 2027-04-26 | 2027-04-28 | DH-J140-700 |  |  |  | -21d | 0d |  | HELIX | DH1400 |  |
| DH-J140-660 |  | J140 - Terminate MC Cables at Starline | 3d | 2027-04-28 | 2027-04-30 | DH-J140-650, DH-J140-630 |  |  |  | -20d | 1d |  | HELIX | DH1400 |  |
| DH-J140-720 |  | J140 - Terminate Lighting Wiring | 3d | 2027-04-29 | 2027-05-01 | DH-J140-710 |  |  |  | -21d | 0d |  | HELIX | DH1400 |  |
| DH-J140-820 |  | J140 - QC 2.2 Checklist | 1d | 2027-05-03 | 2027-05-03 | DH-J140-720, DH-J140-660, DH-J140-640 |  |  |  | -21d | 0d |  | HELIX | DH1400 |  |
|  | 10 | **K140** |  | 2026-10-05 | 2027-05-03 |  |  |  |  |  |  |  |  |  |  |
| DH-K140-550 |  | K140 - Install Supplemental Steel (overhead support for strut/trapeze) | 6d | 2026-10-05 A | 2026-10-05 A | DH-J140-550 SS | 100% | 2026-12-02 | 2026-12-08 |  |  | Suffolk | HELIX | DH1400 |  |
| DH-K140-560 |  | K140 - Hang Trapeze System / Strut Racking | 7d | 2026-10-06 A | 2026-10-06 A | DH-K140-550 | 100% | 2026-12-09 | 2026-12-16 |  |  |  | HELIX | DH1400 |  |
| DH-K140-600 |  | K140 - Hang Starline Bus | 10d | 2027-01-22 | 2027-02-02 | DH-J140-600 SS, DH-K140-560 |  |  |  | 27d | 0d |  | HELIX | DH1400 |  |
| DH-K140-570 |  | K140 - Pull MC Cable from PDU to MTS | 15d | 2027-03-03 | 2027-03-19 | PRC-MCC-040, DH-J140-570 SS, DH-K140-560 |  |  |  | -21d | 0d |  | HELIX | DH1400 | BB |
| DH-K140-580 |  | K140 - HAC Aisle Structure Set by others | 3d | 2027-03-20 | 2027-03-23 | DH-K140-570 |  |  |  | -18d | 3d |  | HELIX | DH1400 |  |
| DH-K140-590 |  | K140 - HAC Aisle Light install | 6d | 2027-03-24 | 2027-03-30 | DH-J140-590 SS, DH-K140-580 SS, PRC-LGT-80 |  |  |  | -21d | 0d |  | HELIX | DH1400 |  |
| DH-K140-610 |  | K140 - HAC Aisle Structure Raised by others | 1d | 2027-03-31 | 2027-03-31 | DH-K140-600, DH-K140-590 |  |  |  | -21d | 0d |  | HELIX | DH1400 |  |
| DH-K140-620 |  | K140 - Set MTS | 4d | 2027-04-01 | 2027-04-05 | DH-K140-610 |  |  |  | -21d | 0d |  | HELIX | DH1400 |  |
| DH-K140-670 |  | K140 - Set DH PQM | 4d | 2027-04-06 | 2027-04-09 | DH-K140-620 |  |  |  | -21d | 0d |  | HELIX | DH1400 |  |
| DH-K140-680 |  | K140 - Pipe Data Hall PQM | 6d | 2027-04-10 | 2027-04-16 | DH-K140-670 |  |  |  | -21d | 0d |  | HELIX | DH1400 |  |
| DH-K140-630 |  | K140 - Connect MC Cables to MTS | 6d | 2027-04-17 | 2027-04-23 | DH-K140-680, DH-K140-670, DH-K140-620 |  |  |  | -21d | 0d |  | HELIX | DH1400 |  |
| DH-K140-690 |  | K140 - Pull Wire for DH PQM | 3d | 2027-04-17 | 2027-04-20 | DH-K140-680 |  |  |  | -21d | 0d |  | HELIX | DH1400 |  |
| DH-K140-700 |  | K140 - Terminate DH PQM | 4d | 2027-04-21 | 2027-04-24 | DH-K140-690 |  |  |  | -21d | 0d |  | HELIX | DH1400 |  |
| DH-K140-640 |  | K140 - Terminate MC Cables at MTS | 7d | 2027-04-24 | 2027-05-01 | DH-K140-630 |  |  |  | -21d | 0d |  | HELIX | DH1400 |  |
| DH-K140-650 |  | K140 - Pull MC Cable from MTS to Starline | 3d | 2027-04-24 | 2027-04-27 | DH-K140-630 |  |  |  | -20d | 0d |  | HELIX | DH1400 |  |
| DH-K140-710 |  | K140 - HAC Lighting Switches / Emergency Relay at the same time when set MTS and PQM | 3d | 2027-04-26 | 2027-04-28 | DH-K140-700 |  |  |  | -21d | 0d |  | HELIX | DH1400 |  |
| DH-K140-660 |  | K140 - Terminate MC Cables at Starline | 3d | 2027-04-28 | 2027-04-30 | DH-K140-650, DH-K140-630 |  |  |  | -20d | 1d |  | HELIX | DH1400 |  |
| DH-K140-720 |  | K140 - Terminate Lighting Wiring | 3d | 2027-04-29 | 2027-05-01 | DH-K140-710 |  |  |  | -21d | 0d |  | HELIX | DH1400 |  |
| DH-K140-830 |  | K140 - QC 2.2 Checklist | 1d | 2027-05-03 | 2027-05-03 | DH-K140-720, DH-K140-660, DH-K140-640, DH140-FS-320 |  |  |  | -21d | 0d |  | HELIX | DH1400 |  |

| ID | WBS | Activity | Duration | Start | Finish | Predecessors | Total float | Free float | Calendar | QTS - Subcontractor | QTS - AREA | QTS - DC7 |
| --- | --- | --- | --- | --- | --- | --- | --- | --- | --- | --- | --- | --- |
|  | 12 | **FIRE STOPPING DH1400** |  | 2027-04-07 | 2027-04-22 |  |  |  |  |  |  |  |
| DH140-FS-310 |  | DH1400 // R to D -Install Firestopping | 6d | 2027-04-07 | 2027-04-13 | DH-D140-630 | -13d | 0d |  | HELIX | DH1400 |  |
| DH140-FS-330 |  | DH1400 // E to K -Install Firestopping | 6d | 2027-04-14 | 2027-04-20 | DH140-FS-310 | -13d | 0d |  | HELIX | DH1400 |  |
| DH140-FS-320 |  | DH1400 //- Firestopping inspection | 2d | 2027-04-21 | 2027-04-22 | DH140-FS-310, DH140-FS-310 FF, DH140-FS-330 | -13d | 8d |  | HELIX | DH1400 |  |
|  | 2 | **PDU GALLERY** |  | 2026-10-23 | 2027-03-18 |  |  |  |  |  |  |  |
| DH140-PDU-500 |  | DH1400 // PDU - Wall Framing (third party activity) | 1d | 2026-10-23 | 2026-10-23 | DH.14000.1040 (other project) | 95d | 14d |  |  | DH1400 | BB |
| DH140-PDU-510 |  | DH1400 // PDU - Drywall Installation, painting, finishes (third party activity) | 1d | 2026-11-10 | 2026-11-10 | DH140-PDU-500, DH.14000.1100 (other project) | 81d | 0d |  |  | DH1400 | BB |
| DH140-PDU-350 |  | DH1400 // PDU - Prefab UPS Skid (offsite assembly) | 1d | 2026-11-11 | 2026-11-11 | PR-1050 FS+10d, DH140-PDU-510 | 97d | 16d |  | HELIX | DH1400 |  |
| DH140-PDU-360 |  | DH1400 // PDU - Set UPS Skid - Transformers & Panels in PDU Gallery | 3d | 2026-12-04 | 2026-12-07 | DH140-PDU-510, DH140-PDU-350, DH130-PDU-360, PRC-PNL-150, PRC-PNL-200 | 81d | 0d |  | HELIX | DH1400 |  |
| DH140-PDU-400 |  | DH1400 // PDU - Pipe UPS Circuits / Branch Conduits to Data Hall (PQM, Goal Post, Admin IDF, ICPNL, TPQM) | 10d | 2027-02-01 | 2027-02-11 | DH140-PDU-510, DH130-PDU-390 | 18d | 0d |  | HELIX | DH1400 |  |
| DH140-PDU-440 |  | DH1400 // PDU - RP Panel Installed | 1d | 2027-02-03 | 2027-02-03 | DH130-PDU-470, PRC-PNL-110 | 34d | 0d |  |  | DH1400 | BB |
| DH140-PDU-450 |  | DH1400 // PDU - Install pipe cord reel circuits | 10d | 2027-02-04 | 2027-02-15 | DH140-PDU-440, DH130-PDU-470 | 34d | 0d |  | HELIX | DH1400 |  |
| DH140-PDU-480 |  | DH1400 // PDU - Pipe UPS Circuits / Branch Conduits in PDU Gallery (PQM, Goal Post, Admin IDF, ICPNL, TPQM) | 10d | 2027-02-12 | 2027-02-23 | DH140-PDU-510, DH140-PDU-400 | 18d | 0d |  | HELIX | DH1400 |  |
| DH140-PDU-460 |  | DH1400 // PDU - Pull wire for cord reel circuits | 4d | 2027-02-16 | 2027-02-19 | DH140-PDU-450 | 34d | 0d |  | HELIX | DH1400 |  |
| DH140-PDU-470 |  | DH1400 // PDU - Install cord reel and Terminate | 6d | 2027-02-20 | 2027-02-26 | DH140-PDU-460 | 34d | 0d |  | HELIX | DH1400 |  |
| DH140-PDU-370 |  | DH1400 // PDU - Pipe Feeder from MOD Panel to UPS Transformer | 3d | 2027-02-24 | 2027-02-26 | DH140-PDU-360, DH140-PDU-510, DH140-PDU-480 | 18d | 0d |  | HELIX | DH1400 |  |
| DH140-PDU-410 |  | DH1400 // PDU - Pull UPS Circuits | 6d | 2027-02-24 | 2027-03-02 | DH140-PDU-480, DH140-PDU-400 | 18d | 0d |  |  | DH1400 | BB |
| DH140-PDU-380 |  | DH1400 // PDU - Pull Feeder from MOD Panel to UPS Transformer | 2d | 2027-02-27 | 2027-03-01 | DH140-PDU-370 | 18d | 0d |  | HELIX | DH1400 |  |
| DH140-PDU-390 |  | DH1400 // PDU - Terminate Feeder at MOD Panel and UPS Transformer | 1d | 2027-03-02 | 2027-03-02 | DH140-PDU-380 | 18d | 0d |  | HELIX | DH1400 |  |
| DH140-PDU-420 |  | DH1400 // PDU - Terminate UPS Branch Circuits | 4d | 2027-03-03 | 2027-03-06 | DH140-PDU-410, DH140-PDU-360 | 18d | 0d |  | HELIX | DH1400 |  |
| DH140-PDU-430 |  | DH1400 // PDU - Install and Terminate "Goal Post" Receptacles | 3d | 2027-03-08 | 2027-03-10 | DH140-PDU-420 | 18d | 0d |  | HELIX | DH1400 |  |
| DH140-PDU-520 |  | DH1400 // PDU - Install Firestopping | 4d | 2027-03-11 | 2027-03-15 | DH140-PDU-430, DH130-PDU-530 | 18d | 0d | IAD192 - 6 Day w/Holidays | HELIX | DH1400 |  |
| DH140-PDU-530 |  | DH1400 // PDU - Firestopping inspection | 2d | 2027-03-16 | 2027-03-17 | DH140-PDU-520 | 18d | 0d | IAD192 - 6 Day w/Holidays | HELIX | DH1400 |  |
| DH140-PDU-490 |  | DH1400 // PDU - QC 2.2 Checklist | 1d | 2027-03-18 | 2027-03-18 | DH140-PDU-430, DH140-PDU-470, DH140-PDU-390, DH140-PDU-530 | 18d | 39d |  | HELIX | DH1400 |  |

| ID | WBS | Activity | Duration | Start | Finish | Predecessors | Total float | Free float | QTS - Subcontractor | QTS - AREA | QTS - DC7 |
| --- | --- | --- | --- | --- | --- | --- | --- | --- | --- | --- | --- |
|  | 5 | **ELECTRICAL ROOMS** |  | 2027-02-19 | 2027-03-27 |  |  |  |  |  |  |
|  | 1 | **LINE-UPS** |  | 2027-02-19 | 2027-03-27 |  |  |  |  |  |  |
|  | 11 | **R140** |  | 2027-03-01 | 2027-03-12 |  |  |  |  |  |  |
| ER-R140-900 |  | R140 - Pipe power circuit to ER PQM | 2d | 2027-03-01 | 2027-03-02 | ER-R130-780, ER-K130-570 | 10d | 0d | HELIX | DH1400 |  |
| ER-R140-1010 |  | R140 - Land and terminate wiring on the PDU | 3d | 2027-03-03 | 2027-03-05 | ER-R130-890, DH-D140-570 | 23d | 0d | HELIX | DH1400 |  |
| ER-R140-910 |  | R140 - Reserve Line Equipment Set | 1d | 2027-03-03 | 2027-03-03 | ER-R140-900 | 10d | 0d | HELIX | DH1400 |  |
| ER-R140-920 |  | R140 - Set ER PQM | 1d | 2027-03-04 | 2027-03-04 | ER-R140-910, ER-K130-590 | 10d | 0d | HELIX | DH1400 |  |
| ER-R140-960 |  | R140 - Set Inhibitor Panel | 1d | 2027-03-04 | 2027-03-04 | ER-R140-910, PRC-INH-70 | 23d | 0d | HELIX | DH1400 |  |
| ER-R140-930 |  | R140 - Pipe CT&VT PQM control (run conduits) | 2d | 2027-03-05 | 2027-03-06 | ER-R140-920, ER-R130-810, ER-K130-600 | 26d | 0d | HELIX | DH1400 |  |
| ER-R140-970 |  | R140 - Pipe Inhibitor Panel (overhead run w/ base build) | 1d | 2027-03-05 | 2027-03-05 | ER-R140-960, ER-R130-850 | 23d | 0d |  | DH1400 | BB |
| ER-R140-980 |  | R140 - Pull Wire for Inhibitor Panel | 2d | 2027-03-06 | 2027-03-08 | ER-R140-970 | 23d | 0d | HELIX | DH1400 |  |
| ER-R140-940 |  | R140 - Pull Wire for ER PQM | 1d | 2027-03-08 | 2027-03-08 | ER-R140-930 | 26d | 0d | HELIX | DH1400 |  |
| ER-R140-950 |  | R140 - Terminate ER PQM | 1d | 2027-03-09 | 2027-03-09 | ER-R140-940 | 26d | 47d | HELIX | DH1400 |  |
| ER-R140-990 |  | R140 - Terminate Inhibitor Panel | 3d | 2027-03-09 | 2027-03-11 | ER-R140-980 | 23d | 0d | HELIX | DH1400 |  |
| ER-R140-1000 |  | R140 - QC 2.2 Checklist | 1d | 2027-03-12 | 2027-03-12 | ER-R140-990, ER-R140-1010 | 23d | 44d | HELIX | DH1400 |  |
|  | 1 | **A140** |  | 2027-02-19 | 2027-03-20 |  |  |  |  |  |  |
| ER-A140-570 |  | A140 - Electric Room (ER) Skid Set | 1d | 2027-02-19 | 2027-02-19 | DC7.DH1400.MS.1000 SS, ER.5101.3069 | 16d | 0d |  | DH1400 | BB |
| ER-A140-630 |  | A140 - Land and terminate wiring on the PDU | 3d | 2027-03-03 | 2027-03-05 | ER-A140-570, ER-R140-1010 SS | 23d | 0d | HELIX | DH1400 |  |
| ER-A140-580 |  | A140 - Set ER PQM (predecessor skid set) | 1d | 2027-03-04 | 2027-03-04 | ER-A140-570, ER-R140-920 SS | 10d | 0d | HELIX | DH1400 |  |
| ER-A140-560 |  | A140 - Pipe power circuit to ER PQM | 4d | 2027-03-05 | 2027-03-09 | ER-A140-580 | 18d | 2d | HELIX | DH1400 |  |
| ER-A140-590 |  | A140 - Pipe CT&VT PQM control (run conduits) | 6d | 2027-03-05 | 2027-03-11 | ER-A140-580 | 16d | 0d | HELIX | DH1400 |  |
| ER-A140-600 |  | A140 - Pull Wire for ER PQM | 3d | 2027-03-12 | 2027-03-15 | ER-A140-560, ER-A140-590 | 16d | 0d | HELIX | DH1400 |  |
| ER-A140-610 |  | A140 - Terminate ER PQM | 4d | 2027-03-16 | 2027-03-19 | ER-A140-600 | 16d | 0d | HELIX | DH1400 |  |
| ER-A140-620 |  | A140 - QC 2.2 Checklist | 1d | 2027-03-20 | 2027-03-20 | ER-A140-610, ER-A140-630 | 16d | 37d | HELIX | DH1400 |  |

| ID | WBS | Activity | Duration | Start | Finish | Predecessors | Total float | Free float | QTS - AREA | QTS - DC7 | QTS - Subcontractor |
| --- | --- | --- | --- | --- | --- | --- | --- | --- | --- | --- | --- |
|  | 2 | **B140** |  | 2027-02-20 | 2027-03-20 |  |  |  |  |  |  |
| ER-B140-580 |  | B140 - Electric Room (ER) Skid Set | 1d | 2027-02-20 | 2027-02-20 | ER-A140-570 | 16d | 0d | DH1400 | BB |  |
| ER-B140-640 |  | B140 - Land and terminate wiring on the PDU | 3d | 2027-03-03 | 2027-03-05 | ER-B140-580, ER-A140-630 SS | 23d | 0d | DH1400 |  | HELIX |
| ER-B140-590 |  | B140 - Set ER PQM (predecessor skid set) | 1d | 2027-03-04 | 2027-03-04 | ER-B140-580, ER-A140-580 SS | 10d | 0d | DH1400 |  | HELIX |
| ER-B140-570 |  | B140 - Pipe power circuit to ER PQM | 4d | 2027-03-05 | 2027-03-09 | ER-B140-590 | 18d | 2d | DH1400 |  | HELIX |
| ER-B140-600 |  | B140 - Pipe CT&VT PQM control (run conduits) | 6d | 2027-03-05 | 2027-03-11 | ER-B140-590 | 16d | 0d | DH1400 |  | HELIX |
| ER-B140-610 |  | B140 - Pull Wire for ER PQM | 3d | 2027-03-12 | 2027-03-15 | ER-B140-570, ER-B140-600 | 16d | 0d | DH1400 |  | HELIX |
| ER-B140-620 |  | B140 - Terminate ER PQM | 4d | 2027-03-16 | 2027-03-19 | ER-B140-610 | 16d | 0d | DH1400 |  | HELIX |
| ER-B140-630 |  | B140 - QC 2.2 Checklist | 1d | 2027-03-20 | 2027-03-20 | ER-B140-620, ER-B140-640 | 16d | 37d | DH1400 |  | HELIX |
|  | 3 | **C140** |  | 2027-02-22 | 2027-03-20 |  |  |  |  |  |  |
| ER-C140-590 |  | C140 - Electric Room (ER) Skid Set | 1d | 2027-02-22 | 2027-02-22 | ER-B140-580 | 16d | 0d | DH1400 | BB |  |
| ER-C140-650 |  | C140 - Land and terminate wiring on the PDU | 3d | 2027-03-03 | 2027-03-05 | ER-C140-590, ER-B140-640 SS | 23d | 0d | DH1400 |  | HELIX |
| ER-C140-600 |  | C140 - Set ER PQM (predecessor skid set) | 1d | 2027-03-04 | 2027-03-04 | ER-C140-590, ER-B140-590 SS | 10d | 0d | DH1400 |  | HELIX |
| ER-C140-580 |  | C140 - Pipe power circuit to ER PQM | 4d | 2027-03-05 | 2027-03-09 | ER-C140-600 | 18d | 2d | DH1400 |  | HELIX |
| ER-C140-610 |  | C140 - Pipe CT&VT PQM control (run conduits) | 6d | 2027-03-05 | 2027-03-11 | ER-C140-600 | 16d | 0d | DH1400 |  | HELIX |
| ER-C140-620 |  | C140 - Pull Wire for ER PQM | 3d | 2027-03-12 | 2027-03-15 | ER-C140-580, ER-C140-610 | 16d | 0d | DH1400 |  | HELIX |
| ER-C140-630 |  | C140 - Terminate ER PQM | 4d | 2027-03-16 | 2027-03-19 | ER-C140-620 | 16d | 0d | DH1400 |  | HELIX |
| ER-C140-640 |  | C140 - QC 2.2 Checklist | 1d | 2027-03-20 | 2027-03-20 | ER-C140-630, ER-C140-650 | 16d | 37d | DH1400 |  | HELIX |
|  | 4 | **D140** |  | 2027-02-23 | 2027-03-20 |  |  |  |  |  |  |
| ER-D140-600 |  | D140 - Electric Room (ER) Skid Set | 1d | 2027-02-23 | 2027-02-23 | ER-C140-590 | 16d | 0d | DH1400 | BB |  |
| ER-D140-660 |  | D140 - Land and terminate wiring on the PDU | 3d | 2027-03-03 | 2027-03-05 | ER-D140-600, ER-C140-650 SS | 23d | 0d | DH1400 |  | HELIX |
| ER-D140-610 |  | D140 - Set ER PQM (predecessor skid set) | 1d | 2027-03-04 | 2027-03-04 | ER-D140-600, ER-C140-600 SS | 10d | 0d | DH1400 |  | HELIX |
| ER-D140-590 |  | D140 - Pipe power circuit to ER PQM | 4d | 2027-03-05 | 2027-03-09 | ER-D140-610 | 18d | 2d | DH1400 |  | HELIX |
| ER-D140-620 |  | D140 - Pipe CT&VT PQM control (run conduits) | 6d | 2027-03-05 | 2027-03-11 | ER-D140-610 | 16d | 0d | DH1400 |  | HELIX |
| ER-D140-630 |  | D140 - Pull Wire for ER PQM | 3d | 2027-03-12 | 2027-03-15 | ER-D140-590, ER-D140-620 | 16d | 0d | DH1400 |  | HELIX |
| ER-D140-640 |  | D140 - Terminate ER PQM | 4d | 2027-03-16 | 2027-03-19 | ER-D140-630 | 16d | 0d | DH1400 |  | HELIX |
| ER-D140-650 |  | D140 - QC 2.2 Checklist | 1d | 2027-03-20 | 2027-03-20 | ER-D140-640, ER-D140-660 | 16d | 37d | DH1400 |  | HELIX |

| ID | WBS | Activity | Duration | Start | Finish | Predecessors | Total float | Free float | QTS - AREA | QTS - DC7 | QTS - Subcontractor |
| --- | --- | --- | --- | --- | --- | --- | --- | --- | --- | --- | --- |
|  | 5 | **E140** |  | 2027-02-24 | 2027-03-20 |  |  |  |  |  |  |
| ER-E140-610 |  | E140 - Electric Room (ER) Skid Set | 1d | 2027-02-24 | 2027-02-24 | ER-D140-600 | 16d | 0d | DH1400 | BB |  |
| ER-E140-670 |  | E140 - Land and terminate wiring on the PDU | 3d | 2027-03-03 | 2027-03-05 | ER-E140-610, ER-D140-660 SS | 23d | 0d | DH1400 |  | HELIX |
| ER-E140-620 |  | E140 - Set ER PQM (predecessor skid set) | 1d | 2027-03-04 | 2027-03-04 | ER-E140-610, ER-D140-610 SS | 10d | 0d | DH1400 |  | HELIX |
| ER-E140-600 |  | E140 - Pipe power circuit to ER PQM | 4d | 2027-03-05 | 2027-03-09 | ER-E140-620 | 10d | 0d | DH1400 |  | HELIX |
| ER-E140-630 |  | E140 - Pipe CT&VT PQM control (run conduits) | 6d | 2027-03-05 | 2027-03-11 | ER-E140-620, ER-E140-600 SS | 10d | 0d | DH1400 |  | HELIX |
| ER-E140-640 |  | E140 - Pull Wire for ER PQM | 3d | 2027-03-12 | 2027-03-15 | ER-E140-600, ER-E140-630 | 16d | 0d | DH1400 |  | HELIX |
| ER-E140-650 |  | E140 - Terminate ER PQM | 4d | 2027-03-16 | 2027-03-19 | ER-E140-640 | 16d | 0d | DH1400 |  | HELIX |
| ER-E140-660 |  | E140 - QC 2.2 Checklist | 1d | 2027-03-20 | 2027-03-20 | ER-E140-650, ER-E140-670 | 16d | 37d | DH1400 |  | HELIX |
|  | 6 | **F140** |  | 2027-02-25 | 2027-03-27 |  |  |  |  |  |  |
| ER-F140-620 |  | F140 - Electric Room (ER) Skid Set | 1d | 2027-02-25 | 2027-02-25 | ER-E140-610, ER.5101.3074 | 20d | 0d | DH1400 | BB |  |
| ER-F140-630 |  | F140 - Set ER PQM (predecessor skid set) | 1d | 2027-03-05 | 2027-03-05 | ER-F140-620, ER-E140-620 | 15d | 0d | DH1400 |  | HELIX |
| ER-F140-610 |  | F140 - Pipe power circuit to ER PQM | 4d | 2027-03-10 | 2027-03-13 | ER-F140-630, ER-E140-600 | 12d | 0d | DH1400 |  | HELIX |
| ER-F140-640 |  | F140 - Pipe CT&VT PQM control (run conduits) | 6d | 2027-03-12 | 2027-03-18 | ER-F140-630, ER-F140-610 SS, ER-E140-630 | 10d | 0d | DH1400 |  | HELIX |
| ER-F140-650 |  | F140 - Pull Wire for ER PQM | 3d | 2027-03-19 | 2027-03-22 | ER-F140-610, ER-F140-640 | 10d | 0d | DH1400 |  | HELIX |
| ER-F140-680 |  | F140 - Land and terminate wiring on the PDU | 3d | 2027-03-20 | 2027-03-23 | ER-F140-620, ER-E140-670, DH-K140-570 | 13d | 0d | DH1400 |  | HELIX |
| ER-F140-660 |  | F140 - Terminate ER PQM | 4d | 2027-03-23 | 2027-03-26 | ER-F140-650 | 10d | 0d | DH1400 |  | HELIX |
| ER-F140-670 |  | F140 - QC 2.2 Checklist | 1d | 2027-03-27 | 2027-03-27 | ER-F140-660, ER-F140-680 | 10d | 31d | DH1400 |  | HELIX |
|  | 7 | **G140** |  | 2027-02-26 | 2027-03-27 |  |  |  |  |  |  |
| ER-G140-630 |  | G140 - Electric Room (ER) Skid Set | 1d | 2027-02-26 | 2027-02-26 | ER-F140-620 | 20d | 0d | DH1400 | BB |  |
| ER-G140-640 |  | G140 - Set ER PQM (predecessor skid set) | 1d | 2027-03-05 | 2027-03-05 | ER-G140-630, ER-F140-630 SS | 15d | 0d | DH1400 |  | HELIX |
| ER-G140-620 |  | G140 - Pipe power circuit to ER PQM | 4d | 2027-03-10 | 2027-03-13 | ER-F140-610 SS, ER-G140-640 | 14d | 0d | DH1400 |  | HELIX |
| ER-G140-650 |  | G140 - Pipe CT&VT PQM control (run conduits) | 6d | 2027-03-12 | 2027-03-18 | ER-G140-640, ER-F140-640 SS | 10d | 0d | DH1400 |  | HELIX |
| ER-G140-660 |  | G140 - Pull Wire for ER PQM | 3d | 2027-03-19 | 2027-03-22 | ER-G140-620, ER-G140-650 | 10d | 0d | DH1400 |  | HELIX |
| ER-G140-690 |  | G140 - Land and terminate wiring on the PDU | 3d | 2027-03-20 | 2027-03-23 | ER-G140-630, ER-F140-680 SS | 13d | 0d | DH1400 |  | HELIX |
| ER-G140-670 |  | G140 - Terminate ER PQM | 4d | 2027-03-23 | 2027-03-26 | ER-G140-660 | 10d | 0d | DH1400 |  | HELIX |
| ER-G140-680 |  | G140 - QC 2.2 Checklist | 1d | 2027-03-27 | 2027-03-27 | ER-G140-670, ER-G140-690 | 10d | 31d | DH1400 |  | HELIX |

| ID | WBS | Activity | Duration | Start | Finish | Predecessors | Total float | Free float | QTS - AREA | QTS - DC7 | QTS - Subcontractor |
| --- | --- | --- | --- | --- | --- | --- | --- | --- | --- | --- | --- |
|  | 8 | **H140** |  | 2027-02-26 | 2027-03-27 |  |  |  |  |  |  |
| ER-H140-640 |  | H140 - Electric Room (ER) Skid Set | 1d | 2027-02-26 | 2027-02-26 | ER-G140-630 SS | 20d | 0d | DH1400 | BB |  |
| ER-H140-650 |  | H140 - Set ER PQM (predecessor skid set) | 1d | 2027-03-05 | 2027-03-05 | ER-H140-640, ER-G140-640 SS | 15d | 0d | DH1400 |  | HELIX |
| ER-H140-630 |  | H140 - Pipe power circuit to ER PQM | 4d | 2027-03-10 | 2027-03-13 | ER-G140-620 SS, ER-H140-650 | 14d | 0d | DH1400 |  | HELIX |
| ER-H140-660 |  | H140 - Pipe CT&VT PQM control (run conduits) | 6d | 2027-03-12 | 2027-03-18 | ER-H140-650, ER-G140-650 SS | 10d | 0d | DH1400 |  | HELIX |
| ER-H140-670 |  | H140 - Pull Wire for ER PQM | 3d | 2027-03-19 | 2027-03-22 | ER-H140-630, ER-H140-660 | 10d | 0d | DH1400 |  | HELIX |
| ER-H140-700 |  | H140 - Land and terminate wiring on the PDU | 3d | 2027-03-20 | 2027-03-23 | ER-H140-640, ER-G140-690 SS | 13d | 0d | DH1400 |  | HELIX |
| ER-H140-680 |  | H140 - Terminate ER PQM | 4d | 2027-03-23 | 2027-03-26 | ER-H140-670 | 10d | 0d | DH1400 |  | HELIX |
| ER-H140-690 |  | H140 - QC 2.2 Checklist | 1d | 2027-03-27 | 2027-03-27 | ER-H140-680, ER-H140-700 | 10d | 31d | DH1400 |  | HELIX |
|  | 9 | **J140** |  | 2027-02-26 | 2027-03-27 |  |  |  |  |  |  |
| ER-J140-650 |  | J140 - Electric Room (ER) Skid Set | 1d | 2027-02-26 | 2027-02-26 | ER-H140-640 SS | 20d | 0d | DH1400 | BB |  |
| ER-J140-660 |  | J140 - Set ER PQM (predecessor skid set) | 1d | 2027-03-05 | 2027-03-05 | ER-J140-650, ER-H140-650 SS | 15d | 0d | DH1400 |  | HELIX |
| ER-J140-640 |  | J140 - Pipe power circuit to ER PQM | 4d | 2027-03-10 | 2027-03-13 | ER-H140-630 SS, ER-J140-660 | 14d | 0d | DH1400 |  | HELIX |
| ER-J140-670 |  | J140 - Pipe CT&VT PQM control (run conduits) | 6d | 2027-03-12 | 2027-03-18 | ER-J140-660, ER-H140-660 SS | 10d | 0d | DH1400 |  | HELIX |
| ER-J140-680 |  | J140 - Pull Wire for ER PQM | 3d | 2027-03-19 | 2027-03-22 | ER-J140-640, ER-J140-670 | 10d | 0d | DH1400 |  | HELIX |
| ER-J140-710 |  | J140 - Land and terminate wiring on the PDU | 3d | 2027-03-20 | 2027-03-23 | ER-J140-650, ER-H140-700 SS | 13d | 0d | DH1400 |  | HELIX |
| ER-J140-690 |  | J140 - Terminate ER PQM | 4d | 2027-03-23 | 2027-03-26 | ER-J140-680 | 10d | 0d | DH1400 |  | HELIX |
| ER-J140-700 |  | J140 - QC 2.2 Checklist | 1d | 2027-03-27 | 2027-03-27 | ER-J140-690, ER-J140-710 | 10d | 31d | DH1400 |  | HELIX |
|  | 10 | **K140** |  | 2027-02-26 | 2027-03-27 |  |  |  |  |  |  |
| ER-K140-660 |  | K140 - Electric Room (ER) Skid Set | 1d | 2027-02-26 | 2027-02-26 | ER-J140-650 SS | 20d | 0d | DH1400 | BB |  |
| ER-K140-670 |  | K140 - Set ER PQM (predecessor skid set) | 1d | 2027-03-05 | 2027-03-05 | ER-K140-660, ER-J140-660 SS | 15d | 0d | DH1400 |  | HELIX |
| ER-K140-650 |  | K140 - Pipe power circuit to ER PQM | 4d | 2027-03-10 | 2027-03-13 | ER-J140-640 SS, ER-K140-670 | 14d | 0d | DH1400 |  | HELIX |
| ER-K140-680 |  | K140 - Pipe CT&VT PQM control (run conduits) | 6d | 2027-03-12 | 2027-03-18 | ER-K140-670, ER-J140-670 SS | 10d | 0d | DH1400 |  | HELIX |
| ER-K140-690 |  | K140 - Pull Wire for ER PQM | 3d | 2027-03-19 | 2027-03-22 | ER-K140-650, ER-K140-680 | 10d | 0d | DH1400 |  | HELIX |
| ER-K140-720 |  | K140 - Land and terminate wiring on the PDU | 3d | 2027-03-20 | 2027-03-23 | ER-K140-660, ER-J140-710 SS | 13d | 3d | DH1400 |  | HELIX |
| ER-K140-700 |  | K140 - Terminate ER PQM | 4d | 2027-03-23 | 2027-03-26 | ER-K140-690 | 10d | 0d | DH1400 |  | HELIX |
| ER-K140-710 |  | K140 - QC 2.2 Checklist | 1d | 2027-03-27 | 2027-03-27 | ER-K140-700, ER-K140-720 | 10d | 31d | DH1400 |  | HELIX |

| ID | WBS | Activity | Type | Duration | Start | Finish | Predecessors | Complete | Planned start | Planned finish | Total float | Free float | Constraint | Calendar | QTS - Subcontractor | QTS - AREA | MSP Activity ID | QTS - DASH | QTS - Resp | COMMENTS | QTS - DC7 |
| --- | --- | --- | --- | --- | --- | --- | --- | --- | --- | --- | --- | --- | --- | --- | --- | --- | --- | --- | --- | --- | --- |
|  | 12 | **FIRE STOPPING** |  |  | 2027-03-06 | 2027-03-12 |  |  |  |  |  |  |  |  |  |  |  |  |  |  |  |
| DH140-ER-260 |  | DH1400 // ER -Install Firestopping |  | 4d | 2027-03-06 | 2027-03-10 | DH130-ER-250, ER-E140-670 |  |  |  | 23d | 0d |  |  | HELIX | DH1400 |  |  |  |  |  |
| DH140-ER-270 |  | DH1400 // ER - Firestopping inspection |  | 2d | 2027-03-11 | 2027-03-12 | DH140-ER-260 |  |  |  | 23d | 24d |  |  | HELIX | DH1400 |  |  |  |  |  |
|  | 3 | **COMISSIONING BY OTHERS** |  |  | 2027-05-04 | 2027-08-07 |  |  |  |  |  |  |  |  |  |  |  |  |  |  |  |
| CX-DH140-100 |  | DH1400 L3 Cx electrical, Mechanical FLS |  | 40d | 2027-05-04 | 2027-06-19 | DC7.DH1400.MS.1020 |  |  |  | -21d | 0d |  |  | HELIX | DH1400 |  |  |  |  |  |
| CX-DH140-110 |  | DH1400 L4 CxA |  | 25d | 2027-06-21 | 2027-07-21 | CX-DH140-100 |  |  |  | -21d | 0d |  |  | HELIX | DH1400 |  |  |  |  |  |
| CX-DH140-120 |  | DH1400 L5 CxA IST |  | 15d | 2027-07-22 | 2027-08-07 | CX-DH140-110 |  |  |  | -21d | 0d |  |  | HELIX | DH1400 |  |  |  |  |  |
|  | 7 | **DH 1500** |  |  | 2026-10-05 | 2027-09-15 |  |  |  |  |  |  |  |  |  |  |  |  |  |  |  |
|  | 1 | **SKID INSTALATION DH1500 FROM TFO SCHEDULE** |  |  | 2027-01-04 | 2027-02-26 |  |  |  |  |  |  |  |  |  |  |  |  |  |  |  |
| ER.5101.3110 |  | DH1500/Electrical Room #5501 // DH1500 - OFCI Skid Ship Date (01/04/2027) First Shipment | milestone | 0d | 2027-01-04 | 2027-01-04 | ER.5101.3110 (other project) FF |  |  |  | 67d | 32d | finish on or after 2027-01-04 | Calendar 01 - 5 Day w/holidays (No Pats Day) | HELIX | DH1500 | 1107 | ER |  |  |  |
| ER.5101.3112 |  | DH1500/Electrical Room #5504 // DH1500 - OFCI Skid Ship Date (01/09/2027) 2ND Shipment | milestone | 0d | 2027-01-11 | 2027-01-11 | ER.5101.3112 (other project) FF |  |  |  | 70d | 30d | finish on or after 2027-01-09 | Calendar 01 - 5 Day w/holidays (No Pats Day) | HELIX | DH1500 | 1107 | ER |  |  |  |
| ER.5101.3075 |  | DH1500/Electrical Room #5501 // Set Skid - SKID-A150 |  | 1d | 2027-02-22 | 2027-02-22 | ER.5101.3110, ER.5101.3075 (other project) |  |  |  | 35d | 0d | start on or after 2027-02-22 | Calendar 01 - 5 Day w/holidays (No Pats Day) | HELIX | DH1500 | 1107 | ER | TBD |  |  |
| ER.5101.3076 |  | DH1500/Electrical Room #5501 // Set Skid - SKID-B150 |  | 1d | 2027-02-22 | 2027-02-22 | ER.5101.3075 SS, ER.5101.3076 (other project) |  |  |  | 35d | 0d | start on or after 2027-02-22 | Calendar 01 - 5 Day w/holidays (No Pats Day) | HELIX | DH1500 | 1107 | ER | TBD |  |  |
| ER.5101.3077 |  | DH1500/Electrical Room #5501 // Set Skid - SKID-C150 |  | 1d | 2027-02-22 | 2027-02-22 | ER.5101.3076 SS, ER.5101.3077 (other project) |  |  |  | 35d | 1d | start on or after 2027-02-22 | Calendar 01 - 5 Day w/holidays (No Pats Day) | HELIX | DH1500 | 1107 | ER | TBD |  |  |
| ER.5101.3078 |  | DH1500/Electrical Room #5501 // Set Skid - SKID-D150 |  | 1d | 2027-02-24 | 2027-02-24 | ER.5101.3077, ER.5101.3078 (other project) |  |  |  | 34d | 0d | start on or after 2027-02-24 | Calendar 01 - 5 Day w/holidays (No Pats Day) | HELIX | DH1500 | 1107 | ER | TBD |  |  |
| ER.5101.3079 |  | DH1500/Electrical Room #5501 // Set Skid - SKID-E150 |  | 1d | 2027-02-24 | 2027-02-24 | ER.5101.3078 SS, ER.5101.3079 (other project) |  |  |  | 34d | 2d |  | Calendar 01 - 5 Day w/holidays (No Pats Day) | HELIX | DH1500 | 1107 | ER | TBD |  |  |
| ER.5101.3080 |  | DH1500/Electrical Room #5504 // Set Skid - SKID-F150 |  | 1d | 2027-02-24 | 2027-02-24 | ER.5101.3112, ER.5101.3080 (other project) |  |  |  | 40d | 0d | start on or after 2027-02-24 | Calendar 01 - 5 Day w/holidays (No Pats Day) | HELIX | DH1500 | 1107 | ER | TBD |  |  |
| ER.5101.3081 |  | DH1500/Electrical Room #5504 // Set Skid - SKID-G150 |  | 1d | 2027-02-25 | 2027-02-25 | ER.5101.3080, ER.5101.3081 (other project) |  |  |  | 40d | 0d |  | Calendar 01 - 5 Day w/holidays (No Pats Day) | HELIX | DH1500 | 1107 | ER | TBD |  |  |
| ER.5101.3082 |  | DH1500/Electrical Room #5504 // Set Skid - SKID-H150 |  | 1d | 2027-02-25 | 2027-02-25 | ER.5101.3081 SS, ER.5101.3082 (other project) |  |  |  | 40d | 0d |  | Calendar 01 - 5 Day w/holidays (No Pats Day) | HELIX | DH1500 | 1107 | ER | TBD |  |  |
| ER.5101.3083 |  | DH1500/Electrical Room #5504 // Set Skid - SKID-J150 |  | 1d | 2027-02-25 | 2027-02-25 | ER.5101.3082 SS, ER.5101.3083 (other project) |  |  |  | 40d | 0d |  | Calendar 01 - 5 Day w/holidays (No Pats Day) | HELIX | DH1500 | 1107 | ER | TBD |  |  |
| ER.5101.3084 |  | DH1500/Electrical Room #5504 // Set Skid - SKID-K150 |  | 1d | 2027-02-26 | 2027-02-26 | ER.5101.3083, ER.5101.3084 (other project) |  |  |  | 40d | 4d |  | Calendar 01 - 5 Day w/holidays (No Pats Day) | HELIX | DH1500 | 1107 | ER | TBD |  |  |
|  | 4 | **DATA HALL** |  |  | 2026-10-05 | 2027-06-08 |  |  |  |  |  |  |  |  |  |  |  |  |  |  |  |
|  | 1 | **LINE-UPS** |  |  | 2026-10-05 | 2027-06-08 |  |  |  |  |  |  |  |  |  |  |  |  |  |  |  |
|  | 1 | **A150** |  |  | 2026-10-05 | 2027-05-20 |  |  |  |  |  |  |  |  |  |  |  |  |  |  |  |
| DH-A150-730 |  | A150 - Install Supplemental Steel (overhead support for strut/trapeze) |  | 6d | 2026-10-05 A | 2026-10-06 A | DH-K140-550, DH-K140-560, DC7.DH1500.MS.1000 SS | 100% | 2026-12-17 | 2026-12-23 |  |  |  |  | HELIX | DH1500 |  |  |  | To be completed 17toctober from A-K |  |
| DH-A150-740 |  | A150 - Hang Trapeze System / Strut Racking |  | 7d | 2026-10-07 A | 2026-10-07 A | DH-A150-730 | 100% | 2026-12-24 | 2027-01-05 |  |  |  |  | HELIX | DH1500 |  |  |  |  |  |
| DH-A150-780 |  | A150 - Hang Starline Bus |  | 10d | 2027-02-03 | 2027-02-13 | DH-K140-600, DH-A150-740 |  |  |  | 37d | 0d |  |  | HELIX | DH1500 |  |  |  |  |  |
| DH-A150-750 |  | A150 - Pull MC Cable from PDU to MTS |  | 15d | 2027-03-20 | 2027-04-06 | DH-K140-570, PRC-MCC-040 |  |  |  | -21d | 0d |  |  | HELIX | DH1500 |  |  |  |  | BB |
| DH-A150-760 |  | A150 - HAC Aisle Structure Set by others |  | 3d | 2027-04-07 | 2027-04-09 | DH-K140-580, DH-A150-750 |  |  |  | -13d | 0d |  |  | HELIX | DH1500 |  |  |  |  |  |
| DH-A150-770 |  | A150 - HAC Aisle Light install |  | 6d | 2027-04-10 | 2027-04-16 | DH-K140-590, DH-A150-760, PRC-LGT-90 |  |  |  | -13d | 0d |  |  | HELIX | DH1500 |  |  |  |  |  |
| DH-A150-790 |  | A150 - HAC Aisle Structure Raised by others |  | 1d | 2027-04-17 | 2027-04-17 | DH-A150-780, DH-A150-770 |  |  |  | -6d | 0d |  |  | HELIX | DH1500 |  |  |  |  |  |
| DH-A150-800 |  | A150 - Set MTS |  | 4d | 2027-04-19 | 2027-04-22 | DH-A150-790, PR-1100 |  |  |  | -6d | 0d |  |  | HELIX | DH1500 |  |  |  |  |  |
| DH-A150-850 |  | A150 - Set DH PQM |  | 4d | 2027-04-23 | 2027-04-27 | DH-A150-800, PRC-PQM-090 |  |  |  | -6d | 0d |  |  | HELIX | DH1500 |  |  |  |  |  |
| DH-A150-860 |  | A150 - Pipe Data Hall PQM |  | 6d | 2027-04-28 | 2027-05-04 | DH-A150-850 |  |  |  | -6d | 0d |  |  | HELIX | DH1500 |  |  |  |  |  |
| DH-A150-810 |  | A150 - Connect MC Cables to MTS |  | 6d | 2027-05-05 | 2027-05-11 | DH-A150-860, DH-A150-850, DH-A150-800 |  |  |  | -6d | 0d |  |  | HELIX | DH1500 |  |  |  |  |  |
| DH-A150-870 |  | A150 - Pull Wire for DH PQM |  | 3d | 2027-05-05 | 2027-05-07 | DH-A150-860 |  |  |  | -6d | 0d |  |  | HELIX | DH1500 |  |  |  |  |  |
| DH-A150-880 |  | A150 - Terminate DH PQM |  | 4d | 2027-05-08 | 2027-05-12 | DH-A150-870 |  |  |  | -6d | 0d |  |  | HELIX | DH1500 |  |  |  |  |  |
| DH-A150-820 |  | A150 - Terminate MC Cables at MTS |  | 7d | 2027-05-12 | 2027-05-19 | DH-A150-810 |  |  |  | -6d | 0d |  |  | HELIX | DH1500 |  |  |  |  |  |
| DH-A150-830 |  | A150 - Pull MC Cable from MTS to Starline |  | 3d | 2027-05-12 | 2027-05-14 | DH-A150-810 |  |  |  | -5d | 0d |  |  | HELIX | DH1500 |  |  |  |  |  |
| DH-A150-890 |  | A150 - HAC Lighting Switches / Emergency Relay at the same time when set MTS and PQM |  | 3d | 2027-05-13 | 2027-05-15 | DH-A150-880 |  |  |  | -6d | 0d |  |  | HELIX | DH1500 |  |  |  |  |  |
| DH-A150-840 |  | A150 - Terminate MC Cables at Starline |  | 3d | 2027-05-15 | 2027-05-18 | DH-A150-830, DH-A150-810 |  |  |  | -5d | 1d |  |  | HELIX | DH1500 |  |  |  |  |  |
| DH-A150-900 |  | A150 - Terminate Lighting Wiring |  | 3d | 2027-05-17 | 2027-05-19 | DH-A150-890 |  |  |  | -6d | 0d |  |  | HELIX | DH1500 |  |  |  |  |  |
| DH-A150-910 |  | A150 - QC 2.2 Checklist |  | 1d | 2027-05-20 | 2027-05-20 | DH-A150-900, DH-A150-840, DH-A150-820 |  |  |  | -6d | 15d |  |  | HELIX | DH1500 |  |  |  |  |  |

| ID | WBS | Activity | Duration | Start | Finish | Predecessors | Complete | Planned start | Planned finish | Total float | Free float | COMMENTS | QTS - Subcontractor | QTS - AREA | QTS - DC7 |
| --- | --- | --- | --- | --- | --- | --- | --- | --- | --- | --- | --- | --- | --- | --- | --- |
|  | 2 | **B150** |  | 2026-10-06 | 2027-05-20 |  |  |  |  |  |  |  |  |  |  |
| DH-B150-730 |  | B150 - Install Supplemental Steel (overhead support for strut/trapeze) | 6d | 2026-10-06 A | 2026-10-06 A | DH-A150-730 SS | 100% | 2026-12-17 | 2026-12-23 |  |  | Suffolk | HELIX | DH1500 |  |
| DH-B150-740 |  | B150 - Hang Trapeze System / Strut Racking | 7d | 2026-10-07 A | 2026-10-08 A | DH-B150-730 | 100% | 2026-12-24 | 2027-01-05 |  |  |  | HELIX | DH1500 |  |
| DH-B150-780 |  | B150 - Hang Starline Bus | 10d | 2027-02-03 | 2027-02-13 | DH-A150-780 SS, DH-B150-740 |  |  |  | 37d | 0d |  | HELIX | DH1500 |  |
| DH-B150-750 |  | B150 - Pull MC Cable from PDU to MTS | 15d | 2027-03-20 | 2027-04-06 | PRC-MCC-040, DH-A150-750 SS, DH-B150-740 |  |  |  | -21d | 0d |  | HELIX | DH1500 | BB |
| DH-B150-760 |  | B150 - HAC Aisle Structure Set by others | 3d | 2027-04-07 | 2027-04-09 | DH-A150-760 SS, DH-B150-750 |  |  |  | -13d | 0d |  | HELIX | DH1500 |  |
| DH-B150-770 |  | B150 - HAC Aisle Light install | 6d | 2027-04-10 | 2027-04-16 | DH-B150-760, DH-A150-770 SS, PRC-LGT-90 |  |  |  | -13d | 0d |  | HELIX | DH1500 |  |
| DH-B150-790 |  | B150 - HAC Aisle Structure Raised by others | 1d | 2027-04-17 | 2027-04-17 | DH-B150-780, DH-B150-770 |  |  |  | -6d | 0d |  | HELIX | DH1500 |  |
| DH-B150-800 |  | B150 - Set MTS | 4d | 2027-04-19 | 2027-04-22 | DH-B150-790 |  |  |  | -6d | 0d |  | HELIX | DH1500 |  |
| DH-B150-850 |  | B150 - Set DH PQM | 4d | 2027-04-23 | 2027-04-27 | DH-B150-800 |  |  |  | -6d | 0d |  | HELIX | DH1500 |  |
| DH-B150-860 |  | B150 - Pipe Data Hall PQM | 6d | 2027-04-28 | 2027-05-04 | DH-B150-850 |  |  |  | -6d | 0d |  | HELIX | DH1500 |  |
| DH-B150-810 |  | B150 - Connect MC Cables to MTS | 6d | 2027-05-05 | 2027-05-11 | DH-B150-860, DH-B150-850, DH-B150-800 |  |  |  | -6d | 0d |  | HELIX | DH1500 |  |
| DH-B150-870 |  | B150 - Pull Wire for DH PQM | 3d | 2027-05-05 | 2027-05-07 | DH-B150-860 |  |  |  | -6d | 0d |  | HELIX | DH1500 |  |
| DH-B150-880 |  | B150 - Terminate DH PQM | 4d | 2027-05-08 | 2027-05-12 | DH-B150-870 |  |  |  | -6d | 0d |  | HELIX | DH1500 |  |
| DH-B150-820 |  | B150 - Terminate MC Cables at MTS | 7d | 2027-05-12 | 2027-05-19 | DH-B150-810 |  |  |  | -6d | 0d |  | HELIX | DH1500 |  |
| DH-B150-830 |  | B150 - Pull MC Cable from MTS to Starline | 3d | 2027-05-12 | 2027-05-14 | DH-B150-810 |  |  |  | -5d | 0d |  | HELIX | DH1500 |  |
| DH-B150-890 |  | B150 - HAC Lighting Switches / Emergency Relay at the same time when set MTS and PQM | 3d | 2027-05-13 | 2027-05-15 | DH-B150-880 |  |  |  | -6d | 0d |  | HELIX | DH1500 |  |
| DH-B150-840 |  | B150 - Terminate MC Cables at Starline | 3d | 2027-05-15 | 2027-05-18 | DH-B150-830, DH-B150-810 |  |  |  | -5d | 1d |  | HELIX | DH1500 |  |
| DH-B150-900 |  | B150 - Terminate Lighting Wiring | 3d | 2027-05-17 | 2027-05-19 | DH-B150-890 |  |  |  | -6d | 0d |  | HELIX | DH1500 |  |
| DH-B150-920 |  | B150 - QC 2.2 Checklist | 1d | 2027-05-20 | 2027-05-20 | DH-B150-900, DH-B150-840, DH-B150-820 |  |  |  | -6d | 15d |  | HELIX | DH1500 |  |
|  | 3 | **C150** |  | 2026-10-06 | 2027-05-20 |  |  |  |  |  |  |  |  |  |  |
| DH-C150-730 |  | C150 - Install Supplemental Steel (overhead support for strut/trapeze) | 6d | 2026-10-06 A | 2026-10-06 A | DH-B150-730 SS | 100% | 2026-12-17 | 2026-12-23 |  |  | Suffolk | HELIX | DH1500 |  |
| DH-C150-740 |  | C150 - Hang Trapeze System / Strut Racking | 7d | 2026-10-08 A | 2026-10-08 A | DH-C150-730 | 100% | 2026-12-24 | 2027-01-05 |  |  |  | HELIX | DH1500 |  |
| DH-C150-780 |  | C150 - Hang Starline Bus | 10d | 2027-02-03 | 2027-02-13 | DH-B150-780 SS, DH-C150-740 |  |  |  | 37d | 0d |  | HELIX | DH1500 |  |
| DH-C150-750 |  | C150 - Pull MC Cable from PDU to MTS | 15d | 2027-03-20 | 2027-04-06 | PRC-MCC-040, DH-B150-750 SS, DH-C150-740 |  |  |  | -21d | 0d |  | HELIX | DH1500 | BB |
| DH-C150-760 |  | C150 - HAC Aisle Structure Set by others | 3d | 2027-04-07 | 2027-04-09 | DH-C150-750 |  |  |  | -13d | 0d |  | HELIX | DH1500 |  |
| DH-C150-770 |  | C150 - HAC Aisle Light install | 6d | 2027-04-10 | 2027-04-16 | DH-B150-770 SS, DH-C150-760, PRC-LGT-90 |  |  |  | -13d | 0d |  | HELIX | DH1500 |  |
| DH-C150-790 |  | C150 - HAC Aisle Structure Raised by others | 1d | 2027-04-17 | 2027-04-17 | DH-C150-780, DH-C150-770 |  |  |  | -6d | 0d |  | HELIX | DH1500 |  |
| DH-C150-800 |  | C150 - Set MTS | 4d | 2027-04-19 | 2027-04-22 | DH-C150-790 |  |  |  | -6d | 0d |  | HELIX | DH1500 |  |
| DH-C150-850 |  | C150 - Set DH PQM | 4d | 2027-04-23 | 2027-04-27 | DH-C150-800 |  |  |  | -6d | 0d |  | HELIX | DH1500 |  |
| DH-C150-860 |  | C150 - Pipe Data Hall PQM | 6d | 2027-04-28 | 2027-05-04 | DH-C150-850 |  |  |  | -6d | 0d |  | HELIX | DH1500 |  |
| DH-C150-810 |  | C150 - Connect MC Cables to MTS | 6d | 2027-05-05 | 2027-05-11 | DH-C150-860, DH-C150-850, DH-C150-800 |  |  |  | -6d | 0d |  | HELIX | DH1500 |  |
| DH-C150-870 |  | C150 - Pull Wire for DH PQM | 3d | 2027-05-05 | 2027-05-07 | DH-C150-860 |  |  |  | -6d | 0d |  | HELIX | DH1500 |  |
| DH-C150-880 |  | C150 - Terminate DH PQM | 4d | 2027-05-08 | 2027-05-12 | DH-C150-870 |  |  |  | -6d | 0d |  | HELIX | DH1500 |  |
| DH-C150-820 |  | C150 - Terminate MC Cables at MTS | 7d | 2027-05-12 | 2027-05-19 | DH-C150-810 |  |  |  | -6d | 0d |  | HELIX | DH1500 |  |
| DH-C150-830 |  | C150 - Pull MC Cable from MTS to Starline | 3d | 2027-05-12 | 2027-05-14 | DH-C150-810 |  |  |  | -5d | 0d |  | HELIX | DH1500 |  |
| DH-C150-890 |  | C150 - HAC Lighting Switches / Emergency Relay at the same time when set MTS and PQM | 3d | 2027-05-13 | 2027-05-15 | DH-C150-880 |  |  |  | -6d | 0d |  | HELIX | DH1500 |  |
| DH-C150-840 |  | C150 - Terminate MC Cables at Starline | 3d | 2027-05-15 | 2027-05-18 | DH-C150-830, DH-C150-810 |  |  |  | -5d | 1d |  | HELIX | DH1500 |  |
| DH-C150-900 |  | C150 - Terminate Lighting Wiring | 3d | 2027-05-17 | 2027-05-19 | DH-C150-890 |  |  |  | -6d | 0d |  | HELIX | DH1500 |  |
| DH-C150-930 |  | C150 - QC 2.2 Checklist | 1d | 2027-05-20 | 2027-05-20 | DH-C150-900, DH-C150-840, DH-C150-820 |  |  |  | -6d | 15d |  | HELIX | DH1500 |  |

| ID | WBS | Activity | Duration | Start | Finish | Predecessors | Complete | Planned start | Planned finish | Total float | Free float | COMMENTS | QTS - Subcontractor | QTS - AREA | QTS - DC7 |
| --- | --- | --- | --- | --- | --- | --- | --- | --- | --- | --- | --- | --- | --- | --- | --- |
|  | 4 | **D150** |  | 2026-10-06 | 2027-05-20 |  |  |  |  |  |  |  |  |  |  |
| DH-D150-730 |  | D150 - Install Supplemental Steel (overhead support for strut/trapeze) | 6d | 2026-10-06 A | 2026-10-07 A | DH-C150-730 SS | 100% | 2026-10-06 | 2026-10-12 |  |  | Suffolk | HELIX | DH1500 |  |
| DH-D150-740 |  | D150 - Hang Trapeze System / Strut Racking | 7d | 2026-10-08 A | 2026-10-09 A | DH-D150-730 | 100% | 2026-10-08 | 2026-10-15 |  |  |  | HELIX | DH1500 |  |
| DH-D150-780 |  | D150 - Hang Starline Bus | 10d | 2027-02-03 | 2027-02-13 | DH-C150-780 SS, DH-D150-740 |  |  |  | 37d | 0d |  | HELIX | DH1500 |  |
| DH-D150-750 |  | D150 - Pull MC Cable from PDU to MTS | 15d | 2027-03-20 | 2027-04-06 | PRC-MCC-040, DH-C150-750 SS, DH-D150-740 |  |  |  | -21d | 0d |  | HELIX | DH1500 | BB |
| DH-D150-760 |  | D150 - HAC Aisle Structure Set by others | 3d | 2027-04-07 | 2027-04-09 | DH-D150-750 |  |  |  | -13d | 0d |  | HELIX | DH1500 |  |
| DH-D150-770 |  | D150 - HAC Aisle Light install | 6d | 2027-04-10 | 2027-04-16 | DH-C150-770 SS, DH-D150-760, PRC-LGT-90 |  |  |  | -13d | 0d |  | HELIX | DH1500 |  |
| DH-D150-790 |  | D150 - HAC Aisle Structure Raised by others | 1d | 2027-04-17 | 2027-04-17 | DH-D150-780, DH-D150-770 |  |  |  | -6d | 0d |  | HELIX | DH1500 |  |
| DH-D150-800 |  | D150 - Set MTS | 4d | 2027-04-19 | 2027-04-22 | DH-D150-790 |  |  |  | -6d | 0d |  | HELIX | DH1500 |  |
| DH-D150-850 |  | D150 - Set DH PQM | 4d | 2027-04-23 | 2027-04-27 | DH-D150-800 |  |  |  | -6d | 0d |  | HELIX | DH1500 |  |
| DH-D150-860 |  | D150 - Pipe Data Hall PQM | 6d | 2027-04-28 | 2027-05-04 | DH-D150-850 |  |  |  | -6d | 0d |  | HELIX | DH1500 |  |
| DH-D150-810 |  | D150 - Connect MC Cables to MTS | 6d | 2027-05-05 | 2027-05-11 | DH-D150-860, DH-D150-850, DH-D150-800 |  |  |  | -6d | 0d |  | HELIX | DH1500 |  |
| DH-D150-870 |  | D150 - Pull Wire for DH PQM | 3d | 2027-05-05 | 2027-05-07 | DH-D150-860 |  |  |  | -6d | 0d |  | HELIX | DH1500 |  |
| DH-D150-880 |  | D150 - Terminate DH PQM | 4d | 2027-05-08 | 2027-05-12 | DH-D150-870 |  |  |  | -6d | 0d |  | HELIX | DH1500 |  |
| DH-D150-820 |  | D150 - Terminate MC Cables at MTS | 7d | 2027-05-12 | 2027-05-19 | DH-D150-810 |  |  |  | -6d | 0d |  | HELIX | DH1500 |  |
| DH-D150-830 |  | D150 - Pull MC Cable from MTS to Starline | 3d | 2027-05-12 | 2027-05-14 | DH-D150-810 |  |  |  | -5d | 0d |  | HELIX | DH1500 |  |
| DH-D150-890 |  | D150 - HAC Lighting Switches / Emergency Relay at the same time when set MTS and PQM | 3d | 2027-05-13 | 2027-05-15 | DH-D150-880 |  |  |  | -6d | 0d |  | HELIX | DH1500 |  |
| DH-D150-840 |  | D150 - Terminate MC Cables at Starline | 3d | 2027-05-15 | 2027-05-18 | DH-D150-830, DH-D150-810 |  |  |  | -5d | 1d |  | HELIX | DH1500 |  |
| DH-D150-900 |  | D150 - Terminate Lighting Wiring | 3d | 2027-05-17 | 2027-05-19 | DH-D150-890 |  |  |  | -6d | 0d |  | HELIX | DH1500 |  |
| DH-D150-940 |  | D150 - QC 2.2 Checklist | 1d | 2027-05-20 | 2027-05-20 | DH-D150-900, DH-D150-840, DH-D150-820 |  |  |  | -6d | 15d |  | HELIX | DH1500 |  |
|  | 5 | **E150** |  | 2026-10-07 | 2027-05-20 |  |  |  |  |  |  |  |  |  |  |
| DH-E150-730 |  | E150 - Install Supplemental Steel (overhead support for strut/trapeze) | 6d | 2026-10-07 A | 2026-10-07 A | DH-D150-730 SS | 100% | 2026-12-17 | 2026-12-23 |  |  | Suffolk | HELIX | DH1500 |  |
| DH-E150-740 |  | E150 - Hang Trapeze System / Strut Racking | 7d | 2026-10-09 A | 2026-10-09 A | DH-E150-730 | 100% | 2026-12-24 | 2027-01-05 |  |  |  | HELIX | DH1500 |  |
| DH-E150-780 |  | E150 - Hang Starline Bus | 10d | 2027-02-03 | 2027-02-13 | DH-D150-780 SS, DH-E150-740 |  |  |  | 37d | 0d |  | HELIX | DH1500 |  |
| DH-E150-750 |  | E150 - Pull MC Cable from PDU to MTS | 15d | 2027-03-20 | 2027-04-06 | PRC-MCC-040, DH-D150-750 SS, DH-E150-740 |  |  |  | -21d | 0d |  | HELIX | DH1500 | BB |
| DH-E150-760 |  | E150 - HAC Aisle Structure Set by others | 3d | 2027-04-07 | 2027-04-09 | DH-E150-750 |  |  |  | -13d | 0d |  | HELIX | DH1500 |  |
| DH-E150-770 |  | E150 - HAC Aisle Light install | 6d | 2027-04-10 | 2027-04-16 | DH-D150-770 SS, DH-E150-760, PRC-LGT-90 |  |  |  | -13d | 0d |  | HELIX | DH1500 |  |
| DH-E150-790 |  | E150 - HAC Aisle Structure Raised by others | 1d | 2027-04-17 | 2027-04-17 | DH-E150-780, DH-E150-770 |  |  |  | -13d | 0d |  | HELIX | DH1500 |  |
| DH-E150-800 |  | E150 - Set MTS | 4d | 2027-04-19 | 2027-04-22 | DH-E150-790 |  |  |  | -13d | 0d |  | HELIX | DH1500 |  |
| DH-E150-850 |  | E150 - Set DH PQM | 4d | 2027-04-23 | 2027-04-27 | DH-E150-800 |  |  |  | -13d | 0d |  | HELIX | DH1500 |  |
| DH-E150-860 |  | E150 - Pipe Data Hall PQM | 6d | 2027-04-28 | 2027-05-04 | DH-E150-850 |  |  |  | -13d | 0d |  | HELIX | DH1500 |  |
| DH-E150-810 |  | E150 - Connect MC Cables to MTS | 6d | 2027-05-05 | 2027-05-11 | DH-E150-860, DH-E150-850, DH-E150-800 |  |  |  | -13d | 0d |  | HELIX | DH1500 |  |
| DH-E150-870 |  | E150 - Pull Wire for DH PQM | 3d | 2027-05-05 | 2027-05-07 | DH-E150-860 |  |  |  | -6d | 0d |  | HELIX | DH1500 |  |
| DH-E150-880 |  | E150 - Terminate DH PQM | 4d | 2027-05-08 | 2027-05-12 | DH-E150-870 |  |  |  | -6d | 0d |  | HELIX | DH1500 |  |
| DH-E150-820 |  | E150 - Terminate MC Cables at MTS | 7d | 2027-05-12 | 2027-05-19 | DH-E150-810 |  |  |  | -6d | 0d |  | HELIX | DH1500 |  |
| DH-E150-830 |  | E150 - Pull MC Cable from MTS to Starline | 3d | 2027-05-12 | 2027-05-14 | DH-E150-810 |  |  |  | -5d | 0d |  | HELIX | DH1500 |  |
| DH-E150-890 |  | E150 - HAC Lighting Switches / Emergency Relay at the same time when set MTS and PQM | 3d | 2027-05-13 | 2027-05-15 | DH-E150-880 |  |  |  | -6d | 0d |  | HELIX | DH1500 |  |
| DH-E150-840 |  | E150 - Terminate MC Cables at Starline | 3d | 2027-05-15 | 2027-05-18 | DH-E150-830, DH-E150-810 |  |  |  | -5d | 1d |  | HELIX | DH1500 |  |
| DH-E150-900 |  | E150 - Terminate Lighting Wiring | 3d | 2027-05-17 | 2027-05-19 | DH-E150-890 |  |  |  | -6d | 0d |  | HELIX | DH1500 |  |
| DH-E150-950 |  | E150 - QC 2.2 Checklist | 1d | 2027-05-20 | 2027-05-20 | DH-E150-900, DH-E150-840, DH-E150-820 |  |  |  | -6d | 15d |  | HELIX | DH1500 |  |

| ID | WBS | Activity | Duration | Start | Finish | Predecessors | Complete | Planned start | Planned finish | Total float | Free float | COMMENTS | QTS - Subcontractor | QTS - AREA | QTS - DC7 |
| --- | --- | --- | --- | --- | --- | --- | --- | --- | --- | --- | --- | --- | --- | --- | --- |
|  | 6 | **F150** |  | 2026-10-07 | 2027-06-08 |  |  |  |  |  |  |  |  |  |  |
| DH-F150-730 |  | F150 - Install Supplemental Steel (overhead support for strut/trapeze) | 6d | 2026-10-07 A | 2026-10-07 A | DH-E150-730, DH-E150-740 | 100% | 2027-01-06 | 2027-01-12 |  |  | Suffolk | HELIX | DH1500 |  |
| DH-F150-740 |  | F150 - Hang Trapeze System / Strut Racking | 7d | 2026-10-12 A | 2026-10-12 A | DH-F150-730 | 100% | 2027-01-13 | 2027-01-20 |  |  |  | HELIX | DH1500 |  |
| DH-F150-780 |  | F150 - Hang Starline Bus | 10d | 2027-02-15 | 2027-02-25 | DH-E150-780, DH-F150-740 |  |  |  | 37d | 0d |  | HELIX | DH1500 |  |
| DH-F150-750 |  | F150 - Pull MC Cable from PDU to MTS | 15d | 2027-04-07 | 2027-04-23 | PRC-MCC-040, DH-E150-750, DH-F150-740 |  |  |  | -21d | 0d |  | HELIX | DH1500 | BB |
| DH-F150-760 |  | F150 - HAC Aisle Structure Set by others | 3d | 2027-04-24 | 2027-04-27 | DH-E150-760, DH-F150-750 |  |  |  | -21d | 0d |  | HELIX | DH1500 |  |
| DH-F150-770 |  | F150 - HAC Aisle Light install | 6d | 2027-04-28 | 2027-05-04 | DH-E150-770, DH-F150-760, PRC-LGT-90 |  |  |  | -21d | 0d |  | HELIX | DH1500 |  |
| DH-F150-790 |  | F150 - HAC Aisle Structure Raised by others | 1d | 2027-05-05 | 2027-05-05 | DH-F150-780, DH-F150-770 |  |  |  | -21d | 0d |  | HELIX | DH1500 |  |
| DH-F150-800 |  | F150 - Set MTS | 4d | 2027-05-06 | 2027-05-10 | DH-F150-790, PR-1100 |  |  |  | -21d | 0d |  | HELIX | DH1500 |  |
| DH-F150-850 |  | F150 - Set DH PQM | 4d | 2027-05-11 | 2027-05-14 | DH-F150-800 |  |  |  | -21d | 0d |  | HELIX | DH1500 |  |
| DH-F150-860 |  | F150 - Pipe Data Hall PQM | 6d | 2027-05-15 | 2027-05-21 | DH-F150-850 |  |  |  | -21d | 0d |  | HELIX | DH1500 |  |
| DH-F150-810 |  | F150 - Connect MC Cables to MTS | 6d | 2027-05-22 | 2027-05-28 | DH-F150-860, DH-F150-850, DH-F150-800 |  |  |  | -21d | 0d |  | HELIX | DH1500 |  |
| DH-F150-870 |  | F150 - Pull Wire for DH PQM | 3d | 2027-05-22 | 2027-05-25 | DH-F150-860 |  |  |  | -21d | 0d |  | HELIX | DH1500 |  |
| DH-F150-880 |  | F150 - Terminate DH PQM | 4d | 2027-05-26 | 2027-05-29 | DH-F150-870 |  |  |  | -21d | 0d |  | HELIX | DH1500 |  |
| DH-F150-820 |  | F150 - Terminate MC Cables at MTS | 7d | 2027-05-29 | 2027-06-07 | DH-F150-810 |  |  |  | -21d | 0d |  | HELIX | DH1500 |  |
| DH-F150-830 |  | F150 - Pull MC Cable from MTS to Starline | 3d | 2027-05-29 | 2027-06-02 | DH-F150-810 |  |  |  | -20d | 0d |  | HELIX | DH1500 |  |
| DH-F150-890 |  | F150 - HAC Lighting Switches / Emergency Relay at the same time when set MTS and PQM | 3d | 2027-06-01 | 2027-06-03 | DH-F150-880 |  |  |  | -21d | 0d |  | HELIX | DH1500 |  |
| DH-F150-840 |  | F150 - Terminate MC Cables at Starline | 3d | 2027-06-03 | 2027-06-05 | DH-F150-830, DH-F150-810 |  |  |  | -20d | 1d |  | HELIX | DH1500 |  |
| DH-F150-900 |  | F150 - Terminate Lighting Wiring | 3d | 2027-06-04 | 2027-06-07 | DH-F150-890 |  |  |  | -21d | 0d |  | HELIX | DH1500 |  |
| DH-F150-960 |  | F150 - QC 2.2 Checklist | 1d | 2027-06-08 | 2027-06-08 | DH-F150-900, DH-F150-840, DH-F150-820 |  |  |  | -21d | 0d |  | HELIX | DH1500 |  |
|  | 7 | **G150** |  | 2026-10-08 | 2027-06-08 |  |  |  |  |  |  |  |  |  |  |
| DH-G150-730 |  | G150 - Install Supplemental Steel (overhead support for strut/trapeze) | 6d | 2026-10-08 A | 2026-10-08 A | DH-F150-730 SS | 100% | 2027-01-06 | 2027-01-12 |  |  | Suffolk | HELIX | DH1500 |  |
| DH-G150-740 |  | G150 - Hang Trapeze System / Strut Racking | 7d | 2026-10-12 A | 2026-10-13 A | DH-G150-730 | 100% | 2027-01-13 | 2027-01-20 |  |  |  | HELIX | DH1500 |  |
| DH-G150-780 |  | G150 - Hang Starline Bus | 10d | 2027-02-15 | 2027-02-25 | DH-F150-780 SS, DH-G150-740 |  |  |  | 37d | 0d |  | HELIX | DH1500 |  |
| DH-G150-750 |  | G150 - Pull MC Cable from PDU to MTS | 15d | 2027-04-07 | 2027-04-23 | PRC-MCC-040, DH-F150-750 SS, DH-G150-740 |  |  |  | -21d | 0d |  | HELIX | DH1500 | BB |
| DH-G150-760 |  | G150 - HAC Aisle Structure Set by others | 3d | 2027-04-24 | 2027-04-27 | DH-F150-760 SS, DH-G150-750 |  |  |  | -21d | 0d |  | HELIX | DH1500 |  |
| DH-G150-770 |  | G150 - HAC Aisle Light install | 6d | 2027-04-28 | 2027-05-04 | DH-F150-770 SS, DH-G150-760, PRC-LGT-90 |  |  |  | -21d | 0d |  | HELIX | DH1500 |  |
| DH-G150-790 |  | G150 - HAC Aisle Structure Raised by others | 1d | 2027-05-05 | 2027-05-05 | DH-F150-790 SS, DH-G150-780, DH-G150-770 |  |  |  | -21d | 0d |  | HELIX | DH1500 |  |
| DH-G150-800 |  | G150 - Set MTS | 4d | 2027-05-06 | 2027-05-10 | DH-F150-800 SS, DH-G150-790 |  |  |  | -21d | 0d |  | HELIX | DH1500 |  |
| DH-G150-850 |  | G150 - Set DH PQM | 4d | 2027-05-11 | 2027-05-14 | DH-F150-850 SS, DH-G150-800 |  |  |  | -21d | 0d |  | HELIX | DH1500 |  |
| DH-G150-860 |  | G150 - Pipe Data Hall PQM | 6d | 2027-05-15 | 2027-05-21 | DH-G150-850 |  |  |  | -21d | 0d |  | HELIX | DH1500 |  |
| DH-G150-810 |  | G150 - Connect MC Cables to MTS | 6d | 2027-05-22 | 2027-05-28 | DH-G150-860, DH-G150-850, DH-G150-800 |  |  |  | -21d | 0d |  | HELIX | DH1500 |  |
| DH-G150-870 |  | G150 - Pull Wire for DH PQM | 3d | 2027-05-22 | 2027-05-25 | DH-G150-860 |  |  |  | -21d | 0d |  | HELIX | DH1500 |  |
| DH-G150-880 |  | G150 - Terminate DH PQM | 4d | 2027-05-26 | 2027-05-29 | DH-G150-870 |  |  |  | -21d | 0d |  | HELIX | DH1500 |  |
| DH-G150-820 |  | G150 - Terminate MC Cables at MTS | 7d | 2027-05-29 | 2027-06-07 | DH-G150-810 |  |  |  | -21d | 0d |  | HELIX | DH1500 |  |
| DH-G150-830 |  | G150 - Pull MC Cable from MTS to Starline | 3d | 2027-05-29 | 2027-06-02 | DH-G150-810 |  |  |  | -20d | 0d |  | HELIX | DH1500 |  |
| DH-G150-890 |  | G150 - HAC Lighting Switches / Emergency Relay at the same time when set MTS and PQM | 3d | 2027-06-01 | 2027-06-03 | DH-G150-880 |  |  |  | -21d | 0d |  | HELIX | DH1500 |  |
| DH-G150-840 |  | G150 - Terminate MC Cables at Starline | 3d | 2027-06-03 | 2027-06-05 | DH-G150-830, DH-G150-810 |  |  |  | -20d | 1d |  | HELIX | DH1500 |  |
| DH-G150-900 |  | G150 - Terminate Lighting Wiring | 3d | 2027-06-04 | 2027-06-07 | DH-G150-890 |  |  |  | -21d | 0d |  | HELIX | DH1500 |  |
| DH-F150-970 |  | F150 - QC 2.2 Checklist | 1d | 2027-06-08 | 2027-06-08 | DH-G150-900, DH-G150-840, DH-G150-820 |  |  |  | -21d | 0d |  | HELIX | DH1500 |  |

| ID | WBS | Activity | Duration | Start | Finish | Predecessors | Complete | Planned start | Planned finish | Total float | Free float | COMMENTS | QTS - Subcontractor | QTS - AREA | QTS - DC7 |
| --- | --- | --- | --- | --- | --- | --- | --- | --- | --- | --- | --- | --- | --- | --- | --- |
|  | 8 | **H150** |  | 2026-10-08 | 2027-06-08 |  |  |  |  |  |  |  |  |  |  |
| DH-H150-730 |  | H150 - Install Supplemental Steel (overhead support for strut/trapeze) | 6d | 2026-10-08 A | 2026-10-08 A | DH-G150-730 SS | 100% | 2027-01-06 | 2027-01-12 |  |  | Suffolk | HELIX | DH1500 |  |
| DH-H150-740 |  | H150 - Hang Trapeze System / Strut Racking | 7d | 2026-10-13 A | 2026-10-13 A | DH-H150-730 | 100% | 2027-01-13 | 2027-01-20 |  |  |  | HELIX | DH1500 |  |
| DH-H150-780 |  | H150 - Hang Starline Bus | 10d | 2027-02-15 | 2027-02-25 | DH-G150-780 SS, DH-H150-740 |  |  |  | 37d | 0d |  | HELIX | DH1500 |  |
| DH-H150-750 |  | H150 - Pull MC Cable from PDU to MTS | 15d | 2027-04-07 | 2027-04-23 | PRC-MCC-040, DH-G150-750 SS, DH-H150-740 |  |  |  | -21d | 0d |  | HELIX | DH1500 | BB |
| DH-H150-760 |  | H150 - HAC Aisle Structure Set by others | 3d | 2027-04-24 | 2027-04-27 | DH-H150-750 |  |  |  | -21d | 0d |  | HELIX | DH1500 |  |
| DH-H150-770 |  | H150 - HAC Aisle Light install | 6d | 2027-04-28 | 2027-05-04 | DH-G150-770 SS, DH-H150-760, PRC-LGT-90 |  |  |  | -21d | 0d |  | HELIX | DH1500 |  |
| DH-H150-790 |  | H150 - HAC Aisle Structure Raised by others | 1d | 2027-05-05 | 2027-05-05 | DH-H150-780, DH-H150-770 |  |  |  | -21d | 0d |  | HELIX | DH1500 |  |
| DH-H150-800 |  | H150 - Set MTS | 4d | 2027-05-06 | 2027-05-10 | DH-H150-790 |  |  |  | -21d | 0d |  | HELIX | DH1500 |  |
| DH-H150-850 |  | H150 - Set DH PQM | 4d | 2027-05-11 | 2027-05-14 | DH-H150-800 |  |  |  | -21d | 0d |  | HELIX | DH1500 |  |
| DH-H150-860 |  | H150 - Pipe Data Hall PQM | 6d | 2027-05-15 | 2027-05-21 | DH-H150-850 |  |  |  | -21d | 0d |  | HELIX | DH1500 |  |
| DH-H150-810 |  | H150 - Connect MC Cables to MTS | 6d | 2027-05-22 | 2027-05-28 | DH-H150-860, DH-H150-850, DH-H150-800 |  |  |  | -21d | 0d |  | HELIX | DH1500 |  |
| DH-H150-870 |  | H150 - Pull Wire for DH PQM | 3d | 2027-05-22 | 2027-05-25 | DH-H150-860 |  |  |  | -21d | 0d |  | HELIX | DH1500 |  |
| DH-H150-880 |  | H150 - Terminate DH PQM | 4d | 2027-05-26 | 2027-05-29 | DH-H150-870 |  |  |  | -21d | 0d |  | HELIX | DH1500 |  |
| DH-H150-820 |  | H150 - Terminate MC Cables at MTS | 7d | 2027-05-29 | 2027-06-07 | DH-H150-810 |  |  |  | -21d | 0d |  | HELIX | DH1500 |  |
| DH-H150-830 |  | H150 - Pull MC Cable from MTS to Starline | 3d | 2027-05-29 | 2027-06-02 | DH-H150-810 |  |  |  | -20d | 0d |  | HELIX | DH1500 |  |
| DH-H150-890 |  | H150 - HAC Lighting Switches / Emergency Relay at the same time when set MTS and PQM | 3d | 2027-06-01 | 2027-06-03 | DH-H150-880 |  |  |  | -21d | 0d |  | HELIX | DH1500 |  |
| DH-H150-840 |  | H150 - Terminate MC Cables at Starline | 3d | 2027-06-03 | 2027-06-05 | DH-H150-830, DH-H150-810 |  |  |  | -20d | 1d |  | HELIX | DH1500 |  |
| DH-H150-900 |  | H150 - Terminate Lighting Wiring | 3d | 2027-06-04 | 2027-06-07 | DH-H150-890 |  |  |  | -21d | 0d |  | HELIX | DH1500 |  |
| DH-H150-980 |  | H150 - QC 2.2 Checklist | 1d | 2027-06-08 | 2027-06-08 | DH-H150-900, DH-H150-840, DH-H150-820 |  |  |  | -21d | 0d |  | HELIX | DH1500 |  |
|  | 9 | **J150** |  | 2026-10-09 | 2027-06-08 |  |  |  |  |  |  |  |  |  |  |
| DH-J150-730 |  | J150 - Install Supplemental Steel (overhead support for strut/trapeze) | 6d | 2026-10-09 A | 2026-10-09 A | DH-H150-730 SS | 100% | 2027-01-06 | 2027-01-12 |  |  | Suffolk | HELIX | DH1500 |  |
| DH-J150-740 |  | J150 - Hang Trapeze System / Strut Racking | 7d | 2026-10-14 A | 2026-10-14 A | DH-J150-730 | 100% | 2027-01-13 | 2027-01-20 |  |  |  | HELIX | DH1500 |  |
| DH-J150-780 |  | J150 - Hang Starline Bus | 10d | 2027-02-15 | 2027-02-25 | DH-H150-780 SS, DH-J150-740 |  |  |  | 37d | 0d |  | HELIX | DH1500 |  |
| DH-J150-750 |  | J150 - Pull MC Cable from PDU to MTS | 15d | 2027-04-07 | 2027-04-23 | PRC-MCC-040, DH-H150-750 SS, DH-J150-740 |  |  |  | -21d | 0d |  | HELIX | DH1500 | BB |
| DH-J150-760 |  | J150 - HAC Aisle Structure Set by others | 3d | 2027-04-24 | 2027-04-27 | DH-J150-750 |  |  |  | -21d | 0d |  | HELIX | DH1500 |  |
| DH-J150-770 |  | J150 - HAC Aisle Light install | 6d | 2027-04-28 | 2027-05-04 | DH-H150-770 SS, DH-J150-760, PRC-LGT-90 |  |  |  | -21d | 0d |  | HELIX | DH1500 |  |
| DH-J150-790 |  | J150 - HAC Aisle Structure Raised by others | 1d | 2027-05-05 | 2027-05-05 | DH-J150-780, DH-J150-770 |  |  |  | -21d | 0d |  | HELIX | DH1500 |  |
| DH-J150-800 |  | J150 - Set MTS | 4d | 2027-05-06 | 2027-05-10 | DH-J150-790 |  |  |  | -21d | 0d |  | HELIX | DH1500 |  |
| DH-J150-850 |  | J150 - Set DH PQM | 4d | 2027-05-11 | 2027-05-14 | DH-J150-800 |  |  |  | -21d | 0d |  | HELIX | DH1500 |  |
| DH-J150-860 |  | J150 - Pipe Data Hall PQM | 6d | 2027-05-15 | 2027-05-21 | DH-J150-850 |  |  |  | -21d | 0d |  | HELIX | DH1500 |  |
| DH-J150-810 |  | J150 - Connect MC Cables to MTS | 6d | 2027-05-22 | 2027-05-28 | DH-J150-860, DH-J150-850, DH-J150-800 |  |  |  | -21d | 0d |  | HELIX | DH1500 |  |
| DH-J150-870 |  | J150 - Pull Wire for DH PQM | 3d | 2027-05-22 | 2027-05-25 | DH-J150-860 |  |  |  | -21d | 0d |  | HELIX | DH1500 |  |
| DH-J150-880 |  | J150 - Terminate DH PQM | 4d | 2027-05-26 | 2027-05-29 | DH-J150-870 |  |  |  | -21d | 0d |  | HELIX | DH1500 |  |
| DH-J150-820 |  | J150 - Terminate MC Cables at MTS | 7d | 2027-05-29 | 2027-06-07 | DH-J150-810 |  |  |  | -21d | 0d |  | HELIX | DH1500 |  |
| DH-J150-830 |  | J150 - Pull MC Cable from MTS to Starline | 3d | 2027-05-29 | 2027-06-02 | DH-J150-810 |  |  |  | -20d | 0d |  | HELIX | DH1500 |  |
| DH-J150-890 |  | J150 - HAC Lighting Switches / Emergency Relay at the same time when set MTS and PQM | 3d | 2027-06-01 | 2027-06-03 | DH-J150-880 |  |  |  | -21d | 0d |  | HELIX | DH1500 |  |
| DH-J150-840 |  | J150 - Terminate MC Cables at Starline | 3d | 2027-06-03 | 2027-06-05 | DH-J150-830, DH-J150-810 |  |  |  | -20d | 1d |  | HELIX | DH1500 |  |
| DH-J150-900 |  | J150 - Terminate Lighting Wiring | 3d | 2027-06-04 | 2027-06-07 | DH-J150-890 |  |  |  | -21d | 0d |  | HELIX | DH1500 |  |
| DH-J150-990 |  | J150 - QC 2.2 Checklist | 1d | 2027-06-08 | 2027-06-08 | DH-J150-900, DH-J150-840, DH-J150-820 |  |  |  | -21d | 0d |  | HELIX | DH1500 |  |

| ID | WBS | Activity | Duration | Start | Finish | Predecessors | Complete | Planned start | Planned finish | Total float | Free float | COMMENTS | QTS - Subcontractor | QTS - AREA | QTS - DC7 |
| --- | --- | --- | --- | --- | --- | --- | --- | --- | --- | --- | --- | --- | --- | --- | --- |
|  | 10 | **K150** |  | 2026-10-09 | 2027-06-08 |  |  |  |  |  |  |  |  |  |  |
| DH-K150-730 |  | K150 - Install Supplemental Steel (overhead support for strut/trapeze) | 6d | 2026-10-09 A | 2026-10-09 A | DH-J150-730 SS | 100% | 2027-01-06 | 2027-01-12 |  |  | Suffolk | HELIX | DH1500 |  |
| DH-K150-740 |  | K150 - Hang Trapeze System / Strut Racking | 7d | 2026-10-15 A | 2026-10-15 A | DH-K150-730 | 100% | 2027-01-13 | 2027-01-20 |  |  |  | HELIX | DH1500 |  |
| DH-K150-780 |  | K150 - Hang Starline Bus | 10d | 2027-02-15 | 2027-02-25 | DH-J150-780 SS, DH-K150-740 |  |  |  | 37d | 0d |  | HELIX | DH1500 |  |
| DH-K150-750 |  | K150 - Pull MC Cable from PDU to MTS | 15d | 2027-04-07 | 2027-04-23 | PRC-MCC-040, DH-J150-750 SS, DH-K150-740 |  |  |  | -21d | 0d |  | HELIX | DH1500 | BB |
| DH-K150-760 |  | K150 - HAC Aisle Structure Set by others | 3d | 2027-04-24 | 2027-04-27 | DH-K150-750 |  |  |  | -21d | 0d |  | HELIX | DH1500 |  |
| DH-K150-770 |  | K150 - HAC Aisle Light install | 6d | 2027-04-28 | 2027-05-04 | DH-J150-770 SS, DH-K150-760, PRC-LGT-90 |  |  |  | -21d | 0d |  | HELIX | DH1500 |  |
| DH-K150-790 |  | K150 - HAC Aisle Structure Raised by others | 1d | 2027-05-05 | 2027-05-05 | DH-K150-780, DH-K150-770 |  |  |  | -21d | 0d |  | HELIX | DH1500 |  |
| DH-K150-800 |  | K150 - Set MTS | 4d | 2027-05-06 | 2027-05-10 | DH-K150-790 |  |  |  | -21d | 0d |  | HELIX | DH1500 |  |
| DH-K150-850 |  | K150 - Set DH PQM | 4d | 2027-05-11 | 2027-05-14 | DH-K150-800 |  |  |  | -21d | 0d |  | HELIX | DH1500 |  |
| DH-K150-860 |  | K150 - Pipe Data Hall PQM | 6d | 2027-05-15 | 2027-05-21 | DH-K150-850 |  |  |  | -21d | 0d |  | HELIX | DH1500 |  |
| DH-K150-810 |  | K150 - Connect MC Cables to MTS | 6d | 2027-05-22 | 2027-05-28 | DH-K150-860, DH-K150-850, DH-K150-800 |  |  |  | -21d | 0d |  | HELIX | DH1500 |  |
| DH-K150-870 |  | K150 - Pull Wire for DH PQM | 3d | 2027-05-22 | 2027-05-25 | DH-K150-860 |  |  |  | -21d | 0d |  | HELIX | DH1500 |  |
| DH-K150-880 |  | K150 - Terminate DH PQM | 4d | 2027-05-26 | 2027-05-29 | DH-K150-870 |  |  |  | -21d | 0d |  | HELIX | DH1500 |  |
| DH-K150-820 |  | K150 - Terminate MC Cables at MTS | 7d | 2027-05-29 | 2027-06-07 | DH-K150-810 |  |  |  | -21d | 0d |  | HELIX | DH1500 |  |
| DH-K150-830 |  | K150 - Pull MC Cable from MTS to Starline | 3d | 2027-05-29 | 2027-06-02 | DH-K150-810 |  |  |  | -20d | 0d |  | HELIX | DH1500 |  |
| DH-K150-890 |  | K150 - HAC Lighting Switches / Emergency Relay at the same time when set MTS and PQM | 3d | 2027-06-01 | 2027-06-03 | DH-K150-880 |  |  |  | -21d | 0d |  | HELIX | DH1500 |  |
| DH-K150-840 |  | K150 - Terminate MC Cables at Starline | 3d | 2027-06-03 | 2027-06-05 | DH-K150-830, DH-K150-810 |  |  |  | -20d | 1d |  | HELIX | DH1500 |  |
| DH-K150-900 |  | K150 - Terminate Lighting Wiring | 3d | 2027-06-04 | 2027-06-07 | DH-K150-890 |  |  |  | -21d | 0d |  | HELIX | DH1500 |  |
| DH-K150-1000 |  | K150 - QC 2.2 Checklist | 1d | 2027-06-08 | 2027-06-08 | DH-K150-900, DH-K150-840, DH-K150-820 |  |  |  | -21d | 0d |  | HELIX | DH1500 |  |
|  | 11 | **R150** |  | 2026-10-09 | 2027-06-08 |  |  |  |  |  |  |  |  |  |  |
| DH-R150-730 |  | R150 - Install Supplemental Steel (overhead support for strut/trapeze) | 6d | 2026-10-09 A | 2026-10-12 A | DH-K150-730 SS | 100% | 2027-01-06 | 2027-01-12 |  |  | Suffolk | HELIX | DH1500 |  |
| DH-R150-740 |  | R150 - Hang Trapeze System / Strut Racking | 7d | 2026-10-31 | 2026-11-07 | DH-R150-730 |  |  |  | 100d | 51d | waiting on drywall | HELIX | DH1500 |  |
| DH-R150-780 |  | R150 - Hang Starline Bus | 10d | 2027-02-15 | 2027-02-25 | DH-K150-780 SS, DH-R150-740 |  |  |  | 37d | 0d |  | HELIX | DH1500 |  |
| DH-R150-750 |  | R150 - Pull MC Cable from PDU to MTS | 15d | 2027-04-07 | 2027-04-23 | PRC-MCC-040, DH-K150-750 SS, DH-R150-740 |  |  |  | -21d | 0d |  | HELIX | DH1500 | BB |
| DH-R150-760 |  | R150 - HAC Aisle Structure Set by others | 3d | 2027-04-24 | 2027-04-27 | DH-R150-750 |  |  |  | -21d | 0d |  | HELIX | DH1500 |  |
| DH-R150-770 |  | R150 - HAC Aisle Light install | 6d | 2027-04-28 | 2027-05-04 | DH-K150-770 SS, DH-R150-760, PRC-LGT-90 |  |  |  | -21d | 0d |  | HELIX | DH1500 |  |
| DH-R150-790 |  | R150 - HAC Aisle Structure Raised by others | 1d | 2027-05-05 | 2027-05-05 | DH-R150-780, DH-R150-770 |  |  |  | -21d | 0d |  | HELIX | DH1500 |  |
| DH-R150-800 |  | R150 - Set MTS | 4d | 2027-05-06 | 2027-05-10 | DH-R150-790 |  |  |  | -21d | 0d |  | HELIX | DH1500 |  |
| DH-R150-850 |  | R150 - Set DH PQM | 4d | 2027-05-11 | 2027-05-14 | DH-R150-800 |  |  |  | -21d | 0d |  | HELIX | DH1500 |  |
| DH-R150-860 |  | R150 - Pipe Data Hall PQM | 6d | 2027-05-15 | 2027-05-21 | DH-R150-850 |  |  |  | -21d | 0d |  | HELIX | DH1500 |  |
| DH-R150-810 |  | R150 - Connect MC Cables to MTS | 6d | 2027-05-22 | 2027-05-28 | DH-R150-860, DH-R150-850, DH-R150-800 |  |  |  | -20d | 0d |  | HELIX | DH1500 |  |
| DH-R150-870 |  | R150 - Pull Wire for DH PQM | 3d | 2027-05-22 | 2027-05-25 | DH-R150-860 |  |  |  | -21d | 0d |  | HELIX | DH1500 |  |
| DH-R150-880 |  | R150 - Terminate DH PQM | 4d | 2027-05-26 | 2027-05-29 | DH-R150-870 |  |  |  | -21d | 0d |  | HELIX | DH1500 |  |
| DH-R150-820 |  | R150 - Terminate MC Cables at MTS | 7d | 2027-05-29 | 2027-06-07 | DH-R150-810 |  |  |  | -20d | 1d |  | HELIX | DH1500 |  |
| DH-R150-830 |  | R150 - Pull MC Cable from MTS to Starline | 3d | 2027-05-29 | 2027-06-02 | DH-R150-810 |  |  |  | -20d | 0d |  | HELIX | DH1500 |  |
| DH-R150-890 |  | R150 - HAC Lighting Switches / Emergency Relay at the same time when set MTS and PQM | 3d | 2027-06-01 | 2027-06-03 | DH-R150-880 |  |  |  | -21d | 0d |  | HELIX | DH1500 |  |
| DH-R150-840 |  | R150 - Terminate MC Cables at Starline | 3d | 2027-06-03 | 2027-06-05 | DH-R150-830, DH-R150-810 |  |  |  | -20d | 1d |  | HELIX | DH1500 |  |
| DH-R150-900 |  | R150 - Terminate Lighting Wiring | 3d | 2027-06-04 | 2027-06-07 | DH-R150-890 |  |  |  | -21d | 0d |  | HELIX | DH1500 |  |
| DH-R150-1010 |  | R150 - QC 2.2 Checklist | 1d | 2027-06-08 | 2027-06-08 | DH-R150-900, DH-R150-840, DH150-FS-350 |  |  |  | -21d | 0d |  | HELIX | DH1500 |  |

| ID | WBS | Activity | Duration | Start | Finish | Predecessors | Total float | Free float | QTS - Subcontractor | QTS - AREA | QTS - DC7 |
| --- | --- | --- | --- | --- | --- | --- | --- | --- | --- | --- | --- |
|  | 12 | **FIRE STOPPING DH1500** |  | 2027-05-12 | 2027-05-27 |  |  |  |  |  |  |
| DH150-FS-340 |  | DH1500 // A to E -Install Firestopping | 6d | 2027-05-12 | 2027-05-18 | DH-E150-810 | -13d | 0d | HELIX | DH1500 |  |
| DH150-FS-360 |  | DH1500 // F to R -Install Firestopping | 6d | 2027-05-19 | 2027-05-25 | DH150-FS-340 | -13d | 0d | HELIX | DH1500 |  |
| DH150-FS-350 |  | DH1500 //- Firestopping inspection | 2d | 2027-05-26 | 2027-05-27 | DH150-FS-340, DH150-FS-340 FF, DH150-FS-360 | -13d | 8d | HELIX | DH1500 |  |
|  | 2 | **PDU GALLERY** |  | 2026-10-23 | 2027-04-22 |  |  |  |  |  |  |
| DH150-PDU-330 |  | DH1500 // PDU - Wall Framing (third party activity) | 1d | 2026-10-23 | 2026-10-23 | DH.15000.1040 (other project) | 121d | 0d |  | DH1500 | BB |
| DH150-PDU-340 |  | DH1500 // PDU - Drywall Installation, painting, finishes (third party activity) | 1d | 2026-10-24 | 2026-10-24 | DH150-PDU-330, DH.15000.1100 (other project) | 121d | 9d |  | DH1500 | BB |
| DH150-PDU-180 |  | DH1500 // PDU - Prefab UPS Skid (offsite assembly) | 1d | 2026-11-05 | 2026-11-05 | PR-1050 FS+10d, DH150-PDU-340 | 132d | 24d | HELIX | DH1500 |  |
| DH150-PDU-190 |  | DH1500 // PDU - Set UPS Skid - Transformers & Panels in PDU Gallery | 3d | 2026-12-08 | 2026-12-10 | DH150-PDU-340, DH150-PDU-180, DH140-PDU-360, PRC-PNL-160, PRC-PNL-210 | 108d | 0d | HELIX | DH1500 |  |
| DH150-PDU-270 |  | DH1500 // PDU - RP Panel Installed | 1d | 2027-02-27 | 2027-02-27 | DH140-PDU-470, PRC-PNL-110 | 43d | 0d |  | DH1500 | BB |
| DH150-PDU-280 |  | DH1500 // PDU - Install pipe cord reel circuits | 10d | 2027-03-01 | 2027-03-11 | DH150-PDU-270, DH140-PDU-470 | 43d | 0d | HELIX | DH1500 |  |
| DH150-PDU-230 |  | DH1500 // PDU - Pipe UPS Circuits / Branch Conduits to Data Hall (PQM, Goal Post, Admin IDF, ICPNL, TPQM) | 10d | 2027-03-03 | 2027-03-13 | DH150-PDU-340, DH140-PDU-390 | 18d | 0d | HELIX | DH1500 |  |
| DH150-PDU-290 |  | DH1500 // PDU - Pull wire for cord reel circuits | 4d | 2027-03-12 | 2027-03-16 | DH150-PDU-280 | 43d | 0d | HELIX | DH1500 |  |
| DH150-PDU-310 |  | DH1500 // PDU - Pipe UPS Circuits / Branch Conduits in PDU Gallery (PQM, Goal Post, Admin IDF, ICPNL, TPQM) | 10d | 2027-03-15 | 2027-03-25 | DH150-PDU-340, DH150-PDU-230 | 18d | 0d | HELIX | DH1500 |  |
| DH150-PDU-300 |  | DH1500 // PDU - Install cord reel and Terminate | 6d | 2027-03-17 | 2027-03-23 | DH150-PDU-290 | 43d | 0d | HELIX | DH1500 |  |
| DH150-PDU-200 |  | DH1500 // PDU - Pipe Feeder from MOD Panel to UPS Transformer | 3d | 2027-03-26 | 2027-03-29 | DH150-PDU-190, DH150-PDU-340, DH150-PDU-310 | 22d | 0d | HELIX | DH1500 |  |
| DH150-PDU-240 |  | DH1500 // PDU - Pull UPS Circuits | 6d | 2027-03-26 | 2027-04-01 | DH150-PDU-310, DH150-PDU-230 | 18d | 0d |  | DH1500 | BB |
| DH150-PDU-210 |  | DH1500 // PDU - Pull Feeder from MOD Panel to UPS Transformer | 2d | 2027-03-30 | 2027-03-31 | DH150-PDU-200 | 22d | 0d | HELIX | DH1500 |  |
| DH150-PDU-220 |  | DH1500 // PDU - Terminate Feeder at MOD Panel and UPS Transformer | 1d | 2027-04-01 | 2027-04-01 | DH150-PDU-210 | 22d | 0d | HELIX | DH1500 |  |
| DH150-PDU-250 |  | DH1500 // PDU - Terminate UPS Branch Circuits | 4d | 2027-04-02 | 2027-04-06 | DH150-PDU-240, DH150-PDU-190 | 18d | 0d | HELIX | DH1500 |  |
| DH150-PDU-260 |  | DH1500 // PDU - Install and Terminate "Goal Post" Receptacles | 3d | 2027-04-07 | 2027-04-09 | DH150-PDU-250 | 18d | 0d | HELIX | DH1500 |  |
| DH150-PDU-350 |  | DH1500 // PDU - Install Firestopping | 5d | 2027-04-10 | 2027-04-15 | DH150-PDU-260, DH140-PDU-530 | 18d | 0d | HELIX | DH1500 |  |
| DH150-PDU-360 |  | DH1500 // PDU - Firestopping inspection | 5d | 2027-04-16 | 2027-04-21 | DH150-PDU-350 | 18d | 0d | HELIX | DH1500 |  |
| DH150-PDU-320 |  | DH1500 // PDU - QC 2.2 Checklist | 1d | 2027-04-22 | 2027-04-22 | DH150-PDU-260, DH150-PDU-300, DH150-PDU-220, DH150-PDU-360 | 18d | 39d | HELIX | DH1500 |  |

| ID | WBS | Activity | Duration | Start | Finish | Predecessors | Total float | Free float | QTS - AREA | QTS - DC7 | QTS - Subcontractor |
| --- | --- | --- | --- | --- | --- | --- | --- | --- | --- | --- | --- |
|  | 5 | **ELECTRICAL ROOMS** |  | 2027-02-27 | 2027-04-28 |  |  |  |  |  |  |
|  | 1 | **LINE-UPS** |  | 2027-02-27 | 2027-04-28 |  |  |  |  |  |  |
|  | 1 | **A150** |  | 2027-02-27 | 2027-04-10 |  |  |  |  |  |  |
| ER-A150-570 |  | A150 - Electric Room (ER) Skid Set | 1d | 2027-02-27 | 2027-02-27 | ER-K140-660, ER.5101.3079 | 39d | 0d | DH1500 | BB |  |
| ER-A150-580 |  | A150 - Set ER PQM (predecessor skid set) | 1d | 2027-03-06 | 2027-03-06 | ER-A150-570, ER-K140-670 | 38d | 0d | DH1500 |  | HELIX |
| ER-A150-560 |  | A150 - Pipe power circuit to ER PQM | 4d | 2027-03-15 | 2027-03-18 | ER-A150-580, ER-K140-650 | 40d | 6d | DH1500 |  | HELIX |
| ER-A150-590 |  | A150 - Pipe CT&VT PQM control (run conduits) | 6d | 2027-03-19 | 2027-03-25 | ER-A150-580, ER-K140-680 | 34d | 0d | DH1500 |  | HELIX |
| ER-A150-600 |  | A150 - Pull Wire for ER PQM | 3d | 2027-03-26 | 2027-03-29 | ER-A150-560, ER-A150-590 | 34d | 0d | DH1500 |  | HELIX |
| ER-A150-610 |  | A150 - Terminate ER PQM | 4d | 2027-03-30 | 2027-04-02 | ER-A150-600 | 34d | 6d | DH1500 |  | HELIX |
| ER-A150-630 |  | A150 - Land and terminate wiring on the PDU | 3d | 2027-04-07 | 2027-04-09 | ER-A150-570, ER-K140-720, DH-E150-750 | 23d | 0d | DH1500 |  | HELIX |
| ER-A150-620 |  | A150 - QC 2.2 Checklist | 1d | 2027-04-10 | 2027-04-10 | ER-A150-610, ER-A150-630 | 28d | 49d | DH1500 |  | HELIX |
|  | 2 | **B150** |  | 2027-03-01 | 2027-04-10 |  |  |  |  |  |  |
| ER-B150-580 |  | B150 - Electric Room (ER) Skid Set | 1d | 2027-03-01 | 2027-03-01 | ER-A150-570 | 39d | 0d | DH1500 | BB |  |
| ER-B150-590 |  | B150 - Set ER PQM (predecessor skid set) | 1d | 2027-03-06 | 2027-03-06 | ER-B150-580, ER-A150-580 SS | 38d | 0d | DH1500 |  | HELIX |
| ER-B150-570 |  | B150 - Pipe power circuit to ER PQM | 4d | 2027-03-08 | 2027-03-11 | ER-B150-590 | 46d | 2d | DH1500 |  | HELIX |
| ER-B150-600 |  | B150 - Pipe CT&VT PQM control (run conduits) | 6d | 2027-03-08 | 2027-03-13 | ER-B150-590 | 44d | 0d | DH1500 |  | HELIX |
| ER-B150-610 |  | B150 - Pull Wire for ER PQM | 3d | 2027-03-15 | 2027-03-17 | ER-B150-570, ER-B150-600 | 44d | 0d | DH1500 |  | HELIX |
| ER-B150-620 |  | B150 - Terminate ER PQM | 4d | 2027-03-18 | 2027-03-22 | ER-B150-610 | 44d | 16d | DH1500 |  | HELIX |
| ER-B150-640 |  | B150 - Land and terminate wiring on the PDU | 3d | 2027-04-07 | 2027-04-09 | ER-B150-580, ER-A150-630 SS | 25d | 0d | DH1500 |  | HELIX |
| ER-B150-630 |  | B150 - QC 2.2 Checklist | 1d | 2027-04-10 | 2027-04-10 | ER-B150-620, ER-B150-640 | 28d | 49d | DH1500 |  | HELIX |
|  | 3 | **C150** |  | 2027-03-02 | 2027-04-10 |  |  |  |  |  |  |
| ER-C150-590 |  | C150 - Electric Room (ER) Skid Set | 1d | 2027-03-02 | 2027-03-02 | ER-B150-580 | 39d | 0d | DH1500 | BB |  |
| ER-C150-600 |  | C150 - Set ER PQM (predecessor skid set) | 1d | 2027-03-06 | 2027-03-06 | ER-C150-590, ER-B150-590 SS | 38d | 0d | DH1500 |  | HELIX |
| ER-C150-580 |  | C150 - Pipe power circuit to ER PQM | 4d | 2027-03-08 | 2027-03-11 | ER-C150-600 | 46d | 2d | DH1500 |  | HELIX |
| ER-C150-610 |  | C150 - Pipe CT&VT PQM control (run conduits) | 6d | 2027-03-08 | 2027-03-13 | ER-C150-600 | 44d | 0d | DH1500 |  | HELIX |
| ER-C150-620 |  | C150 - Pull Wire for ER PQM | 3d | 2027-03-15 | 2027-03-17 | ER-C150-580, ER-C150-610 | 44d | 0d | DH1500 |  | HELIX |
| ER-C150-630 |  | C150 - Terminate ER PQM | 4d | 2027-03-18 | 2027-03-22 | ER-C150-620 | 44d | 16d | DH1500 |  | HELIX |
| ER-C150-650 |  | C150 - Land and terminate wiring on the PDU | 3d | 2027-04-07 | 2027-04-09 | ER-C150-590, ER-B150-640 SS | 25d | 0d | DH1500 |  | HELIX |
| ER-C150-640 |  | C150 - QC 2.2 Checklist | 1d | 2027-04-10 | 2027-04-10 | ER-C150-630, ER-C150-650 | 28d | 49d | DH1500 |  | HELIX |

| ID | WBS | Activity | Duration | Start | Finish | Predecessors | Total float | Free float | QTS - AREA | QTS - DC7 | QTS - Subcontractor |
| --- | --- | --- | --- | --- | --- | --- | --- | --- | --- | --- | --- |
|  | 4 | **D150** |  | 2027-03-03 | 2027-04-10 |  |  |  |  |  |  |
| ER-D150-600 |  | D150 - Electric Room (ER) Skid Set | 1d | 2027-03-03 | 2027-03-03 | ER-C150-590 | 39d | 0d | DH1500 | BB |  |
| ER-D150-610 |  | D150 - Set ER PQM (predecessor skid set) | 1d | 2027-03-06 | 2027-03-06 | ER-D150-600, ER-C150-600 SS | 38d | 0d | DH1500 |  | HELIX |
| ER-D150-590 |  | D150 - Pipe power circuit to ER PQM | 4d | 2027-03-08 | 2027-03-11 | ER-D150-610 | 46d | 2d | DH1500 |  | HELIX |
| ER-D150-620 |  | D150 - Pipe CT&VT PQM control (run conduits) | 6d | 2027-03-08 | 2027-03-13 | ER-D150-610 | 44d | 0d | DH1500 |  | HELIX |
| ER-D150-630 |  | D150 - Pull Wire for ER PQM | 3d | 2027-03-15 | 2027-03-17 | ER-D150-590, ER-D150-620 | 44d | 0d | DH1500 |  | HELIX |
| ER-D150-640 |  | D150 - Terminate ER PQM | 4d | 2027-03-18 | 2027-03-22 | ER-D150-630 | 44d | 16d | DH1500 |  | HELIX |
| ER-D150-660 |  | D150 - Land and terminate wiring on the PDU | 3d | 2027-04-07 | 2027-04-09 | ER-D150-600, ER-C150-650 SS | 25d | 0d | DH1500 |  | HELIX |
| ER-D150-650 |  | D150 - QC 2.2 Checklist | 1d | 2027-04-10 | 2027-04-10 | ER-D150-640, ER-D150-660 | 28d | 49d | DH1500 |  | HELIX |
|  | 5 | **E150** |  | 2027-03-04 | 2027-04-10 |  |  |  |  |  |  |
| ER-E150-610 |  | E150 - Electric Room (ER) Skid Set | 1d | 2027-03-04 | 2027-03-04 | ER-D150-600 | 39d | 0d | DH1500 | BB |  |
| ER-E150-620 |  | E150 - Set ER PQM (predecessor skid set) | 1d | 2027-03-06 | 2027-03-06 | ER-E150-610, ER-D150-610 SS | 38d | 0d | DH1500 |  | HELIX |
| ER-E150-600 |  | E150 - Pipe power circuit to ER PQM | 4d | 2027-03-08 | 2027-03-11 | ER-E150-620 | 38d | 0d | DH1500 |  | HELIX |
| ER-E150-630 |  | E150 - Pipe CT&VT PQM control (run conduits) | 6d | 2027-03-08 | 2027-03-13 | ER-E150-620, ER-E150-600 SS | 38d | 0d | DH1500 |  | HELIX |
| ER-E150-640 |  | E150 - Pull Wire for ER PQM | 3d | 2027-03-15 | 2027-03-17 | ER-E150-600, ER-E150-630 | 44d | 0d | DH1500 |  | HELIX |
| ER-E150-650 |  | E150 - Terminate ER PQM | 4d | 2027-03-18 | 2027-03-22 | ER-E150-640 | 44d | 16d | DH1500 |  | HELIX |
| ER-E150-670 |  | E150 - Land and terminate wiring on the PDU | 3d | 2027-04-07 | 2027-04-09 | ER-E150-610, ER-D150-660 SS | 25d | 0d | DH1500 |  | HELIX |
| ER-E150-660 |  | E150 - QC 2.2 Checklist | 1d | 2027-04-10 | 2027-04-10 | ER-E150-650, ER-E150-670 | 28d | 49d | DH1500 |  | HELIX |
|  | 6 | **F150** |  | 2027-03-05 | 2027-04-28 |  |  |  |  |  |  |
| ER-F150-620 |  | F150 - Electric Room (ER) Skid Set | 1d | 2027-03-05 | 2027-03-05 | ER-E150-610, ER.5101.3084 | 43d | 0d | DH1500 | BB |  |
| ER-F150-630 |  | F150 - Set ER PQM (predecessor skid set) | 1d | 2027-03-08 | 2027-03-08 | ER-F150-620, ER-E150-620 | 43d | 0d | DH1500 |  | HELIX |
| ER-F150-610 |  | F150 - Pipe power circuit to ER PQM | 4d | 2027-03-12 | 2027-03-16 | ER-F150-630, ER-E150-600 | 40d | 0d | DH1500 |  | HELIX |
| ER-F150-640 |  | F150 - Pipe CT&VT PQM control (run conduits) | 6d | 2027-03-15 | 2027-03-20 | ER-F150-630, ER-F150-610 SS, ER-E150-630 | 38d | 0d | DH1500 |  | HELIX |
| ER-F150-650 |  | F150 - Pull Wire for ER PQM | 3d | 2027-03-22 | 2027-03-24 | ER-F150-610, ER-F150-640 | 38d | 0d | DH1500 |  | HELIX |
| ER-F150-660 |  | F150 - Terminate ER PQM | 4d | 2027-03-25 | 2027-03-29 | ER-F150-650 | 38d | 25d | DH1500 |  | HELIX |
| ER-F150-680 |  | F150 - Land and terminate wiring on the PDU | 3d | 2027-04-24 | 2027-04-27 | ER-F150-620, ER-E150-670, DH-K150-750 | 13d | 0d | DH1500 |  | HELIX |
| ER-F150-670 |  | F150 - QC 2.2 Checklist | 1d | 2027-04-28 | 2027-04-28 | ER-F150-660, ER-F150-680 | 13d | 34d | DH1500 |  | HELIX |

| ID | WBS | Activity | Duration | Start | Finish | Predecessors | Total float | Free float | QTS - AREA | QTS - DC7 | QTS - Subcontractor |
| --- | --- | --- | --- | --- | --- | --- | --- | --- | --- | --- | --- |
|  | 7 | **G150** |  | 2027-03-06 | 2027-04-28 |  |  |  |  |  |  |
| ER-G150-630 |  | G150 - Electric Room (ER) Skid Set | 1d | 2027-03-06 | 2027-03-06 | ER-F150-620 | 43d | 0d | DH1500 | BB |  |
| ER-G150-640 |  | G150 - Set ER PQM (predecessor skid set) | 1d | 2027-03-08 | 2027-03-08 | ER-G150-630, ER-F150-630 SS | 43d | 0d | DH1500 |  | HELIX |
| ER-G150-620 |  | G150 - Pipe power circuit to ER PQM | 4d | 2027-03-12 | 2027-03-16 | ER-F150-610 SS, ER-G150-640 | 42d | 0d | DH1500 |  | HELIX |
| ER-G150-650 |  | G150 - Pipe CT&VT PQM control (run conduits) | 6d | 2027-03-15 | 2027-03-20 | ER-G150-640, ER-F150-640 SS | 38d | 0d | DH1500 |  | HELIX |
| ER-G150-660 |  | G150 - Pull Wire for ER PQM | 3d | 2027-03-22 | 2027-03-24 | ER-G150-620, ER-G150-650 | 38d | 0d | DH1500 |  | HELIX |
| ER-G150-670 |  | G150 - Terminate ER PQM | 4d | 2027-03-25 | 2027-03-29 | ER-G150-660 | 38d | 25d | DH1500 |  | HELIX |
| ER-G150-690 |  | G150 - Land and terminate wiring on the PDU | 3d | 2027-04-24 | 2027-04-27 | ER-G150-630, ER-F150-680 SS | 13d | 0d | DH1500 |  | HELIX |
| ER-G150-680 |  | G150 - QC 2.2 Checklist | 1d | 2027-04-28 | 2027-04-28 | ER-G150-670, ER-G150-690 | 13d | 34d | DH1500 |  | HELIX |
|  | 8 | **H150** |  | 2027-03-06 | 2027-04-28 |  |  |  |  |  |  |
| ER-H150-640 |  | H150 - Electric Room (ER) Skid Set | 1d | 2027-03-06 | 2027-03-06 | ER-G150-630 SS | 43d | 0d | DH1500 | BB |  |
| ER-H150-650 |  | H150 - Set ER PQM (predecessor skid set) | 1d | 2027-03-08 | 2027-03-08 | ER-H150-640, ER-G150-640 SS | 43d | 0d | DH1500 |  | HELIX |
| ER-H150-630 |  | H150 - Pipe power circuit to ER PQM | 4d | 2027-03-12 | 2027-03-16 | ER-G150-620 SS, ER-H150-650 | 42d | 0d | DH1500 |  | HELIX |
| ER-H150-660 |  | H150 - Pipe CT&VT PQM control (run conduits) | 6d | 2027-03-15 | 2027-03-20 | ER-H150-650, ER-G150-650 SS | 38d | 0d | DH1500 |  | HELIX |
| ER-H150-670 |  | H150 - Pull Wire for ER PQM | 3d | 2027-03-22 | 2027-03-24 | ER-H150-630, ER-H150-660 | 38d | 0d | DH1500 |  | HELIX |
| ER-H150-680 |  | H150 - Terminate ER PQM | 4d | 2027-03-25 | 2027-03-29 | ER-H150-670 | 38d | 25d | DH1500 |  | HELIX |
| ER-H150-700 |  | H150 - Land and terminate wiring on the PDU | 3d | 2027-04-24 | 2027-04-27 | ER-H150-640, ER-G150-690 SS | 13d | 0d | DH1500 |  | HELIX |
| ER-H150-690 |  | H150 - QC 2.2 Checklist | 1d | 2027-04-28 | 2027-04-28 | ER-H150-680, ER-H150-700 | 13d | 34d | DH1500 |  | HELIX |
|  | 9 | **J150** |  | 2027-03-06 | 2027-04-28 |  |  |  |  |  |  |
| ER-J150-650 |  | J150 - Electric Room (ER) Skid Set | 1d | 2027-03-06 | 2027-03-06 | ER-H150-640 SS | 43d | 0d | DH1500 | BB |  |
| ER-J150-660 |  | J150 - Set ER PQM (predecessor skid set) | 1d | 2027-03-08 | 2027-03-08 | ER-J150-650, ER-H150-650 SS | 43d | 0d | DH1500 |  | HELIX |
| ER-J150-640 |  | J150 - Pipe power circuit to ER PQM | 4d | 2027-03-12 | 2027-03-16 | ER-H150-630 SS, ER-J150-660 | 42d | 0d | DH1500 |  | HELIX |
| ER-J150-670 |  | J150 - Pipe CT&VT PQM control (run conduits) | 6d | 2027-03-15 | 2027-03-20 | ER-J150-660, ER-H150-660 SS | 38d | 0d | DH1500 |  | HELIX |
| ER-J150-680 |  | J150 - Pull Wire for ER PQM | 3d | 2027-03-22 | 2027-03-24 | ER-J150-640, ER-J150-670 | 38d | 0d | DH1500 |  | HELIX |
| ER-J150-690 |  | J150 - Terminate ER PQM | 4d | 2027-03-25 | 2027-03-29 | ER-J150-680 | 38d | 25d | DH1500 |  | HELIX |
| ER-J150-710 |  | J150 - Land and terminate wiring on the PDU | 3d | 2027-04-24 | 2027-04-27 | ER-J150-650, ER-H150-700 SS | 13d | 0d | DH1500 |  | HELIX |
| ER-J150-700 |  | J150 - QC 2.2 Checklist | 1d | 2027-04-28 | 2027-04-28 | ER-J150-690, ER-J150-710 | 13d | 34d | DH1500 |  | HELIX |

| ID | WBS | Activity | Duration | Start | Finish | Predecessors | Total float | Free float | QTS - AREA | QTS - DC7 | QTS - Subcontractor |
| --- | --- | --- | --- | --- | --- | --- | --- | --- | --- | --- | --- |
|  | 10 | **K150** |  | 2027-03-06 | 2027-04-28 |  |  |  |  |  |  |
| ER-K150-660 |  | K150 - Electric Room (ER) Skid Set | 1d | 2027-03-06 | 2027-03-06 | ER-J150-650 SS | 43d | 0d | DH1500 | BB |  |
| ER-K150-670 |  | K150 - Set ER PQM (predecessor skid set) | 1d | 2027-03-08 | 2027-03-08 | ER-K150-660, ER-J150-660 SS | 43d | 0d | DH1500 |  | HELIX |
| ER-K150-650 |  | K150 - Pipe power circuit to ER PQM | 4d | 2027-03-12 | 2027-03-16 | ER-J150-640 SS, ER-K150-670 | 42d | 0d | DH1500 |  | HELIX |
| ER-K150-680 |  | K150 - Pipe CT&VT PQM control (run conduits) | 6d | 2027-03-15 | 2027-03-20 | ER-K150-670, ER-J150-670 SS | 38d | 0d | DH1500 |  | HELIX |
| ER-K150-690 |  | K150 - Pull Wire for ER PQM | 3d | 2027-03-22 | 2027-03-24 | ER-K150-650, ER-K150-680 | 38d | 0d | DH1500 |  | HELIX |
| ER-K150-700 |  | K150 - Terminate ER PQM | 4d | 2027-03-25 | 2027-03-29 | ER-K150-690 | 38d | 25d | DH1500 |  | HELIX |
| ER-K150-720 |  | K150 - Land and terminate wiring on the PDU | 3d | 2027-04-24 | 2027-04-27 | ER-K150-660, ER-J150-710 SS | 13d | 0d | DH1500 |  | HELIX |
| ER-K150-710 |  | K150 - QC 2.2 Checklist | 1d | 2027-04-28 | 2027-04-28 | ER-K150-700, ER-K150-720 | 13d | 34d | DH1500 |  | HELIX |
|  | 11 | **R150** |  | 2027-03-08 | 2027-04-28 |  |  |  |  |  |  |
| ER-R150-900 |  | R150 - Pipe power circuit to ER PQM | 2d | 2027-03-08 | 2027-03-09 | ER-K150-670 SS | 47d | 0d | DH1500 |  | HELIX |
| ER-R150-910 |  | R150 - Reserve Line Equipment Set | 1d | 2027-03-10 | 2027-03-10 | ER-R150-900 | 47d | 0d | DH1500 |  | HELIX |
| ER-R150-920 |  | R150 - Set ER PQM | 1d | 2027-03-11 | 2027-03-11 | ER-R150-910 | 50d | 0d | DH1500 |  | HELIX |
| ER-R150-960 |  | R150 - Set Inhibitor Panel | 1d | 2027-03-11 | 2027-03-11 | ER-R150-910, PRC-INH-80 | 47d | 0d | DH1500 |  | HELIX |
| ER-R150-930 |  | R150 - Pipe CT&VT PQM control (run conduits) | 2d | 2027-03-12 | 2027-03-13 | ER-R150-920 | 50d | 0d | DH1500 |  | HELIX |
| ER-R150-970 |  | R150 - Pipe Inhibitor Panel (overhead run w/ base build) | 1d | 2027-03-12 | 2027-03-12 | ER-R150-960 | 47d | 0d | DH1500 | BB |  |
| ER-R150-980 |  | R150 - Pull Wire for Inhibitor Panel | 2d | 2027-03-13 | 2027-03-15 | ER-R150-970 | 47d | 0d | DH1500 |  | HELIX |
| ER-R150-940 |  | R150 - Pull Wire for ER PQM | 1d | 2027-03-15 | 2027-03-15 | ER-R150-930 | 50d | 0d | DH1500 |  | HELIX |
| ER-R150-950 |  | R150 - Terminate ER PQM | 1d | 2027-03-16 | 2027-03-16 | ER-R150-940 | 50d | 71d | DH1500 |  | HELIX |
| ER-R150-990 |  | R150 - Terminate Inhibitor Panel | 3d | 2027-03-16 | 2027-03-18 | ER-R150-980 | 47d | 34d | DH1500 |  | HELIX |
| ER-R150-1010 |  | R150 - Land and terminate wiring on the PDU | 3d | 2027-04-24 | 2027-04-27 | ER-K150-720 SS | 13d | 0d | DH1500 |  | HELIX |
| ER-R150-1000 |  | R150 - QC 2.2 Checklist | 1d | 2027-04-28 | 2027-04-28 | ER-R150-990, ER-R150-1010 | 13d | 34d | DH1500 |  | HELIX |
|  | 12 | **FIRE STOPPING** |  | 2027-04-10 | 2027-04-16 |  |  |  |  |  |  |
| DH150-ER-280 |  | DH1500 // ER -Install Firestopping | 4d | 2027-04-10 | 2027-04-14 | ER-A150-630, DH140-ER-270 | 23d | 0d | DH1500 |  | HELIX |
| DH150-ER-290 |  | DH1500 // ER - Firestopping inspection | 2d | 2027-04-15 | 2027-04-16 | DH150-ER-280 | 23d | 24d | DH1500 |  | HELIX |

| ID | WBS | Activity | Type | Duration | Start | Finish | Predecessors | Total float | Free float | Constraint | Calendar | QTS - Subcontractor | QTS - AREA | MSP Activity ID | QTS - DASH | QTS - Resp | COMMENTS | QTS - DC7 |
| --- | --- | --- | --- | --- | --- | --- | --- | --- | --- | --- | --- | --- | --- | --- | --- | --- | --- | --- |
|  | 3 | **COMISSIONING BY OTHERS** |  |  | 2027-06-09 | 2027-09-15 |  |  |  |  |  |  |  |  |  |  |  |  |
| CX-DH150-130 |  | DH1500 L3 Cx electrical, Mechanical FLS |  | 40d | 2027-06-09 | 2027-07-27 | DC7.DH1500.MS.1020 | -21d | 0d |  |  | HELIX | DH1500 |  |  |  |  |  |
| CX-DH150-140 |  | DH1500 L4 CxA |  | 25d | 2027-07-28 | 2027-08-25 | CX-DH150-130 | -21d | 0d |  |  | HELIX | DH1500 |  |  |  |  |  |
| CX-DH150-150 |  | DH1500 L5 CxA IST |  | 15d | 2027-08-26 | 2027-09-15 | CX-DH150-140 | -21d | 0d |  |  | HELIX | DH1500 |  |  |  |  |  |
|  | 8 | **DH 1600** |  |  | 2026-10-23 | 2027-10-27 |  |  |  |  |  |  |  |  |  |  |  |  |
|  | 1 | **SKID INSTALATION DH1600 FROM TFO SCHEDULE** |  |  | 2027-02-01 | 2027-03-04 |  |  |  |  |  |  |  |  |  |  |  |  |
| DH.1600.3061 |  | DH1600/Electrical Room #5601 // DH1600 - OFCI Skid Ship Date (02/01/2027) First Shipment | milestone | 0d | 2027-02-01 | 2027-02-01 | DH.1600.3061 (other project) FF | 73d | 17d | finish on or after 2027-02-01 | Calendar 01 - 5 Day w/holidays (No Pats Day) | HELIX | DH1600 | 1189 | ER |  |  |  |
| DH.1600.3062 |  | DH1600/Electrical Room #5604 // DH1600 - OFCI Skid Ship Date (02/06/2027) 2ND Shipment | milestone | 0d | 2027-02-08 | 2027-02-08 | DH.1600.3062 (other project) FF | 77d | 16d | finish on or after 2027-02-06 | Calendar 01 - 5 Day w/holidays (No Pats Day) | HELIX | DH1600 | 1189 | ER |  |  |  |
| ER.5101.3085 |  | DH1600/Electrical Room #5601 // Set Skid - SKID-A160 |  | 1d | 2027-02-26 | 2027-02-26 | DH.1600.3061, ER.5101.3085 (other project) | 56d | 0d | start on or after 2027-02-26 | Calendar 01 - 5 Day w/holidays (No Pats Day) | HELIX | DH1600 | 1107 | ER | TBD |  |  |
| ER.5101.3086 |  | DH1600/Electrical Room #5601 // Set Skid - SKID-B160 |  | 1d | 2027-02-26 | 2027-02-26 | ER.5101.3085 SS, ER.5101.3086 (other project) | 56d | 0d | start on or after 2027-02-26 | Calendar 01 - 5 Day w/holidays (No Pats Day) | HELIX | DH1600 | 1107 | ER | TBD |  |  |
| ER.5101.3087 |  | DH1600/Electrical Room #5601 // Set Skid - SKID-C160 |  | 1d | 2027-03-01 | 2027-03-01 | ER.5101.3086, ER.5101.3087 (other project) | 56d | 0d |  | Calendar 01 - 5 Day w/holidays (No Pats Day) | HELIX | DH1600 | 1107 | ER | TBD |  |  |
| ER.5101.3088 |  | DH1600/Electrical Room #5601 // Set Skid - SKID-D160 |  | 1d | 2027-03-01 | 2027-03-01 | ER.5101.3087 SS, ER.5101.3088 (other project) | 56d | 0d |  | Calendar 01 - 5 Day w/holidays (No Pats Day) | HELIX | DH1600 | 1107 | ER | TBD |  |  |
| ER.5101.3089 |  | DH1600/Electrical Room #5601 // Set Skid - SKID-E160 |  | 1d | 2027-03-01 | 2027-03-01 | ER.5101.3088 SS, ER.5101.3089 (other project) | 56d | 4d |  | Calendar 01 - 5 Day w/holidays (No Pats Day) | HELIX | DH1600 | 1107 | ER | TBD |  |  |
| ER.5101.3090 |  | DH1600/Electrical Room #5604 // Set Skid - SKID-F160 |  | 1d | 2027-03-03 | 2027-03-03 | DH.1600.3062, ER.5101.3090 (other project) | 61d | 0d | start on or after 2027-03-03 | Calendar 01 - 5 Day w/holidays (No Pats Day) | HELIX | DH1600 | 1107 | ER | TBD |  |  |
| ER.5101.3091 |  | DH1600/Electrical Room #5604 // Set Skid - SKID-G160 |  | 1d | 2027-03-03 | 2027-03-03 | ER.5101.3090 SS, ER.5101.3091 (other project) | 61d | 0d |  | Calendar 01 - 5 Day w/holidays (No Pats Day) | HELIX | DH1600 | 1107 | ER | TBD |  |  |
| ER.5101.3092 |  | DH1600/Electrical Room #5604 // Set Skid - SKID-H160 |  | 1d | 2027-03-03 | 2027-03-03 | ER.5101.3091 SS, ER.5101.3092 (other project) | 61d | 0d |  | Calendar 01 - 5 Day w/holidays (No Pats Day) | HELIX | DH1600 | 1107 | ER | TBD |  |  |
| ER.5101.3093 |  | DH1600/Electrical Room #5604 // Set Skid - SKID-J160 |  | 1d | 2027-03-04 | 2027-03-04 | ER.5101.3092, ER.5101.3093 (other project) | 61d | 0d |  | Calendar 01 - 5 Day w/holidays (No Pats Day) | HELIX | DH1600 | 1107 | ER | TBD |  |  |
| ER.5101.3094 |  | DH1600/Electrical Room #5604 // Set Skid - SKID-K160 |  | 1d | 2027-03-04 | 2027-03-04 | ER.5101.3093 SS, ER.5101.3094 (other project) | 61d | 6d |  | Calendar 01 - 5 Day w/holidays (No Pats Day) | HELIX | DH1600 | 1107 | ER | TBD |  |  |
|  | 4 | **DATA HALL** |  |  | 2027-01-15 | 2027-07-15 |  |  |  |  |  |  |  |  |  |  |  |  |
|  | 1 | **LINE-UPS** |  |  | 2027-01-15 | 2027-07-15 |  |  |  |  |  |  |  |  |  |  |  |  |
|  | 11 | **R160** |  |  | 2027-01-15 | 2027-06-25 |  |  |  |  |  |  |  |  |  |  |  |  |
| DH-R160-910 |  | R160 - Install Supplemental Steel (overhead support for strut/trapeze) |  | 6d | 2027-01-15 | 2027-01-21 | DH-R150-730, DH-R150-740, DC7.DH1600.MS.1000 SS | 51d | 0d |  |  | HELIX | DH1600 |  |  |  | Suffolk |  |
| DH-R160-920 |  | R160 - Hang Trapeze System / Strut Racking |  | 7d | 2027-01-22 | 2027-01-29 | DH-R160-910 | 51d | 23d |  |  | HELIX | DH1600 |  |  |  |  |  |
| DH-R160-960 |  | R160 - Hang Starline Bus |  | 10d | 2027-02-26 | 2027-03-09 | DH-R150-780, DH-R160-920 | 47d | 0d |  |  | HELIX | DH1600 |  |  |  |  |  |
| DH-R160-930 |  | R160 - Pull MC Cable from PDU to MTS |  | 15d | 2027-04-24 | 2027-05-11 | DH-R150-750, PRC-MCC-040, DH-R160-920 | -21d | 0d |  |  | HELIX | DH1600 |  |  |  |  | BB |
| DH-R160-940 |  | R160 - HAC Aisle Structure Set by others |  | 3d | 2027-05-12 | 2027-05-14 | DH-R150-760, DH-R160-930 | -13d | 0d |  |  | HELIX | DH1600 |  |  |  |  |  |
| DH-R160-950 |  | R160 - HAC Aisle Light install |  | 6d | 2027-05-15 | 2027-05-21 | DH-R150-770, DH-R160-940, PRC-LGT-100 | -13d | 0d |  |  | HELIX | DH1600 |  |  |  |  |  |
| DH-R160-970 |  | R160 - HAC Aisle Structure Raised by others |  | 1d | 2027-05-22 | 2027-05-22 | DH-R160-960, DH-R160-950 | -6d | 0d |  |  | HELIX | DH1600 |  |  |  |  |  |
| DH-R160-980 |  | R160 - Set MTS |  | 4d | 2027-05-24 | 2027-05-27 | DH-R160-970, PR-1110 | -6d | 0d |  |  | HELIX | DH1600 |  |  |  |  |  |
| DH-R160-1030 |  | R160 - Set DH PQM |  | 4d | 2027-05-28 | 2027-06-02 | DH-R160-980, PRC-PQM-100 | -6d | 0d |  |  | HELIX | DH1600 |  |  |  |  |  |
| DH-R160-1040 |  | R160 - Pipe Data Hall PQM |  | 6d | 2027-06-03 | 2027-06-09 | DH-R160-1030 | -6d | 0d |  |  | HELIX | DH1600 |  |  |  |  |  |
| DH-R160-1050 |  | R160 - Pull Wire for DH PQM |  | 3d | 2027-06-10 | 2027-06-12 | DH-R160-1040 | -6d | 0d |  |  | HELIX | DH1600 |  |  |  |  |  |
| DH-R160-990 |  | R160 - Connect MC Cables to MTS |  | 6d | 2027-06-10 | 2027-06-16 | DH-R160-1040, DH-R160-1030, DH-R160-980 | -6d | 0d |  |  | HELIX | DH1600 |  |  |  |  |  |
| DH-R160-1060 |  | R160 - Terminate DH PQM |  | 4d | 2027-06-14 | 2027-06-17 | DH-R160-1050 | -6d | 0d |  |  | HELIX | DH1600 |  |  |  |  |  |
| DH-R160-1000 |  | R160 - Terminate MC Cables at MTS |  | 7d | 2027-06-17 | 2027-06-24 | DH-R160-990 | -6d | 0d |  |  | HELIX | DH1600 |  |  |  |  |  |
| DH-R160-1010 |  | R160 - Pull MC Cable from MTS to Starline |  | 3d | 2027-06-17 | 2027-06-19 | DH-R160-990 | -5d | 0d |  |  | HELIX | DH1600 |  |  |  |  |  |
| DH-R160-1070 |  | R160 - HAC Lighting Switches / Emergency Relay at the same time when set MTS and PQM |  | 3d | 2027-06-18 | 2027-06-21 | DH-R160-1060 | -6d | 0d |  |  | HELIX | DH1600 |  |  |  |  |  |
| DH-R160-1020 |  | R160 - Terminate MC Cables at Starline |  | 3d | 2027-06-21 | 2027-06-23 | DH-R160-1010, DH-R160-990 | -5d | 1d |  |  | HELIX | DH1600 |  |  |  |  |  |
| DH-R160-1080 |  | R160 - Terminate Lighting Wiring |  | 3d | 2027-06-22 | 2027-06-24 | DH-R160-1070 | -6d | 0d |  |  | HELIX | DH1600 |  |  |  |  |  |
| DH-R160-1100 |  | R160 - QC 2.2 Checklist |  | 1d | 2027-06-25 | 2027-06-25 | DH-R160-1080, DH-R160-1020, DH-R160-1000 | -6d | 15d |  |  | HELIX | DH1600 |  |  |  |  |  |

| ID | WBS | Activity | Duration | Start | Finish | Predecessors | Total float | Free float | COMMENTS | QTS - Subcontractor | QTS - AREA | QTS - DC7 |
| --- | --- | --- | --- | --- | --- | --- | --- | --- | --- | --- | --- | --- |
|  | 1 | **A160** |  | 2027-01-15 | 2027-06-25 |  |  |  |  |  |  |  |
| DH-A160-910 |  | A160 - Install Supplemental Steel (overhead support for strut/trapeze) | 6d | 2027-01-15 | 2027-01-21 | DH-R160-910 SS | 51d | 0d | Suffolk | HELIX | DH1600 |  |
| DH-A160-920 |  | A160 - Hang Trapeze System / Strut Racking | 7d | 2027-01-22 | 2027-01-29 | DH-A160-910 | 51d | 23d |  | HELIX | DH1600 |  |
| DH-A160-960 |  | A160 - Hang Starline Bus | 10d | 2027-02-26 | 2027-03-09 | DH-R160-960 SS, DH-A160-920 | 47d | 0d |  | HELIX | DH1600 |  |
| DH-A160-930 |  | A160 - Pull MC Cable from PDU to MTS | 15d | 2027-04-24 | 2027-05-11 | DH-R160-930 SS, PRC-MCC-040, DH-A160-920 | -21d | 0d |  | HELIX | DH1600 | BB |
| DH-A160-940 |  | A160 - HAC Aisle Structure Set by others | 3d | 2027-05-12 | 2027-05-14 | DH-R160-940 SS, DH-A160-930 | -13d | 0d |  | HELIX | DH1600 |  |
| DH-A160-950 |  | A160 - HAC Aisle Light install | 6d | 2027-05-15 | 2027-05-21 | DH-A160-940, DH-R160-950 SS, PRC-LGT-100 | -13d | 0d |  | HELIX | DH1600 |  |
| DH-A160-970 |  | A160 - HAC Aisle Structure Raised by others | 1d | 2027-05-22 | 2027-05-22 | DH-R160-970 SS, DH-A160-960, DH-A160-950 | -6d | 0d |  | HELIX | DH1600 |  |
| DH-A160-980 |  | A160 - Set MTS | 4d | 2027-05-24 | 2027-05-27 | DH-A160-970 | -6d | 0d |  | HELIX | DH1600 |  |
| DH-A160-1030 |  | A160 - Set DH PQM | 4d | 2027-05-28 | 2027-06-02 | DH-A160-980 | -6d | 0d |  | HELIX | DH1600 |  |
| DH-A160-1040 |  | A160 - Pipe Data Hall PQM | 6d | 2027-06-03 | 2027-06-09 | DH-A160-1030 | -6d | 0d |  | HELIX | DH1600 |  |
| DH-A160-1050 |  | A160 - Pull Wire for DH PQM | 3d | 2027-06-10 | 2027-06-12 | DH-A160-1040 | -6d | 0d |  | HELIX | DH1600 |  |
| DH-A160-990 |  | A160 - Connect MC Cables to MTS | 6d | 2027-06-10 | 2027-06-16 | DH-A160-1040, DH-A160-1030, DH-A160-980 | -6d | 0d |  | HELIX | DH1600 |  |
| DH-A160-1060 |  | A160 - Terminate DH PQM | 4d | 2027-06-14 | 2027-06-17 | DH-A160-1050 | -6d | 0d |  | HELIX | DH1600 |  |
| DH-A160-1000 |  | A160 - Terminate MC Cables at MTS | 7d | 2027-06-17 | 2027-06-24 | DH-A160-990 | -6d | 0d |  | HELIX | DH1600 |  |
| DH-A160-1010 |  | A160 - Pull MC Cable from MTS to Starline | 3d | 2027-06-17 | 2027-06-19 | DH-A160-990 | -5d | 0d |  | HELIX | DH1600 |  |
| DH-A160-1070 |  | A160 - HAC Lighting Switches / Emergency Relay at the same time when set MTS and PQM | 3d | 2027-06-18 | 2027-06-21 | DH-A160-1060 | -6d | 0d |  | HELIX | DH1600 |  |
| DH-A160-1020 |  | A160 - Terminate MC Cables at Starline | 3d | 2027-06-21 | 2027-06-23 | DH-A160-1010, DH-A160-990 | -5d | 1d |  | HELIX | DH1600 |  |
| DH-A160-1080 |  | A160 - Terminate Lighting Wiring | 3d | 2027-06-22 | 2027-06-24 | DH-A160-1070 | -6d | 0d |  | HELIX | DH1600 |  |
| DH-A160-1110 |  | A160 - QC 2.2 Checklist | 1d | 2027-06-25 | 2027-06-25 | DH-A160-1080, DH-A160-1020, DH-A160-1000 | -6d | 15d |  | HELIX | DH1600 |  |
|  | 2 | **B160** |  | 2027-01-15 | 2027-06-25 |  |  |  |  |  |  |  |
| DH-B160-910 |  | B160 - Install Supplemental Steel (overhead support for strut/trapeze) | 6d | 2027-01-15 | 2027-01-21 | DH-A160-910 SS | 51d | 0d | Suffolk | HELIX | DH1600 |  |
| DH-B160-920 |  | B160 - Hang Trapeze System / Strut Racking | 7d | 2027-01-22 | 2027-01-29 | DH-B160-910 | 51d | 23d |  | HELIX | DH1600 |  |
| DH-B160-960 |  | B160 - Hang Starline Bus | 10d | 2027-02-26 | 2027-03-09 | DH-A160-960 SS, DH-B160-920 | 47d | 0d |  | HELIX | DH1600 |  |
| DH-B160-930 |  | B160 - Pull MC Cable from PDU to MTS | 15d | 2027-04-24 | 2027-05-11 | PRC-MCC-040, DH-A160-930 SS, DH-B160-920 | -21d | 0d |  | HELIX | DH1600 | BB |
| DH-B160-940 |  | B160 - HAC Aisle Structure Set by others | 3d | 2027-05-12 | 2027-05-14 | DH-B160-930 | -13d | 0d |  | HELIX | DH1600 |  |
| DH-B160-950 |  | B160 - HAC Aisle Light install | 6d | 2027-05-15 | 2027-05-21 | DH-B160-940, DH-A160-950 SS, PRC-LGT-100 | -13d | 0d |  | HELIX | DH1600 |  |
| DH-B160-970 |  | B160 - HAC Aisle Structure Raised by others | 1d | 2027-05-22 | 2027-05-22 | DH-B160-960, DH-B160-950 | -6d | 0d |  | HELIX | DH1600 |  |
| DH-B160-980 |  | B160 - Set MTS | 4d | 2027-05-24 | 2027-05-27 | DH-B160-970 | -6d | 0d |  | HELIX | DH1600 |  |
| DH-B160-1030 |  | B160 - Set DH PQM | 4d | 2027-05-28 | 2027-06-02 | DH-B160-980 | -6d | 0d |  | HELIX | DH1600 |  |
| DH-B160-1040 |  | B160 - Pipe Data Hall PQM | 6d | 2027-06-03 | 2027-06-09 | DH-B160-1030 | -6d | 0d |  | HELIX | DH1600 |  |
| DH-B160-1050 |  | B160 - Pull Wire for DH PQM | 3d | 2027-06-10 | 2027-06-12 | DH-B160-1040 | -6d | 0d |  | HELIX | DH1600 |  |
| DH-B160-990 |  | B160 - Connect MC Cables to MTS | 6d | 2027-06-10 | 2027-06-16 | DH-B160-1040, DH-B160-1030, DH-B160-980 | -6d | 0d |  | HELIX | DH1600 |  |
| DH-B160-1060 |  | B160 - Terminate DH PQM | 4d | 2027-06-14 | 2027-06-17 | DH-B160-1050 | -6d | 0d |  | HELIX | DH1600 |  |
| DH-B160-1000 |  | B160 - Terminate MC Cables at MTS | 7d | 2027-06-17 | 2027-06-24 | DH-B160-990 | -6d | 0d |  | HELIX | DH1600 |  |
| DH-B160-1010 |  | B160 - Pull MC Cable from MTS to Starline | 3d | 2027-06-17 | 2027-06-19 | DH-B160-990 | -5d | 0d |  | HELIX | DH1600 |  |
| DH-B160-1070 |  | B160 - HAC Lighting Switches / Emergency Relay at the same time when set MTS and PQM | 3d | 2027-06-18 | 2027-06-21 | DH-B160-1060 | -6d | 0d |  | HELIX | DH1600 |  |
| DH-B160-1020 |  | B160 - Terminate MC Cables at Starline | 3d | 2027-06-21 | 2027-06-23 | DH-B160-1010, DH-B160-990 | -5d | 1d |  | HELIX | DH1600 |  |
| DH-B160-1080 |  | B160 - Terminate Lighting Wiring | 3d | 2027-06-22 | 2027-06-24 | DH-B160-1070 | -6d | 0d |  | HELIX | DH1600 |  |
| DH-B160-1090 |  | B160 - QC 2.2 Checklist | 1d | 2027-06-25 | 2027-06-25 | DH-B160-1080, DH-B160-1020, DH-B160-1000 | -6d | 15d |  | HELIX | DH1600 |  |

| ID | WBS | Activity | Duration | Start | Finish | Predecessors | Total float | Free float | COMMENTS | QTS - Subcontractor | QTS - AREA | QTS - DC7 |
| --- | --- | --- | --- | --- | --- | --- | --- | --- | --- | --- | --- | --- |
|  | 3 | **C160** |  | 2027-01-15 | 2027-06-25 |  |  |  |  |  |  |  |
| DH-C160-910 |  | C160 - Install Supplemental Steel (overhead support for strut/trapeze) | 6d | 2027-01-15 | 2027-01-21 | DH-B160-910 SS | 51d | 0d | Suffolk | HELIX | DH1600 |  |
| DH-C160-920 |  | C160 - Hang Trapeze System / Strut Racking | 7d | 2027-01-22 | 2027-01-29 | DH-C160-910 | 51d | 23d |  | HELIX | DH1600 |  |
| DH-C160-960 |  | C160 - Hang Starline Bus | 10d | 2027-02-26 | 2027-03-09 | DH-B160-960 SS, DH-C160-920 | 47d | 0d |  | HELIX | DH1600 |  |
| DH-C160-930 |  | C160 - Pull MC Cable from PDU to MTS | 15d | 2027-04-24 | 2027-05-11 | PRC-MCC-040, DH-B160-930 SS, DH-C160-920 | -21d | 0d |  | HELIX | DH1600 | BB |
| DH-C160-940 |  | C160 - HAC Aisle Structure Set by others | 3d | 2027-05-12 | 2027-05-14 | DH-C160-930 | -13d | 0d |  | HELIX | DH1600 |  |
| DH-C160-950 |  | C160 - HAC Aisle Light install | 6d | 2027-05-15 | 2027-05-21 | DH-B160-950 SS, DH-C160-940, PRC-LGT-100 | -13d | 0d |  | HELIX | DH1600 |  |
| DH-C160-970 |  | C160 - HAC Aisle Structure Raised by others | 1d | 2027-05-22 | 2027-05-22 | DH-C160-960, DH-C160-950 | -6d | 0d |  | HELIX | DH1600 |  |
| DH-C160-980 |  | C160 - Set MTS | 4d | 2027-05-24 | 2027-05-27 | DH-C160-970 | -6d | 0d |  | HELIX | DH1600 |  |
| DH-C160-1030 |  | C160 - Set DH PQM | 4d | 2027-05-28 | 2027-06-02 | DH-C160-980 | -6d | 0d |  | HELIX | DH1600 |  |
| DH-C160-1040 |  | C160 - Pipe Data Hall PQM | 6d | 2027-06-03 | 2027-06-09 | DH-C160-1030 | -6d | 0d |  | HELIX | DH1600 |  |
| DH-C160-1050 |  | C160 - Pull Wire for DH PQM | 3d | 2027-06-10 | 2027-06-12 | DH-C160-1040 | -6d | 0d |  | HELIX | DH1600 |  |
| DH-C160-990 |  | C160 - Connect MC Cables to MTS | 6d | 2027-06-10 | 2027-06-16 | DH-C160-1040, DH-C160-1030, DH-C160-980 | -6d | 0d |  | HELIX | DH1600 |  |
| DH-C160-1060 |  | C160 - Terminate DH PQM | 4d | 2027-06-14 | 2027-06-17 | DH-C160-1050 | -6d | 0d |  | HELIX | DH1600 |  |
| DH-C160-1000 |  | C160 - Terminate MC Cables at MTS | 7d | 2027-06-17 | 2027-06-24 | DH-C160-990 | -6d | 0d |  | HELIX | DH1600 |  |
| DH-C160-1010 |  | C160 - Pull MC Cable from MTS to Starline | 3d | 2027-06-17 | 2027-06-19 | DH-C160-990 | -5d | 0d |  | HELIX | DH1600 |  |
| DH-C160-1070 |  | C160 - HAC Lighting Switches / Emergency Relay at the same time when set MTS and PQM | 3d | 2027-06-18 | 2027-06-21 | DH-C160-1060 | -6d | 0d |  | HELIX | DH1600 |  |
| DH-C160-1020 |  | C160 - Terminate MC Cables at Starline | 3d | 2027-06-21 | 2027-06-23 | DH-C160-1010, DH-C160-990 | -5d | 1d |  | HELIX | DH1600 |  |
| DH-C160-1080 |  | C160 - Terminate Lighting Wiring | 3d | 2027-06-22 | 2027-06-24 | DH-C160-1070 | -6d | 0d |  | HELIX | DH1600 |  |
| DH-C160-1100 |  | C160 - QC 2.2 Checklist | 1d | 2027-06-25 | 2027-06-25 | DH-C160-1080, DH-C160-1020, DH-C160-1000 | -6d | 15d |  | HELIX | DH1600 |  |
|  | 4 | **D160** |  | 2027-01-15 | 2027-06-25 |  |  |  |  |  |  |  |
| DH-D160-910 |  | D160 - Install Supplemental Steel (overhead support for strut/trapeze) | 6d | 2027-01-15 | 2027-01-21 | DH-C160-910 SS | 51d | 0d | Suffolk | HELIX | DH1600 |  |
| DH-D160-920 |  | D160 - Hang Trapeze System / Strut Racking | 7d | 2027-01-22 | 2027-01-29 | DH-D160-910 | 51d | 23d |  | HELIX | DH1600 |  |
| DH-D160-960 |  | D160 - Hang Starline Bus | 10d | 2027-02-26 | 2027-03-09 | DH-C160-960 SS, DH-D160-920 | 47d | 0d |  | HELIX | DH1600 |  |
| DH-D160-930 |  | D160 - Pull MC Cable from PDU to MTS | 15d | 2027-04-24 | 2027-05-11 | PRC-MCC-040, DH-C160-930 SS, DH-D160-920 | -21d | 0d |  | HELIX | DH1600 | BB |
| DH-D160-940 |  | D160 - HAC Aisle Structure Set by others | 3d | 2027-05-12 | 2027-05-14 | DH-D160-930 | -13d | 0d |  | HELIX | DH1600 |  |
| DH-D160-950 |  | D160 - HAC Aisle Light install | 6d | 2027-05-15 | 2027-05-21 | DH-C160-950 SS, DH-D160-940, PRC-LGT-100 | -13d | 0d |  | HELIX | DH1600 |  |
| DH-D160-970 |  | D160 - HAC Aisle Structure Raised by others | 1d | 2027-05-22 | 2027-05-22 | DH-D160-960, DH-D160-950 | -13d | 0d |  | HELIX | DH1600 |  |
| DH-D160-980 |  | D160 - Set MTS | 4d | 2027-05-24 | 2027-05-27 | DH-D160-970 | -13d | 0d |  | HELIX | DH1600 |  |
| DH-D160-1030 |  | D160 - Set DH PQM | 4d | 2027-05-28 | 2027-06-02 | DH-D160-980 | -13d | 0d |  | HELIX | DH1600 |  |
| DH-D160-1040 |  | D160 - Pipe Data Hall PQM | 6d | 2027-06-03 | 2027-06-09 | DH-D160-1030 | -13d | 0d |  | HELIX | DH1600 |  |
| DH-D160-1050 |  | D160 - Pull Wire for DH PQM | 3d | 2027-06-10 | 2027-06-12 | DH-D160-1040 | -6d | 0d |  | HELIX | DH1600 |  |
| DH-D160-990 |  | D160 - Connect MC Cables to MTS | 6d | 2027-06-10 | 2027-06-16 | DH-D160-1040, DH-D160-1030, DH-D160-980 | -13d | 0d |  | HELIX | DH1600 |  |
| DH-D160-1060 |  | D160 - Terminate DH PQM | 4d | 2027-06-14 | 2027-06-17 | DH-D160-1050 | -6d | 0d |  | HELIX | DH1600 |  |
| DH-D160-1000 |  | D160 - Terminate MC Cables at MTS | 7d | 2027-06-17 | 2027-06-24 | DH-D160-990 | -6d | 0d |  | HELIX | DH1600 |  |
| DH-D160-1010 |  | D160 - Pull MC Cable from MTS to Starline | 3d | 2027-06-17 | 2027-06-19 | DH-D160-990 | -5d | 0d |  | HELIX | DH1600 |  |
| DH-D160-1070 |  | D160 - HAC Lighting Switches / Emergency Relay at the same time when set MTS and PQM | 3d | 2027-06-18 | 2027-06-21 | DH-D160-1060 | -6d | 0d |  | HELIX | DH1600 |  |
| DH-D160-1020 |  | D160 - Terminate MC Cables at Starline | 3d | 2027-06-21 | 2027-06-23 | DH-D160-1010, DH-D160-990 | -5d | 1d |  | HELIX | DH1600 |  |
| DH-D160-1080 |  | D160 - Terminate Lighting Wiring | 3d | 2027-06-22 | 2027-06-24 | DH-D160-1070 | -6d | 0d |  | HELIX | DH1600 |  |
| DH-D160-1110 |  | D160 - QC 2.2 Checklist | 1d | 2027-06-25 | 2027-06-25 | DH-D160-1080, DH-D160-1020, DH-D160-1000 | -6d | 15d |  | HELIX | DH1600 |  |

| ID | WBS | Activity | Duration | Start | Finish | Predecessors | Total float | Free float | COMMENTS | QTS - Subcontractor | QTS - AREA | QTS - DC7 |
| --- | --- | --- | --- | --- | --- | --- | --- | --- | --- | --- | --- | --- |
|  | 5 | **E160** |  | 2027-01-15 | 2027-07-15 |  |  |  |  |  |  |  |
| DH-E160-910 |  | E160 - Install Supplemental Steel (overhead support for strut/trapeze) | 6d | 2027-01-15 | 2027-01-21 | DH-D160-910 SS | 53d | 0d | Suffolk | HELIX | DH1600 |  |
| DH-E160-920 |  | E160 - Hang Trapeze System / Strut Racking | 7d | 2027-01-22 | 2027-01-29 | DH-E160-910 | 53d | 0d |  | HELIX | DH1600 |  |
| DH-E160-960 |  | E160 - Hang Starline Bus | 10d | 2027-03-10 | 2027-03-20 | DH-D160-960, DH-E160-920 | 47d | 0d |  | HELIX | DH1600 |  |
| DH-E160-930 |  | E160 - Pull MC Cable from PDU to MTS | 15d | 2027-05-12 | 2027-05-28 | PRC-MCC-040, DH-D160-930, DH-E160-920 | -21d | 0d |  | HELIX | DH1600 | BB |
| DH-E160-940 |  | E160 - HAC Aisle Structure Set by others | 3d | 2027-05-29 | 2027-06-02 | DH-E160-930 | -21d | 0d |  | HELIX | DH1600 |  |
| DH-E160-950 |  | E160 - HAC Aisle Light install | 6d | 2027-06-03 | 2027-06-09 | DH-D160-950, DH-E160-940, PRC-LGT-100 | -21d | 0d |  | HELIX | DH1600 |  |
| DH-E160-970 |  | E160 - HAC Aisle Structure Raised by others | 1d | 2027-06-10 | 2027-06-10 | DH-E160-960, DH-E160-950 | -21d | 0d |  | HELIX | DH1600 |  |
| DH-E160-980 |  | E160 - Set MTS | 4d | 2027-06-11 | 2027-06-15 | DH-E160-970, PR-1110 | -21d | 0d |  | HELIX | DH1600 |  |
| DH-E160-1030 |  | E160 - Set DH PQM | 4d | 2027-06-16 | 2027-06-19 | DH-E160-980 | -21d | 0d |  | HELIX | DH1600 |  |
| DH-E160-1040 |  | E160 - Pipe Data Hall PQM | 6d | 2027-06-21 | 2027-06-26 | DH-E160-1030 | -21d | 0d |  | HELIX | DH1600 |  |
| DH-E160-1050 |  | E160 - Pull Wire for DH PQM | 3d | 2027-06-28 | 2027-06-30 | DH-E160-1040 | -21d | 0d |  | HELIX | DH1600 |  |
| DH-E160-990 |  | E160 - Connect MC Cables to MTS | 6d | 2027-06-28 | 2027-07-06 | DH-E160-1040, DH-E160-1030, DH-E160-980 | -21d | 0d |  | HELIX | DH1600 |  |
| DH-E160-1060 |  | E160 - Terminate DH PQM | 4d | 2027-07-01 | 2027-07-07 | DH-E160-1050 | -21d | 0d |  | HELIX | DH1600 |  |
| DH-E160-1000 |  | E160 - Terminate MC Cables at MTS | 7d | 2027-07-07 | 2027-07-14 | DH-E160-990 | -21d | 0d |  | HELIX | DH1600 |  |
| DH-E160-1010 |  | E160 - Pull MC Cable from MTS to Starline | 3d | 2027-07-07 | 2027-07-09 | DH-E160-990 | -20d | 0d |  | HELIX | DH1600 |  |
| DH-E160-1070 |  | E160 - HAC Lighting Switches / Emergency Relay at the same time when set MTS and PQM | 3d | 2027-07-08 | 2027-07-10 | DH-E160-1060 | -21d | 0d |  | HELIX | DH1600 |  |
| DH-E160-1020 |  | E160 - Terminate MC Cables at Starline | 3d | 2027-07-10 | 2027-07-13 | DH-E160-1010, DH-E160-990 | -20d | 1d |  | HELIX | DH1600 |  |
| DH-E160-1080 |  | E160 - Terminate Lighting Wiring | 3d | 2027-07-12 | 2027-07-14 | DH-E160-1070 | -21d | 0d |  | HELIX | DH1600 |  |
| DH-E160-1120 |  | E160 - QC 2.2 Checklist | 1d | 2027-07-15 | 2027-07-15 | DH-E160-1080, DH-E160-1020, DH-E160-1000 | -21d | 0d |  | HELIX | DH1600 |  |
|  | 6 | **F160** |  | 2027-01-30 | 2027-07-15 |  |  |  |  |  |  |  |
| DH-F160-910 |  | F160 - Install Supplemental Steel (overhead support for strut/trapeze) | 6d | 2027-01-30 | 2027-02-05 | DH-E160-910, DH-E160-920 | 53d | 0d | Suffolk | HELIX | DH1600 |  |
| DH-F160-920 |  | F160 - Hang Trapeze System / Strut Racking | 7d | 2027-02-06 | 2027-02-13 | DH-F160-910 | 53d | 20d |  | HELIX | DH1600 |  |
| DH-F160-960 |  | F160 - Hang Starline Bus | 10d | 2027-03-10 | 2027-03-20 | DH-E160-960 SS, DH-F160-920 | 47d | 0d |  | HELIX | DH1600 |  |
| DH-F160-930 |  | F160 - Pull MC Cable from PDU to MTS | 15d | 2027-05-12 | 2027-05-28 | PRC-MCC-040, DH-E160-930 SS, DH-F160-920 | -21d | 0d |  | HELIX | DH1600 | BB |
| DH-F160-940 |  | F160 - HAC Aisle Structure Set by others | 3d | 2027-05-29 | 2027-06-02 | DH-E160-940 SS, DH-F160-930 | -21d | 0d |  | HELIX | DH1600 |  |
| DH-F160-950 |  | F160 - HAC Aisle Light install | 6d | 2027-06-03 | 2027-06-09 | DH-E160-950 SS, DH-F160-940, PRC-LGT-100 | -21d | 0d |  | HELIX | DH1600 |  |
| DH-F160-970 |  | F160 - HAC Aisle Structure Raised by others | 1d | 2027-06-10 | 2027-06-10 | DH-F160-960, DH-F160-950 | -21d | 0d |  | HELIX | DH1600 |  |
| DH-F160-980 |  | F160 - Set MTS | 4d | 2027-06-11 | 2027-06-15 | DH-F160-970 | -21d | 0d |  | HELIX | DH1600 |  |
| DH-F160-1030 |  | F160 - Set DH PQM | 4d | 2027-06-16 | 2027-06-19 | DH-F160-980 | -21d | 0d |  | HELIX | DH1600 |  |
| DH-F160-1040 |  | F160 - Pipe Data Hall PQM | 6d | 2027-06-21 | 2027-06-26 | DH-F160-1030 | -21d | 0d |  | HELIX | DH1600 |  |
| DH-F160-1050 |  | F160 - Pull Wire for DH PQM | 3d | 2027-06-28 | 2027-06-30 | DH-F160-1040 | -21d | 0d |  | HELIX | DH1600 |  |
| DH-F160-990 |  | F160 - Connect MC Cables to MTS | 6d | 2027-06-28 | 2027-07-06 | DH-F160-1040, DH-F160-1030, DH-F160-980 | -20d | 0d |  | HELIX | DH1600 |  |
| DH-F160-1060 |  | F160 - Terminate DH PQM | 4d | 2027-07-01 | 2027-07-07 | DH-F160-1050 | -21d | 0d |  | HELIX | DH1600 |  |
| DH-F160-1000 |  | F160 - Terminate MC Cables at MTS | 7d | 2027-07-07 | 2027-07-14 | DH-F160-990 | -20d | 1d |  | HELIX | DH1600 |  |
| DH-F160-1010 |  | F160 - Pull MC Cable from MTS to Starline | 3d | 2027-07-07 | 2027-07-09 | DH-F160-990 | -20d | 0d |  | HELIX | DH1600 |  |
| DH-F160-1070 |  | F160 - HAC Lighting Switches / Emergency Relay at the same time when set MTS and PQM | 3d | 2027-07-08 | 2027-07-10 | DH-F160-1060 | -21d | 0d |  | HELIX | DH1600 |  |
| DH-F160-1020 |  | F160 - Terminate MC Cables at Starline | 3d | 2027-07-10 | 2027-07-13 | DH-F160-1010, DH-F160-990 | -20d | 1d |  | HELIX | DH1600 |  |
| DH-F160-1080 |  | F160 - Terminate Lighting Wiring | 3d | 2027-07-12 | 2027-07-14 | DH-F160-1070 | -21d | 0d |  | HELIX | DH1600 |  |
| DH-F160-1130 |  | F160 - QC 2.2 Checklist | 1d | 2027-07-15 | 2027-07-15 | DH-F160-1080, DH-F160-1020 | -21d | 0d |  | HELIX | DH1600 |  |

| ID | WBS | Activity | Duration | Start | Finish | Predecessors | Total float | Free float | COMMENTS | QTS - Subcontractor | QTS - AREA | QTS - DC7 |
| --- | --- | --- | --- | --- | --- | --- | --- | --- | --- | --- | --- | --- |
|  | 7 | **G160** |  | 2027-01-30 | 2027-07-15 |  |  |  |  |  |  |  |
| DH-G160-910 |  | G160 - Install Supplemental Steel (overhead support for strut/trapeze) | 6d | 2027-01-30 | 2027-02-05 | DH-F160-910 SS | 53d | 0d | Suffolk | HELIX | DH1600 |  |
| DH-G160-920 |  | G160 - Hang Trapeze System / Strut Racking | 7d | 2027-02-06 | 2027-02-13 | DH-G160-910 | 53d | 20d |  | HELIX | DH1600 |  |
| DH-G160-960 |  | G160 - Hang Starline Bus | 10d | 2027-03-10 | 2027-03-20 | DH-F160-960 SS, DH-G160-920 | 47d | 0d |  | HELIX | DH1600 |  |
| DH-G160-930 |  | G160 - Pull MC Cable from PDU to MTS | 15d | 2027-05-12 | 2027-05-28 | PRC-MCC-040, DH-F160-930 SS, DH-G160-920 | -21d | 0d |  | HELIX | DH1600 | BB |
| DH-G160-940 |  | G160 - HAC Aisle Structure Set by others | 3d | 2027-05-29 | 2027-06-02 | DH-F160-940 SS, DH-G160-930 | -21d | 0d |  | HELIX | DH1600 |  |
| DH-G160-950 |  | G160 - HAC Aisle Light install | 6d | 2027-06-03 | 2027-06-09 | DH-F160-950 SS, DH-G160-940, PRC-LGT-100 | -21d | 0d |  | HELIX | DH1600 |  |
| DH-G160-970 |  | G160 - HAC Aisle Structure Raised by others | 1d | 2027-06-10 | 2027-06-10 | DH-F160-970 SS, DH-G160-960, DH-G160-950 | -21d | 0d |  | HELIX | DH1600 |  |
| DH-G160-980 |  | G160 - Set MTS | 4d | 2027-06-11 | 2027-06-15 | DH-F160-980 SS, DH-G160-970 | -21d | 0d |  | HELIX | DH1600 |  |
| DH-G160-1030 |  | G160 - Set DH PQM | 4d | 2027-06-16 | 2027-06-19 | DH-F160-1030 SS, DH-G160-980 | -21d | 0d |  | HELIX | DH1600 |  |
| DH-G160-1040 |  | G160 - Pipe Data Hall PQM | 6d | 2027-06-21 | 2027-06-26 | DH-G160-1030 | -21d | 0d |  | HELIX | DH1600 |  |
| DH-G160-1050 |  | G160 - Pull Wire for DH PQM | 3d | 2027-06-28 | 2027-06-30 | DH-G160-1040 | -21d | 0d |  | HELIX | DH1600 |  |
| DH-G160-990 |  | G160 - Connect MC Cables to MTS | 6d | 2027-06-28 | 2027-07-06 | DH-G160-1040, DH-G160-1030, DH-G160-980 | -21d | 0d |  | HELIX | DH1600 |  |
| DH-G160-1060 |  | G160 - Terminate DH PQM | 4d | 2027-07-01 | 2027-07-07 | DH-G160-1050 | -21d | 0d |  | HELIX | DH1600 |  |
| DH-G160-1000 |  | G160 - Terminate MC Cables at MTS | 7d | 2027-07-07 | 2027-07-14 | DH-G160-990 | -21d | 0d |  | HELIX | DH1600 |  |
| DH-G160-1010 |  | G160 - Pull MC Cable from MTS to Starline | 3d | 2027-07-07 | 2027-07-09 | DH-G160-990 | -20d | 0d |  | HELIX | DH1600 |  |
| DH-G160-1070 |  | G160 - HAC Lighting Switches / Emergency Relay at the same time when set MTS and PQM | 3d | 2027-07-08 | 2027-07-10 | DH-G160-1060 | -21d | 0d |  | HELIX | DH1600 |  |
| DH-G160-1020 |  | G160 - Terminate MC Cables at Starline | 3d | 2027-07-10 | 2027-07-13 | DH-G160-1010, DH-G160-990 | -20d | 1d |  | HELIX | DH1600 |  |
| DH-G160-1080 |  | G160 - Terminate Lighting Wiring | 3d | 2027-07-12 | 2027-07-14 | DH-G160-1070 | -21d | 0d |  | HELIX | DH1600 |  |
| DH-G160-1140 |  | G160 - QC 2.2 Checklist | 1d | 2027-07-15 | 2027-07-15 | DH-G160-1080, DH-G160-1020, DH-G160-1000 | -21d | 0d |  | HELIX | DH1600 |  |
|  | 8 | **H160** |  | 2027-01-30 | 2027-07-15 |  |  |  |  |  |  |  |
| DH-H160-910 |  | H160 - Install Supplemental Steel (overhead support for strut/trapeze) | 6d | 2027-01-30 | 2027-02-05 | DH-G160-910 SS | 53d | 0d | Suffolk | HELIX | DH1600 |  |
| DH-H160-920 |  | H160 - Hang Trapeze System / Strut Racking | 7d | 2027-02-06 | 2027-02-13 | DH-H160-910 | 53d | 20d |  | HELIX | DH1600 |  |
| DH-H160-960 |  | H160 - Hang Starline Bus | 10d | 2027-03-10 | 2027-03-20 | DH-G160-960 SS, DH-H160-920 | 47d | 0d |  | HELIX | DH1600 |  |
| DH-H160-930 |  | H160 - Pull MC Cable from PDU to MTS | 15d | 2027-05-12 | 2027-05-28 | PRC-MCC-040, DH-G160-930 SS, DH-H160-920 | -21d | 0d |  | HELIX | DH1600 | BB |
| DH-H160-940 |  | H160 - HAC Aisle Structure Set by others | 3d | 2027-05-29 | 2027-06-02 | DH-H160-930 | -21d | 0d |  | HELIX | DH1600 |  |
| DH-H160-950 |  | H160 - HAC Aisle Light install | 6d | 2027-06-03 | 2027-06-09 | DH-G160-950 SS, DH-H160-940, PRC-LGT-100 | -21d | 0d |  | HELIX | DH1600 |  |
| DH-H160-970 |  | H160 - HAC Aisle Structure Raised by others | 1d | 2027-06-10 | 2027-06-10 | DH-H160-960, DH-H160-950 | -21d | 0d |  | HELIX | DH1600 |  |
| DH-H160-980 |  | H160 - Set MTS | 4d | 2027-06-11 | 2027-06-15 | DH-H160-970 | -21d | 0d |  | HELIX | DH1600 |  |
| DH-H160-1030 |  | H160 - Set DH PQM | 4d | 2027-06-16 | 2027-06-19 | DH-H160-980 | -21d | 0d |  | HELIX | DH1600 |  |
| DH-H160-1040 |  | H160 - Pipe Data Hall PQM | 6d | 2027-06-21 | 2027-06-26 | DH-H160-1030 | -21d | 0d |  | HELIX | DH1600 |  |
| DH-H160-1050 |  | H160 - Pull Wire for DH PQM | 3d | 2027-06-28 | 2027-06-30 | DH-H160-1040 | -21d | 0d |  | HELIX | DH1600 |  |
| DH-H160-990 |  | H160 - Connect MC Cables to MTS | 6d | 2027-06-28 | 2027-07-06 | DH-H160-1040, DH-H160-1030, DH-H160-980 | -21d | 0d |  | HELIX | DH1600 |  |
| DH-H160-1060 |  | H160 - Terminate DH PQM | 4d | 2027-07-01 | 2027-07-07 | DH-H160-1050 | -21d | 0d |  | HELIX | DH1600 |  |
| DH-H160-1000 |  | H160 - Terminate MC Cables at MTS | 7d | 2027-07-07 | 2027-07-14 | DH-H160-990 | -21d | 0d |  | HELIX | DH1600 |  |
| DH-H160-1010 |  | H160 - Pull MC Cable from MTS to Starline | 3d | 2027-07-07 | 2027-07-09 | DH-H160-990 | -20d | 0d |  | HELIX | DH1600 |  |
| DH-H160-1070 |  | H160 - HAC Lighting Switches / Emergency Relay at the same time when set MTS and PQM | 3d | 2027-07-08 | 2027-07-10 | DH-H160-1060 | -21d | 0d |  | HELIX | DH1600 |  |
| DH-H160-1020 |  | H160 - Terminate MC Cables at Starline | 3d | 2027-07-10 | 2027-07-13 | DH-H160-1010, DH-H160-990 | -20d | 1d |  | HELIX | DH1600 |  |
| DH-H160-1080 |  | H160 - Terminate Lighting Wiring | 3d | 2027-07-12 | 2027-07-14 | DH-H160-1070 | -21d | 0d |  | HELIX | DH1600 |  |
| DH-H160-1150 |  | H160 - QC 2.2 Checklist | 1d | 2027-07-15 | 2027-07-15 | DH-H160-1080, DH-H160-1020, DH-H160-1000 | -21d | 0d |  | HELIX | DH1600 |  |

| ID | WBS | Activity | Duration | Start | Finish | Predecessors | Total float | Free float | COMMENTS | QTS - Subcontractor | QTS - AREA | QTS - DC7 |
| --- | --- | --- | --- | --- | --- | --- | --- | --- | --- | --- | --- | --- |
|  | 9 | **J160** |  | 2027-01-30 | 2027-07-15 |  |  |  |  |  |  |  |
| DH-J160-910 |  | J160 - Install Supplemental Steel (overhead support for strut/trapeze) | 6d | 2027-01-30 | 2027-02-05 | DH-H160-910 SS | 53d | 0d | Suffolk | HELIX | DH1600 |  |
| DH-J160-920 |  | J160 - Hang Trapeze System / Strut Racking | 7d | 2027-02-06 | 2027-02-13 | DH-J160-910 | 53d | 20d |  | HELIX | DH1600 |  |
| DH-J160-960 |  | J160 - Hang Starline Bus | 10d | 2027-03-10 | 2027-03-20 | DH-H160-960 SS, DH-J160-920 | 47d | 0d |  | HELIX | DH1600 |  |
| DH-J160-930 |  | J160 - Pull MC Cable from PDU to MTS | 15d | 2027-05-12 | 2027-05-28 | PRC-MCC-040, DH-H160-930 SS, DH-J160-920 | -21d | 0d |  | HELIX | DH1600 | BB |
| DH-J160-940 |  | J160 - HAC Aisle Structure Set by others | 3d | 2027-05-29 | 2027-06-02 | DH-J160-930 | -21d | 0d |  | HELIX | DH1600 |  |
| DH-J160-950 |  | J160 - HAC Aisle Light install | 6d | 2027-06-03 | 2027-06-09 | DH-H160-950 SS, DH-J160-940, PRC-LGT-100 | -21d | 0d |  | HELIX | DH1600 |  |
| DH-J160-970 |  | J160 - HAC Aisle Structure Raised by others | 1d | 2027-06-10 | 2027-06-10 | DH-J160-960, DH-J160-950 | -21d | 0d |  | HELIX | DH1600 |  |
| DH-J160-980 |  | J160 - Set MTS | 4d | 2027-06-11 | 2027-06-15 | DH-J160-970 | -21d | 0d |  | HELIX | DH1600 |  |
| DH-J160-1030 |  | J160 - Set DH PQM | 4d | 2027-06-16 | 2027-06-19 | DH-J160-980 | -21d | 0d |  | HELIX | DH1600 |  |
| DH-J160-1040 |  | J160 - Pipe Data Hall PQM | 6d | 2027-06-21 | 2027-06-26 | DH-J160-1030 | -21d | 0d |  | HELIX | DH1600 |  |
| DH-J160-1050 |  | J160 - Pull Wire for DH PQM | 3d | 2027-06-28 | 2027-06-30 | DH-J160-1040 | -21d | 0d |  | HELIX | DH1600 |  |
| DH-J160-990 |  | J160 - Connect MC Cables to MTS | 6d | 2027-06-28 | 2027-07-06 | DH-J160-1040, DH-J160-1030, DH-J160-980 | -21d | 0d |  | HELIX | DH1600 |  |
| DH-J160-1060 |  | J160 - Terminate DH PQM | 4d | 2027-07-01 | 2027-07-07 | DH-J160-1050 | -21d | 0d |  | HELIX | DH1600 |  |
| DH-J160-1000 |  | J160 - Terminate MC Cables at MTS | 7d | 2027-07-07 | 2027-07-14 | DH-J160-990 | -21d | 0d |  | HELIX | DH1600 |  |
| DH-J160-1010 |  | J160 - Pull MC Cable from MTS to Starline | 3d | 2027-07-07 | 2027-07-09 | DH-J160-990 | -20d | 0d |  | HELIX | DH1600 |  |
| DH-J160-1070 |  | J160 - HAC Lighting Switches / Emergency Relay at the same time when set MTS and PQM | 3d | 2027-07-08 | 2027-07-10 | DH-J160-1060 | -21d | 0d |  | HELIX | DH1600 |  |
| DH-J160-1020 |  | J160 - Terminate MC Cables at Starline | 3d | 2027-07-10 | 2027-07-13 | DH-J160-1010, DH-J160-990 | -20d | 1d |  | HELIX | DH1600 |  |
| DH-J160-1080 |  | J160 - Terminate Lighting Wiring | 3d | 2027-07-12 | 2027-07-14 | DH-J160-1070 | -21d | 0d |  | HELIX | DH1600 |  |
| DH-J160-1160 |  | J160 - QC 2.2 Checklist | 1d | 2027-07-15 | 2027-07-15 | DH-J160-1080, DH-J160-1020, DH-J160-1000 | -21d | 0d |  | HELIX | DH1600 |  |
|  | 10 | **K160** |  | 2027-01-30 | 2027-07-15 |  |  |  |  |  |  |  |
| DH-K160-910 |  | K160 - Install Supplemental Steel (overhead support for strut/trapeze) | 6d | 2027-01-30 | 2027-02-05 | DH-J160-910 SS | 56d | 0d | Suffolk | HELIX | DH1600 |  |
| DH-K160-920 |  | K160 - Hang Trapeze System / Strut Racking | 7d | 2027-02-06 | 2027-02-13 | DH-K160-910 | 56d | 20d |  | HELIX | DH1600 |  |
| DH-K160-960 |  | K160 - Hang Starline Bus | 10d | 2027-03-10 | 2027-03-20 | DH-J160-960 SS, DH-K160-920 | 47d | 68d |  | HELIX | DH1600 |  |
| DH-K160-930 |  | K160 - Pull MC Cable from PDU to MTS | 15d | 2027-04-22 | 2027-05-08 | PRC-MCC-040, DH-J160-930 SS-17d, DH-K160-920 | -1d | 0d |  | HELIX | DH1600 | BB |
| DH-K160-940 |  | K160 - HAC Aisle Structure Set by others | 3d | 2027-05-10 | 2027-05-12 | DH-K160-930 | -1d | 20d |  | HELIX | DH1600 |  |
| DH-K160-950 |  | K160 - HAC Aisle Light install | 6d | 2027-06-03 | 2027-06-09 | DH-J160-950 SS, DH-K160-940 SS, PRC-LGT-100 | -21d | 0d |  | HELIX | DH1600 |  |
| DH-K160-970 |  | K160 - HAC Aisle Structure Raised by others | 1d | 2027-06-10 | 2027-06-10 | DH-K160-960, DH-K160-950 | -21d | 0d |  | HELIX | DH1600 |  |
| DH-K160-980 |  | K160 - Set MTS | 4d | 2027-06-11 | 2027-06-15 | DH-K160-970 | -21d | 0d |  | HELIX | DH1600 |  |
| DH-K160-1030 |  | K160 - Set DH PQM | 4d | 2027-06-16 | 2027-06-19 | DH-K160-980 | -21d | 0d |  | HELIX | DH1600 |  |
| DH-K160-1040 |  | K160 - Pipe Data Hall PQM | 6d | 2027-06-21 | 2027-06-26 | DH-K160-1030 | -21d | 0d |  | HELIX | DH1600 |  |
| DH-K160-1050 |  | K160 - Pull Wire for DH PQM | 3d | 2027-06-28 | 2027-06-30 | DH-K160-1040 | -21d | 0d |  | HELIX | DH1600 |  |
| DH-K160-990 |  | K160 - Connect MC Cables to MTS | 6d | 2027-06-28 | 2027-07-06 | DH-K160-1040, DH-K160-1030, DH-K160-980 | -21d | 0d |  | HELIX | DH1600 |  |
| DH-K160-1060 |  | K160 - Terminate DH PQM | 4d | 2027-07-01 | 2027-07-07 | DH-K160-1050 | -21d | 0d |  | HELIX | DH1600 |  |
| DH-K160-1000 |  | K160 - Terminate MC Cables at MTS | 7d | 2027-07-07 | 2027-07-14 | DH-K160-990 | -21d | 0d |  | HELIX | DH1600 |  |
| DH-K160-1010 |  | K160 - Pull MC Cable from MTS to Starline | 3d | 2027-07-07 | 2027-07-09 | DH-K160-990 | -20d | 0d |  | HELIX | DH1600 |  |
| DH-K160-1070 |  | K160 - HAC Lighting Switches / Emergency Relay at the same time when set MTS and PQM | 3d | 2027-07-08 | 2027-07-10 | DH-K160-1060 | -21d | 0d |  | HELIX | DH1600 |  |
| DH-K160-1020 |  | K160 - Terminate MC Cables at Starline | 3d | 2027-07-10 | 2027-07-13 | DH-K160-1010, DH-K160-990 | -20d | 1d |  | HELIX | DH1600 |  |
| DH-K160-1080 |  | K160 - Terminate Lighting Wiring | 3d | 2027-07-12 | 2027-07-14 | DH-K160-1070 | -21d | 0d |  | HELIX | DH1600 |  |
| DH-K160-1170 |  | K160 - QC 2.2 Checklist | 1d | 2027-07-15 | 2027-07-15 | DH-K160-1080, DH-K160-1020, DH-K160-1000, DH160-FS-350 | -21d | 0d |  | HELIX | DH1600 |  |

| ID | WBS | Activity | Duration | Start | Finish | Predecessors | Total float | Free float | QTS - Subcontractor | QTS - AREA | QTS - DC7 |
| --- | --- | --- | --- | --- | --- | --- | --- | --- | --- | --- | --- |
|  | 12 | **FIRE STOPPING DH1600** |  | 2027-06-17 | 2027-07-05 |  |  |  |  |  |  |
| DH160-FS-340 |  | DH1600 // R to D -Install Firestopping | 6d | 2027-06-17 | 2027-06-23 | DH-D160-990 | -13d | 0d | HELIX | DH1600 |  |
| DH160-FS-360 |  | DH1600 // E to K -Install Firestopping | 6d | 2027-06-24 | 2027-06-30 | DH160-FS-340 | -13d | 0d | HELIX | DH1600 |  |
| DH160-FS-350 |  | DH1600 //- Firestopping inspection | 2d | 2027-07-01 | 2027-07-05 | DH160-FS-340, DH160-FS-340 FF, DH160-FS-360 | -13d | 8d | HELIX | DH1600 |  |
|  | 2 | **PDU GALLERY** |  | 2026-10-23 | 2027-05-22 |  |  |  |  |  |  |
| DH160-PDU-500 |  | DH1600 // PDU - Wall Framing (third party activity) | 1d | 2026-10-23 | 2026-10-23 | DH.16000.1040 (other project) | 151d | 3d |  | DH1600 | BB |
| DH160-PDU-510 |  | DH1600 // PDU - Drywall Installation, painting, finishes (third party activity) | 1d | 2026-10-28 | 2026-10-28 | DH160-PDU-500, DH.16000.1100 (other project) | 148d | 6d |  | DH1600 | BB |
| DH160-PDU-350 |  | DH1600 // PDU - Prefab UPS Skid (offsite assembly) | 1d | 2026-11-05 | 2026-11-05 | PR-1050 FS+10d, DH160-PDU-510 | 164d | 27d | HELIX | DH1600 |  |
| DH160-PDU-360 |  | DH1600 // PDU - Set UPS Skid - Transformers & Panels in PDU Gallery | 3d | 2026-12-11 | 2026-12-14 | DH160-PDU-510, DH160-PDU-350, DH150-PDU-190, PRC-PNL-170, PRC-PNL-220 | 137d | 109d | HELIX | DH1600 |  |
| DH160-PDU-440 |  | DH1600 // PDU - RP Panel Installed | 1d | 2027-03-24 | 2027-03-24 | DH150-PDU-300, PRC-PNL-110 | 52d | 0d |  | DH1600 | BB |
| DH160-PDU-450 |  | DH1600 // PDU - Install pipe cord reel circuits | 10d | 2027-03-25 | 2027-04-05 | DH160-PDU-440, DH150-PDU-300 | 52d | 0d | HELIX | DH1600 |  |
| DH160-PDU-400 |  | DH1600 // PDU - Pipe UPS Circuits / Branch Conduits to Data Hall (PQM, Goal Post, Admin IDF, ICPNL, TPQM) | 10d | 2027-04-02 | 2027-04-13 | DH160-PDU-510, DH150-PDU-220 | 22d | 0d | HELIX | DH1600 |  |
| DH160-PDU-460 |  | DH1600 // PDU - Pull wire for cord reel circuits | 4d | 2027-04-06 | 2027-04-09 | DH160-PDU-450 | 52d | 0d | HELIX | DH1600 |  |
| DH160-PDU-470 |  | DH1600 // PDU - Install cord reel and Terminate | 6d | 2027-04-10 | 2027-04-16 | DH160-PDU-460 | 52d | 30d | HELIX | DH1600 |  |
| DH160-PDU-480 |  | DH1600 // PDU - Pipe UPS Circuits / Branch Conduits in PDU Gallery (PQM, Goal Post, Admin IDF, ICPNL, TPQM) | 10d | 2027-04-14 | 2027-04-24 | DH160-PDU-510, DH160-PDU-400 | 22d | 0d | HELIX | DH1600 |  |
| DH160-PDU-370 |  | DH1600 // PDU - Pipe Feeder from MOD Panel to UPS Transformer | 3d | 2027-04-26 | 2027-04-28 | DH160-PDU-360, DH160-PDU-510, DH160-PDU-480 | 39d | 0d | HELIX | DH1600 |  |
| DH160-PDU-410 |  | DH1600 // PDU - Pull UPS Circuits | 6d | 2027-04-26 | 2027-05-01 | DH160-PDU-480, DH160-PDU-400 | 22d | 0d |  | DH1600 | BB |
| DH160-PDU-380 |  | DH1600 // PDU - Pull Feeder from MOD Panel to UPS Transformer | 2d | 2027-04-29 | 2027-04-30 | DH160-PDU-370 | 39d | 0d | HELIX | DH1600 |  |
| DH160-PDU-390 |  | DH1600 // PDU - Terminate Feeder at MOD Panel and UPS Transformer | 1d | 2027-05-01 | 2027-05-01 | DH160-PDU-380 | 39d | 17d | HELIX | DH1600 |  |
| DH160-PDU-420 |  | DH1600 // PDU - Terminate UPS Branch Circuits | 4d | 2027-05-03 | 2027-05-06 | DH160-PDU-410, DH160-PDU-360 | 22d | 0d | HELIX | DH1600 |  |
| DH160-PDU-430 |  | DH1600 // PDU - Install and Terminate "Goal Post" Receptacles | 3d | 2027-05-07 | 2027-05-10 | DH160-PDU-420 | 22d | 0d | HELIX | DH1600 |  |
| DH160-PDU-520 |  | DH1600 // PDU - Install Firestopping | 5d | 2027-05-11 | 2027-05-15 | DH160-PDU-430, DH150-PDU-360 | 22d | 0d | HELIX | DH1600 |  |
| DH160-PDU-530 |  | DH1600 // PDU - Firestopping inspection | 5d | 2027-05-17 | 2027-05-21 | DH160-PDU-520 | 22d | 0d | HELIX | DH1600 |  |
| DH160-PDU-490 |  | DH1600 // PDU - QC 2.2 Checklist | 1d | 2027-05-22 | 2027-05-22 | DH160-PDU-430, DH160-PDU-470, DH160-PDU-390, DH160-PDU-530 | 22d | 43d | HELIX | DH1600 |  |

| ID | WBS | Activity | Duration | Start | Finish | Predecessors | Total float | Free float | QTS - Subcontractor | QTS - AREA | QTS - DC7 |
| --- | --- | --- | --- | --- | --- | --- | --- | --- | --- | --- | --- |
|  | 5 | **ELECTRICAL ROOMS** |  | 2027-03-08 | 2027-05-22 |  |  |  |  |  |  |
|  | 1 | **LINE-UPS** |  | 2027-03-08 | 2027-05-22 |  |  |  |  |  |  |
|  | 11 | **R160** |  | 2027-03-17 | 2027-05-15 |  |  |  |  |  |  |
| ER-R160-1020 |  | R160 - Pipe power circuit to ER PQM | 2d | 2027-03-17 | 2027-03-18 | ER-R150-900, ER-K150-650 | 56d | 0d | HELIX | DH1600 |  |
| ER-R160-1030 |  | R160 - Reserve Line Equipment Set | 1d | 2027-03-19 | 2027-03-19 | ER-R160-1020 | 56d | 0d | HELIX | DH1600 |  |
| ER-R160-1040 |  | R160 - Set ER PQM | 1d | 2027-03-20 | 2027-03-20 | ER-R160-1030, ER-R150-920, ER-K150-670 | 56d | 0d | HELIX | DH1600 |  |
| ER-R160-1080 |  | R160 - Set Inhibitor Panel | 1d | 2027-03-20 | 2027-03-20 | ER-R160-1030, PRC-INH-90 | 69d | 0d | HELIX | DH1600 |  |
| ER-R160-1050 |  | R160 - Pipe CT&VT PQM control (run conduits) | 2d | 2027-03-22 | 2027-03-23 | ER-R160-1040, ER-R150-930, ER-K150-680 | 72d | 0d | HELIX | DH1600 |  |
| ER-R160-1090 |  | R160 - Pipe Inhibitor Panel (overhead run w/ base build) | 1d | 2027-03-22 | 2027-03-22 | ER-R160-1080 | 69d | 0d |  | DH1600 | BB |
| ER-R160-1100 |  | R160 - Pull Wire for Inhibitor Panel | 2d | 2027-03-23 | 2027-03-24 | ER-R160-1090 | 69d | 0d | HELIX | DH1600 |  |
| ER-R160-1060 |  | R160 - Pull Wire for ER PQM | 1d | 2027-03-24 | 2027-03-24 | ER-R160-1050 | 72d | 0d | HELIX | DH1600 |  |
| ER-R160-1070 |  | R160 - Terminate ER PQM | 1d | 2027-03-25 | 2027-03-25 | ER-R160-1060 | 72d | 93d | HELIX | DH1600 |  |
| ER-R160-1110 |  | R160 - Terminate Inhibitor Panel | 3d | 2027-03-25 | 2027-03-27 | ER-R160-1100 | 69d | 41d | HELIX | DH1600 |  |
| ER-R160-1130 |  | R160 - Land and terminate wiring on the PDU | 3d | 2027-05-12 | 2027-05-14 | ER-R150-1010, DH-D160-930 | 22d | 0d | HELIX | DH1600 |  |
| ER-R160-1120 |  | R160 - QC 2.2 Checklist | 1d | 2027-05-15 | 2027-05-15 | ER-R160-1110, ER-R160-1130 | 28d | 49d | HELIX | DH1600 |  |
|  | 1 | **A160** |  | 2027-03-08 | 2027-05-15 |  |  |  |  |  |  |
| ER-A160-650 |  | A160 - Electric Room (ER) Skid Set | 1d | 2027-03-08 | 2027-03-08 | ER-K150-660, ER.5101.3089 | 62d | 0d |  | DH1600 | BB |
| ER-A160-660 |  | A160 - Set ER PQM (predecessor skid set) | 1d | 2027-03-20 | 2027-03-20 | ER-A160-650, ER-R160-1040 SS | 56d | 0d | HELIX | DH1600 |  |
| ER-A160-640 |  | A160 - Pipe power circuit to ER PQM | 4d | 2027-03-22 | 2027-03-25 | ER-A160-660 | 64d | 2d | HELIX | DH1600 |  |
| ER-A160-670 |  | A160 - Pipe CT&VT PQM control (run conduits) | 6d | 2027-03-22 | 2027-03-27 | ER-A160-660 | 62d | 0d | HELIX | DH1600 |  |
| ER-A160-680 |  | A160 - Pull Wire for ER PQM | 3d | 2027-03-29 | 2027-03-31 | ER-A160-640, ER-A160-670 | 62d | 0d | HELIX | DH1600 |  |
| ER-A160-690 |  | A160 - Terminate ER PQM | 4d | 2027-04-01 | 2027-04-05 | ER-A160-680 | 62d | 34d | HELIX | DH1600 |  |
| ER-A160-710 |  | A160 - Land and terminate wiring on the PDU | 3d | 2027-05-12 | 2027-05-14 | ER-A160-650, ER-R160-1130 SS | 22d | 0d | HELIX | DH1600 |  |
| ER-A160-700 |  | A160 - QC 2.2 Checklist | 1d | 2027-05-15 | 2027-05-15 | ER-A160-690, ER-A160-710 | 28d | 49d | HELIX | DH1600 |  |

| ID | WBS | Activity | Duration | Start | Finish | Predecessors | Total float | Free float | QTS - AREA | QTS - DC7 | QTS - Subcontractor |
| --- | --- | --- | --- | --- | --- | --- | --- | --- | --- | --- | --- |
|  | 2 | **B160** |  | 2027-03-09 | 2027-05-15 |  |  |  |  |  |  |
| ER-B160-660 |  | B160 - Electric Room (ER) Skid Set | 1d | 2027-03-09 | 2027-03-09 | ER-A160-650 | 62d | 0d | DH1600 | BB |  |
| ER-B160-670 |  | B160 - Set ER PQM (predecessor skid set) | 1d | 2027-03-20 | 2027-03-20 | ER-B160-660, ER-A160-660 SS | 56d | 0d | DH1600 |  | HELIX |
| ER-B160-650 |  | B160 - Pipe power circuit to ER PQM | 4d | 2027-03-22 | 2027-03-25 | ER-B160-670 | 64d | 2d | DH1600 |  | HELIX |
| ER-B160-680 |  | B160 - Pipe CT&VT PQM control (run conduits) | 6d | 2027-03-22 | 2027-03-27 | ER-B160-670 | 62d | 0d | DH1600 |  | HELIX |
| ER-B160-690 |  | B160 - Pull Wire for ER PQM | 3d | 2027-03-29 | 2027-03-31 | ER-B160-650, ER-B160-680 | 62d | 0d | DH1600 |  | HELIX |
| ER-B160-700 |  | B160 - Terminate ER PQM | 4d | 2027-04-01 | 2027-04-05 | ER-B160-690 | 62d | 34d | DH1600 |  | HELIX |
| ER-B160-720 |  | B160 - Land and terminate wiring on the PDU | 3d | 2027-05-12 | 2027-05-14 | ER-B160-660, ER-A160-710 SS | 22d | 0d | DH1600 |  | HELIX |
| ER-B160-710 |  | B160 - QC 2.2 Checklist | 1d | 2027-05-15 | 2027-05-15 | ER-B160-700, ER-B160-720 | 28d | 49d | DH1600 |  | HELIX |
|  | 3 | **C160** |  | 2027-03-10 | 2027-05-15 |  |  |  |  |  |  |
| ER-C160-670 |  | C160 - Electric Room (ER) Skid Set | 1d | 2027-03-10 | 2027-03-10 | ER-B160-660 | 62d | 0d | DH1600 | BB |  |
| ER-C160-680 |  | C160 - Set ER PQM (predecessor skid set) | 1d | 2027-03-20 | 2027-03-20 | ER-C160-670, ER-B160-670 SS | 56d | 0d | DH1600 |  | HELIX |
| ER-C160-660 |  | C160 - Pipe power circuit to ER PQM | 4d | 2027-03-22 | 2027-03-25 | ER-C160-680 | 64d | 2d | DH1600 |  | HELIX |
| ER-C160-690 |  | C160 - Pipe CT&VT PQM control (run conduits) | 6d | 2027-03-22 | 2027-03-27 | ER-C160-680 | 62d | 0d | DH1600 |  | HELIX |
| ER-C160-700 |  | C160 - Pull Wire for ER PQM | 3d | 2027-03-29 | 2027-03-31 | ER-C160-660, ER-C160-690 | 62d | 0d | DH1600 |  | HELIX |
| ER-C160-710 |  | C160 - Terminate ER PQM | 4d | 2027-04-01 | 2027-04-05 | ER-C160-700 | 62d | 34d | DH1600 |  | HELIX |
| ER-C160-730 |  | C160 - Land and terminate wiring on the PDU | 3d | 2027-05-12 | 2027-05-14 | ER-C160-670, ER-B160-720 SS | 22d | 0d | DH1600 |  | HELIX |
| ER-C160-720 |  | C160 - QC 2.2 Checklist | 1d | 2027-05-15 | 2027-05-15 | ER-C160-710, ER-C160-730 | 28d | 49d | DH1600 |  | HELIX |
|  | 4 | **D160** |  | 2027-03-11 | 2027-05-15 |  |  |  |  |  |  |
| ER-D160-680 |  | D160 - Electric Room (ER) Skid Set | 1d | 2027-03-11 | 2027-03-11 | ER-C160-670 | 62d | 0d | DH1600 | BB |  |
| ER-D160-690 |  | D160 - Set ER PQM (predecessor skid set) | 1d | 2027-03-20 | 2027-03-20 | ER-D160-680, ER-C160-680 SS | 56d | 0d | DH1600 |  | HELIX |
| ER-D160-670 |  | D160 - Pipe power circuit to ER PQM | 4d | 2027-03-22 | 2027-03-25 | ER-D160-690 | 64d | 2d | DH1600 |  | HELIX |
| ER-D160-700 |  | D160 - Pipe CT&VT PQM control (run conduits) | 6d | 2027-03-22 | 2027-03-27 | ER-D160-690 | 62d | 0d | DH1600 |  | HELIX |
| ER-D160-710 |  | D160 - Pull Wire for ER PQM | 3d | 2027-03-29 | 2027-03-31 | ER-D160-670, ER-D160-700 | 62d | 0d | DH1600 |  | HELIX |
| ER-D160-720 |  | D160 - Terminate ER PQM | 4d | 2027-04-01 | 2027-04-05 | ER-D160-710 | 62d | 34d | DH1600 |  | HELIX |
| ER-D160-740 |  | D160 - Land and terminate wiring on the PDU | 3d | 2027-05-12 | 2027-05-14 | ER-D160-680, ER-C160-730 SS | 22d | 0d | DH1600 |  | HELIX |
| ER-D160-730 |  | D160 - QC 2.2 Checklist | 1d | 2027-05-15 | 2027-05-15 | ER-D160-720, ER-D160-740 | 28d | 49d | DH1600 |  | HELIX |

| ID | WBS | Activity | Duration | Start | Finish | Predecessors | Total float | Free float | QTS - AREA | QTS - DC7 | QTS - Subcontractor |
| --- | --- | --- | --- | --- | --- | --- | --- | --- | --- | --- | --- |
|  | 5 | **E160** |  | 2027-03-12 | 2027-05-15 |  |  |  |  |  |  |
| ER-E160-690 |  | E160 - Electric Room (ER) Skid Set | 1d | 2027-03-12 | 2027-03-12 | ER-D160-680 | 62d | 0d | DH1600 | BB |  |
| ER-E160-700 |  | E160 - Set ER PQM (predecessor skid set) | 1d | 2027-03-20 | 2027-03-20 | ER-E160-690, ER-D160-690 SS | 56d | 0d | DH1600 |  | HELIX |
| ER-E160-680 |  | E160 - Pipe power circuit to ER PQM | 4d | 2027-03-22 | 2027-03-25 | ER-E160-700 | 56d | 0d | DH1600 |  | HELIX |
| ER-E160-710 |  | E160 - Pipe CT&VT PQM control (run conduits) | 6d | 2027-03-22 | 2027-03-27 | ER-E160-700, ER-E160-680 SS | 56d | 0d | DH1600 |  | HELIX |
| ER-E160-720 |  | E160 - Pull Wire for ER PQM | 3d | 2027-03-29 | 2027-03-31 | ER-E160-680, ER-E160-710 | 62d | 0d | DH1600 |  | HELIX |
| ER-E160-730 |  | E160 - Terminate ER PQM | 4d | 2027-04-01 | 2027-04-05 | ER-E160-720 | 62d | 34d | DH1600 |  | HELIX |
| ER-E160-750 |  | E160 - Land and terminate wiring on the PDU | 3d | 2027-05-12 | 2027-05-14 | ER-E160-690, ER-D160-740 SS | 22d | 0d | DH1600 |  | HELIX |
| ER-E160-740 |  | E160 - QC 2.2 Checklist | 1d | 2027-05-15 | 2027-05-15 | ER-E160-730, ER-E160-750 | 28d | 49d | DH1600 |  | HELIX |
|  | 6 | **F160** |  | 2027-03-13 | 2027-05-19 |  |  |  |  |  |  |
| ER-F160-700 |  | F160 - Electric Room (ER) Skid Set | 1d | 2027-03-13 | 2027-03-13 | ER-E160-690, ER.5101.3094 | 66d | 0d | DH1600 | BB |  |
| ER-F160-710 |  | F160 - Set ER PQM (predecessor skid set) | 1d | 2027-03-22 | 2027-03-22 | ER-F160-700, ER-E160-700 | 61d | 0d | DH1600 |  | HELIX |
| ER-F160-690 |  | F160 - Pipe power circuit to ER PQM | 4d | 2027-03-26 | 2027-03-30 | ER-F160-710, ER-E160-680 | 58d | 0d | DH1600 |  | HELIX |
| ER-F160-720 |  | F160 - Pipe CT&VT PQM control (run conduits) | 6d | 2027-03-29 | 2027-04-03 | ER-F160-710, ER-F160-690 SS, ER-E160-710 | 56d | 0d | DH1600 |  | HELIX |
| ER-F160-730 |  | F160 - Pull Wire for ER PQM | 3d | 2027-04-05 | 2027-04-07 | ER-F160-690, ER-F160-720 | 56d | 0d | DH1600 |  | HELIX |
| ER-F160-740 |  | F160 - Terminate ER PQM | 4d | 2027-04-08 | 2027-04-12 | ER-F160-730 | 56d | 31d | DH1600 |  | HELIX |
| ER-F160-760 |  | F160 - Land and terminate wiring on the PDU | 3d | 2027-05-15 | 2027-05-18 | ER-F160-700, ER-E160-750, DH-K160-930 | 25d | 0d | DH1600 |  | HELIX |
| ER-F160-750 |  | F160 - QC 2.2 Checklist | 1d | 2027-05-19 | 2027-05-19 | ER-F160-740, ER-F160-760 | 25d | 46d | DH1600 |  | HELIX |
|  | 7 | **G160** |  | 2027-03-15 | 2027-05-19 |  |  |  |  |  |  |
| ER-G160-710 |  | G160 - Electric Room (ER) Skid Set | 1d | 2027-03-15 | 2027-03-15 | ER-F160-700 | 66d | 0d | DH1600 | BB |  |
| ER-G160-720 |  | G160 - Set ER PQM (predecessor skid set) | 1d | 2027-03-22 | 2027-03-22 | ER-G160-710, ER-F160-710 SS | 61d | 0d | DH1600 |  | HELIX |
| ER-G160-700 |  | G160 - Pipe power circuit to ER PQM | 4d | 2027-03-26 | 2027-03-30 | ER-F160-690 SS, ER-G160-720 | 60d | 0d | DH1600 |  | HELIX |
| ER-G160-730 |  | G160 - Pipe CT&VT PQM control (run conduits) | 6d | 2027-03-29 | 2027-04-03 | ER-G160-720, ER-F160-720 SS | 56d | 0d | DH1600 |  | HELIX |
| ER-G160-740 |  | G160 - Pull Wire for ER PQM | 3d | 2027-04-05 | 2027-04-07 | ER-G160-700, ER-G160-730 | 56d | 0d | DH1600 |  | HELIX |
| ER-G160-750 |  | G160 - Terminate ER PQM | 4d | 2027-04-08 | 2027-04-12 | ER-G160-740 | 56d | 31d | DH1600 |  | HELIX |
| ER-G160-770 |  | G160 - Land and terminate wiring on the PDU | 3d | 2027-05-15 | 2027-05-18 | ER-G160-710, ER-F160-760 SS | 25d | 0d | DH1600 |  | HELIX |
| ER-G160-760 |  | G160 - QC 2.2 Checklist | 1d | 2027-05-19 | 2027-05-19 | ER-G160-750, ER-G160-770 | 25d | 46d | DH1600 |  | HELIX |

| ID | WBS | Activity | Duration | Start | Finish | Predecessors | Total float | Free float | QTS - AREA | QTS - DC7 | QTS - Subcontractor |
| --- | --- | --- | --- | --- | --- | --- | --- | --- | --- | --- | --- |
|  | 8 | **H160** |  | 2027-03-15 | 2027-05-19 |  |  |  |  |  |  |
| ER-H160-720 |  | H160 - Electric Room (ER) Skid Set | 1d | 2027-03-15 | 2027-03-15 | ER-G160-710 SS | 66d | 0d | DH1600 | BB |  |
| ER-H160-730 |  | H160 - Set ER PQM (predecessor skid set) | 1d | 2027-03-22 | 2027-03-22 | ER-H160-720, ER-G160-720 SS | 61d | 0d | DH1600 |  | HELIX |
| ER-H160-710 |  | H160 - Pipe power circuit to ER PQM | 4d | 2027-03-26 | 2027-03-30 | ER-G160-700 SS, ER-H160-730 | 60d | 0d | DH1600 |  | HELIX |
| ER-H160-740 |  | H160 - Pipe CT&VT PQM control (run conduits) | 6d | 2027-03-29 | 2027-04-03 | ER-H160-730, ER-G160-730 SS | 56d | 0d | DH1600 |  | HELIX |
| ER-H160-750 |  | H160 - Pull Wire for ER PQM | 3d | 2027-04-05 | 2027-04-07 | ER-H160-710, ER-H160-740 | 56d | 0d | DH1600 |  | HELIX |
| ER-H160-760 |  | H160 - Terminate ER PQM | 4d | 2027-04-08 | 2027-04-12 | ER-H160-750 | 56d | 31d | DH1600 |  | HELIX |
| ER-H160-780 |  | H160 - Land and terminate wiring on the PDU | 3d | 2027-05-15 | 2027-05-18 | ER-H160-720, ER-G160-770 SS | 25d | 0d | DH1600 |  | HELIX |
| ER-H160-770 |  | H160 - QC 2.2 Checklist | 1d | 2027-05-19 | 2027-05-19 | ER-H160-760, ER-H160-780 | 25d | 46d | DH1600 |  | HELIX |
|  | 9 | **J160** |  | 2027-03-15 | 2027-05-19 |  |  |  |  |  |  |
| ER-J160-730 |  | J160 - Electric Room (ER) Skid Set | 1d | 2027-03-15 | 2027-03-15 | ER-H160-720 SS | 66d | 0d | DH1600 | BB |  |
| ER-J160-740 |  | J160 - Set ER PQM (predecessor skid set) | 1d | 2027-03-22 | 2027-03-22 | ER-J160-730, ER-H160-730 SS | 61d | 0d | DH1600 |  | HELIX |
| ER-J160-720 |  | J160 - Pipe power circuit to ER PQM | 4d | 2027-03-26 | 2027-03-30 | ER-H160-710 SS, ER-J160-740 | 60d | 0d | DH1600 |  | HELIX |
| ER-J160-750 |  | J160 - Pipe CT&VT PQM control (run conduits) | 6d | 2027-03-29 | 2027-04-03 | ER-J160-740, ER-H160-740 SS | 56d | 0d | DH1600 |  | HELIX |
| ER-J160-760 |  | J160 - Pull Wire for ER PQM | 3d | 2027-04-05 | 2027-04-07 | ER-J160-720, ER-J160-750 | 56d | 0d | DH1600 |  | HELIX |
| ER-J160-770 |  | J160 - Terminate ER PQM | 4d | 2027-04-08 | 2027-04-12 | ER-J160-760 | 56d | 31d | DH1600 |  | HELIX |
| ER-J160-790 |  | J160 - Land and terminate wiring on the PDU | 3d | 2027-05-15 | 2027-05-18 | ER-J160-730, ER-H160-780 SS | 25d | 0d | DH1600 |  | HELIX |
| ER-J160-780 |  | J160 - QC 2.2 Checklist | 1d | 2027-05-19 | 2027-05-19 | ER-J160-770, ER-J160-790 | 25d | 46d | DH1600 |  | HELIX |
|  | 10 | **K160** |  | 2027-03-15 | 2027-05-22 |  |  |  |  |  |  |
| ER-K160-740 |  | K160 - Electric Room (ER) Skid Set | 1d | 2027-03-15 | 2027-03-15 | ER-J160-730 SS | 66d | 5d | DH1600 | BB |  |
| ER-K160-750 |  | K160 - Set ER PQM (predecessor skid set) | 1d | 2027-03-22 | 2027-03-22 | ER-K160-740, ER-J160-740 SS | 61d | 3d | DH1600 |  | HELIX |
| ER-K160-730 |  | K160 - Pipe power circuit to ER PQM | 4d | 2027-03-26 | 2027-03-30 | ER-J160-720 SS, ER-K160-750 | 60d | 4d | DH1600 |  | HELIX |
| ER-K160-760 |  | K160 - Pipe CT&VT PQM control (run conduits) | 6d | 2027-03-29 | 2027-04-03 | ER-K160-750, ER-J160-750 SS | 56d | 0d | DH1600 |  | HELIX |
| ER-K160-770 |  | K160 - Pull Wire for ER PQM | 3d | 2027-04-05 | 2027-04-07 | ER-K160-730, ER-K160-760 | 56d | 0d | DH1600 |  | HELIX |
| ER-K160-780 |  | K160 - Terminate ER PQM | 4d | 2027-04-08 | 2027-04-12 | ER-K160-770 | 56d | 34d | DH1600 |  | HELIX |
| ER-K160-800 |  | K160 - Land and terminate wiring on the PDU | 3d | 2027-05-15 | 2027-05-18 | ER-K160-740, ER-J160-790 SS | 25d | 3d | DH1600 |  | HELIX |
| ER-K160-790 |  | K160 - QC 2.2 Checklist | 1d | 2027-05-22 | 2027-05-22 | ER-K160-780, ER-K160-800, DH160-ER-310 | 22d | 43d | DH1600 |  | HELIX |

| ID | WBS | Activity | Duration | Start | Finish | Predecessors | Complete | Planned start | Planned finish | Total float | Free float | QTS - Subcontractor | QTS - AREA | QTS - DC7 |
| --- | --- | --- | --- | --- | --- | --- | --- | --- | --- | --- | --- | --- | --- | --- |
|  | 12 | **FIRE STOPPING** |  | 2027-05-15 | 2027-05-21 |  |  |  |  |  |  |  |  |  |
| DH160-ER-300 |  | DH1600 // ER -Install Firestopping | 4d | 2027-05-15 | 2027-05-19 | DH150-ER-290, ER-E160-750 |  |  |  | 22d | 0d | HELIX | DH1600 |  |
| DH160-ER-310 |  | DH1600 // ER - Firestopping inspection | 2d | 2027-05-20 | 2027-05-21 | DH160-ER-300 |  |  |  | 22d | 0d | HELIX | DH1600 |  |
|  | 3 | **COMISSIONING BY OTHERS** |  | 2027-07-16 | 2027-10-27 |  |  |  |  |  |  |  |  |  |
| CX-DH160-160 |  | DH1600 L3 Cx electrical, Mechanical FLS | 40d | 2027-07-16 | 2027-08-31 | DC7.DH1600.MS.1020 |  |  |  | -21d | 0d | HELIX | DH1600 |  |
| CX-DH160-170 |  | DH1600 L4 CxA | 25d | 2027-09-01 | 2027-10-06 | CX-DH160-160 |  |  |  | -21d | 0d | HELIX | DH1600 |  |
| CX-DH160-180 |  | DH1600 L5 CxA IST | 15d | 2027-10-07 | 2027-10-27 | CX-DH160-170 |  |  |  | -21d | 0d | HELIX | DH1600 |  |
|  | 2 | **BOH** |  | 2026-09-25 | 2026-11-09 |  |  |  |  |  |  |  |  |  |
| BOH-010 |  | BOH - Wall framing (third party activity) | 1d | 2026-09-25 A | 2026-09-25 A | ADMIN.5576 (other project) | 100% |  |  |  |  |  | BOH | BB |
| BOH-020 |  | BOH - Layout and boxing | 5d | 2026-10-02 A | 2026-10-10 A | BOH-010, DC7.BOH.MS.1050 SS | 100% | 2026-10-13 | 2026-10-17 |  |  | HELIX | BOH |  |
| BOH-030 |  | BOH - M/C In wall rough in | 5d | 2026-10-02 A | 2026-10-10 A | BOH-020 | 100% | 2026-10-19 | 2026-10-23 |  |  | HELIX | BOH |  |
| BOH-040 |  | BOH - In wall finishes (tape mud, paint) third party activity | 1d | 2026-10-23 | 2026-10-23 | BOH-030 |  |  |  | -15d | 0d | HELIX | BOH |  |
| BOH-050 |  | BOH - Pipe Branch Circuit HSERP1B | 5d | 2026-10-24 | 2026-10-29 | BOH-040 |  |  |  | -15d | 0d | HELIX | BOH |  |
| BOH-060 |  | BOH - Pull Branch Circuit to HSERP1B | 5d | 2026-10-30 | 2026-11-04 | BOH-050 |  |  |  | -15d | 0d | HELIX | BOH |  |
| BOH-070 |  | BOH - Terminate Circuit / Install Devices - HSERP1B | 3d | 2026-11-05 | 2026-11-07 | BOH-060 |  |  |  | -15d | 0d | HELIX | BOH |  |
| BOH-080 |  | BOH- QC 2.2 Checklist | 1d | 2026-11-09 | 2026-11-09 | BOH-070 |  |  |  | -15d | 0d | HELIX | BOH |  |

## Activity codes

| Code | Value | Meaning |
| --- | --- | --- |
| QTS - AREA | BOH | Back of the House |
| QTS - AREA | DH1100 | Data Hall 1100 |
| QTS - AREA | DH1200 | Data Hall 1200 |
| QTS - AREA | DH1300 | Data Hall 1300 |
| QTS - AREA | DH1400 | Data Hall 1400 |
| QTS - AREA | DH1500 | Data Hall 1500 |
| QTS - AREA | DH1600 | Data Hall 1600 |
| QTS - AREA | FOH | Front of the House |
| QTS - DASH | ER | Electrical Rooms |
| QTS - DC7 | BB | Base Build |
| QTS - Subcontractor | HELIX | Helix Electric |

# [226021-012.00-00] QTS CDR1-DC7 DD07-24-26 (P6 File)

Schedule from Primavera P6, 2026-07-29 to 2027-02-16, data date 2026-07-24.

## Calendars

- Calendar 01 - 5 Day w/holidays (No Pats Day): Mon-Fri 08:00-12:00, 13:00-17:00; Sat-Sun off. Exceptions (off unless hours are given): 2026-09-07, 2026-10-12, 2026-11-11, 2026-11-26, 2026-12-25, 2027-01-01, 2027-01-18, 2027-02-15.

## Schedule

| WBS | Activity | Start | Finish |
| --- | --- | --- | --- |
| 1 | **Suffolk Milestones** |  |  |
| 7 | **Site & Shell** |  |  |
| 8 | **Interior Build-Out** |  |  |
| 7 | **FOH** |  |  |
| 8 | **BOH** |  |  |
| 2 | **DH1100** |  |  |
| 1 | **DH1200** |  |  |
| 3 | **DH1300** |  |  |
| 6 | **DH1400** |  |  |
| 5 | **DH1500** |  |  |
| 4 | **DH1600** |  |  |
| 9 | **Security & Fire Alarm Testing** |  |  |
| 2 | **Preconstruction** |  |  |
| 1 | **Trade Buyout** |  |  |
| 1 | **Sitework** |  |  |
| 2 | **Concrete** |  |  |
| 3 | **Structural Steel** |  |  |
| 4 | **Electrical** |  |  |
| 5 | **Mechanical / Plumbing** |  |  |
| 6 | **Fire Protection** |  |  |
| 7 | **Metal Panels** |  |  |
| 8 | **Waterproofing** |  |  |
| 9 | **Roofing** |  |  |
| 10 | **Doors Frames & Hardware** |  |  |
| 11 | **Painting** |  |  |
| 12 | **Fences & Gates** |  |  |
| 13 | **Landscaping** |  |  |
| 14 | **Security Systems** |  |  |
| 15 | **Data & Telecommunications** |  |  |
| 16 | **BMS & EPMS** |  |  |
| 17 | **Drywall & Ceilings** |  |  |
| 18 | **Tile, Carpet & Resilient Flooring** |  |  |
| 19 | **Misc Remaining Packages** |  |  |
| 2 | **Design Schedule (Owner/Architect)** |  |  |
| 3 | **Procurement** |  |  |
| 1 | **Trade Partners** |  |  |
| 1 | **Sitework** |  |  |
| 2 | **Concrete** |  |  |
| 3 | **Structural Steel** |  |  |
| 4 | **Electrical** |  |  |
| 1 | **Priority Release (Long Lead)** |  |  |
| 1 | **Buss Duct** |  |  |
| 2 | **Cable Buss** |  |  |
| 3 | **MV Cable** |  |  |
| 5 | **Mechanical Plumbing** |  |  |
| 6 | **Fire Protection** |  |  |
| 7 | **Metal Panels** |  |  |
| 8 | **Waterproofing** |  |  |
| 9 | **Roofing** |  |  |
| 10 | **Doors Frames & Hardware** |  |  |
| 11 | **Painting** |  |  |
| 12 | **Fences and Gates** |  |  |
| 13 | **Landscaping** |  |  |
| 14 | **Security Systems** |  |  |
| 15 | **Data & Telecommunications** |  |  |
| 16 | **BMS & EPMS** |  |  |
| 17 | **Tile, Carpet & Resilient Flooring** |  |  |
| 18 | **Misc Remaining Packages** |  |  |
| 5 | **BIM** |  |  |
| 1 | **MV Yard** |  |  |
| 2 | **Building** |  |  |
| 1 | **FOH** |  |  |
| 2 | **Data Hall 1100** |  |  |
| 3 | **Data Hall 1200** |  |  |
| 4 | **Data Hall 1300** |  |  |
| 5 | **Data Hall 1400** |  |  |
| 6 | **Data Hall 1500** |  |  |
| 7 | **Data Hall 1600** |  |  |
| 8 | **BOH** |  |  |
| 4 | **Construction** | 2026-07-29 | 2027-02-16 |

| WBS | Activity | Start | Finish |
| --- | --- | --- | --- |
| 2 | **Shell** |  |  |
| 4 | **Foundations** |  |  |
| 7 | **Column Line 0.1 - 0.3 - (FOH) A Through E** |  |  |
| 1 | **Column line 0.1 Through 1.9 (DH1100)** |  |  |
| 2 | **Column Line 2.1 Through 2.9 (DH1200)** |  |  |
| 3 | **Column Line 3.1 Through 3.9 (DH1300)** |  |  |
| 4 | **Column Line 4.1 Through 4.9 (DH1400)** |  |  |
| 5 | **Column Line 5.2 Through 5.9 (DH1500)** |  |  |
| 6 | **Column Line 6.1 Through 7.2 (DH1600)** |  |  |
| 8 | **Column Line 7.2 - (BOH) A Through E** |  |  |
| 5 | **Slab on Grade** |  |  |
| 1 | **FOH** |  |  |
| 2 | **DH1100** |  |  |
| 3 | **DH1200** |  |  |
| 4 | **DH1300** |  |  |
| 5 | **DH1400** |  |  |
| 6 | **DH1500** |  |  |
| 7 | **DH1600** |  |  |
| 8 | **BOH** |  |  |
| 3 | **Steel** |  |  |
| 7 | **Column Line 0.1 Through 1.0 (FOH)** |  |  |
| 1 | **Column line 1.1 Through 2.0 (DH1100)** |  |  |
| 2 | **Column Line 2.1 Through 3.0 (DH1200)** |  |  |
| 3 | **Column Line 3.1 Through 4.0 (DH1300)** |  |  |
| 4 | **Column Line 4.1 Through 5.0 (DH1400)** |  |  |
| 5 | **Column Line 5.2 Through 6.0 (DH1500)** |  |  |
| 6 | **Column Line 6.1 Through 7.0 (DH1600)** |  |  |
| 8 | **Column Line 7.1 Through 7.3 (BOH)** |  |  |
| 10 | **Roofing** |  |  |
| 1 | **FOH** |  |  |
| 2 | **DH1100** |  |  |
| 3 | **DH1200** |  |  |
| 4 | **DH1300** |  |  |
| 5 | **DH1400** |  |  |
| 6 | **DH1500** |  |  |
| 7 | **DH1600** |  |  |
| 8 | **BOH** |  |  |
| 9 | **IMPs** |  |  |
| 4 | **South (FOH)** |  |  |
| 1 | **East** |  |  |
| 1 | **Column line 0.1 Through 1.9 (DH1100)** |  |  |
| 2 | **Column Line 2.1 Through 2.9 (DH1200)** |  |  |
| 3 | **Column Line 3.1 Through 3.9 (DH1300)** |  |  |
| 4 | **Column Line 4.1 Through 4.9 (DH1400)** |  |  |
| 5 | **Column Line 5.2 Through 5.9 (DH1500)** |  |  |
| 6 | **Column Line 6.1 Through 7.2 (DH1600)** |  |  |
| 3 | **West** |  |  |
| 1 | **Column line 0.1 Through 1.9 (DH1100)** |  |  |
| 2 | **Column Line 2.1 Through 2.9 (DH1200)** |  |  |
| 3 | **Column Line 3.1 Through 3.9 (DH1300)** |  |  |
| 4 | **Column Line 4.1 Through 4.9 (DH1400)** |  |  |
| 5 | **Column Line 5.2 Through 5.9 (DH1500)** |  |  |
| 6 | **Column Line 6.1 Through 7.2 (DH1600)** |  |  |
| 2 | **North (BOH)** |  |  |
| 9 | **Interior Build-Outs** | 2026-07-29 | 2027-02-16 |
| 7 | **House Systems** | 2026-07-29 | 2026-09-22 |
| 2 | **Front of House (FOH)** | 2026-07-29 | 2026-08-25 |
| 16 | **Priority Walls** |  |  |
| 1 | **Priority Rooms** |  |  |
| 10 | **UPS. 0144** |  |  |
| 13 | **DCIM 1000A1** |  |  |
| 12 | **MMR1A1 . 1000A2** |  |  |
| 23 | **SDF 0154** |  |  |
| 15 | **House Elec .0142** |  |  |
| 21 | **Other Rooms** | 2026-07-29 | 2026-08-25 |
| 1 | **ELI . 0142** |  |  |
| 11 | **EF1R . 1000A3** |  |  |
| 9 | **Fire . 0140** |  |  |
| 14 | **Tenant Office 0115** |  |  |
| 2 | **Roof .0125** |  |  |

| ID | WBS | Activity | Duration | Start | Finish | Total float | Free float |
| --- | --- | --- | --- | --- | --- | --- | --- |
|  | 4 | **QTS Flex .0114** |  |  |  |  |  |
|  | 3 | **Restroom .M0111 / W 0110** |  |  |  |  |  |
|  | 5 | **Janitor 0109** |  |  |  |  |  |
|  | 6 | **Water 1000A4** |  |  |  |  |  |
|  | 7 | **Welness 0108** |  |  |  |  |  |
|  | 8 | **Corridor 0112 / Freedom Cafe 0105** |  |  |  |  |  |
|  | 16 | **Conference 0103** |  |  |  |  |  |
|  | 17 | **Conference 0102** |  |  |  |  |  |
|  | 18 | **Lobby 0101 / Vestibule 0100** |  | 2026-07-29 | 2026-08-25 |  |  |
| ADMIN.5305 |  | FOH/Lobby 0101 / Vestibule 0100 // Frame Walls | 3d | 2026-07-29 | 2026-07-31 | 53d | 0d |
| ADMIN.5309 |  | FOH/Lobby 0101 / Vestibule 0100 // MEPF Overhead Install | 10d | 2026-08-12 | 2026-08-25 | 53d | 0d |
|  | 19 | **Badging 0152** |  |  |  |  |  |
|  | 20 | **Security Vestibule 0130/0131** |  |  |  |  |  |
|  | 21 | **Security Office 0155** |  |  |  |  |  |
|  | 22 | **Security Suite 0150** |  |  |  |  |  |
|  | 24 | **Security Storage 0151** |  |  |  |  |  |
|  | 25 | **RR Dock 0163** |  |  |  |  |  |
|  | 26 | **Dock Storage 0162** |  |  |  |  |  |
|  | 27 | **Loading Dock 0160** |  |  |  |  |  |
|  | 28 | **Trash 0161** |  |  |  |  |  |
|  | 1 | **Equipment** |  |  |  |  |  |
|  | 2 | **Roof - RTUs** |  |  |  |  |  |
|  | 1 | **Column Lines 01 thru 1.1** |  |  |  |  |  |
|  | 1 | **Gen - XFMRs etc** |  |  |  |  |  |
|  | 2 | **Commissioning & Start Up** |  |  |  |  |  |
|  | 1 | **Back of House (BOH)** |  | 2026-09-18 | 2026-09-22 |  |  |
|  | 16 | **Priority Walls** |  |  |  |  |  |
|  | 1 | **Priority Rooms** |  |  |  |  |  |
|  | 15 | **House Elec 1000G15** |  |  |  |  |  |
|  | 10 | **UPS 1000G14** |  |  |  |  |  |
|  | 9 | **Fire 1000G12** |  |  |  |  |  |
|  | 3 | **MMR1B2** |  |  |  |  |  |
|  | 5 | **IDF 1000G7** |  |  |  |  |  |
|  | 21 | **Other Rooms** |  | 2026-09-18 | 2026-09-22 |  |  |
|  | 11 | **ELI 1000G13** |  |  |  |  |  |
|  | 12 | **Flex 1000G11** |  |  |  |  |  |
|  | 14 | **Roof 1000G10** |  |  |  |  |  |
|  | 13 | **Corridor 1000H** |  |  |  |  |  |
|  | 1 | **EF2R 1000G9** |  |  |  |  |  |
|  | 2 | **RR 1025B/1025C/1025D** |  |  |  |  |  |
|  | 3 | **Offices 1025E/1052F/1025G** |  |  |  |  |  |
|  | 4 | **Break 1025A** |  |  |  |  |  |
|  | 6 | **QTS Ops 1025** |  | 2026-09-18 | 2026-09-22 |  |  |
| ADMIN.5576 |  | BOH/QTS Ops 1025 // Frame Walls | 3d | 2026-09-18 | 2026-09-22 | 31d | 0d |

| ID | WBS | Activity | Type | Duration | Start | Finish | Total float | Free float | Constraint |
| --- | --- | --- | --- | --- | --- | --- | --- | --- | --- |
|  | 7 | **Conf. Room 1025H** |  |  |  |  |  |  |  |
|  | 16 | **Flex 1020** |  |  |  |  |  |  |  |
|  | 17 | **Loading Dock 1010** |  |  |  |  |  |  |  |
|  | 1 | **Equipment** |  |  |  |  |  |  |  |
|  | 2 | **Roof - RTUs** |  |  |  |  |  |  |  |
|  | 1 | **Column Lines 7.0 thru 7.3** |  |  |  |  |  |  |  |
|  | 1 | **Gens - XFMRs etc** |  |  |  |  |  |  |  |
|  | 2 | **Commissioning & Start Up** |  |  |  |  |  |  |  |
|  | 5 | **Data Hall 1100** |  |  | 2026-07-31 | 2026-09-14 |  |  |  |
|  | 10 | **Exterior Build Out** |  |  |  |  |  |  |  |
|  | 9 | **Electrical Yard** |  |  |  |  |  |  |  |
|  | 3 | **Electrical** |  |  |  |  |  |  |  |
|  | 1 | **Underground** |  |  |  |  |  |  |  |
|  | 1 | **Column Line 1 to 1.9** |  |  |  |  |  |  |  |
|  | 2 | **Column Line 1.0 - 1.9** |  |  |  |  |  |  |  |
|  | 2 | **Pads** |  |  |  |  |  |  |  |
|  | 3 | **Equipment** |  |  |  |  |  |  |  |
|  | 1 | **A110** |  |  |  |  |  |  |  |
|  | 2 | **B110** |  |  |  |  |  |  |  |
|  | 3 | **C110** |  |  |  |  |  |  |  |
|  | 4 | **D110** |  |  |  |  |  |  |  |
|  | 5 | **E110** |  |  |  |  |  |  |  |
|  | 6 | **F110** |  |  |  |  |  |  |  |
|  | 7 | **G110** |  |  |  |  |  |  |  |
|  | 8 | **H110** |  |  |  |  |  |  |  |
|  | 9 | **J110** |  |  |  |  |  |  |  |
|  | 10 | **K110** |  |  |  |  |  |  |  |
|  | 11 | **R110** |  |  |  |  |  |  |  |
|  | 1 | **Mechanical Yard** |  |  |  |  |  |  |  |
|  | 1 | **Pads** |  |  |  |  |  |  |  |
|  | 5 | **Equipment** |  |  |  |  |  |  |  |
|  | 1 | **A110** |  |  |  |  |  |  |  |
|  | 2 | **B110** |  |  |  |  |  |  |  |
|  | 3 | **C110** |  |  |  |  |  |  |  |
|  | 4 | **D110** |  |  |  |  |  |  |  |
|  | 5 | **E110** |  |  |  |  |  |  |  |
|  | 6 | **F110** |  |  |  |  |  |  |  |
|  | 7 | **G110** |  |  |  |  |  |  |  |
|  | 8 | **H110** |  |  |  |  |  |  |  |
|  | 9 | **J110** |  |  |  |  |  |  |  |
|  | 10 | **K110** |  |  |  |  |  |  |  |
|  | 11 | **R110** |  |  |  |  |  |  |  |
|  | 12 | **Test & Flushing** |  |  |  |  |  |  |  |
|  | 2 | **Electrical & Controls** |  |  |  |  |  |  |  |
|  | 2 | **Roof - RTUs** |  |  |  |  |  |  |  |
|  | 1 | **Column Lines 1.2 thru 2.0** |  |  |  |  |  |  |  |
|  | 1 | **Interior Build Out** |  |  | 2026-07-31 | 2026-09-14 |  |  |  |
|  | 9 | **Flex 1000A10** |  |  |  |  |  |  |  |
|  | 7 | **Electrical Room #5101** |  |  | 2026-09-02 | 2026-09-03 |  |  |  |
| ER.5101.3109 |  | DH100/Electrical Room #5101 // DH1100 - OFCI Skid Ship Date (08/31/26) First Shipment | milestone | 0d | 2026-09-02 | 2026-09-02 | 1d | 0d | finish on or after 2026-08-31 |
| ER.5101.1190 |  | DH100/Electrical Room #5101 // Set Skid - SKID-A110 |  | 1d | 2026-09-03 | 2026-09-03 | 1d | 0d |  |
| ER.5101.3036 |  | DH100/Electrical Room #5101 // Set Skid - SKID-B110 |  | 1d | 2026-09-03 | 2026-09-03 | 1d | 0d |  |
| ER.5101.3037 |  | DH100/Electrical Room #5101 // Set Skid - SKID-C110 |  | 1d | 2026-09-03 | 2026-09-03 | 1d | 0d |  |
| ER.5101.3038 |  | DH100/Electrical Room #5101 // Set Skid - SKID-D110 |  | 1d | 2026-09-03 | 2026-09-03 | 1d | 0d |  |
| ER.5101.3039 |  | DH100/Electrical Room #5101 // Set Skid - SKID-E110 |  | 1d | 2026-09-03 | 2026-09-03 | 1d | 0d |  |

| ID | WBS | Activity | Type | Duration | Start | Finish | Total float | Free float | Constraint |
| --- | --- | --- | --- | --- | --- | --- | --- | --- | --- |
|  | 2 | **Electrcal Room #5104** |  |  | 2026-09-08 | 2026-09-14 |  |  |  |
| ER.5101.3111 |  | DH100/Electrcal Room #5104 // DH1100 - OFCI Skid Ship Date (09/02/26) 2ND Shipment | milestone | 0d | 2026-09-08 | 2026-09-08 | -1d | 0d | finish on or after 2026-09-02 |
| ER.5101.3040 |  | DH100/Electrcal Room #5104 // Set Skid - SKID-F110 |  | 1d | 2026-09-09 | 2026-09-09 | -1d | 0d |  |
| ER.5101.3041 |  | DH100/Electrcal Room #5104 // Set Skid - SKID-G110 |  | 1d | 2026-09-09 | 2026-09-09 | -1d | 0d |  |
| ER.5101.3042 |  | DH100/Electrcal Room #5104 // Set Skid - SKID-H110 |  | 1d | 2026-09-10 | 2026-09-10 | -1d | 0d |  |
| ER.5101.3043 |  | DH100/Electrcal Room #5104 // Set Skid - SKID-J110 |  | 1d | 2026-09-11 | 2026-09-11 | -1d | 0d |  |
| ER.5101.3044 |  | DH100/Electrcal Room #5104 // Set Skid - SKID-K110 |  | 1d | 2026-09-14 | 2026-09-14 | -1d | 0d |  |
|  | 3 | **Data Hall 1100** |  |  |  |  |  |  |  |
|  | 15 | **PDU Gallery** |  |  | 2026-07-31 | 2026-09-04 |  |  |  |
| PDU.1100.1040 |  | DH1100/PDU Gallery // Frame walls |  | 5d | 2026-07-31 | 2026-08-06 | 18d | 0d |  |
| PDU.1100.1100 |  | DH1100/PDU Gallery // Paint walls |  | 2d | 2026-09-03 | 2026-09-04 | 18d | 0d |  |
|  | 14 | **CRAH/CDU Galleries** |  |  |  |  |  |  |  |
|  | 2 | **Gallery 1102** |  |  |  |  |  |  |  |
|  | 4 | **Architectural** |  |  |  |  |  |  |  |
|  | 16 | **Raceway** |  |  |  |  |  |  |  |
|  | 3 | **Equipment Line-Ups** |  |  |  |  |  |  |  |
|  | 1 | **A110** |  |  |  |  |  |  |  |
|  | 2 | **B110** |  |  |  |  |  |  |  |
|  | 3 | **C110** |  |  |  |  |  |  |  |
|  | 4 | **D110** |  |  |  |  |  |  |  |
|  | 5 | **E110** |  |  |  |  |  |  |  |
|  | 6 | **F110** |  |  |  |  |  |  |  |
|  | 7 | **G110** |  |  |  |  |  |  |  |
|  | 8 | **H110** |  |  |  |  |  |  |  |
|  | 9 | **J110** |  |  |  |  |  |  |  |
|  | 10 | **K110** |  |  |  |  |  |  |  |
|  | 11 | **R110** |  |  |  |  |  |  |  |
|  | 12 | **Equipment Connections** |  |  |  |  |  |  |  |
|  | 1 | **CRAH** |  |  |  |  |  |  |  |
|  | 2 | **CDU** |  |  |  |  |  |  |  |
|  | 3 | **MOD** |  |  |  |  |  |  |  |
|  | 4 | **Gallery 1103** |  |  |  |  |  |  |  |
|  | 1 | **Architectural** |  |  |  |  |  |  |  |
|  | 16 | **Raceway** |  |  |  |  |  |  |  |
|  | 3 | **Equipment Line-Ups** |  |  |  |  |  |  |  |
|  | 1 | **A110** |  |  |  |  |  |  |  |
|  | 2 | **B110** |  |  |  |  |  |  |  |
|  | 3 | **C110** |  |  |  |  |  |  |  |
|  | 4 | **D110** |  |  |  |  |  |  |  |
|  | 5 | **E110** |  |  |  |  |  |  |  |
|  | 6 | **F110** |  |  |  |  |  |  |  |
|  | 7 | **G110** |  |  |  |  |  |  |  |
|  | 8 | **H110** |  |  |  |  |  |  |  |
|  | 9 | **J110** |  |  |  |  |  |  |  |
|  | 10 | **K110** |  |  |  |  |  |  |  |
|  | 11 | **R110** |  |  |  |  |  |  |  |
|  | 12 | **Equipment Connections** |  |  |  |  |  |  |  |
|  | 1 | **CRAH** |  |  |  |  |  |  |  |
|  | 2 | **CDU** |  |  |  |  |  |  |  |
|  | 3 | **MOD** |  |  |  |  |  |  |  |
|  | 6 | **Corridors** |  |  |  |  |  |  |  |
|  | 1 | **Corridor 1000A** |  |  |  |  |  |  |  |
|  | 3 | **Corridor 1000** |  |  |  |  |  |  |  |
|  | 2 | **Corridor 1000B** |  |  |  |  |  |  |  |
|  | 10 | **Flex 1000B1** |  |  |  |  |  |  |  |
|  | 11 | **IDF 1000C2** |  |  |  |  |  |  |  |
|  | 12 | **Preaction 1000B3** |  |  |  |  |  |  |  |
|  | 13 | **Restroom-Dock & Janitor** |  |  |  |  |  |  |  |
|  | 2 | **Commissioning & Start Up** |  |  |  |  |  |  |  |
|  | 5 | **Data Hall IST Readiness** |  |  |  |  |  |  |  |
|  | 5 | **Level 6 — Enclosure Gate** |  |  |  |  |  |  |  |
|  | 2 | **Level 5 — Construction Complete (White Space)** |  |  |  |  |  |  |  |
|  | 3 | **Level 4 — Equipment Installed & Available** |  |  |  |  |  |  |  |
|  | 6 | **Level 3 — Startup / Pre-Functional Testing** |  |  |  |  |  |  |  |
|  | 1 | **Level 2 — Readiness Gate** |  |  |  |  |  |  |  |
|  | 4 | **Level 1 — IST Target** |  |  |  |  |  |  |  |
|  | 1 | **Energization & L3 Prefunctional Testing** |  |  |  |  |  |  |  |
|  | 2 | **L4 Function Testing** |  |  |  |  |  |  |  |
|  | 3 | **L5 Integrated System Testing (IST)** |  |  |  |  |  |  |  |
|  | 1 | **Data Hall 1300** |  |  | 2026-08-12 | 2026-11-09 |  |  |  |

| ID | WBS | Activity | Type | Duration | Start | Finish | Total float | Free float | Constraint |
| --- | --- | --- | --- | --- | --- | --- | --- | --- | --- |
|  | 10 | **Exterior Build Out** |  |  |  |  |  |  |  |
|  | 9 | **Electrical Yard** |  |  |  |  |  |  |  |
|  | 3 | **Electrical** |  |  |  |  |  |  |  |
|  | 1 | **Underground** |  |  |  |  |  |  |  |
|  | 1 | **Column Line 3.0 - 3.9** |  |  |  |  |  |  |  |
|  | 2 | **Column - Line 3.0 - 3.9** |  |  |  |  |  |  |  |
|  | 2 | **Pads** |  |  |  |  |  |  |  |
|  | 3 | **Equipment** |  |  |  |  |  |  |  |
|  | 1 | **A130** |  |  |  |  |  |  |  |
|  | 2 | **B130** |  |  |  |  |  |  |  |
|  | 3 | **C130** |  |  |  |  |  |  |  |
|  | 4 | **D130** |  |  |  |  |  |  |  |
|  | 5 | **E130** |  |  |  |  |  |  |  |
|  | 6 | **F130** |  |  |  |  |  |  |  |
|  | 7 | **G130** |  |  |  |  |  |  |  |
|  | 8 | **H130** |  |  |  |  |  |  |  |
|  | 9 | **J130** |  |  |  |  |  |  |  |
|  | 10 | **K130** |  |  |  |  |  |  |  |
|  | 11 | **R130** |  |  |  |  |  |  |  |
|  | 1 | **Mechanical Yard** |  |  |  |  |  |  |  |
|  | 1 | **Pads** |  |  |  |  |  |  |  |
|  | 5 | **Equipment** |  |  |  |  |  |  |  |
|  | 1 | **A130** |  |  |  |  |  |  |  |
|  | 2 | **B130** |  |  |  |  |  |  |  |
|  | 3 | **C130** |  |  |  |  |  |  |  |
|  | 4 | **D130** |  |  |  |  |  |  |  |
|  | 5 | **E130** |  |  |  |  |  |  |  |
|  | 6 | **F130** |  |  |  |  |  |  |  |
|  | 7 | **G130** |  |  |  |  |  |  |  |
|  | 8 | **H130** |  |  |  |  |  |  |  |
|  | 9 | **J130** |  |  |  |  |  |  |  |
|  | 10 | **K130** |  |  |  |  |  |  |  |
|  | 11 | **R130** |  |  |  |  |  |  |  |
|  | 12 | **Test & Flushing** |  |  |  |  |  |  |  |
|  | 2 | **Electrical & Controls** |  |  |  |  |  |  |  |
|  | 2 | **Roof - RTUs** |  |  |  |  |  |  |  |
|  | 1 | **Column Lines 1.2 thru 2.0** |  |  |  |  |  |  |  |
|  | 1 | **Interior Build Out** |  |  | 2026-08-12 | 2026-11-09 |  |  |  |
|  | 9 | **Flex 1000C10** |  |  |  |  |  |  |  |
|  | 7 | **Electrical Room #5301** |  |  | 2026-11-02 | 2026-11-03 |  |  |  |
| DH.1300.3069 |  | DH1300/Electrical Room #5301 // DH1300 - OFCI Skid Ship Date (11/2/2026) First Shipment | milestone | 0d | 2026-11-02 | 2026-11-02 | 3.88d | 0d | finish on or after 2026-11-02 |
| ER.5101.3055 |  | DH1300/Electrical Room #5301 // Set Skid - SKID-A130 |  | 1d | 2026-11-03 | 2026-11-03 | 3.88d | 0d |  |
| ER.5101.3056 |  | DH1300/Electrical Room #5301 // Set Skid - SKID-B130 |  | 1d | 2026-11-03 | 2026-11-03 | 3.88d | 0d |  |
| ER.5101.3057 |  | DH1300/Electrical Room #5301 // Set Skid - SKID-C130 |  | 1d | 2026-11-03 | 2026-11-03 | 3.88d | 0d |  |
| ER.5101.3058 |  | DH1300/Electrical Room #5301 // Set Skid - SKID-D130 |  | 1d | 2026-11-03 | 2026-11-03 | 3.88d | 0d |  |
| ER.5101.3059 |  | DH1300/Electrical Room #5301 // Set Skid - SKID-E130 |  | 1d | 2026-11-03 | 2026-11-03 | 3.88d | 0d |  |

| ID | WBS | Activity | Type | Duration | Start | Finish | Total float | Free float | Constraint |
| --- | --- | --- | --- | --- | --- | --- | --- | --- | --- |
|  | 2 | **Electrcal Room #5304** |  |  | 2026-11-09 | 2026-11-09 |  |  |  |
| DH.1300.3071 |  | DH1300/Electrical Room #5304 // DH1300 - OFCI Skid Ship Date (11/7/2026) 2ND Shipment | milestone | 0d | 2026-11-09 | 2026-11-09 | -0.12d | 0d | finish on or after 2026-11-07 |
| ER.5101.3060 |  | DH1300/Electrical Room #5304 // Set Skid - SKID-F130 |  | 1d | 2026-11-09 | 2026-11-09 | -0.12d | 0d |  |
| ER.5101.3061 |  | DH1300/Electrical Room #5304 // Set Skid - SKID-G130 |  | 1d | 2026-11-09 | 2026-11-09 | -0.12d | 0d |  |
| ER.5101.3062 |  | DH1300/Electrical Room #5304 // Set Skid - SKID-H130 |  | 1d | 2026-11-09 | 2026-11-09 | -0.12d | 0d |  |
| ER.5101.3063 |  | DH1300/Electrical Room #5304 // Set Skid - SKID-J130 |  | 1d | 2026-11-09 | 2026-11-09 | -0.12d | 0d |  |
| ER.5101.3064 |  | DH1300/Electrical Room #5304 // Set Skid - SKID-K130 |  | 1d | 2026-11-09 | 2026-11-09 | -0.12d | 0d |  |
|  | 3 | **Data Hall 1300** |  |  |  |  |  |  |  |
|  | 15 | **PDU Gallery** |  |  | 2026-08-12 | 2026-09-03 |  |  |  |
| DH.13000.1040 |  | DH1300/PDU Gallery // Frame walls |  | 5d | 2026-08-12 | 2026-08-18 | 16.88d | 0d |  |
| DH.13000.1100 |  | DH1300/PDU Gallery // Paint walls |  | 2d | 2026-09-02 | 2026-09-03 | 68.88d | 0d |  |
|  | 14 | **CRAH/CDU Galleries** |  |  |  |  |  |  |  |
|  | 2 | **Gallery 1302** |  |  |  |  |  |  |  |
|  | 4 | **Architectural** |  |  |  |  |  |  |  |
|  | 16 | **Raceway** |  |  |  |  |  |  |  |
|  | 3 | **Equipment Line-Ups** |  |  |  |  |  |  |  |
|  | 1 | **A130** |  |  |  |  |  |  |  |
|  | 2 | **B130** |  |  |  |  |  |  |  |
|  | 3 | **C130** |  |  |  |  |  |  |  |
|  | 4 | **D130** |  |  |  |  |  |  |  |
|  | 5 | **E130** |  |  |  |  |  |  |  |
|  | 6 | **F130** |  |  |  |  |  |  |  |
|  | 7 | **G130** |  |  |  |  |  |  |  |
|  | 8 | **H130** |  |  |  |  |  |  |  |
|  | 9 | **J130** |  |  |  |  |  |  |  |
|  | 10 | **K130** |  |  |  |  |  |  |  |
|  | 11 | **R130** |  |  |  |  |  |  |  |
|  | 12 | **Equipment Connections** |  |  |  |  |  |  |  |
|  | 1 | **CRAH** |  |  |  |  |  |  |  |
|  | 2 | **CDU** |  |  |  |  |  |  |  |
|  | 3 | **MOD** |  |  |  |  |  |  |  |
|  | 4 | **Gallery 1303** |  |  |  |  |  |  |  |
|  | 1 | **Architectural** |  |  |  |  |  |  |  |
|  | 16 | **Raceway** |  |  |  |  |  |  |  |
|  | 3 | **Equipment Line-Ups** |  |  |  |  |  |  |  |
|  | 1 | **A130** |  |  |  |  |  |  |  |
|  | 2 | **B130** |  |  |  |  |  |  |  |
|  | 3 | **C130** |  |  |  |  |  |  |  |
|  | 4 | **D130** |  |  |  |  |  |  |  |
|  | 5 | **E130** |  |  |  |  |  |  |  |
|  | 6 | **F130** |  |  |  |  |  |  |  |
|  | 7 | **G130** |  |  |  |  |  |  |  |
|  | 8 | **H130** |  |  |  |  |  |  |  |
|  | 9 | **J130** |  |  |  |  |  |  |  |
|  | 10 | **K130** |  |  |  |  |  |  |  |
|  | 11 | **R130** |  |  |  |  |  |  |  |
|  | 12 | **Equipment Connections** |  |  |  |  |  |  |  |
|  | 1 | **CRAH** |  |  |  |  |  |  |  |
|  | 2 | **CDU** |  |  |  |  |  |  |  |
|  | 3 | **MOD** |  |  |  |  |  |  |  |
|  | 6 | **Corridors** |  |  |  |  |  |  |  |
|  | 1 | **Corridor 1000A** |  |  |  |  |  |  |  |
|  | 3 | **Corridor 1000** |  |  |  |  |  |  |  |
|  | 2 | **Corridor 1000D** |  |  |  |  |  |  |  |
|  | 10 | **Flex 1000D1** |  |  |  |  |  |  |  |
|  | 1 | **Loading Dock 1030 - NO LOADING DOCK** |  |  |  |  |  |  |  |
|  | 11 | **IDF 1000D2** |  |  |  |  |  |  |  |
|  | 12 | **Preaction 1000D3** |  |  |  |  |  |  |  |
|  | 13 | **Restroom-Dock & Janitor** |  |  |  |  |  |  |  |
|  | 2 | **Commissioning & Start Up** |  |  |  |  |  |  |  |
|  | 5 | **Data Hall IST Readiness** |  |  |  |  |  |  |  |
|  | 5 | **Level 6 — Enclosure Gate** |  |  |  |  |  |  |  |
|  | 2 | **Level 5 — Construction Complete (White Space)** |  |  |  |  |  |  |  |
|  | 3 | **Level 4 — Equipment Installed & Available** |  |  |  |  |  |  |  |
|  | 6 | **Level 3 — Startup / Pre-Functional Testing** |  |  |  |  |  |  |  |
|  | 1 | **Level 2 — Readiness Gate** |  |  |  |  |  |  |  |
|  | 4 | **Level 1 — IST Target** |  |  |  |  |  |  |  |
|  | 1 | **Energization & L3 Prefunctional Testing** |  |  |  |  |  |  |  |
|  | 2 | **L4 Function Testing** |  |  |  |  |  |  |  |
|  | 3 | **L5 Integrated System Testing (IST)** |  |  |  |  |  |  |  |

| ID | WBS | Activity | Type | Duration | Start | Finish | Total float | Free float | Constraint |
| --- | --- | --- | --- | --- | --- | --- | --- | --- | --- |
|  | 2 | **Data Hall 1500** |  |  | 2026-09-04 | 2027-01-15 |  |  |  |
|  | 10 | **Exterior Build Out** |  |  |  |  |  |  |  |
|  | 9 | **Electrical Yard** |  |  |  |  |  |  |  |
|  | 3 | **Electrical** |  |  |  |  |  |  |  |
|  | 1 | **Underground** |  |  |  |  |  |  |  |
|  | 1 | **Column Line 5.0 - 5.9** |  |  |  |  |  |  |  |
|  | 2 | **Column-Line 5.0 - 5.9** |  |  |  |  |  |  |  |
|  | 2 | **Pads** |  |  |  |  |  |  |  |
|  | 3 | **Equipment** |  |  |  |  |  |  |  |
|  | 1 | **A150** |  |  |  |  |  |  |  |
|  | 2 | **B150** |  |  |  |  |  |  |  |
|  | 3 | **C150** |  |  |  |  |  |  |  |
|  | 4 | **D150** |  |  |  |  |  |  |  |
|  | 5 | **E150** |  |  |  |  |  |  |  |
|  | 6 | **F150** |  |  |  |  |  |  |  |
|  | 7 | **G150** |  |  |  |  |  |  |  |
|  | 8 | **H150** |  |  |  |  |  |  |  |
|  | 9 | **J150** |  |  |  |  |  |  |  |
|  | 10 | **K150** |  |  |  |  |  |  |  |
|  | 11 | **R150** |  |  |  |  |  |  |  |
|  | 1 | **Mechanical Yard** |  |  |  |  |  |  |  |
|  | 1 | **Pads** |  |  |  |  |  |  |  |
|  | 5 | **Equipment** |  |  |  |  |  |  |  |
|  | 1 | **A150** |  |  |  |  |  |  |  |
|  | 2 | **B150** |  |  |  |  |  |  |  |
|  | 3 | **C150** |  |  |  |  |  |  |  |
|  | 4 | **D150** |  |  |  |  |  |  |  |
|  | 5 | **E150** |  |  |  |  |  |  |  |
|  | 6 | **F150** |  |  |  |  |  |  |  |
|  | 7 | **G150** |  |  |  |  |  |  |  |
|  | 8 | **H150** |  |  |  |  |  |  |  |
|  | 9 | **J150** |  |  |  |  |  |  |  |
|  | 10 | **K150** |  |  |  |  |  |  |  |
|  | 11 | **R150** |  |  |  |  |  |  |  |
|  | 12 | **Test & Flushing** |  |  |  |  |  |  |  |
|  | 2 | **Electrical & Controls** |  |  |  |  |  |  |  |
|  | 2 | **Roof - RTUs** |  |  |  |  |  |  |  |
|  | 1 | **Column Lines 1.2 thru 2.0** |  |  |  |  |  |  |  |
|  | 1 | **Interior Build Out** |  |  | 2026-09-04 | 2027-01-15 |  |  |  |
|  | 9 | **Flex 1000E10** |  |  |  |  |  |  |  |
|  | 7 | **Electrical Room #5501** |  |  | 2027-01-04 | 2027-01-08 |  |  |  |
| ER.5101.3110 |  | DH1500/Electrical Room #5501 // DH1500 - OFCI Skid Ship Date (01/04/2027) First Shipment | milestone | 0d | 2027-01-04 | 2027-01-04 | -0.12d | 0d | finish on or after 2027-01-04 |
| ER.5101.3075 |  | DH1500/Electrical Room #5501 // Set Skid - SKID-A150 |  | 1d | 2027-01-05 | 2027-01-05 | -0.12d | 0d |  |
| ER.5101.3076 |  | DH1500/Electrical Room #5501 // Set Skid - SKID-B150 |  | 1d | 2027-01-05 | 2027-01-05 | -0.12d | 0d |  |
| ER.5101.3077 |  | DH1500/Electrical Room #5501 // Set Skid - SKID-C150 |  | 1d | 2027-01-06 | 2027-01-06 | -0.12d | 0d |  |
| ER.5101.3078 |  | DH1500/Electrical Room #5501 // Set Skid - SKID-D150 |  | 1d | 2027-01-07 | 2027-01-07 | -0.12d | 0d |  |
| ER.5101.3079 |  | DH1500/Electrical Room #5501 // Set Skid - SKID-E150 |  | 1d | 2027-01-08 | 2027-01-08 | -0.12d | 0d |  |

| ID | WBS | Activity | Type | Duration | Start | Finish | Total float | Free float | Constraint |
| --- | --- | --- | --- | --- | --- | --- | --- | --- | --- |
|  | 2 | **Electrcal Room #5504** |  |  | 2027-01-11 | 2027-01-15 |  |  |  |
| ER.5101.3080 |  | DH1500/Electrical Room #5504 // Set Skid - SKID-F150 |  | 1d | 2027-01-11 | 2027-01-11 | -0.12d | 0d |  |
| ER.5101.3112 |  | DH1500/Electrical Room #5504 // DH1500 - OFCI Skid Ship Date (01/09/2027) 2ND Shipment | milestone | 0d | 2027-01-11 | 2027-01-11 | -0.12d | 0d | finish on or after 2027-01-09 |
| ER.5101.3081 |  | DH1500/Electrical Room #5504 // Set Skid - SKID-G150 |  | 1d | 2027-01-12 | 2027-01-12 | -0.12d | 0d |  |
| ER.5101.3082 |  | DH1500/Electrical Room #5504 // Set Skid - SKID-H150 |  | 1d | 2027-01-13 | 2027-01-13 | -0.12d | 0d |  |
| ER.5101.3083 |  | DH1500/Electrical Room #5504 // Set Skid - SKID-J150 |  | 1d | 2027-01-14 | 2027-01-14 | -0.12d | 0d |  |
| ER.5101.3084 |  | DH1500/Electrical Room #5504 // Set Skid - SKID-K150 |  | 1d | 2027-01-15 | 2027-01-15 | -0.12d | 0d |  |
|  | 3 | **Data Hall 1500** |  |  |  |  |  |  |  |
|  | 15 | **PDU Gallery** |  |  | 2026-09-04 | 2026-10-16 |  |  |  |
| DH.15000.1040 |  | DH1500/PDU Gallery // Frame walls |  | 5d | 2026-09-04 | 2026-09-11 | 87.88d | 8d |  |
| DH.15000.1100 |  | DH1500/PDU Gallery // Paint walls |  | 2d | 2026-10-15 | 2026-10-16 | 82.88d | 0d |  |
|  | 14 | **CRAH/CDU Galleries** |  |  |  |  |  |  |  |
|  | 2 | **Gallery 1502** |  |  |  |  |  |  |  |
|  | 4 | **Architectural** |  |  |  |  |  |  |  |
|  | 16 | **Raceway** |  |  |  |  |  |  |  |
|  | 3 | **Equipment Line-Ups** |  |  |  |  |  |  |  |
|  | 1 | **A150** |  |  |  |  |  |  |  |
|  | 2 | **B150** |  |  |  |  |  |  |  |
|  | 3 | **C150** |  |  |  |  |  |  |  |
|  | 4 | **D150** |  |  |  |  |  |  |  |
|  | 5 | **E150** |  |  |  |  |  |  |  |
|  | 6 | **F150** |  |  |  |  |  |  |  |
|  | 7 | **G150** |  |  |  |  |  |  |  |
|  | 8 | **H150** |  |  |  |  |  |  |  |
|  | 9 | **J150** |  |  |  |  |  |  |  |
|  | 10 | **K150** |  |  |  |  |  |  |  |
|  | 11 | **R150** |  |  |  |  |  |  |  |
|  | 12 | **Equipment Connections** |  |  |  |  |  |  |  |
|  | 1 | **CRAH** |  |  |  |  |  |  |  |
|  | 2 | **CDU** |  |  |  |  |  |  |  |
|  | 3 | **MOD** |  |  |  |  |  |  |  |
|  | 4 | **Gallery 1503** |  |  |  |  |  |  |  |
|  | 1 | **Architectural** |  |  |  |  |  |  |  |
|  | 16 | **Raceway** |  |  |  |  |  |  |  |
|  | 3 | **Equipment Line-Ups** |  |  |  |  |  |  |  |
|  | 1 | **A150** |  |  |  |  |  |  |  |
|  | 2 | **B150** |  |  |  |  |  |  |  |
|  | 3 | **C150** |  |  |  |  |  |  |  |
|  | 4 | **D150** |  |  |  |  |  |  |  |
|  | 5 | **E150** |  |  |  |  |  |  |  |
|  | 6 | **F150** |  |  |  |  |  |  |  |
|  | 7 | **G150** |  |  |  |  |  |  |  |
|  | 8 | **H150** |  |  |  |  |  |  |  |
|  | 9 | **J150** |  |  |  |  |  |  |  |
|  | 10 | **K150** |  |  |  |  |  |  |  |
|  | 11 | **R150** |  |  |  |  |  |  |  |
|  | 12 | **Equipment Connections** |  |  |  |  |  |  |  |
|  | 1 | **CRAH** |  |  |  |  |  |  |  |
|  | 2 | **CDU** |  |  |  |  |  |  |  |
|  | 3 | **MOD** |  |  |  |  |  |  |  |
|  | 6 | **Corridors** |  |  |  |  |  |  |  |
|  | 1 | **Corridor 1000A (No apply)** |  |  |  |  |  |  |  |
|  | 3 | **Corridor 1000** |  |  |  |  |  |  |  |
|  | 2 | **Corridor 1000F** |  |  |  |  |  |  |  |
|  | 10 | **Flex 1000F1** |  |  |  |  |  |  |  |
|  | 11 | **IDF 1000F2 (Missing Activities)** |  |  |  |  |  |  |  |
|  | 1 | **Loading Dock 1050 (No apply)** |  |  |  |  |  |  |  |
|  | 12 | **Preaction 1000F3 (Missing Activities)** |  |  |  |  |  |  |  |
|  | 13 | **Restroom-Dock & Janitor** |  |  |  |  |  |  |  |
|  | 2 | **Commissioning & Start Up** |  |  |  |  |  |  |  |
|  | 5 | **Data Hall IST Readiness** |  |  |  |  |  |  |  |
|  | 5 | **Level 6 — Enclosure Gate** |  |  |  |  |  |  |  |
|  | 2 | **Level 5 — Construction Complete (White Space)** |  |  |  |  |  |  |  |
|  | 3 | **Level 4 — Equipment Installed & Available** |  |  |  |  |  |  |  |
|  | 6 | **Level 3 — Startup / Pre-Functional Testing** |  |  |  |  |  |  |  |
|  | 1 | **Level 2 — Readiness Gate** |  |  |  |  |  |  |  |
|  | 4 | **Level 1 — IST Target** |  |  |  |  |  |  |  |
|  | 1 | **Energization & L3 Prefunctional Testing** |  |  |  |  |  |  |  |
|  | 2 | **L4 Function Testing** |  |  |  |  |  |  |  |
|  | 3 | **L5 Integrated System Testing (IST)** |  |  |  |  |  |  |  |

| ID | WBS | Activity | Type | Duration | Start | Finish | Total float | Free float | Constraint |
| --- | --- | --- | --- | --- | --- | --- | --- | --- | --- |
|  | 3 | **Data Hall 1200** |  |  | 2026-08-17 | 2026-10-13 |  |  |  |
|  | 10 | **Exterior Build Out** |  |  |  |  |  |  |  |
|  | 9 | **Electrical Yard** |  |  |  |  |  |  |  |
|  | 3 | **Electrical** |  |  |  |  |  |  |  |
|  | 1 | **Underground** |  |  |  |  |  |  |  |
|  | 1 | **Column Line 2.0-2.9** |  |  |  |  |  |  |  |
|  | 2 | **Column Line 2.0 - 2.9** |  |  |  |  |  |  |  |
|  | 2 | **Pads** |  |  |  |  |  |  |  |
|  | 3 | **Equipment** |  |  |  |  |  |  |  |
|  | 1 | **A120** |  |  |  |  |  |  |  |
|  | 2 | **B120** |  |  |  |  |  |  |  |
|  | 3 | **C120** |  |  |  |  |  |  |  |
|  | 4 | **D120** |  |  |  |  |  |  |  |
|  | 5 | **E120** |  |  |  |  |  |  |  |
|  | 6 | **F120** |  |  |  |  |  |  |  |
|  | 7 | **G120** |  |  |  |  |  |  |  |
|  | 8 | **H120** |  |  |  |  |  |  |  |
|  | 9 | **J120** |  |  |  |  |  |  |  |
|  | 10 | **K120** |  |  |  |  |  |  |  |
|  | 11 | **R120** |  |  |  |  |  |  |  |
|  | 1 | **Mechanical Yard** |  |  |  |  |  |  |  |
|  | 1 | **Pads** |  |  |  |  |  |  |  |
|  | 5 | **Equipment** |  |  |  |  |  |  |  |
|  | 1 | **A120** |  |  |  |  |  |  |  |
|  | 2 | **B120** |  |  |  |  |  |  |  |
|  | 3 | **C120** |  |  |  |  |  |  |  |
|  | 4 | **D120** |  |  |  |  |  |  |  |
|  | 5 | **E120** |  |  |  |  |  |  |  |
|  | 6 | **F120** |  |  |  |  |  |  |  |
|  | 7 | **G120** |  |  |  |  |  |  |  |
|  | 8 | **H120** |  |  |  |  |  |  |  |
|  | 9 | **J120** |  |  |  |  |  |  |  |
|  | 10 | **K120** |  |  |  |  |  |  |  |
|  | 11 | **R120** |  |  |  |  |  |  |  |
|  | 12 | **Test & Flushing** |  |  |  |  |  |  |  |
|  | 2 | **Electrical & Controls** |  |  |  |  |  |  |  |
|  | 2 | **Roof - RTUs** |  |  |  |  |  |  |  |
|  | 1 | **Column Lines 1.2 thru 2.0** |  |  |  |  |  |  |  |
|  | 1 | **Interior Build Out** |  |  | 2026-08-17 | 2026-10-13 |  |  |  |
|  | 9 | **Flex 1000B10** |  |  |  |  |  |  |  |
|  | 7 | **Electrical Room #5201** |  |  | 2026-09-30 | 2026-10-05 |  |  |  |
| B120001.3219 |  | DH1200/Electrical Room #5201 // DH1200 - OFCI Skid Ship Date (09/30/2026) First Shipment | milestone | 0d | 2026-09-30 | 2026-09-30 | 11.88d | 0d | finish on or after 2026-09-30 |
| ER.5101.3045 |  | DH1200/Electrical Room #5201 // Set Skid - SKID-A120 |  | 1d | 2026-10-01 | 2026-10-01 | 11.88d | 0d |  |
| ER.5101.3046 |  | DH1200/Electrical Room #5201 // Set Skid - SKID-B120 |  | 1d | 2026-10-02 | 2026-10-02 | 11.88d | 0d |  |
| ER.5101.3047 |  | DH1200/Electrical Room #5201 // Set Skid - SKID-C120 |  | 1d | 2026-10-05 | 2026-10-05 | 11.88d | 0d |  |
| ER.5101.3048 |  | DH1200/Electrical Room #5201 // Set Skid - SKID-D120 |  | 1d | 2026-10-05 | 2026-10-05 | 11.88d | 0d |  |
| ER.5101.3049 |  | DH1200/Electrical Room #5201 // Set Skid - SKID-E120 |  | 1d | 2026-10-05 | 2026-10-05 | 11.88d | 0d |  |

| ID | WBS | Activity | Type | Duration | Start | Finish | Total float | Free float | Constraint |
| --- | --- | --- | --- | --- | --- | --- | --- | --- | --- |
|  | 2 | **Electrcal Room #5204** |  |  | 2026-10-06 | 2026-10-13 |  |  |  |
| B120001.3220 |  | DH1200/Electrical Room #5204 // DH1200 - OFCI Skid Ship Date (10/06/2026) 2ND Shipment | milestone | 0d | 2026-10-06 | 2026-10-06 | 10.88d | 0d | finish on or after 2026-10-06 |
| ER.5101.3050 |  | DH1200/Electrical Room #5204 // Set Skid - SKID-F120 |  | 1d | 2026-10-07 | 2026-10-07 | 10.88d | 0d |  |
| ER.5101.3051 |  | DH1200/Electrical Room #5204 // Set Skid - SKID-G120 |  | 1d | 2026-10-07 | 2026-10-07 | 10.88d | 0d |  |
| ER.5101.3052 |  | DH1200/Electrical Room #5204 // Set Skid - SKID-H120 |  | 1d | 2026-10-08 | 2026-10-08 | 10.88d | 0d |  |
| ER.5101.3053 |  | DH1200/Electrical Room #5204 // Set Skid - SKID-J120 |  | 1d | 2026-10-09 | 2026-10-09 | 10.88d | 0d |  |
| ER.5101.3054 |  | DH1200/Electrical Room #5204 // Set Skid - SKID-K120 |  | 1d | 2026-10-13 | 2026-10-13 | 10.88d | 0d |  |
|  | 3 | **Data Hall 1200** |  |  |  |  |  |  |  |
|  | 15 | **PDU Gallery** |  |  | 2026-08-17 | 2026-09-29 |  |  |  |
| B1200100.1040 |  | DH1200/PDU Gallery // Frame walls |  | 5d | 2026-08-17 | 2026-08-21 | 32.88d | 0d |  |
| B1200100.1100 |  | DH1200/PDU Gallery // Paint walls |  | 2d | 2026-09-28 | 2026-09-29 | 32.88d | 0d |  |
|  | 14 | **CRAH/CDU Galleries** |  |  |  |  |  |  |  |
|  | 2 | **Gallery 1202** |  |  |  |  |  |  |  |
|  | 4 | **Architectural** |  |  |  |  |  |  |  |
|  | 16 | **Raceway** |  |  |  |  |  |  |  |
|  | 3 | **Equipment Line-Ups** |  |  |  |  |  |  |  |
|  | 1 | **A120** |  |  |  |  |  |  |  |
|  | 2 | **B120** |  |  |  |  |  |  |  |
|  | 3 | **C120** |  |  |  |  |  |  |  |
|  | 4 | **D120** |  |  |  |  |  |  |  |
|  | 5 | **E120** |  |  |  |  |  |  |  |
|  | 6 | **F120** |  |  |  |  |  |  |  |
|  | 7 | **G120** |  |  |  |  |  |  |  |
|  | 8 | **H120** |  |  |  |  |  |  |  |
|  | 9 | **J120** |  |  |  |  |  |  |  |
|  | 10 | **K120** |  |  |  |  |  |  |  |
|  | 11 | **R120** |  |  |  |  |  |  |  |
|  | 12 | **Equipment Connections** |  |  |  |  |  |  |  |
|  | 1 | **CRAH** |  |  |  |  |  |  |  |
|  | 2 | **CDU** |  |  |  |  |  |  |  |
|  | 3 | **MOD** |  |  |  |  |  |  |  |
|  | 4 | **Gallery 1203** |  |  |  |  |  |  |  |
|  | 1 | **Architectural** |  |  |  |  |  |  |  |
|  | 16 | **Raceway** |  |  |  |  |  |  |  |
|  | 3 | **Equipment Line-Ups** |  |  |  |  |  |  |  |
|  | 1 | **A120** |  |  |  |  |  |  |  |
|  | 2 | **B120** |  |  |  |  |  |  |  |
|  | 3 | **C120** |  |  |  |  |  |  |  |
|  | 4 | **D120** |  |  |  |  |  |  |  |
|  | 5 | **E120** |  |  |  |  |  |  |  |
|  | 6 | **F120** |  |  |  |  |  |  |  |
|  | 7 | **G120** |  |  |  |  |  |  |  |
|  | 8 | **H120** |  |  |  |  |  |  |  |
|  | 9 | **J120** |  |  |  |  |  |  |  |
|  | 10 | **K120** |  |  |  |  |  |  |  |
|  | 11 | **R120** |  |  |  |  |  |  |  |
|  | 12 | **Equipment Connections** |  |  |  |  |  |  |  |
|  | 1 | **CRAH** |  |  |  |  |  |  |  |
|  | 2 | **CDU** |  |  |  |  |  |  |  |
|  | 3 | **MOD** |  |  |  |  |  |  |  |
|  | 6 | **Corridors** |  |  |  |  |  |  |  |
|  | 1 | **Corridor 1000A (No apply)** |  |  |  |  |  |  |  |
|  | 3 | **Corridor 1000** |  |  |  |  |  |  |  |
|  | 2 | **Corridor 1000E** |  |  |  |  |  |  |  |
|  | 10 | **Loading Dock 1030** |  |  |  |  |  |  |  |
|  | 11 | **IDF 1034** |  |  |  |  |  |  |  |
|  | 12 | **Preaction 1033** |  |  |  |  |  |  |  |
|  | 13 | **Restroom-Dock & Janitor** |  |  |  |  |  |  |  |
|  | ` | **Commissioning & Start Up** |  |  |  |  |  |  |  |
|  | 5 | **Data Hall IST Readiness** |  |  |  |  |  |  |  |
|  | 5 | **Level 6 — Enclosure Gate** |  |  |  |  |  |  |  |
|  | 2 | **Level 5 — Construction Complete (White Space)** |  |  |  |  |  |  |  |
|  | 3 | **Level 4 — Equipment Installed & Available** |  |  |  |  |  |  |  |
|  | 6 | **Level 3 — Startup / Pre-Functional Testing** |  |  |  |  |  |  |  |
|  | 1 | **Level 2 — Readiness Gate** |  |  |  |  |  |  |  |
|  | 4 | **Level 1 — IST Target** |  |  |  |  |  |  |  |
|  | 1 | **Energization & L3 Prefunctional Testing** |  |  |  |  |  |  |  |
|  | 2 | **L4 Function Testing** |  |  |  |  |  |  |  |
|  | 3 | **L5 Integrated System Testing (IST)** |  |  |  |  |  |  |  |
|  | 8 | **Data Hall 1400** |  |  | 2026-09-30 | 2026-12-16 |  |  |  |

| ID | WBS | Activity | Type | Duration | Start | Finish | Total float | Free float | Constraint |
| --- | --- | --- | --- | --- | --- | --- | --- | --- | --- |
|  | 10 | **Exterior Build Out** |  |  |  |  |  |  |  |
|  | 9 | **Electrical Yard** |  |  |  |  |  |  |  |
|  | 3 | **Electrical** |  |  |  |  |  |  |  |
|  | 1 | **Underground** |  |  |  |  |  |  |  |
|  | 1 | **Column Line 4.0 - 4.9** |  |  |  |  |  |  |  |
|  | 2 | **Column-Line 4.0 - 4.9** |  |  |  |  |  |  |  |
|  | 2 | **Pads** |  |  |  |  |  |  |  |
|  | 3 | **Equipment** |  |  |  |  |  |  |  |
|  | 1 | **A140** |  |  |  |  |  |  |  |
|  | 2 | **B140** |  |  |  |  |  |  |  |
|  | 3 | **C140** |  |  |  |  |  |  |  |
|  | 4 | **D140** |  |  |  |  |  |  |  |
|  | 5 | **E140** |  |  |  |  |  |  |  |
|  | 6 | **F140** |  |  |  |  |  |  |  |
|  | 7 | **G140** |  |  |  |  |  |  |  |
|  | 8 | **H140** |  |  |  |  |  |  |  |
|  | 9 | **J140** |  |  |  |  |  |  |  |
|  | 10 | **K140** |  |  |  |  |  |  |  |
|  | 11 | **R140** |  |  |  |  |  |  |  |
|  | 1 | **Mechanical Yard** |  |  |  |  |  |  |  |
|  | 1 | **Pads** |  |  |  |  |  |  |  |
|  | 5 | **Equipment** |  |  |  |  |  |  |  |
|  | 1 | **A140** |  |  |  |  |  |  |  |
|  | 2 | **B140** |  |  |  |  |  |  |  |
|  | 3 | **C140** |  |  |  |  |  |  |  |
|  | 4 | **D140** |  |  |  |  |  |  |  |
|  | 5 | **E140** |  |  |  |  |  |  |  |
|  | 6 | **F140** |  |  |  |  |  |  |  |
|  | 7 | **G140** |  |  |  |  |  |  |  |
|  | 8 | **H140** |  |  |  |  |  |  |  |
|  | 9 | **J140** |  |  |  |  |  |  |  |
|  | 10 | **K140** |  |  |  |  |  |  |  |
|  | 11 | **R140** |  |  |  |  |  |  |  |
|  | 12 | **Test & Flushing** |  |  |  |  |  |  |  |
|  | 2 | **Electrical & Controls** |  |  |  |  |  |  |  |
|  | 2 | **Roof - RTUs** |  |  |  |  |  |  |  |
|  | 1 | **Column Lines 1.2 thru 2.0** |  |  |  |  |  |  |  |
|  | 1 | **Interior Build Out** |  |  | 2026-09-30 | 2026-12-16 |  |  |  |
|  | 9 | **Flex 1000D10** |  |  |  |  |  |  |  |
|  | 7 | **Electrical Room #5401** |  |  | 2026-12-02 | 2026-12-09 |  |  |  |
| DH.1300.3070 |  | DH1400/Electrical Room #5401 // DH1400 - OFCI Skid Ship Date (12/02/2026) First Shipment | milestone | 0d | 2026-12-02 | 2026-12-02 | -0.12d | 0d | finish on or after 2026-12-02 |
| ER.5101.3065 |  | DH1400/Electrical Room #5401 // Set Skid - SKID-A140 |  | 1d | 2026-12-03 | 2026-12-03 | -0.12d | 0d |  |
| ER.5101.3066 |  | DH1400/Electrical Room #5401 // Set Skid - SKID-B140 |  | 1d | 2026-12-04 | 2026-12-04 | -0.12d | 0d |  |
| ER.5101.3067 |  | DH1400/Electrical Room #5401 // Set Skid - SKID-C140 |  | 1d | 2026-12-07 | 2026-12-07 | -0.12d | 0d |  |
| ER.5101.3068 |  | DH1400/Electrical Room #5401 // Set Skid - SKID-D140 |  | 1d | 2026-12-08 | 2026-12-08 | -0.12d | 0d |  |
| ER.5101.3069 |  | DH1400/Electrical Room #5401 // Set Skid - SKID-E140 |  | 1d | 2026-12-09 | 2026-12-09 | -0.12d | 0d |  |

| ID | WBS | Activity | Type | Duration | Start | Finish | Total float | Free float | Constraint |
| --- | --- | --- | --- | --- | --- | --- | --- | --- | --- |
|  | 2 | **Electrcal Room #5404** |  |  | 2026-12-08 | 2026-12-16 |  |  |  |
| DH.1300.3072 |  | DH1400/Electrical Room #5404 // DH1400 - OFCI Skid Ship Date (12/08/2026) 2ND Shipment | milestone | 0d | 2026-12-08 | 2026-12-08 | 0.88d | 1d | finish on or after 2026-12-08 |
| ER.5101.3070 |  | DH1400/Electrical Room #5404 // Set Skid - SKID-F140 |  | 1d | 2026-12-10 | 2026-12-10 | -0.12d | 0d |  |
| ER.5101.3071 |  | DH1400/Electrical Room #5404 // Set Skid - SKID-G140 |  | 1d | 2026-12-11 | 2026-12-11 | -0.12d | 0d |  |
| ER.5101.3072 |  | DH1400/Electrical Room #5404 // Set Skid - SKID-H140 |  | 1d | 2026-12-14 | 2026-12-14 | -0.12d | 0d |  |
| ER.5101.3073 |  | DH1400/Electrical Room #5404 // Set Skid - SKID-J140 |  | 1d | 2026-12-15 | 2026-12-15 | -0.12d | 0d |  |
| ER.5101.3074 |  | DH1400/Electrical Room #5404 // Set Skid - SKID-K140 |  | 1d | 2026-12-16 | 2026-12-16 | -0.12d | 0d |  |
|  | 3 | **Data Hall 1400** |  |  |  |  |  |  |  |
|  | 15 | **PDU Gallery** |  |  | 2026-09-30 | 2026-11-09 |  |  |  |
| DH.14000.1040 |  | DH1400/PDU Gallery // PDU Gallery Frame walls |  | 5d | 2026-09-30 | 2026-10-06 | 50.88d | 0d |  |
| DH.14000.1100 |  | DH1400/PDU Gallery // PDU Gallery Paint walls |  | 2d | 2026-11-06 | 2026-11-09 | 43.88d | 0d |  |
|  | 14 | **CRAH/CDU Galleries** |  |  |  |  |  |  |  |
|  | 2 | **Gallery 1402** |  |  |  |  |  |  |  |
|  | 4 | **Architectural** |  |  |  |  |  |  |  |
|  | 16 | **Raceway** |  |  |  |  |  |  |  |
|  | 3 | **Equipment Line-Ups** |  |  |  |  |  |  |  |
|  | 1 | **A140** |  |  |  |  |  |  |  |
|  | 2 | **B140** |  |  |  |  |  |  |  |
|  | 3 | **C140** |  |  |  |  |  |  |  |
|  | 4 | **D140** |  |  |  |  |  |  |  |
|  | 5 | **E140** |  |  |  |  |  |  |  |
|  | 6 | **F140** |  |  |  |  |  |  |  |
|  | 7 | **G140** |  |  |  |  |  |  |  |
|  | 8 | **H140** |  |  |  |  |  |  |  |
|  | 9 | **J140** |  |  |  |  |  |  |  |
|  | 10 | **K140** |  |  |  |  |  |  |  |
|  | 11 | **R140** |  |  |  |  |  |  |  |
|  | 12 | **Equipment Connections** |  |  |  |  |  |  |  |
|  | 1 | **CRAH** |  |  |  |  |  |  |  |
|  | 2 | **CDU** |  |  |  |  |  |  |  |
|  | 3 | **MOD** |  |  |  |  |  |  |  |
|  | 4 | **Gallery 1403** |  |  |  |  |  |  |  |
|  | 1 | **Architectural** |  |  |  |  |  |  |  |
|  | 16 | **Raceway** |  |  |  |  |  |  |  |
|  | 3 | **Equipment Line-Ups** |  |  |  |  |  |  |  |
|  | 1 | **A140** |  |  |  |  |  |  |  |
|  | 2 | **B140** |  |  |  |  |  |  |  |
|  | 3 | **C140** |  |  |  |  |  |  |  |
|  | 4 | **D140** |  |  |  |  |  |  |  |
|  | 5 | **E140** |  |  |  |  |  |  |  |
|  | 6 | **F140** |  |  |  |  |  |  |  |
|  | 7 | **G140** |  |  |  |  |  |  |  |
|  | 8 | **H140** |  |  |  |  |  |  |  |
|  | 9 | **J140** |  |  |  |  |  |  |  |
|  | 10 | **K140** |  |  |  |  |  |  |  |
|  | 11 | **R140** |  |  |  |  |  |  |  |
|  | 12 | **Equipment Connections** |  |  |  |  |  |  |  |
|  | 1 | **CRAH** |  |  |  |  |  |  |  |
|  | 2 | **CDU** |  |  |  |  |  |  |  |
|  | 3 | **MOD** |  |  |  |  |  |  |  |
|  | 6 | **Corridors** |  |  |  |  |  |  |  |
|  | 1 | **Corridor 1000A (DO NOT APPLY)** |  |  |  |  |  |  |  |
|  | 3 | **Corridor 1000** |  |  |  |  |  |  |  |
|  | 2 | **Corridor 1000E** |  |  |  |  |  |  |  |
|  | 10 | **Flex 1000B10 *** No Flex - Loading Dock****** |  |  |  |  |  |  |  |
|  | 11 | **IDF 1054 (Missing Activities)** |  |  |  |  |  |  |  |
|  | 12 | **Preaction 1053 (Missing Activities)** |  |  |  |  |  |  |  |
|  | 13 | **Restroom-Dock & Janitor** |  |  |  |  |  |  |  |
|  | 2 | **Commissioning & Start Up** |  |  |  |  |  |  |  |
|  | 5 | **Data Hall IST Readiness** |  |  |  |  |  |  |  |
|  | 5 | **Level 6 — Enclosure Gate** |  |  |  |  |  |  |  |
|  | 2 | **Level 5 — Construction Complete (White Space)** |  |  |  |  |  |  |  |
|  | 3 | **Level 4 — Equipment Installed & Available** |  |  |  |  |  |  |  |
|  | 6 | **Level 3 — Startup / Pre-Functional Testing** |  |  |  |  |  |  |  |
|  | 1 | **Level 2 — Readiness Gate** |  |  |  |  |  |  |  |
|  | 4 | **Level 1 — IST Target** |  |  |  |  |  |  |  |
|  | 1 | **Energization & L3 Prefunctional Testing** |  |  |  |  |  |  |  |
|  | 2 | **L4 Function Testing** |  |  |  |  |  |  |  |
|  | 3 | **L5 Integrated System Testing (IST)** |  |  |  |  |  |  |  |
|  | 4 | **Data Hall 1600** |  |  | 2026-09-29 | 2027-02-16 |  |  |  |

| ID | WBS | Activity | Type | Duration | Start | Finish | Total float | Constraint |
| --- | --- | --- | --- | --- | --- | --- | --- | --- |
|  | 10 | **Exterior Build Out** |  |  |  |  |  |  |
|  | 9 | **Electrical Yard** |  |  |  |  |  |  |
|  | 3 | **Electrical** |  |  |  |  |  |  |
|  | 1 | **Underground** |  |  |  |  |  |  |
|  | 1 | **Column Line 6.0 - 6.9** |  |  |  |  |  |  |
|  | 2 | **Column-Line 6.0 - 6.9** |  |  |  |  |  |  |
|  | 2 | **Pads** |  |  |  |  |  |  |
|  | 3 | **Equipment** |  |  |  |  |  |  |
|  | 1 | **A160** |  |  |  |  |  |  |
|  | 2 | **B160** |  |  |  |  |  |  |
|  | 3 | **C160** |  |  |  |  |  |  |
|  | 4 | **D160** |  |  |  |  |  |  |
|  | 5 | **E160** |  |  |  |  |  |  |
|  | 6 | **F160** |  |  |  |  |  |  |
|  | 7 | **G160** |  |  |  |  |  |  |
|  | 8 | **H160** |  |  |  |  |  |  |
|  | 9 | **J160** |  |  |  |  |  |  |
|  | 10 | **K160** |  |  |  |  |  |  |
|  | 11 | **R160** |  |  |  |  |  |  |
|  | 1 | **Mechanical Yard** |  |  |  |  |  |  |
|  | 1 | **Pads** |  |  |  |  |  |  |
|  | 5 | **Equipment** |  |  |  |  |  |  |
|  | 1 | **A160** |  |  |  |  |  |  |
|  | 2 | **B160** |  |  |  |  |  |  |
|  | 3 | **C160** |  |  |  |  |  |  |
|  | 4 | **D160** |  |  |  |  |  |  |
|  | 5 | **E160** |  |  |  |  |  |  |
|  | 6 | **F160** |  |  |  |  |  |  |
|  | 7 | **G160** |  |  |  |  |  |  |
|  | 8 | **H160** |  |  |  |  |  |  |
|  | 9 | **J160** |  |  |  |  |  |  |
|  | 10 | **K160** |  |  |  |  |  |  |
|  | 11 | **R160** |  |  |  |  |  |  |
|  | 12 | **Test & Flushing** |  |  |  |  |  |  |
|  | 2 | **Electrical & Controls** |  |  |  |  |  |  |
|  | 2 | **Roof - RTUs** |  |  |  |  |  |  |
|  | 1 | **Column Lines 1.2 thru 2.0** |  |  |  |  |  |  |
|  | 1 | **Interior Build Out** |  |  | 2026-09-29 | 2027-02-16 |  |  |
|  | 9 | **Flex 1000F10** |  |  |  |  |  |  |
|  | 7 | **Electrical Room #5601** |  |  | 2027-02-01 | 2027-02-08 |  |  |
| DH.1600.3061 |  | DH1600/Electrical Room #5601 // DH1600 - OFCI Skid Ship Date (02/01/2027) First Shipment | milestone | 0d | 2027-02-01 | 2027-02-01 | 0d | finish on or after 2027-02-01 |
| ER.5101.3085 |  | DH1600/Electrical Room #5601 // Set Skid - SKID-A160 |  | 1d | 2027-02-02 | 2027-02-02 | 0d |  |
| ER.5101.3086 |  | DH1600/Electrical Room #5601 // Set Skid - SKID-B160 |  | 1d | 2027-02-03 | 2027-02-03 | 0d |  |
| ER.5101.3087 |  | DH1600/Electrical Room #5601 // Set Skid - SKID-C160 |  | 1d | 2027-02-04 | 2027-02-04 | 0d |  |
| ER.5101.3088 |  | DH1600/Electrical Room #5601 // Set Skid - SKID-D160 |  | 1d | 2027-02-05 | 2027-02-05 | 0d |  |
| ER.5101.3089 |  | DH1600/Electrical Room #5601 // Set Skid - SKID-E160 |  | 1d | 2027-02-08 | 2027-02-08 | 0d |  |

| ID | WBS | Activity | Type | Duration | Start | Finish | Total float | Free float | Constraint |
| --- | --- | --- | --- | --- | --- | --- | --- | --- | --- |
|  | 2 | **Electrcal Room #5604** |  |  | 2027-02-08 | 2027-02-16 |  |  |  |
| DH.1600.3062 |  | DH1600/Electrical Room #5604 // DH1600 - OFCI Skid Ship Date (02/06/2027) 2ND Shipment | milestone | 0d | 2027-02-08 | 2027-02-08 | 1d |  | finish on or after 2027-02-06 |
| ER.5101.3090 |  | DH1600/Electrical Room #5604 // Set Skid - SKID-F160 |  | 1d | 2027-02-09 | 2027-02-09 | 0d |  |  |
| ER.5101.3091 |  | DH1600/Electrical Room #5604 // Set Skid - SKID-G160 |  | 1d | 2027-02-10 | 2027-02-10 | 0d |  |  |
| ER.5101.3092 |  | DH1600/Electrical Room #5604 // Set Skid - SKID-H160 |  | 1d | 2027-02-11 | 2027-02-11 | 0d |  |  |
| ER.5101.3093 |  | DH1600/Electrical Room #5604 // Set Skid - SKID-J160 |  | 1d | 2027-02-12 | 2027-02-12 | 0d |  |  |
| ER.5101.3094 |  | DH1600/Electrical Room #5604 // Set Skid - SKID-K160 |  | 1d | 2027-02-16 | 2027-02-16 | 0d |  |  |
|  | 3 | **Data Hall 1600** |  |  |  |  |  |  |  |
|  | 15 | **PDU Gallery** |  |  | 2026-09-29 | 2026-10-27 |  |  |  |
| DH.16000.1040 |  | DH1600/PDU Gallery // Frame walls |  | 5d | 2026-09-29 | 2026-10-05 | 85d | 0d |  |
| DH.16000.1100 |  | DH1600/PDU Gallery // Paint walls |  | 2d | 2026-10-26 | 2026-10-27 | 85d | 0d |  |
|  | 14 | **CRAH/CDU Galleries** |  |  |  |  |  |  |  |
|  | 2 | **Gallery 1602** |  |  |  |  |  |  |  |
|  | 4 | **Architectural** |  |  |  |  |  |  |  |
|  | 16 | **Raceway** |  |  |  |  |  |  |  |
|  | 3 | **Equipment Line-Ups** |  |  |  |  |  |  |  |
|  | 1 | **A160** |  |  |  |  |  |  |  |
|  | 2 | **B160** |  |  |  |  |  |  |  |
|  | 3 | **C160** |  |  |  |  |  |  |  |
|  | 4 | **D160** |  |  |  |  |  |  |  |
|  | 5 | **E160** |  |  |  |  |  |  |  |
|  | 6 | **F160** |  |  |  |  |  |  |  |
|  | 7 | **G160** |  |  |  |  |  |  |  |
|  | 8 | **H160** |  |  |  |  |  |  |  |
|  | 9 | **J160** |  |  |  |  |  |  |  |
|  | 10 | **K160** |  |  |  |  |  |  |  |
|  | 11 | **R160** |  |  |  |  |  |  |  |
|  | 12 | **Equipment Connections** |  |  |  |  |  |  |  |
|  | 1 | **CRAH** |  |  |  |  |  |  |  |
|  | 2 | **CDU** |  |  |  |  |  |  |  |
|  | 3 | **MOD** |  |  |  |  |  |  |  |
|  | 4 | **Gallery 1603** |  |  |  |  |  |  |  |
|  | 1 | **Architectural** |  |  |  |  |  |  |  |
|  | 16 | **Raceway** |  |  |  |  |  |  |  |
|  | 3 | **Equipment Line-Ups** |  |  |  |  |  |  |  |
|  | 1 | **A160** |  |  |  |  |  |  |  |
|  | 2 | **B160** |  |  |  |  |  |  |  |
|  | 3 | **C160** |  |  |  |  |  |  |  |
|  | 4 | **D160** |  |  |  |  |  |  |  |
|  | 5 | **E160** |  |  |  |  |  |  |  |
|  | 6 | **F160** |  |  |  |  |  |  |  |
|  | 7 | **G160** |  |  |  |  |  |  |  |
|  | 8 | **H160** |  |  |  |  |  |  |  |
|  | 9 | **J160** |  |  |  |  |  |  |  |
|  | 10 | **K160** |  |  |  |  |  |  |  |
|  | 11 | **R160** |  |  |  |  |  |  |  |
|  | 12 | **Equipment Connections** |  |  |  |  |  |  |  |
|  | 1 | **CRAH** |  |  |  |  |  |  |  |
|  | 2 | **CDU** |  |  |  |  |  |  |  |
|  | 3 | **MOD** |  |  |  |  |  |  |  |
|  | 6 | **Corridors** |  |  |  |  |  |  |  |
|  | 1 | **Corridor 1000A (DO NOT APPLY)** |  |  |  |  |  |  |  |
|  | 3 | **Corridor 1000** |  |  |  |  |  |  |  |
|  | 2 | **Corridor 1000G** |  |  |  |  |  |  |  |
|  | 10 | **Flex 1000G1** |  |  |  |  |  |  |  |
|  | 11 | **IDF 1000G2 (Missing Activitities)** |  |  |  |  |  |  |  |
|  | 12 | **Preaction 1000G3 (Missing Activities)** |  |  |  |  |  |  |  |
|  | 13 | **Restroom-Dock & Janitor** |  |  |  |  |  |  |  |
|  | 2 | **Commissioning & Start Up** |  |  |  |  |  |  |  |
|  | 5 | **Data Hall IST Readiness** |  |  |  |  |  |  |  |
|  | 5 | **Level 6 — Enclosure Gate** |  |  |  |  |  |  |  |
|  | 2 | **Level 5 — Construction Complete (White Space)** |  |  |  |  |  |  |  |
|  | 3 | **Level 4 — Equipment Installed & Available** |  |  |  |  |  |  |  |
|  | 6 | **Level 3 — Startup / Pre-Functional Testing** |  |  |  |  |  |  |  |
|  | 1 | **Level 2 — Readiness Gate** |  |  |  |  |  |  |  |
|  | 4 | **Level 1 — IST Target** |  |  |  |  |  |  |  |
|  | 1 | **Energization & L3 Prefunctional Testing** |  |  |  |  |  |  |  |
|  | 2 | **L4 Function Testing** |  |  |  |  |  |  |  |
|  | 3 | **L5 Integrated System Testing (IST)** |  |  |  |  |  |  |  |
|  | 6 | **Archived (Deleted) Activities** |  |  |  |  |  |  |  |

| WBS | Activity |
| --- | --- |
| 7 | **Owner Furnished Contractor Installed (OFCI)** |
| 1 | **DH1200 OFCI Procurement** |
| 1 | **Skidded** |
| 2 | **Non-Skidded** |
| 2 | **DH1100 OFCI Procurement** |
| 1 | **Skidded** |
| 2 | **Non-Skidded** |
| 3 | **DH1300 OFCI Procurement** |
| 1 | **Skidded** |
| 2 | **Non-Skidded** |
| 6 | **DH1400 OFCI Procurement** |
| 1 | **Skidded** |
| 2 | **Non-Skidded** |
| 5 | **DH1500 OFCI Procurement** |
| 1 | **Skidded** |
| 2 | **Non-Skidded** |
| 4 | **DH1600 OFCI Procurement** |
| 1 | **Skidded** |
| 2 | **Non-Skidded** |
