# [226021-012.00-00] QTS CDR1-DC7 DD10-14-26 Update (Live)

Schedule from Primavera P6, 2025-09-02 to 2027-07-16, data date 2026-10-14, A marks actual dates.

## Calendars

- Calendar 01 - 5 Day w/holidays (No Pats Day): Mon-Fri 08:00-12:00, 13:00-17:00; Sat-Sun off. Exceptions (off unless hours are given): 2025-10-13, 2025-11-11, 2025-11-27, 2025-12-25, 2026-01-01, 2026-01-19, 2026-02-16, 2026-05-25, 2026-07-03, 2026-09-07, 2026-10-12, 2026-11-11, 2026-11-26, 2026-12-25, 2027-01-01, 2027-01-18, 2027-02-15, 2027-05-31, 2027-07-05.
- Calendar 06 - 6 Day Work Week w/ Holidays: Mon-Sat 08:00-12:00, 13:00-17:00; Sun off. Exceptions (off unless hours are given): 2025-10-13, 2025-11-11, 2025-11-27 to 2025-11-28, 2025-12-25, 2026-01-01, 2026-01-19, 2026-02-16, 2026-04-20, 2026-05-25, 2026-07-04, 2026-09-07, 2026-10-12, 2026-11-11, 2026-11-26 to 2026-11-27, 2026-12-25, 2027-01-01, 2027-01-18, 2027-02-15, 2027-04-19, 2027-05-31.

## Schedule

| ID | WBS | Activity | Type | Duration | Start | Finish | Predecessors | Complete | Remaining | Planned start | Planned finish | Total float | Free float | Constraint | MSP Activity ID | QTS - AREA | 05 -SUFFOLK - Building Phase | 12 - SUFFOLK - Export_to_Procore | user_text8 |
| --- | --- | --- | --- | --- | --- | --- | --- | --- | --- | --- | --- | --- | --- | --- | --- | --- | --- | --- | --- |
|  | 1 | **Suffolk Milestones** |  |  | 2025-11-12 | 2027-07-16 |  |  |  |  |  |  |  |  |  |  |  |  |  |
|  | 7 | **Site & Shell** |  |  | 2025-11-12 | 2027-07-16 |  |  |  |  |  |  |  |  |  |  |  |  |  |
| M1010 |  | Project Award (CM Release) | milestone | 0d | 2025-11-12 A | 2025-11-12 A | A2000 | 100% |  |  |  |  |  | start on or after 2025-09-12 | 3 | Bldg | 0 |  |  |
| M1210 |  | Recieve Executed Work Order From QTS | milestone | 0d | 2025-11-12 A | 2025-11-12 A | M1010 SS+57d | 100% |  | 2026-02-04 | 2026-02-04 |  |  |  | 45 | Bldg | 0 |  |  |
| M1050 |  | Buyout of Critical Trades/Preconstruction |  | 30d | 2025-11-24 A | 2026-03-06 A | M1010 | 100% |  | 2026-02-25 | 2026-04-07 |  |  |  | 25 | Bldg | 0 | Y |  |
| M1040 |  | Project Kickoff After Award | milestone | 0d | 2025-11-28 A | 2025-11-28 A | M1010 FS+15d | 100% |  | 2026-02-25 | 2026-02-25 |  |  |  | 24 | Bldg | 0 | Y |  |
| M1020 |  | Site Plan Full Approval (City review of IFC Set) | milestone | 0d | 2025-12-11 A | 2025-12-11 A | A2000, A1990 | 100% |  | 2026-02-25 | 2026-02-25 |  |  |  | 4 | Bldg | 0 | Y |  |
| M1030 |  | Receive Building Permit | milestone | 0d | 2025-12-19 A | 2025-12-19 A | M1020 SS, A1980, M1010 SS | 100% |  | 2026-02-25 | 2026-02-25 |  |  |  | 6 | Bldg | 0 | Y |  |
| M1140 |  | DC7 Site Pad Ready (by others) (11/01/25) | milestone | 0d | 2025-12-20 A | 2025-12-20 A | M1020 SF | 100% |  | 2026-02-25 | 2026-02-25 |  |  |  | 17 | Bldg | 0 | Y |  |
| M1060 |  | Begin Sitework and Shell | milestone | 0d | 2026-01-06 A | 2026-01-06 A | M1030, M1140 | 100% |  | 2026-05-15 | 2026-05-15 |  |  |  | 16 | Bldg | 0 | Y |  |
| M1220 |  | BIM Complete (Building Coordinated) | milestone | 0d | 2026-07-10 A | 2026-07-10 A | A2610, A2650, A2640 | 100% |  |  |  |  |  |  | 33 | Bldg | 0 | Y |  |
| M1080 |  | Shell Building Dry-In date | milestone | 0d | 2026-11-04 | 2026-11-04 | STRUCTURE.7280, STRUCTURE.7654 FF, STRUCTURE.7632 FF, STRUCTURE.7616 FF, STRUCTURE.7655 FF, STRUCTURE.7635 FF, STRUCTURE.7390 FF, STRUCTURE.7656 FF, STRUCTURE.7638 FF, STRUCTURE.7420 FF, STRUCTURE.7657 FF, STRUCTURE.7641 FF, STRUCTURE.7450 FF, STRUCTURE.7658 FF, STRUCTURE.7644 FF, STRUCTURE.7480 FF, STRUCTURE.7659 FF, STRUCTURE.7647 FF, STRUCTURE.7510 FF, STRUCTURE.7660 FF, STRUCTURE.7650 FF, STRUCTURE.7540 FF, STRUCTURE.7661 FF, STRUCTURE.7653 FF, STRUCTURE.7619 FF, STRUCTURE.7330 FF, STRUCTURE.7350 FF, STRUCTURE.7300 FF, STRUCTURE.7020 FF, STRUCTURE.4890 FF, STRUCTURE.4880 FF |  |  |  |  | 174d | 0d |  | 10 | Bldg | 0 |  |  |
| M1100 |  | Sitework Complete | milestone | 0d | 2026-11-04 | 2026-11-04 | M1080 FF |  |  |  |  | 174d |  |  | 26 | Bldg |  |  |  |
| M1231 |  | Procurement Completed | milestone | 0d | 2026-12-03 | 2026-12-03 | A2540 FF |  |  |  |  | 38d | 0d |  | 33 | Bldg | 0 | Y |  |
| M1230 |  | Final Completion (All Closeout & Punch List Complete) |  | 1d | 2027-03-16 | 2027-03-16 | A3210, ER.5104.1140, DH1100.12055, DH1100.12052, DH1100.12049, DH1100.12046, DH1100.12043, STRUCTURE.4850 SS, A5731, DH1100.12115, DH1100.12114, DH1100.12113, PDU.1100.1712, DH1100.12056, DH1100-B-EQP-196, DH1100-B-EQP-178, DH1100-B-EQP-160, DH1100-B-EQP-142, DH1100-B-EQP-124, DH1100-B-EQP-106, DH1100-B-EQP-88, DH1100-B-EQP-70, DH1100-B-EQP-52, DH1100-B-EQP-34, PRE.C3.1140, IDF.C2.1140, G.1103.1140, G1102.4820, PDU.1100.1110, F.1000A.1160, DH1200.7790, ER.5101.1330, ER.5104.1250, DH1100-B-EQP-16, DH1100.8080, F.1000B..1140, IDF.C2.1110, PRE.C3.1110, ER.5101.1160, ER.5104.1330, DH1100-B-EQP-198, DH1100-B-EQP-180, DH1100-B-EQP-162, DH1100-B-EQP-144, DH1100-B-EQP-126, DH1100-B-EQP-108, DH1100-B-EQP-90, DH1100-B-EQP-72, DH1100-B-EQP-54, DH1100-B-EQP-36, DH1100-B-EQP-18, DH1100.7820, DH1100.4010, FOH.MS-5, BOH-MS-5 |  |  |  |  | 86d |  |  | 54 | Bldg |  |  |  |
| M1130 |  | Project Closeout Complete - Certificate of Occupancy | milestone | 0d | 2027-07-16 | 2027-07-16 | M1100 FF, M1220, DH1100.4030 FF, DH1200.4030 FF, DH1300.4030 FF, DH2100.4030 FF, DH2200.4030 FF, M1230 FF, DH2300.4030 |  |  |  |  | 0d |  |  | 30 | Bldg | 0 |  |  |
|  | 8 | **Interior Build-Out** |  |  | 2026-06-10 | 2027-07-16 |  |  |  |  |  |  |  |  |  |  |  |  |  |
|  | 7 | **FOH** |  |  | 2026-06-10 | 2027-03-08 |  |  |  |  |  |  |  |  |  |  |  |  |  |
| FOH.MS-1 |  | Start Work - FOH | milestone | 0d | 2026-06-10 A | 2026-06-10 A | STRUCTURE.7430, A2060, STRUCTURE.4850 | 100% |  | 2026-09-30 | 2026-09-30 |  |  |  | 65 | FOH |  | Y |  |
| FOH.MS-3 |  | FOH Build-Out Duration | level of effort | 5d | 2026-06-10 A | 2026-10-20 | FOH.MS-1 SS |  | 5d | 2026-09-30 | 2026-10-06 | -2d | 0d |  | 63 | FOH | 2 | Y |  |
| FOH.MS-2 |  | Early Access - FOH - [12/03/2026] | milestone | 0d | 2026-12-24 | 2026-12-24 | HSE-SYS-STU-3, HSE-SYS-STU-16 FF, HSE-SYS-STU-1 FF, DH1200.7790 FF |  |  |  |  | -16d | 18d | finish on or before 2026-12-03 | 67 | FOH | 0 |  | What is needed to accomplish this milestone *Mallon/Yee |
| FOH.MS-4 |  | Substantial Completion - TCO for FOH [01/01/27] | milestone | 0d | 2027-01-25 | 2027-01-25 | HSE-SYS-STU-3 FF, FOH.MS-2 FF, DH1100.4020 FF |  |  |  |  | -14d | 0d | finish on or before 2027-01-01 | 21 | FOH | 2 |  |  |
| FOH.MS-5 |  | Final Completion - Phase Close-Out (all punch completed) - FOH |  | 30d | 2027-01-25 | 2027-03-08 | FOH.MS-4 |  |  |  |  | 91d | 5d |  | 36 | FOH | 2 |  |  |
|  | 8 | **BOH** |  |  | 2026-08-03 | 2027-03-15 |  |  |  |  |  |  |  |  |  |  |  |  |  |
| BOH-MS-3 |  | BOH Build-Out Duration | level of effort | 74d | 2026-08-03 A | 2026-12-22 | ADMIN.5506 SS | 35% | 48d | 2026-07-24 | 2026-11-06 | -14d | 0d |  | 63 | BOH | 2 | Y |  |
| BOH-MS-2 |  | Early Access - BOH - [12/03/2026] | milestone | 0d | 2026-12-22 | 2026-12-22 | HSE-SYS-STU-17, HSE-SYS-STU-4 FF, DH1200.7842 FF |  |  |  |  | -14d | 0d | finish on or before 2026-12-03 | 67 | BOH | 0 |  | What is needed to accomplish this milestone *Mallon/Yee |
| BOH-MS-4 |  | Substantial Completion - TCO for BOH [01/01/27] | milestone | 0d | 2027-01-29 | 2027-01-29 | HSE-SYS-STU-6 FF, BOH-MS-2 FF+25d |  |  |  |  | 0d |  | finish on or before 2027-02-01 | 21 | BOH | 2 |  |  |
| BOH-MS-5 |  | Final Completion - Phase Close-Out (all punch completed) - DH1100 |  | 30d | 2027-02-01 | 2027-03-15 | BOH-MS-4 |  |  |  |  | 86d | 0d |  | 36 | BOH | 2 |  |  |

| ID | WBS | Activity | Type | Duration | Start | Finish | Predecessors | Complete | Remaining | Planned start | Planned finish | Total float | Free float | Constraint | MSP Activity ID | QTS - AREA | 05 -SUFFOLK - Building Phase | 13 -SUFFOLK - MC (Systems of Work) | 12 - SUFFOLK - Export_to_Procore | user_text8 |
| --- | --- | --- | --- | --- | --- | --- | --- | --- | --- | --- | --- | --- | --- | --- | --- | --- | --- | --- | --- | --- |
|  | 2 | **DH1100** |  |  | 2026-06-26 | 2027-03-29 |  |  |  |  |  |  |  |  |  |  |  |  |  |  |
| DH1100.4010 |  | DH1100 Build-Out Duration | level of effort | 171d | 2026-06-26 A | 2027-03-29 | F.1000A.1010 | 34% | 113d | 2026-06-29 | 2027-03-05 | 77d | 0d |  | 63 | DH1100 | 1 | PFHO | Y |  |
| M1150 |  | Milestone 1 -Early Access - 1st Data Hall DH1100 - [12/03/2026] | milestone | 0d | 2026-10-01 A | 2026-10-01 A | A3210 FF, ER.5104.1140 FF, DH1100.12055 FF, DH1100.12052 FF, DH1100.12049 FF, DH1100.12046 FF, DH1100.12043 FF, STRUCTURE.4850 FF, PDU.1100.1712 FF, PDU.1100.1110 FF | 100% |  | 2027-01-04 | 2027-01-04 |  |  | finish on or before 2026-12-03 | 67 | DH1100 | 1 | NEA |  | What is needed to accomplish this milestone *Mallon/Yee |
| DH1100.4020 |  | Milestone 7 - Substantial Completion - TCO for DH1100 [01/01/27] | milestone | 0d | 2027-01-25 | 2027-01-25 | A5698, M1150, DH1100.L5CX.COMM.190, A3210 FF, ER.5104.1140 FF, DH1100.12055 FF, DH1100.12052 FF, DH1100.12049 FF, DH1100.12046 FF, DH1100.12043 FF, STRUCTURE.4850 FF, A5731 FF, DH1100.12115 FF, DH1100.12114 FF, DH1100.12113 FF, PDU.1100.1712 FF, DH1100.12056 FF, DH1100-B-EQP-196 FF, DH1100-B-EQP-178 FF, DH1100-B-EQP-160 FF, DH1100-B-EQP-142 FF, DH1100-B-EQP-124 FF, DH1100-B-EQP-106 FF, DH1100-B-EQP-88 FF, DH1100-B-EQP-70 FF, DH1100-B-EQP-52 FF, DH1100-B-EQP-34 FF, PRE.C3.1140 FF, IDF.C2.1140 FF, G.1103.1140 FF, G1102.4820 FF, PDU.1100.1110 FF, F.1000A.1160 FF, DH1200.7790 FF, ER.5101.1330 FF, ER.5104.1250 FF, DH1100-B-EQP-16 FF, DH1100.8080 FF, F.1000B..1140 FF, IDF.C2.1110 FF, PRE.C3.1110 FF, ER.5101.1160 FF, ER.5104.1330 FF, DH1100-B-EQP-198 FF, DH1100-B-EQP-180 FF, DH1100-B-EQP-162 FF, DH1100-B-EQP-144 FF, DH1100-B-EQP-126 FF, DH1100-B-EQP-108 FF, DH1100-B-EQP-90 FF, DH1100-B-EQP-72 FF, DH1100-B-EQP-54 FF, DH1100-B-EQP-36 FF, DH1100-B-EQP-18 FF, DH1100.7820 FF, DH1100.4010 FF, A5850 FF |  |  |  |  | -14d | 0d | finish on or before 2027-01-01 | 21 | DH1100 | 1 | H2C |  |  |
| DH1100.4030 |  | Final Completion - Phase Close-Out (all punch completed) - DH1100 |  | 30d | 2027-02-16 | 2027-03-29 | A3210, A3210 FF, ER.5104.1140 FF, DH1100.12055, DH1100.12055 FF, DH1100.12052, DH1100.12052 FF, DH1100.12049, DH1100.12049 FF, DH1100.12046, DH1100.12046 FF, DH1100.12043, DH1100.12043 FF, STRUCTURE.4850 SS, STRUCTURE.4850 FF, A5731, A5731 FF, DH1100.A2110.CO, DH1100.12115 FF, DH1100.12115, DH1100.12114 FF, DH1100.12114, DH1100.12113 FF, DH1100.12113, PDU.1100.1712 FF, PDU.1100.1712, DH1100.12056 FF, DH1100.12056, DH1100-B-EQP-196 FF, DH1100-B-EQP-196, DH1100-B-EQP-178 FF, DH1100-B-EQP-178, DH1100-B-EQP-160 FF, DH1100-B-EQP-160, DH1100-B-EQP-142 FF, DH1100-B-EQP-142, DH1100-B-EQP-124 FF, DH1100-B-EQP-124, DH1100-B-EQP-106 FF, DH1100-B-EQP-106, DH1100-B-EQP-88 FF, DH1100-B-EQP-88, DH1100-B-EQP-70 FF, DH1100-B-EQP-70, DH1100-B-EQP-52 FF, DH1100-B-EQP-52, DH1100-B-EQP-34 FF, DH1100-B-EQP-34, PRE.C3.1140 FF, PRE.C3.1140, IDF.C2.1140 FF, IDF.C2.1140, G.1103.1140 FF, G.1103.1140, G1102.4820 FF, G1102.4820, PDU.1100.1110 FF, PDU.1100.1110, F.1000A.1160 FF, F.1000A.1160, DH1200.7790 FF, DH1200.7790, ER.5101.1330 FF, ER.5101.1330, ER.5104.1250 FF, ER.5104.1250, DH1100-B-EQP-16 FF, DH1100-B-EQP-16, DH1100.8080 FF, DH1100.8080, F.1000B..1140 FF, F.1000B..1140, IDF.C2.1110 FF, IDF.C2.1110, PRE.C3.1110 FF, PRE.C3.1110, ER.5101.1160 FF, ER.5101.1160, ER.5104.1330 FF, ER.5104.1330, DH1100-B-EQP-198 FF, DH1100-B-EQP-198, DH1100-B-EQP-180 FF, DH1100-B-EQP-180, DH1100-B-EQP-162 FF, DH1100-B-EQP-162, DH1100-B-EQP-144 FF, DH1100-B-EQP-144, DH1100-B-EQP-126 FF, DH1100-B-EQP-126, DH1100-B-EQP-108 FF, DH1100-B-EQP-108, DH1100-B-EQP-90 FF, DH1100-B-EQP-90, DH1100-B-EQP-72 FF, DH1100-B-EQP-72, DH1100-B-EQP-54 FF, DH1100-B-EQP-54, DH1100-B-EQP-36 FF, DH1100-B-EQP-36, DH1100-B-EQP-18 FF, DH1100-B-EQP-18, DH1100.7820 FF, DH1100.7820, DH1100.4010 FF, DH1100.4010, DH1100.L5CX.COMM.190 FF |  |  |  |  | 77d |  |  | 36 | DH1100 | 2 |  |  |  |
|  | 1 | **DH1200** |  |  | 2026-08-03 | 2027-04-06 |  |  |  |  |  |  |  |  |  |  |  |  |  |  |
| DH1200.7350 |  | DH1200 Build-Out Duration | level of effort | 117d | 2026-08-03 A | 2027-02-01 | B12000A.1010 SS | 37% | 74d | 2026-07-28 | 2027-01-14 | -1d | 0d |  | 71 | DH1200 | 2 |  | Y |  |
| DH1200.4010 |  | Milestone 2 - Early Access 2nd Data Hall DH1200 - [01/01/2027] | milestone | 0d | 2027-01-14 | 2027-01-14 | DH1200.L3CX.29, A5719 FF, A5705 FF, A5713 FF, A5708 FF, A5700 FF, A5702 FF, A5734 FF, PRE.C3.1156 FF, B12002.1141 FF, B12000.12099 FF, B12000.12098 FF, B1200100.1712 FF, B1200.1140 FF, B12000-B-EQP-196 FF, B12000-B-EQP-178 FF, B12000-B-EQP-160 FF, B12000-B-EQP-142 FF, B12000-B-EQP-124 FF, B12000-B-EQP-106 FF, B12000-B-EQP-88 FF, B12000-B-EQP-70 FF, B12000-B-EQP-52 FF, B12000-B-EQP-34 FF, B12003.1140 FF, B12000-A-EQP-218 FF, B12000-A-EQP-198 FF, B12000-A-EQP-178 FF, B12000-A-EQP-158 FF, B12000-A-EQP-138 FF, B12000-A-EQP-118 FF, B12000-A-EQP-98 FF, B12000-A-EQP-78 FF, B12000-A-EQP-58 FF, B12000-A-EQP-38 FF, B1200.4820 FF, B12000A.1160 FF, B12000.12056 FF, B5701 FF, B12000.7841 FF, B120001.1310 FF, B120001.1330 FF, B120004.1310 FF, B120004.1250 FF, B12000-A-EQP-20 FF, B12000-A-EQP-18 FF, B12000-B-EQP-16 FF, B12002.1110 FF, B120001.1160 FF, B120004.1330 FF, B12000-A-EQP-220 FF, B12000-A-EQP-200 FF, B12000-A-EQP-180 FF, B12000-A-EQP-160 FF, B12000-A-EQP-140 FF, B12000-A-EQP-120 FF, B12000-A-EQP-100 FF, B12000-A-EQP-80 FF, B12000-A-EQP-60 FF, B12000-A-EQP-40 FF, B12000-B-EQP-198 FF, B12000-B-EQP-180 FF, B12000-B-EQP-162 FF, B12000-B-EQP-144 FF, B12000-B-EQP-126 FF, B12000-B-EQP-108 FF, B12000-B-EQP-90 FF, B12000-B-EQP-72 FF, B12000-B-EQP-54 FF, B12000-B-EQP-36 FF, B12000-B-EQP-18 FF |  |  |  |  | -8d | 12d | finish on or before 2027-01-01 | 70 | DH1200 | 2 | NEA |  |  |
| DH1200.4020 |  | Milestone 8 - Substantial Completion TCO for DH1200 [02/01/27] | milestone | 0d | 2027-02-02 | 2027-02-02 | DH1200.L5CX.COMM.230, B12000.7820 FF, DH1200.4010 FF, DH1200.7350 FF, A5851 FF |  |  |  |  | -1d | 15d | finish on or before 2027-02-01 | 23 | DH1200 | 2 | H2C |  |  |
| DH1200.4030 |  | Final Completion - Phase Close-Out (all punch completed) - DH1200 |  | 30d | 2027-02-24 | 2027-04-06 | B12000.7820, DH1200.A2110.CO, DH1200.4020 |  |  |  |  | 71d |  |  | 31 | DH1200 | 2 |  |  |  |
|  | 3 | **DH1300** |  |  | 2026-08-05 | 2027-04-30 |  |  |  |  |  |  |  |  |  |  |  |  |  |  |
| DH1300.7360 |  | DH1300 Build-Out Duration | level of effort | 138d | 2026-08-05 A | 2027-02-26 | DH.1300.1010 SS | 33% | 92d | 2026-08-03 | 2027-02-22 | 0d |  |  | 76 | DH1300 | 2 |  | Y |  |
| DH1300.4010 |  | Milestone 3 - Early Access 3rd Data Hall DH1300 -[02/01/2027] | milestone | 0d | 2027-02-16 | 2027-02-16 | DH1300.L3CX.49, A5769 FF, A5761 FF, A5756 FF, A5737 FF, DH.160012149 FF, DH.160012148 FF, DH.13000.1712 FF, DH.160012107 FF, DH.1300.3059 FF, DH.1300.3062 FF, DH.1300140 FF, DH.1300..1160 FF, DH.1300.1160 FF, DH.1300B-EQP-196 FF, DH.1300B-EQP-178 FF, DH.1300B-EQP-160 FF, DH.1300B-EQP-142 FF, DH.1300B-EQP-124 FF, DH.1300B-EQP-106 FF, DH.1300B-EQP-88 FF, DH.1300B-EQP-70 FF, DH.1300B-EQP-52 FF, DH.1300B-EQP-34 FF, DH.13001140 FF, DH.1300820 FF, DH.1300A-EQP-218 FF, DH.1300A-EQP-198 FF, DH.1300A-EQP-178 FF, DH.1300A-EQP-158 FF, DH.1300A-EQP-138 FF, DH.1300A-EQP-118 FF, DH.1300A-EQP-98 FF, DH.1300A-EQP-78 FF, DH.1300A-EQP-58 FF, DH.1300A-EQP-38 FF, DH.130012056 FF, DH.130012055 FF, DH.130012031 FF, DH.1300.1310 FF, DH.1300.1330 FF, DH.1300A-EQP-20 FF, DH.1300A-EQP-18 FF, DH.1300B-EQP-16 FF, DH.1300..1140 FF, DH.1300A-EQP-220 FF, DH.1300A-EQP-200 FF, DH.1300A-EQP-180 FF, DH.1300A-EQP-160 FF, DH.1300A-EQP-140 FF, DH.1300A-EQP-120 FF, DH.1300A-EQP-100 FF, DH.1300A-EQP-80 FF, DH.1300A-EQP-60 FF, DH.1300A-EQP-40 FF, DH.1300B-EQP-198 FF, DH.1300B-EQP-180 FF, DH.1300B-EQP-162 FF, DH.1300B-EQP-144 FF, DH.1300B-EQP-126 FF, DH.1300B-EQP-108 FF, DH.1300B-EQP-90 FF, DH.1300B-EQP-72 FF, DH.1300B-EQP-54 FF, DH.1300B-EQP-36 FF, DH.1300B-EQP-18 FF |  |  |  |  | -9d | 9d | finish on or before 2027-02-01 | 75 | DH1300 | 3 | NEA |  |  |
| DH1300.4020 |  | Milestone 9 - Substantial Completion TCO for DH1300 [03/01/27] | milestone | 0d | 2027-03-01 | 2027-03-01 | DH1300.L5CX.COMM.250, A5769 FF, A5761 FF, A5756 FF, A5737 FF, DH.160012149 FF, DH.160012148 FF, DH.13000.1712 FF, DH.160012107 FF, DH.1300.3059 FF, DH.1300.3062 FF, DH.1300140 FF, DH.1300..1160 FF, DH.1300.1160 FF, DH.1300B-EQP-196 FF, DH.1300B-EQP-178 FF, DH.1300B-EQP-160 FF, DH.1300B-EQP-142 FF, DH.1300B-EQP-124 FF, DH.1300B-EQP-106 FF, DH.1300B-EQP-88 FF, DH.1300B-EQP-70 FF, DH.1300B-EQP-52 FF, DH.1300B-EQP-34 FF, DH.13001140 FF, DH.1300820 FF, DH.1300A-EQP-218 FF, DH.1300A-EQP-198 FF, DH.1300A-EQP-178 FF, DH.1300A-EQP-158 FF, DH.1300A-EQP-138 FF, DH.1300A-EQP-118 FF, DH.1300A-EQP-98 FF, DH.1300A-EQP-78 FF, DH.1300A-EQP-58 FF, DH.1300A-EQP-38 FF, DH.130012056 FF, DH.130012055 FF, DH.130012031 FF, DH.1300.1310 FF, DH.1300.1330 FF, DH.1300A-EQP-20 FF, DH.1300A-EQP-18 FF, DH.1300B-EQP-16 FF, DH.1300..1140 FF, DH.1300A-EQP-220 FF, DH.1300A-EQP-200 FF, DH.1300A-EQP-180 FF, DH.1300A-EQP-160 FF, DH.1300A-EQP-140 FF, DH.1300A-EQP-120 FF, DH.1300A-EQP-100 FF, DH.1300A-EQP-80 FF, DH.1300A-EQP-60 FF, DH.1300A-EQP-40 FF, DH.1300B-EQP-198 FF, DH.1300B-EQP-180 FF, DH.1300B-EQP-162 FF, DH.1300B-EQP-144 FF, DH.1300B-EQP-126 FF, DH.1300B-EQP-108 FF, DH.1300B-EQP-90 FF, DH.1300B-EQP-72 FF, DH.1300B-EQP-54 FF, DH.1300B-EQP-36 FF, DH.1300B-EQP-18 FF, DH.13007820 FF, DH1300.4010, DH1300.7360 FF, A5852 FF |  |  |  |  | 0d | 15d | finish on or before 2027-03-01 | 41 | DH1300 | 3 | H2C |  |  |
| DH1300.4030 |  | Final Completion - Phase Close-Out (all punch completed) - DH1300 |  | 30d | 2027-03-22 | 2027-04-30 | A5769, A5761, A5756 SS, A5737, DH1300.A2110.CO FF, DH1300.A2110.CO, DH.160012149, DH.160012148, DH.13000.1712, DH.160012107, DH.1300.3059, DH.1300.3062, DH.1300140, DH.1300..1160, DH.1300.1160, DH.1300B-EQP-196, DH.1300B-EQP-178, DH.1300B-EQP-160, DH.1300B-EQP-142, DH.1300B-EQP-124, DH.1300B-EQP-106, DH.1300B-EQP-88, DH.1300B-EQP-70, DH.1300B-EQP-52, DH.1300B-EQP-34, DH.13001140, DH.1300820, DH.1300A-EQP-218, DH.1300A-EQP-198, DH.1300A-EQP-178, DH.1300A-EQP-158, DH.1300A-EQP-138, DH.1300A-EQP-118, DH.1300A-EQP-98, DH.1300A-EQP-78, DH.1300A-EQP-58, DH.1300A-EQP-38, DH.130012056, DH.130012055, DH.130012031, DH.1300.1310, DH.1300.1330, DH.1300A-EQP-20, DH.1300A-EQP-18, DH.1300B-EQP-16, DH.1300..1140, DH.1300A-EQP-220, DH.1300A-EQP-200, DH.1300A-EQP-180, DH.1300A-EQP-160, DH.1300A-EQP-140, DH.1300A-EQP-120, DH.1300A-EQP-100, DH.1300A-EQP-80, DH.1300A-EQP-60, DH.1300A-EQP-40, DH.1300B-EQP-198, DH.1300B-EQP-180, DH.1300B-EQP-162, DH.1300B-EQP-144, DH.1300B-EQP-126, DH.1300B-EQP-108, DH.1300B-EQP-90, DH.1300B-EQP-72, DH.1300B-EQP-54, DH.1300B-EQP-36, DH.1300B-EQP-18, DH.13007820, DH1300.4020 |  |  |  |  | 53d |  |  | 40 | DH1300 | 3 |  |  |  |
|  | 6 | **DH1400** |  |  | 2026-08-12 | 2027-06-04 |  |  |  |  |  |  |  |  |  |  |  |  |  |  |
| DH1400.7265 |  | DH1400 Build-Out Duration | level of effort | 152d | 2026-08-12 A | 2027-04-01 | DH.1400.1010 SS | 24% | 116d | 2026-08-12 | 2027-03-23 | -1d | 0d |  | 81 | DH1400 | 2 |  | Y |  |
| DH2100.4010 |  | Milestone 4 - Early Access - 4th Data Hall DH1400 - [03/01/2027] | milestone | 0d | 2027-03-17 | 2027-03-17 | DH1400.L3CX.69, A5793 FF, A5785 FF, A5780 FF, A5740 FF, DH.1400.3061 FF, DH.160012155 FF, DH.160012154 FF, DH.14000.1712 FF, DH.1400.3063 FF, DH.14007820 FF, DH.1400140 FF, DH.1400.1160 FF, DH.140012056 FF, DH.1400B-EQP-34 FF, DH.1400B-EQP-52 FF, DH.1400B-EQP-70 FF, DH.1400B-EQP-88 FF, DH.1400B-EQP-106 FF, DH.1400B-EQP-124 FF, DH.1400B-EQP-142 FF, DH.1400B-EQP-160 FF, DH.1400B-EQP-196 FF, DH.1400B-EQP-178 FF, DH.14001140 FF, DH.1400820 FF, DH.1400A-EQP-38 FF, DH.1400A-EQP-58 FF, DH.1400A-EQP-78 FF, DH.1400A-EQP-98 FF, DH.1400A-EQP-118 FF, DH.1400A-EQP-138 FF, DH.1400A-EQP-158 FF, DH.1400A-EQP-178 FF, DH.1400A-EQP-198 FF, DH.1400A-EQP-218 FF, DH.1400.1310 FF, DH.1400.1330 FF, DH.1400A-EQP-20 FF, DH.1400A-EQP-18 FF, DH.1400B-EQP-16 FF, DH.1400A-EQP-220 FF, DH.1400A-EQP-200 FF, DH.1400A-EQP-180 FF, DH.1400A-EQP-160 FF, DH.1400A-EQP-140 FF, DH.1400A-EQP-120 FF, DH.1400A-EQP-100 FF, DH.1400A-EQP-80 FF, DH.1400A-EQP-60 FF, DH.1400A-EQP-40 FF, DH.1400B-EQP-198 FF, DH.1400B-EQP-180 FF, DH.1400B-EQP-162 FF, DH.1400B-EQP-144 FF, DH.1400B-EQP-126 FF, DH.1400B-EQP-108 FF, DH.1400B-EQP-90 FF, DH.1400B-EQP-72 FF, DH.1400B-EQP-54 FF, DH.1400B-EQP-36 FF, DH.1400B-EQP-18 FF |  |  |  |  | -11d | 12d | finish on or before 2027-03-01 | 79 | DH1400 | 4 | NEA |  |  |
| DH2100.4020 |  | Milestone 10 - Substantial Completion - TCO for DH1400 [04/01/27] | milestone | 0d | 2027-04-02 | 2027-04-02 | DH1400.L5CX.COMM.270, A5793 FF, A5785 FF, A5780 FF, A5740 FF, DH.1400.3061 FF, DH.160012155 FF, DH.160012154 FF, DH.14000.1712 FF, DH.1400.3063 FF, DH.14007820 FF, DH.1400140 FF, DH.1400.1160 FF, DH.140012056 FF, DH.1400B-EQP-34 FF, DH.1400B-EQP-52 FF, DH.1400B-EQP-70 FF, DH.1400B-EQP-88 FF, DH.1400B-EQP-106 FF, DH.1400B-EQP-124 FF, DH.1400B-EQP-142 FF, DH.1400B-EQP-160 FF, DH.1400B-EQP-196 FF, DH.1400B-EQP-178 FF, DH.14001140 FF, DH.1400820 FF, DH.1400A-EQP-38 FF, DH.1400A-EQP-58 FF, DH.1400A-EQP-78 FF, DH.1400A-EQP-98 FF, DH.1400A-EQP-118 FF, DH.1400A-EQP-138 FF, DH.1400A-EQP-158 FF, DH.1400A-EQP-178 FF, DH.1400A-EQP-198 FF, DH.1400A-EQP-218 FF, DH.1400.1310 FF, DH.1400.1330 FF, DH.1400A-EQP-20 FF, DH.1400A-EQP-18 FF, DH.1400B-EQP-16 FF, DH.1400A-EQP-220 FF, DH.1400A-EQP-200 FF, DH.1400A-EQP-180 FF, DH.1400A-EQP-160 FF, DH.1400A-EQP-140 FF, DH.1400A-EQP-120 FF, DH.1400A-EQP-100 FF, DH.1400A-EQP-80 FF, DH.1400A-EQP-60 FF, DH.1400A-EQP-40 FF, DH.1400B-EQP-198 FF, DH.1400B-EQP-180 FF, DH.1400B-EQP-162 FF, DH.1400B-EQP-144 FF, DH.1400B-EQP-126 FF, DH.1400B-EQP-108 FF, DH.1400B-EQP-90 FF, DH.1400B-EQP-72 FF, DH.1400B-EQP-54 FF, DH.1400B-EQP-36 FF, DH.1400B-EQP-18 FF, DH2100.4010 FF, DH1400.7265 FF, A5853 FF |  |  |  |  | -1d | 15d | finish on or before 2027-04-01 | 42 | DH1400 | 4 | H2C |  |  |
| DH2100.4030 |  | Final Completion - Phase Close-Out (all punch completed) - DH1400 |  | 30d | 2027-04-23 | 2027-06-04 | A5793, A5785, A5780 SS, A5740, DH1400.A2110.CO FF, DH1400.A2110.CO, DH.1400.3061, DH.160012155, DH.160012154, DH.14000.1712, DH.1400.3063, DH.14007820, DH.1400140, DH.1400.1160, DH.140012056, DH.1400B-EQP-34, DH.1400B-EQP-52, DH.1400B-EQP-70, DH.1400B-EQP-88, DH.1400B-EQP-106, DH.1400B-EQP-124, DH.1400B-EQP-142, DH.1400B-EQP-160, DH.1400B-EQP-196, DH.1400B-EQP-178, DH.14001140, DH.1400820, DH.1400A-EQP-38, DH.1400A-EQP-58, DH.1400A-EQP-78, DH.1400A-EQP-98, DH.1400A-EQP-118, DH.1400A-EQP-138, DH.1400A-EQP-158, DH.1400A-EQP-178, DH.1400A-EQP-198, DH.1400A-EQP-218, DH.1400.1310, DH.1400.1330, DH.1400A-EQP-20, DH.1400A-EQP-18, DH.1400B-EQP-16, DH.1400A-EQP-220, DH.1400A-EQP-200, DH.1400A-EQP-180, DH.1400A-EQP-160, DH.1400A-EQP-140, DH.1400A-EQP-120, DH.1400A-EQP-100, DH.1400A-EQP-80, DH.1400A-EQP-60, DH.1400A-EQP-40, DH.1400B-EQP-198, DH.1400B-EQP-180, DH.1400B-EQP-162, DH.1400B-EQP-144, DH.1400B-EQP-126, DH.1400B-EQP-108, DH.1400B-EQP-90, DH.1400B-EQP-72, DH.1400B-EQP-54, DH.1400B-EQP-36, DH.1400B-EQP-18, DH2100.4020 |  |  |  |  | 29d |  |  | 37 | DH1400 | 4 |  |  |  |
|  | 5 | **DH1500** |  |  | 2026-10-01 | 2027-07-16 |  |  |  |  |  |  |  |  |  |  |  |  |  |  |
| DH1500.7350 |  | DH1400 Build-Out Duration | level of effort | 165d | 2026-10-01 A | 2027-06-03 | B120001.3057 SS | 3% | 160d | 2026-10-02 | 2027-06-01 | -23d | 0d |  | 84 | DH1500 | 2 |  | Y |  |
| DH2200.4010 |  | Milestone 5 - Early Access 5th Data Hall DH1500 - [04/01/2027] | milestone | 0d | 2027-05-18 | 2027-05-18 | DH1500.L3CX.89, A5817 FF, A5793 FF, A5809 FF, A5804 FF, A5743 FF, A5785 FF, A5780 FF, A5740 FF, DH.14007820 FF, DH.1400.1160 FF, DH.140012056 FF, DH.1400B-EQP-34 FF, DH.1400B-EQP-52 FF, DH.1400B-EQP-70 FF, DH.1400B-EQP-88 FF, DH.1400B-EQP-106 FF, DH.1400B-EQP-124 FF, DH.1400B-EQP-142 FF, DH.1400B-EQP-160 FF, DH.1400B-EQP-178 FF, DH.14001140 FF, DH.1400820 FF, DH.1400A-EQP-38 FF, DH.1400A-EQP-58 FF, DH.1400A-EQP-78 FF, DH.1400A-EQP-98 FF, DH.1400A-EQP-118 FF, DH.1400A-EQP-138 FF, DH.1400A-EQP-158 FF, DH.1400A-EQP-178 FF, DH.1400A-EQP-198 FF, DH.1400A-EQP-20 FF, DH.1400A-EQP-18 FF, DH.1400B-EQP-16 FF, DH.1400A-EQP-200 FF, DH.1400A-EQP-180 FF, DH.1400A-EQP-160 FF, DH.1400A-EQP-140 FF, DH.1400A-EQP-120 FF, DH.1400A-EQP-100 FF, DH.1400A-EQP-80 FF, DH.1400A-EQP-60 FF, DH.1400A-EQP-40 FF, DH.1400B-EQP-180 FF, DH.1400B-EQP-162 FF, DH.1400B-EQP-144 FF, DH.1400B-EQP-126 FF, DH.1400B-EQP-108 FF, DH.1400B-EQP-90 FF, DH.1400B-EQP-72 FF, DH.1400B-EQP-54 FF, DH.1400B-EQP-36 FF, DH.1400B-EQP-18 FF, DH.1500.3055 FF, DH.160012161 FF, DH.160012160 FF, DH.15000.1712 FF, DH.1500.3056 FF, DH.1500.1160 FF, DH.1500B-EQP-196 FF, DH.1500B-EQP-178 FF, DH.1500B-EQP-160 FF, DH.1500B-EQP-142 FF, DH.1500B-EQP-124 FF, DH.1500B-EQP-106 FF, DH.1500B-EQP-88 FF, DH.1500B-EQP-70 FF, DH.1500B-EQP-52 FF, DH.1500B-EQP-34 FF, DH.1500820 FF, DH.1500A-EQP-78 FF, DH.1500A-EQP-218 FF, DH.1500A-EQP-198 FF, DH.1500A-EQP-178 FF, DH.1500A-EQP-158 FF, DH.1500A-EQP-138 FF, DH.1500A-EQP-118 FF, DH.1500A-EQP-98 FF, DH.1500A-EQP-58 FF, DH.1500A-EQP-38 FF, DH.150012056 FF, DH.15001140 FF, DH.1500..1160 FF, DH.1500140 FF, DH.1500.1310 FF, DH.1500.1330 FF, DH.1500A-EQP-20 FF, DH.1500A-EQP-18 FF, DH.1500B-EQP-16 FF, DH.1500..1140 FF, DH.1500A-EQP-220 FF, DH.1500A-EQP-200 FF, DH.1500A-EQP-180 FF, DH.1500A-EQP-160 FF, DH.1500A-EQP-140 FF, DH.1500A-EQP-120 FF, DH.1500A-EQP-100 FF, DH.1500A-EQP-80 FF, DH.1500A-EQP-60 FF, DH.1500A-EQP-40 FF, DH.1500B-EQP-198 FF, DH.1500B-EQP-180 FF, DH.1500B-EQP-162 FF, DH.1500B-EQP-144 FF, DH.1500B-EQP-126 FF, DH.1500B-EQP-108 FF, DH.1500B-EQP-90 FF, DH.1500B-EQP-72 FF, DH.1500B-EQP-54 FF, DH.1500B-EQP-36 FF, DH.1500B-EQP-18 FF |  |  |  |  | -32.12d | 12d | finish on or before 2027-04-01 | 83 | DH1500 | 5 | NEA |  |  |
| DH2200.4020 |  | Milestone 11 - Substantial Completion TCO for DH1500 [05/01/27] | milestone | 0d | 2027-06-04 | 2027-06-04 | DH1500.L5CX.COMM.290, A5817 FF, A5793 FF, A5809 FF, A5804 FF, A5743 FF, A5785 FF, A5780 FF, A5740 FF, DH.14007820 FF, DH.1400.1160 FF, DH.140012056 FF, DH.1400B-EQP-34 FF, DH.1400B-EQP-52 FF, DH.1400B-EQP-70 FF, DH.1400B-EQP-88 FF, DH.1400B-EQP-106 FF, DH.1400B-EQP-124 FF, DH.1400B-EQP-142 FF, DH.1400B-EQP-160 FF, DH.1400B-EQP-178 FF, DH.14001140 FF, DH.1400820 FF, DH.1400A-EQP-38 FF, DH.1400A-EQP-58 FF, DH.1400A-EQP-78 FF, DH.1400A-EQP-98 FF, DH.1400A-EQP-118 FF, DH.1400A-EQP-138 FF, DH.1400A-EQP-158 FF, DH.1400A-EQP-178 FF, DH.1400A-EQP-198 FF, DH.1400A-EQP-20 FF, DH.1400A-EQP-18 FF, DH.1400B-EQP-16 FF, DH.1400A-EQP-200 FF, DH.1400A-EQP-180 FF, DH.1400A-EQP-160 FF, DH.1400A-EQP-140 FF, DH.1400A-EQP-120 FF, DH.1400A-EQP-100 FF, DH.1400A-EQP-80 FF, DH.1400A-EQP-60 FF, DH.1400A-EQP-40 FF, DH.1400B-EQP-180 FF, DH.1400B-EQP-162 FF, DH.1400B-EQP-144 FF, DH.1400B-EQP-126 FF, DH.1400B-EQP-108 FF, DH.1400B-EQP-90 FF, DH.1400B-EQP-72 FF, DH.1400B-EQP-54 FF, DH.1400B-EQP-36 FF, DH.1400B-EQP-18 FF, DH.1500.3055 FF, DH.160012161 FF, DH.160012160 FF, DH.15000.1712 FF, DH.1500.3056 FF, DH.1500.1160 FF, DH.1500B-EQP-196 FF, DH.1500B-EQP-178 FF, DH.1500B-EQP-160 FF, DH.1500B-EQP-142 FF, DH.1500B-EQP-124 FF, DH.1500B-EQP-106 FF, DH.1500B-EQP-88 FF, DH.1500B-EQP-70 FF, DH.1500B-EQP-52 FF, DH.1500B-EQP-34 FF, DH.1500820 FF, DH.1500A-EQP-78 FF, DH.1500A-EQP-218 FF, DH.1500A-EQP-198 FF, DH.1500A-EQP-178 FF, DH.1500A-EQP-158 FF, DH.1500A-EQP-138 FF, DH.1500A-EQP-118 FF, DH.1500A-EQP-98 FF, DH.1500A-EQP-58 FF, DH.1500A-EQP-38 FF, DH.150012056 FF, DH.15001140 FF, DH.1500..1160 FF, DH.1500140 FF, DH.1500.1310 FF, DH.1500.1330 FF, DH.1500A-EQP-20 FF, DH.1500A-EQP-18 FF, DH.1500B-EQP-16 FF, DH.1500..1140 FF, DH.1500A-EQP-220 FF, DH.1500A-EQP-200 FF, DH.1500A-EQP-180 FF, DH.1500A-EQP-160 FF, DH.1500A-EQP-140 FF, DH.1500A-EQP-120 FF, DH.1500A-EQP-100 FF, DH.1500A-EQP-80 FF, DH.1500A-EQP-60 FF, DH.1500A-EQP-40 FF, DH.1500B-EQP-198 FF, DH.1500B-EQP-180 FF, DH.1500B-EQP-162 FF, DH.1500B-EQP-144 FF, DH.1500B-EQP-126 FF, DH.1500B-EQP-108 FF, DH.1500B-EQP-90 FF, DH.1500B-EQP-72 FF, DH.1500B-EQP-54 FF, DH.1500B-EQP-36 FF, DH.1500B-EQP-18 FF, DH.15007820 FF, DH2200.4010 FF, DH1500.7350 FF, A5854 FF |  |  |  |  | -23d | 15d | finish on or before 2027-05-01 | 43 | DH1500 | 5 | H2C |  |  |
| DH2200.4030 |  | Final Completion - Phase Close-Out (all punch completed) - DH1500 |  | 15d | 2027-06-25 | 2027-07-16 | A5817, A5793, A5809, A5804 SS, A5743, A5785, A5780 SS, A5740, DH1500.A2110.CO FF, DH.14007820, DH.1400.1160, DH.140012056, DH.1400B-EQP-34, DH.1400B-EQP-52, DH.1400B-EQP-70, DH.1400B-EQP-88, DH.1400B-EQP-106, DH.1400B-EQP-124, DH.1400B-EQP-142, DH.1400B-EQP-160, DH.1400B-EQP-178, DH.14001140, DH.1400820, DH.1400A-EQP-38, DH.1400A-EQP-58, DH.1400A-EQP-78, DH.1400A-EQP-98, DH.1400A-EQP-118, DH.1400A-EQP-138, DH.1400A-EQP-158, DH.1400A-EQP-178, DH.1400A-EQP-198, DH.1400A-EQP-20, DH.1400A-EQP-18, DH.1400B-EQP-16, DH.1400A-EQP-200, DH.1400A-EQP-180, DH.1400A-EQP-160, DH.1400A-EQP-140, DH.1400A-EQP-120, DH.1400A-EQP-100, DH.1400A-EQP-80, DH.1400A-EQP-60, DH.1400A-EQP-40, DH.1400B-EQP-180, DH.1400B-EQP-162, DH.1400B-EQP-144, DH.1400B-EQP-126, DH.1400B-EQP-108, DH.1400B-EQP-90, DH.1400B-EQP-72, DH.1400B-EQP-54, DH.1400B-EQP-36, DH.1400B-EQP-18, DH.1500.3055, DH.160012161, DH.160012160, DH.15000.1712, DH.1500.3056, DH.1500.1160, DH.1500B-EQP-196, DH.1500B-EQP-178, DH.1500B-EQP-160, DH.1500B-EQP-142, DH.1500B-EQP-124, DH.1500B-EQP-106, DH.1500B-EQP-88, DH.1500B-EQP-70, DH.1500B-EQP-52, DH.1500B-EQP-34, DH.1500820, DH.1500A-EQP-78, DH.1500A-EQP-218, DH.1500A-EQP-198, DH.1500A-EQP-178, DH.1500A-EQP-158, DH.1500A-EQP-138, DH.1500A-EQP-118, DH.1500A-EQP-98, DH.1500A-EQP-58, DH.1500A-EQP-38, DH.150012056, DH.15001140, DH.1500..1160, DH.1500140, DH.1500.1310, DH.1500.1330, DH.1500A-EQP-20, DH.1500A-EQP-18, DH.1500B-EQP-16, DH.1500..1140, DH.1500A-EQP-220, DH.1500A-EQP-200, DH.1500A-EQP-180, DH.1500A-EQP-160, DH.1500A-EQP-140, DH.1500A-EQP-120, DH.1500A-EQP-100, DH.1500A-EQP-80, DH.1500A-EQP-60, DH.1500A-EQP-40, DH.1500B-EQP-198, DH.1500B-EQP-180, DH.1500B-EQP-162, DH.1500B-EQP-144, DH.1500B-EQP-126, DH.1500B-EQP-108, DH.1500B-EQP-90, DH.1500B-EQP-72, DH.1500B-EQP-54, DH.1500B-EQP-36, DH.1500B-EQP-18, DH.15007820, DH1500.A2110.CO, DH2200.4020 |  |  |  |  | 0d |  |  | 38 | DH1500 | 5 |  |  |  |

| ID | WBS | Activity | Type | Duration | Start | Finish | Predecessors | Complete | Remaining | Planned start | Planned finish | Total float | Free float | Constraint | MSP Activity ID | QTS - AREA | 05 -SUFFOLK - Building Phase | 12 - SUFFOLK - Export_to_Procore | 13 -SUFFOLK - MC (Systems of Work) |
| --- | --- | --- | --- | --- | --- | --- | --- | --- | --- | --- | --- | --- | --- | --- | --- | --- | --- | --- | --- |
|  | 4 | **DH1600** |  |  | 2026-09-21 | 2027-06-17 |  |  |  |  |  |  |  |  |  |  |  |  |  |
| DH2300.7250 |  | DH1600 Build-Out Duration | level of effort | 171d | 2026-09-21 A | 2027-05-26 | DH.1600.1010 SS | 9% | 155d | 2026-08-31 | 2027-05-06 | 2d | 0d |  | 88 | DH1600 | 2 | Y |  |
| DH2300.4010 |  | Milestone 6 - Early Access 6th Data Hall DH1600 - [05/01/2027] | milestone | 0d | 2027-05-11 | 2027-05-11 | DH1600.L3CX.9, A5835 FF, A5834 FF, A5830 FF, A5817 FF, A5793 FF, A5827 FF, A5746 FF, A5809 FF, A5804 FF, A5743 FF, A5785 FF, A5780 FF, A5740 FF, DH.14007820 FF, DH.1400.1160 FF, DH.140012056 FF, DH.1400B-EQP-34 FF, DH.1400B-EQP-52 FF, DH.1400B-EQP-70 FF, DH.1400B-EQP-88 FF, DH.1400B-EQP-106 FF, DH.1400B-EQP-124 FF, DH.1400B-EQP-142 FF, DH.1400B-EQP-160 FF, DH.1400B-EQP-178 FF, DH.14001140 FF, DH.1400820 FF, DH.1400A-EQP-38 FF, DH.1400A-EQP-58 FF, DH.1400A-EQP-78 FF, DH.1400A-EQP-98 FF, DH.1400A-EQP-118 FF, DH.1400A-EQP-138 FF, DH.1400A-EQP-158 FF, DH.1400A-EQP-178 FF, DH.1400A-EQP-198 FF, DH.1400A-EQP-20 FF, DH.1400A-EQP-18 FF, DH.1400B-EQP-16 FF, DH.1400A-EQP-200 FF, DH.1400A-EQP-180 FF, DH.1400A-EQP-160 FF, DH.1400A-EQP-140 FF, DH.1400A-EQP-120 FF, DH.1400A-EQP-100 FF, DH.1400A-EQP-80 FF, DH.1400A-EQP-60 FF, DH.1400A-EQP-40 FF, DH.1400B-EQP-180 FF, DH.1400B-EQP-162 FF, DH.1400B-EQP-144 FF, DH.1400B-EQP-126 FF, DH.1400B-EQP-108 FF, DH.1400B-EQP-90 FF, DH.1400B-EQP-72 FF, DH.1400B-EQP-54 FF, DH.1400B-EQP-36 FF, DH.1400B-EQP-18 FF, DH.1500.1160 FF, DH.1500B-EQP-178 FF, DH.1500B-EQP-160 FF, DH.1500B-EQP-142 FF, DH.1500B-EQP-124 FF, DH.1500B-EQP-106 FF, DH.1500B-EQP-88 FF, DH.1500B-EQP-70 FF, DH.1500B-EQP-52 FF, DH.1500B-EQP-34 FF, DH.1500820 FF, DH.1500A-EQP-78 FF, DH.1500A-EQP-198 FF, DH.1500A-EQP-178 FF, DH.1500A-EQP-158 FF, DH.1500A-EQP-138 FF, DH.1500A-EQP-118 FF, DH.1500A-EQP-98 FF, DH.1500A-EQP-58 FF, DH.1500A-EQP-38 FF, DH.150012056 FF, DH.15001140 FF, DH.1500..1160 FF, DH.1500A-EQP-20 FF, DH.1500A-EQP-18 FF, DH.1500B-EQP-16 FF, DH.1500..1140 FF, DH.1500A-EQP-200 FF, DH.1500A-EQP-180 FF, DH.1500A-EQP-160 FF, DH.1500A-EQP-140 FF, DH.1500A-EQP-120 FF, DH.1500A-EQP-100 FF, DH.1500A-EQP-80 FF, DH.1500A-EQP-60 FF, DH.1500A-EQP-40 FF, DH.1500B-EQP-180 FF, DH.1500B-EQP-162 FF, DH.1500B-EQP-144 FF, DH.1500B-EQP-126 FF, DH.1500B-EQP-108 FF, DH.1500B-EQP-90 FF, DH.1500B-EQP-72 FF, DH.1500B-EQP-54 FF, DH.1500B-EQP-36 FF, DH.1500B-EQP-18 FF, DH.160012167 FF, DH.160012166 FF, DH.16000.1712 FF, DH.1600.3056 FF, DH.1600.3057 FF, DH.1600140 FF, DH.1600..1160 FF, DH.1600B-EQP-196 FF, DH.1600B-EQP-178 FF, DH.1600B-EQP-160 FF, DH.1600B-EQP-142 FF, DH.1600B-EQP-124 FF, DH.1600B-EQP-106 FF, DH.1600B-EQP-88 FF, DH.1600B-EQP-70 FF, DH.1600B-EQP-52 FF, DH.1600B-EQP-34 FF, DH.1600A-EQP-218 FF, DH.1600A-EQP-198 FF, DH.1600A-EQP-178 FF, DH.1600A-EQP-158 FF, DH.1600A-EQP-138 FF, DH.1600A-EQP-118 FF, DH.1600A-EQP-98 FF, DH.1600A-EQP-78 FF, DH.1600A-EQP-58 FF, DH.1600A-EQP-38 FF, DH.160012056 FF, DH.1600.1310 FF, DH.1600.1330 FF, DH.1600A-EQP-20 FF, DH.1600A-EQP-18 FF, DH.1600B-EQP-16 FF, DH.1600..1140 FF, DH.1600A-EQP-220 FF, DH.1600A-EQP-200 FF, DH.1600A-EQP-180 FF, DH.1600A-EQP-160 FF, DH.1600A-EQP-140 FF, DH.1600A-EQP-120 FF, DH.1600A-EQP-100 FF, DH.1600A-EQP-80 FF, DH.1600A-EQP-60 FF, DH.1600A-EQP-40 FF, DH.1600B-EQP-198 FF, DH.1600B-EQP-180 FF, DH.1600B-EQP-162 FF, DH.1600B-EQP-144 FF, DH.1600B-EQP-126 FF, DH.1600B-EQP-108 FF, DH.1600B-EQP-90 FF, DH.1600B-EQP-72 FF, DH.1600B-EQP-54 FF, DH.1600B-EQP-36 FF, DH.1600B-EQP-18 FF |  |  |  |  | -6d | 12d | finish on or before 2027-05-01 | 87 | DH1600 | 6 |  | NEA |
| DH2300.4020 |  | Milestone 12 - Substantial Completion TCO for DH1600 [06/01/27] | milestone | 0d | 2027-05-27 | 2027-05-27 | DH1600.L5CX.COMM.210, A5835 FF, A5834 FF, A5830 FF, A5817 FF, A5793 FF, A5827 FF, A5746 FF, A5809 FF, A5804 FF, A5743 FF, A5785 FF, A5780 FF, A5740 FF, DH.14007820 FF, DH.1400.1160 FF, DH.140012056 FF, DH.1400B-EQP-34 FF, DH.1400B-EQP-52 FF, DH.1400B-EQP-70 FF, DH.1400B-EQP-88 FF, DH.1400B-EQP-106 FF, DH.1400B-EQP-124 FF, DH.1400B-EQP-142 FF, DH.1400B-EQP-160 FF, DH.1400B-EQP-178 FF, DH.14001140 FF, DH.1400820 FF, DH.1400A-EQP-38 FF, DH.1400A-EQP-58 FF, DH.1400A-EQP-78 FF, DH.1400A-EQP-98 FF, DH.1400A-EQP-118 FF, DH.1400A-EQP-138 FF, DH.1400A-EQP-158 FF, DH.1400A-EQP-178 FF, DH.1400A-EQP-198 FF, DH.1400A-EQP-20 FF, DH.1400A-EQP-18 FF, DH.1400B-EQP-16 FF, DH.1400A-EQP-200 FF, DH.1400A-EQP-180 FF, DH.1400A-EQP-160 FF, DH.1400A-EQP-140 FF, DH.1400A-EQP-120 FF, DH.1400A-EQP-100 FF, DH.1400A-EQP-80 FF, DH.1400A-EQP-60 FF, DH.1400A-EQP-40 FF, DH.1400B-EQP-180 FF, DH.1400B-EQP-162 FF, DH.1400B-EQP-144 FF, DH.1400B-EQP-126 FF, DH.1400B-EQP-108 FF, DH.1400B-EQP-90 FF, DH.1400B-EQP-72 FF, DH.1400B-EQP-54 FF, DH.1400B-EQP-36 FF, DH.1400B-EQP-18 FF, DH.1500.1160 FF, DH.1500B-EQP-178 FF, DH.1500B-EQP-160 FF, DH.1500B-EQP-142 FF, DH.1500B-EQP-124 FF, DH.1500B-EQP-106 FF, DH.1500B-EQP-88 FF, DH.1500B-EQP-70 FF, DH.1500B-EQP-52 FF, DH.1500B-EQP-34 FF, DH.1500820 FF, DH.1500A-EQP-78 FF, DH.1500A-EQP-198 FF, DH.1500A-EQP-178 FF, DH.1500A-EQP-158 FF, DH.1500A-EQP-138 FF, DH.1500A-EQP-118 FF, DH.1500A-EQP-98 FF, DH.1500A-EQP-58 FF, DH.1500A-EQP-38 FF, DH.150012056 FF, DH.15001140 FF, DH.1500..1160 FF, DH.1500A-EQP-20 FF, DH.1500A-EQP-18 FF, DH.1500B-EQP-16 FF, DH.1500..1140 FF, DH.1500A-EQP-200 FF, DH.1500A-EQP-180 FF, DH.1500A-EQP-160 FF, DH.1500A-EQP-140 FF, DH.1500A-EQP-120 FF, DH.1500A-EQP-100 FF, DH.1500A-EQP-80 FF, DH.1500A-EQP-60 FF, DH.1500A-EQP-40 FF, DH.1500B-EQP-180 FF, DH.1500B-EQP-162 FF, DH.1500B-EQP-144 FF, DH.1500B-EQP-126 FF, DH.1500B-EQP-108 FF, DH.1500B-EQP-90 FF, DH.1500B-EQP-72 FF, DH.1500B-EQP-54 FF, DH.1500B-EQP-36 FF, DH.1500B-EQP-18 FF, DH.160012167 FF, DH.160012166 FF, DH.16000.1712 FF, DH.1600.3056 FF, DH.1600.3057 FF, DH.1600140 FF, DH.1600..1160 FF, DH.1600B-EQP-196 FF, DH.1600B-EQP-178 FF, DH.1600B-EQP-160 FF, DH.1600B-EQP-142 FF, DH.1600B-EQP-124 FF, DH.1600B-EQP-106 FF, DH.1600B-EQP-88 FF, DH.1600B-EQP-70 FF, DH.1600B-EQP-52 FF, DH.1600B-EQP-34 FF, DH.1600A-EQP-218 FF, DH.1600A-EQP-198 FF, DH.1600A-EQP-178 FF, DH.1600A-EQP-158 FF, DH.1600A-EQP-138 FF, DH.1600A-EQP-118 FF, DH.1600A-EQP-98 FF, DH.1600A-EQP-78 FF, DH.1600A-EQP-58 FF, DH.1600A-EQP-38 FF, DH.160012056 FF, DH.1600.1310 FF, DH.1600.1330 FF, DH.1600A-EQP-20 FF, DH.1600A-EQP-18 FF, DH.1600B-EQP-16 FF, DH.1600..1140 FF, DH.1600A-EQP-220 FF, DH.1600A-EQP-200 FF, DH.1600A-EQP-180 FF, DH.1600A-EQP-160 FF, DH.1600A-EQP-140 FF, DH.1600A-EQP-120 FF, DH.1600A-EQP-100 FF, DH.1600A-EQP-80 FF, DH.1600A-EQP-60 FF, DH.1600A-EQP-40 FF, DH.1600B-EQP-198 FF, DH.1600B-EQP-180 FF, DH.1600B-EQP-162 FF, DH.1600B-EQP-144 FF, DH.1600B-EQP-126 FF, DH.1600B-EQP-108 FF, DH.1600B-EQP-90 FF, DH.1600B-EQP-72 FF, DH.1600B-EQP-54 FF, DH.1600B-EQP-36 FF, DH.1600B-EQP-18 FF, DH.16007820 FF, DH.16001140 FF, DH.1600820 FF, DH.1600.1160 FF, DH2300.4010 FF, DH2300.7250 FF, A5855 FF |  |  |  |  | 2d | 15d | finish on or before 2027-06-01 | 44 | DH1600 | 6 |  | H2C |
| DH2300.4030 |  | Final Completion - Phase Close-Out (all punch completed) - DH1600 | milestone | 0d | 2027-06-17 | 2027-06-17 | A5835, A5834, A5830, A5817, A5793, A5827, A5746, A5809, A5804 SS, A5743, A5785, A5780 SS, A5740, DH1600.A2110.CO FF, DH.14007820, DH.1400.1160, DH.140012056, DH.1400B-EQP-34, DH.1400B-EQP-52, DH.1400B-EQP-70, DH.1400B-EQP-88, DH.1400B-EQP-106, DH.1400B-EQP-124, DH.1400B-EQP-142, DH.1400B-EQP-160, DH.1400B-EQP-178, DH.14001140, DH.1400820, DH.1400A-EQP-38, DH.1400A-EQP-58, DH.1400A-EQP-78, DH.1400A-EQP-98, DH.1400A-EQP-118, DH.1400A-EQP-138, DH.1400A-EQP-158, DH.1400A-EQP-178, DH.1400A-EQP-198, DH.1400A-EQP-20, DH.1400A-EQP-18, DH.1400B-EQP-16, DH.1400A-EQP-200, DH.1400A-EQP-180, DH.1400A-EQP-160, DH.1400A-EQP-140, DH.1400A-EQP-120, DH.1400A-EQP-100, DH.1400A-EQP-80, DH.1400A-EQP-60, DH.1400A-EQP-40, DH.1400B-EQP-180, DH.1400B-EQP-162, DH.1400B-EQP-144, DH.1400B-EQP-126, DH.1400B-EQP-108, DH.1400B-EQP-90, DH.1400B-EQP-72, DH.1400B-EQP-54, DH.1400B-EQP-36, DH.1400B-EQP-18, DH.1500.1160, DH.1500B-EQP-178, DH.1500B-EQP-160, DH.1500B-EQP-142, DH.1500B-EQP-124, DH.1500B-EQP-106, DH.1500B-EQP-88, DH.1500B-EQP-70, DH.1500B-EQP-52, DH.1500B-EQP-34, DH.1500820, DH.1500A-EQP-78, DH.1500A-EQP-198, DH.1500A-EQP-178, DH.1500A-EQP-158, DH.1500A-EQP-138, DH.1500A-EQP-118, DH.1500A-EQP-98, DH.1500A-EQP-58, DH.1500A-EQP-38, DH.150012056, DH.15001140, DH.1500..1160, DH.1500A-EQP-20, DH.1500A-EQP-18, DH.1500B-EQP-16, DH.1500..1140, DH.1500A-EQP-200, DH.1500A-EQP-180, DH.1500A-EQP-160, DH.1500A-EQP-140, DH.1500A-EQP-120, DH.1500A-EQP-100, DH.1500A-EQP-80, DH.1500A-EQP-60, DH.1500A-EQP-40, DH.1500B-EQP-180, DH.1500B-EQP-162, DH.1500B-EQP-144, DH.1500B-EQP-126, DH.1500B-EQP-108, DH.1500B-EQP-90, DH.1500B-EQP-72, DH.1500B-EQP-54, DH.1500B-EQP-36, DH.1500B-EQP-18, DH.160012167, DH.160012166, DH.16000.1712, DH.1600.3056, DH.1600.3057, DH.1600140, DH.1600..1160, DH.1600B-EQP-196, DH.1600B-EQP-178, DH.1600B-EQP-160, DH.1600B-EQP-142, DH.1600B-EQP-124, DH.1600B-EQP-106, DH.1600B-EQP-88, DH.1600B-EQP-70, DH.1600B-EQP-52, DH.1600B-EQP-34, DH.1600A-EQP-218, DH.1600A-EQP-198, DH.1600A-EQP-178, DH.1600A-EQP-158, DH.1600A-EQP-138, DH.1600A-EQP-118, DH.1600A-EQP-98, DH.1600A-EQP-78, DH.1600A-EQP-58, DH.1600A-EQP-38, DH.160012056, DH.1600.1310, DH.1600.1330, DH.1600A-EQP-20, DH.1600A-EQP-18, DH.1600B-EQP-16, DH.1600..1140, DH.1600A-EQP-220, DH.1600A-EQP-200, DH.1600A-EQP-180, DH.1600A-EQP-160, DH.1600A-EQP-140, DH.1600A-EQP-120, DH.1600A-EQP-100, DH.1600A-EQP-80, DH.1600A-EQP-60, DH.1600A-EQP-40, DH.1600B-EQP-198, DH.1600B-EQP-180, DH.1600B-EQP-162, DH.1600B-EQP-144, DH.1600B-EQP-126, DH.1600B-EQP-108, DH.1600B-EQP-90, DH.1600B-EQP-72, DH.1600B-EQP-54, DH.1600B-EQP-36, DH.1600B-EQP-18, DH.16007820, DH.16001140, DH.1600820, DH.1600.1160, DH2300.4020 |  |  |  |  | 9d | 20d | finish on or before 2027-07-01 | 89 | DH1600 | 6 |  |  |
|  | 9 | **Security & Fire Alarm Testing** |  |  | 2026-11-17 | 2027-03-18 |  |  |  |  |  |  |  |  |  |  |  |  |  |
| A5850 |  | DH1100 - Security Cx & Testing | milestone | 0d | 2026-11-17 | 2026-11-17 | F.1000A.1190 FF, F.1000A.1185 FF, F.1000A.1180 FF, F.1000A.1175 FF, F.1000A.1170 FF |  |  |  |  | 30d | 44d |  |  | DH1100 |  |  |  |
| A5851 |  | DH1200 - Security Cx & Testing | milestone | 0d | 2026-12-03 | 2026-12-03 | F.1000A.1215 FF, F.1000A.1210 FF, F.1000A.1205 FF, F.1000A.1200 FF, F.1000A.1195 FF, M1231 FF |  |  |  |  | 38d | 39d |  |  | DH1200 |  |  |  |
| A5852 |  | DH1300 - Security Cx & Testing | milestone | 0d | 2027-01-04 | 2027-01-04 | F.1000A.1285 FF, F.1000A.1280 FF, F.1000A.1230 FF, F.1000A.1225 FF, F.1000A.1220 FF+35d |  |  |  |  | 37d |  |  |  | DH1300 |  |  |  |
| A5853 |  | DH1400 - Security Cx & Testing | milestone | 0d | 2027-01-07 | 2027-01-07 | F.1000A.1295 FF, F.1000A.1290 FF, F.1000A.1245 FF, F.1000A.1240 FF, F.1000A.1235 FF |  |  |  |  | 57d | 58d |  |  | DH1400 |  |  |  |
| A5855 |  | DH1600 - Security Cx & Testing | milestone | 0d | 2027-01-15 | 2027-01-15 | F.1000A.1310 FF, F.1000A.1315 FF, F.1000A.1275 FF, F.1000A.1270 FF, F.1000A.1265 FF |  |  |  |  | 93d | 91d |  |  | DH1600 |  |  |  |
| A5854 |  | DH1500 - Security Cx & Testing | milestone | 0d | 2027-03-18 | 2027-03-18 | F.1000A.1305 FF, F.1000A.1300 FF, F.1000A.1260 FF, F.1000A.1255 FF, F.1000A.1250 FF |  |  |  |  | 31d | 54d |  |  | DH1500 |  |  |  |
|  | 2 | **Preconstruction** |  |  | 2025-09-02 | 2026-07-08 |  |  |  |  |  |  |  |  |  |  |  |  |  |
| PRE.4360 |  | Preconstruction |  | 60d | 2025-11-26 A | 2026-02-02 A | M1050 SS, M1010 | 100% |  | 2026-04-15 | 2026-07-09 |  |  |  | 92 |  | 0 | Y |  |
|  | 1 | **Trade Buyout** |  |  | 2025-09-10 | 2026-07-08 |  |  |  |  |  |  |  |  |  |  |  |  |  |
|  | 1 | **Sitework** |  |  | 2025-11-03 | 2026-01-16 |  |  |  |  |  |  |  |  |  |  |  |  |  |
| TB.SITE.1010 |  | Trade Buyout / Sitework // Interview and Recieve Final Pricing |  | 10d | 2025-11-03 A | 2025-11-11 A | PRE.4360 SS | 100% |  | 2025-12-31 | 2026-01-14 |  |  |  | 95 |  |  | Y |  |
| TB.SITE.1000 |  | Trade Buyout / Sitework // Submit RTA |  | 1d | 2025-11-12 A | 2025-11-13 A | TB.SITE.1010 | 100% |  | 2026-01-15 | 2026-01-15 |  |  |  | 96 |  |  | Y |  |
| TB.SITE.1020 |  | Trade Buyout / Sitework // RTA Concented (approved) |  | 5d | 2025-11-14 A | 2025-11-20 A | M1210 SS, TB.SITE.1000 | 100% |  | 2026-01-12 | 2026-01-16 |  |  |  | 97 |  |  | Y |  |
| TB.SITE.1030 |  | Trade Buyout / Sitework // Issue and Recieve Executed Contract |  | 10d | 2025-11-21 A | 2026-01-16 A | TB.SITE.1020 | 100% |  | 2026-01-14 | 2026-01-28 |  |  |  | 98 |  |  | Y |  |
|  | 2 | **Concrete** |  |  | 2025-09-10 | 2026-01-28 |  |  |  |  |  |  |  |  |  |  |  |  |  |
| TB.CON.1010 |  | Trade Buyout / Concrete // Interview and Recieve Final Pricing |  | 10d | 2025-09-10 A | 2025-09-29 A | PRE.4360 SS | 100% |  | 2025-12-31 | 2026-01-14 |  |  |  | 100 |  |  | Y |  |
| TB.CON.1000 |  | Trade Buyout / Concrete // Submit RTA |  | 1d | 2025-09-30 A | 2025-10-09 A | TB.CON.1010 | 100% |  | 2026-01-15 | 2026-01-15 |  |  |  | 101 |  |  | Y |  |
| TB.CON.1020 |  | Trade Buyout / Concrete // RTA Concented (approved) |  | 5d | 2025-10-10 A | 2025-10-17 A | M1210 SS, TB.CON.1000 | 100% |  | 2026-01-12 | 2026-01-16 |  |  |  | 102 |  |  | Y |  |
| TB.CON.1030 |  | Trade Buyout / Concrete // Issue and Recieve Executed Contract |  | 10d | 2026-01-16 A | 2026-01-28 A | TB.CON.1020 | 100% |  | 2026-01-28 | 2026-02-10 |  |  |  | 103 |  |  | Y |  |

| ID | WBS | Activity | Duration | Start | Finish | Predecessors | Complete | Planned start | Planned finish | MSP Activity ID | 12 - SUFFOLK - Export_to_Procore |
| --- | --- | --- | --- | --- | --- | --- | --- | --- | --- | --- | --- |
|  | 3 | **Structural Steel** |  | 2025-10-22 | 2026-01-09 |  |  |  |  |  |  |
| TB.SS.1010 |  | Trade Buyout / Structural Steel // Interview and Recieve Final Pricing | 10d | 2025-10-22 A | 2025-11-05 A | PRE.4360 SS | 100% | 2025-11-12 | 2025-11-25 | 105 | Y |
| TB.SS.1000 |  | Trade Buyout / Structural Steel // Submit RTA | 1d | 2025-11-06 A | 2025-11-06 A | TB.SS.1010 | 100% | 2025-11-26 | 2025-11-26 | 106 | Y |
| TB.SS.1020 |  | Trade Buyout / Structural Steel // RTA Concented (approved) | 5d | 2025-11-07 A | 2025-11-12 A | M1210 SS, TB.SS.1000 | 100% | 2026-02-05 | 2026-02-11 | 107 | Y |
| TB.SS.1030 |  | Trade Buyout / Structural Steel // Issue and Recieve Executed Contract | 10d | 2025-11-12 A | 2026-01-09 A | TB.SS.1020 | 100% | 2025-11-12 | 2025-11-25 | 108 | Y |
|  | 4 | **Electrical** |  | 2025-10-22 | 2026-01-21 |  |  |  |  |  |  |
| TB.ELEC.1010 |  | Trade Buyout / Electrical // Interview and Recieve Final Pricing | 10d | 2025-10-22 A | 2025-11-03 A | PRE.4360 SS | 100% | 2025-12-31 | 2026-01-14 | 110 | Y |
| TB.ELEC.1000 |  | Trade Buyout / Electrical // Submit RTA | 1d | 2025-11-03 A | 2025-11-04 A | TB.ELEC.1010 | 100% | 2026-01-15 | 2026-01-15 | 111 | Y |
| TB.ELEC.1020 |  | Trade Buyout / Electrical // RTA Concented (approved) | 5d | 2025-11-05 A | 2025-11-10 A | M1210 SS, TB.ELEC.1000 | 100% | 2026-01-12 | 2026-01-16 | 112 | Y |
| TB.ELEC.1030 |  | Trade Buyout / Electrical // Issue and Recieve Executed Contract | 10d | 2026-01-16 A | 2026-01-21 A | TB.ELEC.1020 | 100% | 2026-01-28 | 2026-02-10 | 113 | Y |
|  | 5 | **Mechanical / Plumbing** |  | 2025-10-09 | 2026-01-06 |  |  |  |  |  |  |
| TB.MECH.1010 |  | Trade Buyout / Mech - Plumb // Interview and Recieve Final Pricing | 10d | 2025-10-09 A | 2025-10-23 A | PRE.4360 SS | 100% | 2025-12-31 | 2026-01-14 | 115 | Y |
| TB.MECH.1000 |  | Trade Buyout / Mech - Plumb // Submit RTA | 1d | 2025-10-24 A | 2025-10-27 A | TB.MECH.1010 | 100% | 2026-01-15 | 2026-01-15 | 116 | Y |
| TB.MECH.1020 |  | Trade Buyout / Mech - Plumb // RTA Concented (approved) | 5d | 2025-10-28 A | 2025-11-03 A | M1210 SS, TB.MECH.1000 | 100% | 2026-01-12 | 2026-01-16 | 117 | Y |
| TB.MECH.1030 |  | Trade Buyout / Mech - Plumb // Issue and Recieve Executed Contract | 10d | 2025-11-05 A | 2026-01-06 A | TB.MECH.1020 | 100% | 2026-01-16 | 2026-01-30 | 118 | Y |
|  | 6 | **Fire Protection** |  | 2025-10-24 | 2026-03-27 |  |  |  |  |  |  |
| TB.FP.1010 |  | Trade Buyout / Fire Protection // Interview and Recieve Final Pricing | 10d | 2025-10-24 A | 2025-11-06 A | PRE.4360 SS | 100% | 2026-01-06 | 2026-01-20 | 120 | Y |
| TB.FP.1000 |  | Trade Buyout / Fire Protection // Submit RTA | 1d | 2025-11-07 A | 2025-11-10 A | TB.FP.1010 | 100% | 2026-01-21 | 2026-01-21 | 121 | Y |
| TB.FP.1020 |  | Trade Buyout / Fire Protection // RTA Concented (approved) | 5d | 2025-11-12 A | 2025-11-20 A | M1210 SS, TB.FP.1000 | 100% | 2026-01-15 | 2026-01-22 | 122 | Y |
| TB.FP.1030 |  | Trade Buyout / Fire Protection // Issue and Recieve Executed Contract | 10d | 2026-03-16 A | 2026-03-27 A | TB.FP.1020 | 100% | 2026-03-30 | 2026-04-10 | 123 | Y |
|  | 7 | **Metal Panels** |  | 2025-10-14 | 2026-01-05 |  |  |  |  |  |  |
| TB.MP.1010 |  | Trade Buyout / Metal Panel // Interview and Recieve Final Pricing | 10d | 2025-10-14 A | 2025-10-23 A | PRE.4360 SS | 100% | 2026-01-06 | 2026-01-20 | 125 | Y |
| TB.MP.1000 |  | Trade Buyout / Metal Panel // Submit RTA | 1d | 2025-10-24 A | 2025-10-27 A | TB.MP.1010 | 100% | 2026-01-21 | 2026-01-21 | 126 | Y |
| TB.MP.1020 |  | Trade Buyout / Metal Panel // RTA Concented (approved) | 5d | 2025-10-28 A | 2025-11-03 A | M1210 SS, TB.MP.1000 | 100% | 2026-01-15 | 2026-01-22 | 127 | Y |
| TB.MP.1030 |  | Trade Buyout / Metal Panel // Issue and Recieve Executed Contract | 10d | 2025-11-04 A | 2026-01-05 A | TB.MP.1020 | 100% | 2026-01-22 | 2026-02-04 | 128 | Y |

| ID | WBS | Activity | Duration | Start | Finish | Predecessors | Complete | Planned start | Planned finish | MSP Activity ID | 12 - SUFFOLK - Export_to_Procore |
| --- | --- | --- | --- | --- | --- | --- | --- | --- | --- | --- | --- |
|  | 8 | **Waterproofing** |  | 2025-11-18 | 2026-01-06 |  |  |  |  |  |  |
| TB.WP.1010 |  | Trade Buyout / Waterproofing // Interview and Recieve Final Pricing | 10d | 2025-11-18 A | 2025-11-28 A | PRE.4360 SS | 100% | 2026-01-06 | 2026-01-20 | 130 | Y |
| TB.WP.1000 |  | Trade Buyout / Waterproofing // Submit RTA | 1d | 2025-11-28 A | 2025-12-01 A | TB.WP.1010 | 100% | 2026-01-21 | 2026-01-21 | 131 | Y |
| TB.WP.1020 |  | Trade Buyout / Waterproofing // RTA Concented (approved) | 5d | 2025-12-02 A | 2025-12-09 A | M1210 SS, TB.WP.1000 | 100% | 2026-01-15 | 2026-01-22 | 132 | Y |
| TB.WP.1030 |  | Trade Buyout / Waterproofing // Issue and Recieve Executed Contract | 10d | 2025-12-10 A | 2026-01-06 A | TB.WP.1020 | 100% | 2026-01-22 | 2026-02-04 | 133 | Y |
|  | 9 | **Roofing** |  | 2025-10-31 | 2026-01-23 |  |  |  |  |  |  |
| TB.ROOF.1010 |  | Trade Buyout / Roofing // Interview and Recieve Final Pricing | 10d | 2025-10-31 A | 2025-11-07 A | PRE.4360 SS | 100% | 2026-01-06 | 2026-01-20 | 135 | Y |
| TB.ROOF.1000 |  | Trade Buyout / Roofing // Submit RTA | 1d | 2025-11-10 A | 2025-11-11 A | TB.ROOF.1010 | 100% | 2026-01-21 | 2026-01-21 | 136 | Y |
| TB.ROOF.1020 |  | Trade Buyout / Roofing // RTA Concented (approved) | 5d | 2025-11-12 A | 2025-11-20 A | M1210 SS, TB.ROOF.1000 | 100% | 2026-01-15 | 2026-01-22 | 137 | Y |
| TB.ROOF.1030 |  | Trade Buyout / Roofing // Issue and Recieve Executed Contract | 10d | 2026-01-19 A | 2026-01-23 A | TB.ROOF.1020 | 100% | 2026-02-02 | 2026-02-13 | 138 | Y |
|  | 10 | **Doors Frames & Hardware** |  | 2025-10-22 | 2026-03-27 |  |  |  |  |  |  |
| TB.DFH.1010 |  | Trade Buyout / Doors & Hardware // Interview and Recieve Final Pricing | 10d | 2025-10-22 A | 2025-11-04 A | PRE.4360 SS | 100% | 2026-01-06 | 2026-01-20 | 140 | Y |
| TB.DFH.1000 |  | Trade Buyout / Doors & Hardware // Submit RTA | 1d | 2025-11-04 A | 2025-11-05 A | TB.DFH.1010 | 100% | 2026-01-21 | 2026-01-21 | 141 | Y |
| TB.DFH.1020 |  | Trade Buyout / Doors & Hardware // RTA Concented (approved) | 5d | 2025-11-06 A | 2025-11-14 A | M1210 SS, TB.DFH.1000 | 100% | 2026-01-15 | 2026-01-22 | 142 | Y |
| TB.DFH.1030 |  | Trade Buyout / Doors & Hardware // Issue and Recieve Executed Contract | 10d | 2026-03-16 A | 2026-03-27 A | TB.DFH.1020 | 100% | 2026-03-30 | 2026-04-10 | 143 | Y |
|  | 11 | **Painting** |  | 2025-10-21 | 2026-01-16 |  |  |  |  |  |  |
| TB.PAINT.1010 |  | Trade Buyout / Painting // Interview and Recieve Final Pricing | 10d | 2025-10-21 A | 2025-11-03 A | PRE.4360 SS | 100% | 2026-01-09 | 2026-01-23 | 145 | Y |
| TB.PAINT.1000 |  | Trade Buyout / Painting // Submit RTA | 1d | 2025-11-03 A | 2025-11-04 A | TB.PAINT.1010 | 100% | 2026-01-26 | 2026-01-26 | 146 | Y |
| TB.PAINT.1020 |  | Trade Buyout / Painting // RTA Concented (approved) | 5d | 2025-11-05 A | 2025-11-11 A | M1210 SS, TB.PAINT.1000 | 100% | 2026-01-21 | 2026-01-27 | 147 | Y |
| TB.PAINT.1030 |  | Trade Buyout / Painting // Issue and Recieve Executed Contract | 10d | 2026-01-09 A | 2026-01-16 A | TB.PAINT.1020 | 100% | 2026-02-05 | 2026-02-19 | 148 | Y |
|  | 12 | **Fences & Gates** |  | 2026-03-19 | 2026-06-05 |  |  |  |  |  |  |
| TB.F&G.1010 |  | Trade Buyout / Fences & Gates // Interview and Recieve Final Pricing | 10d | 2026-03-19 A | 2026-04-01 A | PRE.4360 SS | 100% | 2026-04-02 | 2026-04-15 | 150 | Y |
| TB.F&G.1000 |  | Trade Buyout / Fences & Gates // Submit RTA | 1d | 2026-05-20 A | 2026-05-20 A | TB.F&G.1010 | 100% |  |  | 151 | Y |
| TB.F&G.1020 |  | Trade Buyout / Fences & Gates // RTA Concented (approved) | 5d | 2026-05-21 A | 2026-05-28 A | M1210 SS, TB.F&G.1000 | 100% |  |  | 152 | Y |
| TB.F&G.1030 |  | Trade Buyout / Fences & Gates // Issue and Recieve Executed Contract | 10d | 2026-05-29 A | 2026-06-05 A | TB.F&G.1020 | 100% | 2026-05-29 | 2026-06-11 | 153 | Y |

| ID | WBS | Activity | Duration | Start | Finish | Predecessors | Complete | Planned start | Planned finish | MSP Activity ID | 12 - SUFFOLK - Export_to_Procore |
| --- | --- | --- | --- | --- | --- | --- | --- | --- | --- | --- | --- |
|  | 13 | **Landscaping** |  | 2026-03-19 | 2026-06-05 |  |  |  |  |  |  |
| TB.LAND.1010 |  | Trade Buyout / Landscaping // Interview and Recieve Final Pricing | 10d | 2026-03-19 A | 2026-04-01 A | PRE.4360 SS | 100% | 2026-04-02 | 2026-04-15 | 155 | Y |
| TB.LAND.1000 |  | Trade Buyout / Landscaping // Submit RTA | 1d | 2026-05-20 A | 2026-05-20 A | TB.LAND.1010 | 100% |  |  | 156 | Y |
| TB.LAND.1020 |  | Trade Buyout / Landscaping // RTA Concented (approved) | 5d | 2026-05-21 A | 2026-05-28 A | M1210 SS, TB.LAND.1000 | 100% |  |  | 157 | Y |
| TB.LAND.1030 |  | Trade Buyout / Landscaping // Issue and Recieve Executed Contract | 10d | 2026-05-29 A | 2026-06-05 A | TB.LAND.1020 | 100% | 2026-05-29 | 2026-06-11 | 158 | Y |
|  | 14 | **Security Systems** |  | 2026-05-20 | 2026-06-25 |  |  |  |  |  |  |
| TB.SEC.1010 |  | Trade Buyout / Security Systems // Interview and Recieve Final Pricing | 10d | 2026-05-20 A | 2026-06-03 A | PRE.4360 SS | 100% |  |  | 160 | Y |
| TB.SEC.1000 |  | Trade Buyout / Security Systems // Submit RTA | 1d | 2026-06-04 A | 2026-06-04 A | TB.SEC.1010 | 100% | 2026-06-10 | 2026-06-10 | 161 | Y |
| TB.SEC.1020 |  | Trade Buyout / Security Systems // RTA Concented (approved) | 5d | 2026-06-04 A | 2026-06-12 A | M1210 SS, TB.SEC.1000 | 100% | 2026-06-11 | 2026-06-17 | 162 | Y |
| TB.SEC.1030 |  | Trade Buyout / Security Systems // Issue and Recieve Executed Contract | 10d | 2026-06-12 A | 2026-06-25 A | TB.SEC.1020 | 100% |  |  | 163 | Y |
|  | 15 | **Data & Telecommunications** |  | 2026-01-16 | 2026-04-09 |  |  |  |  |  |  |
| TB.TELE.1010 |  | Trade Buyout / Data & Telecom // Interview and Recieve Final Pricing | 10d | 2026-01-16 A | 2026-01-28 A | PRE.4360 SS | 100% | 2026-02-05 | 2026-02-19 | 165 | Y |
| TB.TELE.1000 |  | Trade Buyout / Data & Telecom // Submit RTA | 1d | 2026-03-19 A | 2026-03-19 A | TB.TELE.1010 | 100% | 2026-04-02 | 2026-04-02 | 166 | Y |
| TB.TELE.1020 |  | Trade Buyout / Data & Telecom // RTA Concented (approved) | 5d | 2026-03-20 A | 2026-03-26 A | M1210 SS, TB.TELE.1000 | 100% | 2026-04-03 | 2026-04-09 | 167 | Y |
| TB.TELE.1030 |  | Trade Buyout / Data & Telecom // Issue and Recieve Executed Contract | 10d | 2026-03-27 A | 2026-04-09 A | TB.TELE.1020 | 100% | 2026-04-10 | 2026-04-23 | 168 | Y |
|  | 16 | **BMS & EPMS** |  | 2025-11-11 | 2026-06-03 |  |  |  |  |  |  |
| TB.BMS.1010 |  | Trade Buyout / BMS & EPMS // Interview and Recieve Final Pricing | 10d | 2025-11-11 A | 2025-11-21 A | PRE.4360 SS | 100% | 2026-01-09 | 2026-01-23 | 170 | Y |
| TB.BMS.1000 |  | Trade Buyout / BMS & EPMS // Submit RTA | 1d | 2025-11-24 A | 2025-11-25 A | TB.BMS.1010 | 100% | 2026-01-26 | 2026-01-26 | 171 | Y |
| TB.BMS.1020 |  | Trade Buyout / BMS & EPMS // RTA Concented (approved) | 5d | 2025-11-26 A | 2025-12-03 A | M1210 SS, TB.BMS.1000 | 100% | 2026-01-27 | 2026-02-02 | 172 | Y |
| TB.BMS.1030 |  | Trade Buyout / BMS & EPMS // Issue and Recieve Executed Contract | 10d | 2026-05-20 A | 2026-06-03 A | TB.BMS.1020 | 100% |  |  | 173 | Y |
|  | 17 | **Drywall & Ceilings** |  | 2025-10-07 | 2025-12-19 |  |  |  |  |  |  |
| TB.DC.1010 |  | Trade Buyout / Drywall & Ceilings // Interview and Recieve Final Pricing | 10d | 2025-10-07 A | 2025-10-14 A | PRE.4360 SS | 100% | 2026-01-07 | 2026-01-21 | 175 | Y |
| TB.DC.1000 |  | Trade Buyout / Drywall & Ceilings // Submit RTA | 1d | 2025-10-15 A | 2025-10-16 A | TB.DC.1010 | 100% | 2026-01-22 | 2026-01-22 | 176 | Y |
| TB.DC.1020 |  | Trade Buyout / Drywall & Ceilings // RTA Concented (approved) | 5d | 2025-10-17 A | 2025-10-24 A | M1210 SS, TB.DC.1000 | 100% | 2026-01-23 | 2026-01-29 | 177 | Y |
| TB.DC.1030 |  | Trade Buyout / Drywall & Ceilings // Issue and Recieve Executed Contract | 10d | 2025-12-02 A | 2025-12-19 A | TB.DC.1020 | 100% | 2026-01-30 | 2026-02-12 | 178 | Y |

| ID | WBS | Activity | Duration | Start | Finish | Predecessors | Complete | Planned start | Planned finish | MSP Activity ID | 12 - SUFFOLK - Export_to_Procore |
| --- | --- | --- | --- | --- | --- | --- | --- | --- | --- | --- | --- |
|  | 18 | **Tile, Carpet & Resilient Flooring** |  | 2026-03-19 | 2026-06-05 |  |  |  |  |  |  |
| TB.FLR.1010 |  | Trade Buyout / Tile, Carpet & Flooring // Interview and Recieve Final Pricing | 10d | 2026-03-19 A | 2026-04-01 A | PRE.4360 SS | 100% | 2026-04-02 | 2026-04-15 | 180 | Y |
| TB.FLR.1000 |  | Trade Buyout / Tile, Carpet & Flooring // Submit RTA | 1d | 2026-05-20 A | 2026-05-20 A | TB.FLR.1010 | 100% |  |  | 181 | Y |
| TB.FLR.1020 |  | Trade Buyout / Tile, Carpet & Flooring // RTA Concented (approved) | 5d | 2026-05-21 A | 2026-05-28 A | M1210 SS, TB.FLR.1000 | 100% |  |  | 182 | Y |
| TB.FLR.1030 |  | Trade Buyout / Tile, Carpet & Flooring // Issue and Recieve Executed Contract | 10d | 2026-05-29 A | 2026-06-05 A | TB.FLR.1020 | 100% | 2026-05-29 | 2026-06-11 | 183 | Y |
|  | 19 | **Misc Remaining Packages** |  | 2026-05-20 | 2026-07-08 |  |  |  |  |  |  |
| TB.MRP.1010 |  | Trade Buyout / Misc. Packages // Interview and Recieve Final Pricing | 15d | 2026-05-20 A | 2026-06-09 A | TB.FLR.1010 SS+6d | 100% | 2026-05-20 | 2026-06-10 | 185 | Y |
| TB.MRP.1000 |  | Trade Buyout / Misc. Packages // Submit RTA | 1d | 2026-06-09 A | 2026-06-09 A | TB.MRP.1010 | 100% | 2026-07-01 | 2026-07-01 | 186 | Y |
| TB.MRP.1020 |  | Trade Buyout / Misc. Packages // RTA Concented (approved) | 5d | 2026-06-10 A | 2026-06-16 A | M1210 SS, TB.MRP.1000 | 100% |  |  | 187 | Y |
| TB.MRP.1030 |  | Trade Buyout / Misc. Packages // Issue and Recieve Executed Contract | 15d | 2026-06-17 A | 2026-07-08 A | TB.MRP.1020 | 100% |  |  | 188 | Y |
|  | 2 | **Design Schedule (Owner/Architect)** |  | 2025-09-02 | 2025-12-03 |  |  |  |  |  |  |
| A1970 |  | Design Schedule // Base Build IFP | 20d | 2025-09-02 A | 2025-09-16 A |  | 100% | 2025-12-31 | 2026-01-29 | 190 | Y |
| A1980 |  | Design Schedule // Base Build - Permit Review | 20d | 2025-09-17 A | 2025-10-22 A | A1970 | 100% | 2026-01-30 | 2026-02-27 | 7 | Y |
| A2000 |  | Design Schedule // Base Build - IFC (Included UG) | 20d | 2025-10-23 A | 2025-11-11 A | A1980 | 100% | 2026-03-03 | 2026-03-30 | 5 | Y |
| A1990 |  | Design Schedule // Full Building Permit in Hand | 1d | 2025-11-12 A | 2025-12-03 A | A1980, A2000 | 100% | 2026-03-02 | 2026-03-02 | 191 | Y |
|  | 3 | **Procurement** |  | 2025-10-20 | 2026-12-03 |  |  |  |  |  |  |
|  | 1 | **Trade Partners** |  | 2025-10-20 | 2026-12-03 |  |  |  |  |  |  |
|  | 1 | **Sitework** |  | 2025-11-21 | 2026-01-16 |  |  |  |  |  |  |
| A2010 |  | Procurement / Sitework // Prepare and Issues Submittal Packages | 10d | 2025-11-21 A | 2025-12-05 A | TB.SITE.1020 | 100% | 2025-12-31 | 2026-01-14 | 195 | Y |
| A2020 |  | Procurement / Sitework // Design Team review and Approval | 10d | 2025-12-08 A | 2025-12-19 A | A2010 | 100% | 2026-01-15 | 2026-01-29 | 196 | Y |
| A2030 |  | Procurement / Sitework // Release Material and Fabricate | 15d | 2025-12-22 A | 2026-01-16 A | A2020 | 100% | 2026-01-30 | 2026-02-20 | 197 | Y |
|  | 2 | **Concrete** |  | 2025-10-20 | 2026-04-02 |  |  |  |  |  |  |
| A2040 |  | Procurement / Concrete // Prepare and Issues Submittal Packages | 10d | 2025-10-20 A | 2025-10-31 A | TB.CON.1020 | 100% | 2025-12-31 | 2026-01-14 | 199 | Y |
| A2050 |  | Procurement / Concrete // Design Team review and Approval | 10d | 2025-11-03 A | 2025-11-20 A | A2040 | 100% | 2026-01-15 | 2026-01-29 | 200 | Y |
| A2060 |  | Procurement / Concrete // Release Material and Fabricate | 15d | 2025-11-21 A | 2026-04-02 A | A2050 | 100% | 2026-01-30 | 2026-02-20 | 201 | Y |

| ID | WBS | Activity | Duration | Start | Finish | Predecessors | Complete | Planned start | Planned finish | MSP Activity ID | 12 - SUFFOLK - Export_to_Procore |
| --- | --- | --- | --- | --- | --- | --- | --- | --- | --- | --- | --- |
|  | 3 | **Structural Steel** |  | 2025-12-09 | 2026-05-08 |  |  |  |  |  |  |
| A2070 |  | Procurement / Structural Steel // Prepare and Issues Submittal Packages | 10d | 2025-12-09 A | 2025-12-24 A | A2580 | 100% | 2025-12-31 | 2026-01-14 | 203 | Y |
| A2080 |  | Procurement / Structural Steel // Design Team review and Approval | 10d | 2025-12-24 A | 2026-01-06 A | A2070, A2070 SS | 100% | 2026-01-30 | 2026-02-12 | 204 | Y |
| A2090 |  | Procurement / Structural Steel // Release Material and Fabricate | 43d | 2026-01-09 A | 2026-05-08 A | A2080 | 100% | 2026-03-03 | 2026-04-30 | 9 | Y |
|  | 4 | **Electrical** |  | 2025-11-11 | 2026-07-24 |  |  |  |  |  |  |
| A2100 |  | Procurement / Electrical // Prepare and Issues Submittal Packages | 10d | 2025-11-11 A | 2025-11-26 A | TB.ELEC.1020 | 100% | 2025-12-31 | 2026-01-14 | 207 | Y |
| A2110 |  | Procurement / Electrical // Design Team review and Approval | 10d | 2025-11-27 A | 2025-12-12 A | A2100 | 100% | 2026-01-15 | 2026-01-29 | 208 | Y |
| A2120 |  | Procurement / Electrical // Release Material and Fabricate | 15d | 2025-12-15 A | 2026-03-25 A | A2110 | 100% | 2026-01-30 | 2026-02-20 | 209 | Y |
| A5856 |  | Procurement / Electrical // XFMR Fibre Glass 90s | 15d | 2025-12-15 A | 2026-05-08 A | A2110 | 100% | 2026-01-30 | 2026-02-20 | 209 | Y |
|  | 1 | **Priority Release (Long Lead)** |  | 2026-03-18 | 2026-07-24 |  |  |  |  |  |  |
|  | 1 | **Buss Duct** |  | 2026-03-18 | 2026-07-24 |  |  |  |  |  |  |
| A2940 |  | Long Lead / Buss Duct // Compile and Deliver Material Submittal (BIM Shop Drawing) | 5d | 2026-03-18 A | 2026-03-24 A | A2660 | 100% | 2026-04-01 | 2026-04-07 | 212 | Y |
| A2950 |  | Long Lead / Buss Duct // Design Team & Owner Review & Approval | 7d | 2026-03-25 A | 2026-04-01 A | A2940 | 100% | 2026-04-08 | 2026-04-16 | 214 | Y |
| A2960 |  | Long Lead / Buss Duct // Material Release and Delivery | 90d | 2026-04-01 A | 2026-07-24 A | A2950 | 100% | 2026-04-15 | 2026-08-20 | 215 | Y |
|  | 2 | **Cable Buss** |  |  |  |  |  |  |  |  |  |
|  | 3 | **MV Cable** |  |  |  |  |  |  |  |  |  |
|  | 5 | **Mechanical Plumbing** |  | 2025-11-04 | 2026-01-16 |  |  |  |  |  |  |
| A2130 |  | Long Lead / Mech. Plumbing // Prepare and Issues Submittal Packages | 10d | 2025-11-04 A | 2025-11-19 A | TB.MECH.1020 | 100% | 2025-12-31 | 2026-01-14 | 219 | Y |
| A2140 |  | Long Lead / Mech. Plumbing // Design Team review and Approval | 10d | 2025-11-20 A | 2025-12-05 A | A2130 | 100% | 2026-01-15 | 2026-01-29 | 220 | Y |
| A2570 |  | Long Lead / Mech. Plumbing // Release Material & Fabricate | 10d | 2025-12-24 A | 2026-01-16 A | A2140 | 100% | 2026-03-09 | 2026-03-20 | 224 | Y |
|  | 6 | **Fire Protection** |  | 2025-11-21 | 2026-01-16 |  |  |  |  |  |  |
| A2160 |  | Long Lead / Fire Protection // Prepare and Issues Submittal Packages | 10d | 2025-11-21 A | 2025-12-02 A | TB.FP.1020 | 100% | 2026-01-21 | 2026-02-03 | 226 | Y |
| A2170 |  | Long Lead / Fire Protection // Design Team review and Approval | 10d | 2025-12-03 A | 2025-12-22 A | A2160 | 100% | 2026-02-04 | 2026-02-18 | 227 | Y |
| A2180 |  | Long Lead / Fire Protection // Release Material / Fabricate & Deliver | 20d | 2025-12-23 A | 2026-01-16 A | A2170 | 100% | 2026-02-19 | 2026-03-18 | 228 | Y |

| ID | WBS | Activity | Duration | Start | Finish | Predecessors | Complete | Remaining | Planned start | Planned finish | Total float | Free float | MSP Activity ID | 12 - SUFFOLK - Export_to_Procore |
| --- | --- | --- | --- | --- | --- | --- | --- | --- | --- | --- | --- | --- | --- | --- |
|  | 7 | **Metal Panels** |  | 2026-01-07 | 2026-05-20 |  |  |  |  |  |  |  |  |  |
| A2190 |  | Long Lead / Metal Panels // Prepare and Issues Submittal Packages | 10d | 2026-01-07 A | 2026-02-20 A | TB.MP.1030 | 100% |  | 2026-01-06 | 2026-01-20 |  |  | 230 | Y |
| A2200 |  | Long Lead / Metal Panels // Design Team review and Approval | 10d | 2026-02-23 A | 2026-03-03 A | A2190 | 100% |  | 2026-04-13 | 2026-04-24 |  |  | 231 | Y |
| A2910 |  | Long Lead / Metal Panels // Fabricate and Deliver | 25d | 2026-03-04 A | 2026-05-20 A | A2200, A2190 | 100% |  | 2026-04-21 | 2026-05-27 |  |  | 234 | Y |
|  | 8 | **Waterproofing** |  | 2025-12-30 | 2026-01-16 |  |  |  |  |  |  |  |  |  |
| A2220 |  | Long Lead / Waterproofing // Prepare and Issues Submittal Packages | 10d | 2025-12-30 A | 2026-01-07 A | TB.WP.1030 | 100% |  | 2026-01-06 | 2026-01-20 |  |  | 236 | Y |
| A2230 |  | Long Lead / Waterproofing // Design Team review and Approval | 10d | 2026-01-07 A | 2026-01-09 A | A2220 | 100% |  | 2026-01-21 | 2026-02-03 |  |  | 237 | Y |
| A2240 |  | Long Lead / Waterproofing // Release Material and Deliver | 15d | 2026-01-07 A | 2026-01-16 A | A2230 | 100% |  | 2026-02-04 | 2026-02-25 |  |  | 238 | Y |
|  | 9 | **Roofing** |  | 2026-03-06 | 2026-05-20 |  |  |  |  |  |  |  |  |  |
| A2250 |  | Long Lead / Roofing // Prepare and Issues Submittal Packages | 10d | 2026-03-06 A | 2026-03-17 A | TB.ROOF.1030 | 100% |  | 2026-04-06 | 2026-04-17 |  |  | 240 | Y |
| A2260 |  | Long Lead / Roofing // Design Team review and Approval | 10d | 2026-03-12 A | 2026-03-20 A | A2250 | 100% |  | 2026-04-20 | 2026-05-01 |  |  | 241 | Y |
| A2270 |  | Long Lead / Roofing // Release Material and Deliver | 15d | 2026-03-21 A | 2026-05-20 A | A2260 | 100% |  | 2026-05-04 | 2026-05-22 |  |  | 242 | Y |
|  | 10 | **Doors Frames & Hardware** |  | 2026-05-20 | 2026-06-30 |  |  |  |  |  |  |  |  |  |
| A2280 |  | Long Lead / Doors & Hardware // Prepare and Issues Submittal Packages | 10d | 2026-05-20 A | 2026-06-03 A | TB.DFH.1030 | 100% |  |  |  |  |  | 244 | Y |
| A2290 |  | Long Lead / Doors & Hardware // Design Team review and Approval | 10d | 2026-06-04 A | 2026-06-15 A | A2280 | 100% |  | 2026-06-10 | 2026-06-23 |  |  | 245 | Y |
| A2300 |  | Long Lead / Doors & Hardware // Release Material and Deliver | 40d | 2026-06-16 A | 2026-06-30 A | A2290 | 100% |  | 2026-06-16 | 2026-08-11 |  |  | 246 | Y |
|  | 11 | **Painting** |  | 2026-05-20 | 2026-07-08 |  |  |  |  |  |  |  |  |  |
| A2310 |  | Long Lead / Painting // Prepare and Issues Submittal Packages | 10d | 2026-05-20 A | 2026-06-03 A | TB.PAINT.1030 | 100% |  |  |  |  |  | 248 | Y |
| A2320 |  | Long Lead / Painting // Design Team review and Approval | 10d | 2026-06-04 A | 2026-06-17 A | A2310 | 100% |  |  |  |  |  | 249 | Y |
| A2330 |  | Long Lead / Painting // Release Material and Deliver | 15d | 2026-06-17 A | 2026-07-08 A | A2320 | 100% |  |  |  |  |  | 250 | Y |
|  | 12 | **Fences and Gates** |  | 2026-06-08 | 2026-10-14 |  |  |  |  |  |  |  |  |  |
| A2340 |  | Long Lead / Fences & Gates // Prepare and Issues Submittal Packages | 10d | 2026-06-08 A | 2026-06-19 A | TB.F&G.1030 | 100% |  | 2026-07-24 | 2026-08-06 |  |  | 252 | Y |
| A2350 |  | Long Lead / Fences & Gates // Design Team review and Approval | 10d | 2026-06-19 A | 2026-07-02 A | A2340 | 100% |  | 2026-08-07 | 2026-08-20 |  |  | 253 | Y |
| A2360 |  | Long Lead / Fences & Gates // Release Material and Fabricate - Deliver | 60d | 2026-07-06 A | 2026-10-14 | A2350 | 100% | 0d | 2026-08-21 | 2026-11-17 | 73d | 35d | 254 | Y |

| ID | WBS | Activity | Duration | Start | Finish | Predecessors | Complete | Total float | Free float | MSP Activity ID | 12 - SUFFOLK - Export_to_Procore |
| --- | --- | --- | --- | --- | --- | --- | --- | --- | --- | --- | --- |
|  | 13 | **Landscaping** |  | 2026-10-14 | 2026-12-03 |  |  |  |  |  |  |
| A2370 |  | Long Lead / Landscaping // Prepare and Issues Submittal Packages | 10d | 2026-10-14 | 2026-10-27 | TB.LAND.1030 |  | 38d | 0d | 256 | Y |
| A2380 |  | Long Lead / Landscaping // Design Team review and Approval | 10d | 2026-10-28 | 2026-11-10 | A2370 |  | 38d | 0d | 257 | Y |
| A2390 |  | Long Lead / Landscaping // Release Material and Deliver | 15d | 2026-11-12 | 2026-12-03 | A2380, A2360 FF |  | 38d | 0d | 258 | Y |
|  | 14 | **Security Systems** |  | 2026-10-14 | 2026-12-03 |  |  |  |  |  |  |
| A2400 |  | Long Lead / Security Systems // Prepare and Issues Submittal Packages | 10d | 2026-10-14 | 2026-10-27 | TB.SEC.1030 |  | 38d | 0d | 260 | Y |
| A2410 |  | Long Lead / Security Systems // Design Team review and Approval | 10d | 2026-10-28 | 2026-11-10 | A2400 |  | 38d | 0d | 261 | Y |
| A2420 |  | Long Lead / Security Systems // Release Material and Deliver | 15d | 2026-11-12 | 2026-12-03 | A2410, A2390 FF |  | 38d | 0d | 262 | Y |
|  | 15 | **Data & Telecommunications** |  | 2026-05-20 | 2026-12-03 |  |  |  |  |  |  |
| A2430 |  | Long Lead / Data & Telecom // Prepare and Issues Submittal Packages | 10d | 2026-05-20 A | 2026-06-03 A | TB.TELE.1030 | 100% |  |  | 264 | Y |
| A2440 |  | Long Lead / Data & Telecom // Design Team review and Approval | 10d | 2026-10-14 | 2026-10-27 | A2430 |  | 48d | 10d | 265 | Y |
| A2450 |  | Long Lead / Data & Telecom // Release Material and Deliver | 15d | 2026-11-12 | 2026-12-03 | A2440, A2420 FF |  | 38d | 0d | 266 | Y |
|  | 16 | **BMS & EPMS** |  | 2026-10-14 | 2026-12-03 |  |  |  |  |  |  |
| A2460 |  | Long Lead / BMS & EPMS // Prepare and Issues Submittal Packages | 10d | 2026-10-14 | 2026-10-27 | TB.BMS.1030 |  | 38d | 0d | 268 | Y |
| A2470 |  | Long Lead / BMS & EPMS // Design Team review and Approval | 10d | 2026-10-28 | 2026-11-10 | A2460 |  | 38d | 0d | 269 | Y |
| A2480 |  | Long Lead / BMS & EPMS // Release Material and Deliver | 15d | 2026-11-12 | 2026-12-03 | A2470, A2450 FF |  | 38d | 0d | 270 | Y |
|  | 17 | **Tile, Carpet & Resilient Flooring** |  | 2026-10-14 | 2026-12-03 |  |  |  |  |  |  |
| A2490 |  | Long Lead / Tile, Carpet & Flooring // Prepare and Issues Submittal Packages | 10d | 2026-10-14 | 2026-10-27 | TB.FLR.1030 |  | 38d | 0d | 272 | Y |
| A2500 |  | Long Lead / Tile, Carpet & Flooring // Design Team review and Approval | 10d | 2026-10-28 | 2026-11-10 | A2490 |  | 38d | 0d | 273 | Y |
| A2510 |  | Long Lead / Tile, Carpet & Flooring // Release Material and Fabricate | 15d | 2026-11-12 | 2026-12-03 | A2500, A2480 FF |  | 38d | 0d | 274 | Y |
|  | 18 | **Misc Remaining Packages** |  | 2026-10-14 | 2026-12-03 |  |  |  |  |  |  |
| A2520 |  | Long Lead / Mics. Packages // Prepare and Issues Submittal Packages | 10d | 2026-10-14 | 2026-10-27 | TB.MRP.1030 |  | 38d | 0d | 276 | Y |
| A2530 |  | Long Lead / Mics. Packages // Design Team review and Approval | 10d | 2026-10-28 | 2026-11-10 | A2520 |  | 38d | 0d | 277 | Y |
| A2540 |  | Long Lead / Mics. Packages // Release Material and Fabricate | 15d | 2026-11-12 | 2026-12-03 | A2530, A2510 FF |  | 38d | 0d | 278 | Y |

| ID | WBS | Activity | Duration | Start | Finish | Predecessors | Complete | Planned start | Planned finish | MSP Activity ID | 12 - SUFFOLK - Export_to_Procore |
| --- | --- | --- | --- | --- | --- | --- | --- | --- | --- | --- | --- |
|  | 5 | **BIM** |  | 2025-11-20 | 2026-10-27 |  |  |  |  |  |  |
| A2580 |  | BIM // BIM Kick Off | 1d | 2025-12-08 A | 2025-12-08 A | M1040 SS | 100% | 2025-12-19 | 2025-12-19 | 437 | Y |
|  | 1 | **MV Yard** |  | 2025-12-08 | 2026-02-25 |  |  |  |  |  |  |
| A2590 |  | BIM / MV Yard // Populate Model (All Trades) | 10d | 2025-12-08 A | 2026-01-09 A | A2580 | 100% | 2025-12-11 | 2025-12-24 | 439 | Y |
| A2600 |  | BIM / MV Yard // Clash Detection | 15d | 2026-01-12 A | 2026-01-23 A | A2590 | 100% | 2026-03-25 | 2026-04-14 | 440 | Y |
| A2610 |  | BIM / MV Yard // Sign off of Model | 1d | 2026-01-26 A | 2026-02-10 A | A2600 | 100% | 2026-04-15 | 2026-04-15 | 47 | Y |
| A2830 |  | BIM / MV Yard // Produce and submit Shop Drawings | 10d | 2026-02-17 A | 2026-02-25 A | A2610 | 100% | 2026-04-16 | 2026-04-29 | 223 | Y |
|  | 2 | **Building** |  | 2025-11-20 | 2026-10-27 |  |  |  |  |  |  |
|  | 1 | **FOH** |  | 2025-11-25 | 2026-04-27 |  |  |  |  |  |  |
| A2630 |  | FOH // BIM Building underground population | 5d | 2025-11-25 A | 2025-12-05 A | A2580 | 100% | 2025-12-31 | 2026-01-07 | 443 |  |
| A2640 |  | FOH // BIM Equipment & Foundations Model Population | 5d | 2025-11-25 A | 2025-12-05 A | A2630 | 100% | 2025-12-31 | 2026-01-07 | 48 |  |
| A5641 |  | FOH // BIM Underground Model Population & Coordination | 10d | 2025-11-25 A | 2025-12-05 A | A2630 | 100% | 2026-01-08 | 2026-01-22 | 446 |  |
| A5642 |  | FOH // Sign-Off BIM Underground & Foundations | 3d | 2025-12-08 A | 2026-01-09 A | A5641 | 100% | 2026-01-23 | 2026-01-27 | 447 |  |
| A5643 |  | FOH // BIM Overhead MEP Model Population & Coordination | 10d | 2026-01-08 A | 2026-01-23 A | A2640 | 100% | 2026-01-15 | 2026-01-29 | 448 | Y |
| A5644 |  | FOH // Sign-Off BIM Overhead MEP Model Population & Coordination | 3d | 2026-03-11 A | 2026-03-13 A | A5643 | 100% | 2026-03-25 | 2026-03-27 | 445 | Y |
| A2840 |  | FOH / BIM // Produce and submit Shop Drawings | 10d | 2026-03-16 A | 2026-04-27 A | A2640, A5644, A5642 | 100% | 2026-03-30 | 2026-04-10 | 444 | Y |
|  | 2 | **Data Hall 1100** |  | 2025-11-20 | 2026-04-01 |  |  |  |  |  |  |
| A5655 |  | DH 1100 // BIM Building / Underslab Population & Cordination | 10d | 2025-11-20 A | 2025-12-05 A | A2630 | 100% | 2026-01-08 | 2026-01-22 |  |  |
| A2650 |  | DH 1100 // Sign-Off BIM Underslab | 1d | 2025-12-08 A | 2026-01-09 A | A5655 | 100% | 2026-01-23 | 2026-01-23 | 52 |  |
| A2660 |  | DH 1100 // BIM Equipment Model Population | 5d | 2026-01-05 A | 2026-02-13 A | A2630 SS, A5652 FF | 100% | 2026-01-29 | 2026-02-04 | 450 | Y |
| A5652 |  | DH 1100 // BIM Overhead MEP Model Population & Coordination | 10d | 2026-01-05 A | 2026-01-29 A | A2580, A5644 FF | 100% | 2026-02-04 | 2026-02-18 |  | Y |
| A5653 |  | DH 1100 // Sign-Off BIM Overhead MEP | 1d | 2026-03-16 A | 2026-03-16 A | A5652 | 100% | 2026-03-30 | 2026-03-30 |  | Y |
| A5654 |  | DH 1100 // Sign-Off BIM Equipment Model | 1d | 2026-03-18 A | 2026-03-18 A | A2660 | 100% | 2026-04-01 | 2026-04-01 |  | Y |
| A2850 |  | DH 1100 / BIM // Produce and submit Shop Drawings | 10d | 2026-03-19 A | 2026-04-01 A | A2650, A5652, A5653, A5654 | 100% | 2026-04-02 | 2026-04-15 | 232 | Y |

| ID | WBS | Activity | Duration | Start | Finish | Predecessors | Complete | Planned start | Planned finish | 12 - SUFFOLK - Export_to_Procore | MSP Activity ID |
| --- | --- | --- | --- | --- | --- | --- | --- | --- | --- | --- | --- |
|  | 3 | **Data Hall 1200** |  | 2026-03-11 | 2026-04-13 |  |  |  |  |  |  |
| A5660 |  | DH 1200 // BIM Building / Underslab Population & Cordination | 10d | 2026-03-11 A | 2026-03-24 A | A5655 | 100% | 2026-03-25 | 2026-04-07 | Y |  |
| A5656 |  | DH 1200 // BIM Overhead MEP Model Population & Coordination | 10d | 2026-03-16 A | 2026-03-24 A | A5652 | 100% | 2026-03-30 | 2026-04-10 | Y |  |
| A5661 |  | DH 1200 // Sign-Off BIM Underslab | 1d | 2026-03-25 A | 2026-03-25 A | A5660 | 100% | 2026-04-08 | 2026-04-08 | Y | 52 |
| A5657 |  | DH 1200 // Sign-Off BIM Overhead MEP | 1d | 2026-03-30 A | 2026-03-30 A | A5656 | 100% | 2026-04-13 | 2026-04-13 | Y |  |
| A5658 |  | DH 1200 // BIM Equipment Model Population | 5d | 2026-03-30 A | 2026-04-01 A | A5656 | 100% | 2026-04-13 | 2026-04-17 | Y | 450 |
| A5659 |  | DH 1200 // Sign-Off BIM Equipment Model | 1d | 2026-03-31 A | 2026-04-01 A | A5658 | 100% | 2026-04-20 | 2026-04-20 | Y |  |
| A5662 |  | DH 1200 / BIM // Produce and submit Shop Drawings | 10d | 2026-03-31 A | 2026-04-13 A | A5661, A5656, A5657, A5659 FF | 100% | 2026-04-14 | 2026-04-27 | Y | 232 |
|  | 4 | **Data Hall 1300** |  | 2026-05-20 | 2026-06-19 |  |  |  |  |  |  |
| A5663 |  | DH 1300 // BIM Overhead MEP Model Population & Coordination | 10d | 2026-05-20 A | 2026-06-03 A | A5656 | 100% |  |  | Y |  |
| A5667 |  | DH 1300 // BIM Building / Underslab Population & Cordination | 10d | 2026-05-20 A | 2026-06-03 A | A5660 | 100% |  |  | Y |  |
| A5664 |  | DH 1300 // Sign-Off BIM Overhead MEP | 1d | 2026-06-10 A | 2026-06-10 A | A5663 | 100% |  |  | Y |  |
| A5665 |  | DH 1300 // BIM Equipment Model Population | 5d | 2026-06-10 A | 2026-06-16 A | A5663 | 100% |  |  | Y | 450 |
| A5668 |  | DH 1300 // Sign-Off BIM Underslab | 1d | 2026-06-10 A | 2026-06-10 A | A5667 | 100% |  |  | Y | 52 |
| A5669 |  | DH 1300 / BIM // Produce and submit Shop Drawings | 10d | 2026-06-11 A | 2026-06-19 A | A5668, A5663, A5664, A5666 FF | 100% | 2026-06-11 | 2026-06-24 | Y | 232 |
| A5666 |  | DH 1300 // Sign-Off BIM Equipment Model | 1d | 2026-06-17 A | 2026-06-17 A | A5665 | 100% |  |  | Y |  |
|  | 5 | **Data Hall 1400** |  | 2026-06-04 | 2026-07-27 |  |  |  |  |  |  |
| A5670 |  | DH 1400 // BIM Overhead MEP Model Population & Coordination | 10d | 2026-06-04 A | 2026-06-17 A | A5663 | 100% | 2026-07-24 | 2026-08-06 | Y |  |
| A5674 |  | DH 1400 // BIM Building / Underslab Population & Cordination | 10d | 2026-06-17 A | 2026-06-30 A | A5667 | 100% | 2026-07-24 | 2026-08-06 | Y |  |
| A5672 |  | DH 1400 // BIM Equipment Model Population | 5d | 2026-06-30 A | 2026-07-07 A | A5670 | 100% | 2026-08-07 | 2026-08-13 | Y | 450 |
| A5675 |  | DH 1400 // Sign-Off BIM Underslab | 1d | 2026-07-09 A | 2026-07-09 A | A5674 | 100% | 2026-08-07 | 2026-08-07 | Y | 52 |
| A5673 |  | DH 1400 // Sign-Off BIM Equipment Model | 1d | 2026-07-10 A | 2026-07-10 A | A5672 | 100% | 2026-08-14 | 2026-08-14 | Y |  |
| A5676 |  | DH 1400 / BIM // Produce and submit Shop Drawings | 10d | 2026-07-14 A | 2026-07-27 A | A5675, A5670, A5671 FF, A5673 | 100% | 2026-08-10 | 2026-08-21 | Y | 232 |
| A5671 |  | DH 1400 // Sign-Off BIM Overhead MEP | 1d | 2026-07-23 A | 2026-07-24 A | A5670 | 100% | 2026-08-07 | 2026-08-07 | Y |  |

| ID | WBS | Activity | Duration | Start | Finish | Predecessors | Complete | Planned start | Planned finish | Total float | Free float | 12 - SUFFOLK - Export_to_Procore | MSP Activity ID |
| --- | --- | --- | --- | --- | --- | --- | --- | --- | --- | --- | --- | --- | --- |
|  | 6 | **Data Hall 1500** |  | 2026-06-18 | 2026-07-29 |  |  |  |  |  |  |  |  |
| A5677 |  | DH 1500 // BIM Overhead MEP Model Population & Coordination | 10d | 2026-06-18 A | 2026-07-01 A | A5670 | 100% | 2026-08-07 | 2026-08-20 |  |  | Y |  |
| A5681 |  | DH 1500 // BIM Building / Underslab Population & Cordination | 10d | 2026-06-30 A | 2026-07-14 A | A5674 | 100% | 2026-08-07 | 2026-08-20 |  |  | Y |  |
| A5678 |  | DH 1500 // Sign-Off BIM Overhead MEP | 1d | 2026-07-02 A | 2026-07-02 A | A5677 | 100% | 2026-08-21 | 2026-08-21 |  |  | Y |  |
| A5679 |  | DH 1500 // BIM Equipment Model Population | 5d | 2026-07-02 A | 2026-07-09 A | A5677 | 100% | 2026-08-21 | 2026-08-27 |  |  | Y | 450 |
| A5680 |  | DH 1500 // Sign-Off BIM Equipment Model | 1d | 2026-07-10 A | 2026-07-10 A | A5679 | 100% | 2026-08-28 | 2026-08-28 |  |  | Y |  |
| A5682 |  | DH 1500 // Sign-Off BIM Underslab | 1d | 2026-07-15 A | 2026-07-15 A | A5681 | 100% | 2026-08-21 | 2026-08-21 |  |  | Y | 52 |
| A5683 |  | DH 1500 / BIM // Produce and submit Shop Drawings | 10d | 2026-07-16 A | 2026-07-29 A | A5682, A5677, A5678, A5680 FF | 100% | 2026-08-24 | 2026-09-04 |  |  | Y | 232 |
|  | 7 | **Data Hall 1600** |  | 2026-07-02 | 2026-08-12 |  |  |  |  |  |  |  |  |
| A5684 |  | DH 1600 // BIM Overhead MEP Model Population & Coordination | 10d | 2026-07-02 A | 2026-07-16 A | A5677 | 100% | 2026-08-21 | 2026-09-03 |  |  | Y |  |
| A5688 |  | DH 1600 // BIM Building / Underslab Population & Cordination | 10d | 2026-07-15 A | 2026-07-28 A | A5681 | 100% | 2026-08-21 | 2026-09-03 |  |  | Y |  |
| A5685 |  | DH 1600 // Sign-Off BIM Overhead MEP | 1d | 2026-07-17 A | 2026-07-17 A | A5684 | 100% | 2026-09-04 | 2026-09-04 |  |  | Y |  |
| A5686 |  | DH 1600 // BIM Equipment Model Population | 5d | 2026-07-17 A | 2026-07-23 A | A5684 | 100% | 2026-09-04 | 2026-09-11 |  |  | Y | 450 |
| A5687 |  | DH 1600 // Sign-Off BIM Equipment Model | 1d | 2026-07-24 A | 2026-07-24 A | A5686 | 100% | 2026-09-14 | 2026-09-14 |  |  | Y |  |
| A5689 |  | DH 1600 // Sign-Off BIM Underslab | 1d | 2026-07-29 A | 2026-07-29 A | A5688 | 100% | 2026-09-04 | 2026-09-04 |  |  | Y | 52 |
| A5690 |  | DH 1600 / BIM // Produce and submit Shop Drawings | 10d | 2026-07-30 A | 2026-08-12 A | A5689, A5684, A5685, A5687 FF | 100% | 2026-09-08 | 2026-09-21 |  |  | Y | 232 |
|  | 8 | **BOH** |  | 2026-07-17 | 2026-10-27 |  |  |  |  |  |  |  |  |
| A5691 |  | BOH // BIM Overhead MEP Model Population & Coordination | 10d | 2026-07-17 A | 2026-07-30 A | A5684 | 100% | 2026-09-04 | 2026-09-18 |  |  | Y |  |
| A5695 |  | BOH // BIM Building / Underslab Population & Cordination | 10d | 2026-07-29 A | 2026-08-11 A | A5688 | 100% | 2026-09-04 | 2026-09-18 |  |  | Y |  |
| A5692 |  | BOH // Sign-Off BIM Overhead MEP | 1d | 2026-08-03 A | 2026-08-03 A | A5691 | 100% | 2026-09-21 | 2026-09-21 |  |  | Y |  |
| A5693 |  | BOH // BIM Equipment Model Population | 5d | 2026-08-03 A | 2026-08-07 A | A5691 | 100% | 2026-09-21 | 2026-09-25 |  |  | Y | 450 |
| A5694 |  | BOH // Sign-Off BIM Equipment Model | 1d | 2026-08-10 A | 2026-08-10 A | A5693 | 100% | 2026-09-28 | 2026-09-28 |  |  | Y |  |
| A5696 |  | BOH // Sign-Off BIM Underslab | 1d | 2026-08-12 A | 2026-08-12 A | A5695 | 100% | 2026-09-21 | 2026-09-21 |  |  | Y | 52 |
| A5697 |  | BOH / BIM // Produce and submit Shop Drawings | 10d | 2026-10-14 | 2026-10-27 | A5696, A5691, A5692 |  |  |  | 22d | 8d | Y | 232 |

| ID | WBS | Activity | Duration | Start | Finish | Predecessors | Complete | Planned start | Planned finish | MSP Activity ID | QTS - AREA | 12 - SUFFOLK - Export_to_Procore | 05 -SUFFOLK - Building Phase | QTS - Subcontractor | QTS - Resp |
| --- | --- | --- | --- | --- | --- | --- | --- | --- | --- | --- | --- | --- | --- | --- | --- |
|  | 4 | **Construction** |  | 2026-01-27 | 2027-06-24 |  |  |  |  |  |  |  |  |  |  |
|  | 2 | **Shell** |  | 2026-01-27 | 2026-11-04 |  |  |  |  |  |  |  |  |  |  |
|  | 4 | **Foundations** |  | 2026-01-27 | 2026-07-10 |  |  |  |  |  |  |  |  |  |  |
|  | 7 | **Column Line 0.1 - 0.3 - (FOH) A Through E** |  | 2026-01-27 | 2026-04-08 |  |  |  |  |  |  |  |  |  |  |
| FDN.1050 |  | Foundation / CL 0.1 - 0.3 - (FOH) A Through E // Excavate and Install Footings and Stem Walls Rebars | 5d | 2026-01-27 A | 2026-01-28 A | TB.CON.1030, A2650, M1060, TB.SITE.1030 | 100% | 2026-01-27 | 2026-02-02 | 646 | FOH | Y |  |  |  |
| FDN.1301 |  | Foundation / CL 0.1 - 0.3 - (FOH) A Through E // Fragnet 1A - Ground Remediation | 9d | 2026-02-04 A | 2026-02-25 A | FDN.1050 | 100% | 2026-02-04 | 2026-02-17 | 646 | FOH | Y |  |  |  |
| FDN.1302 |  | Foundation / CL 0.1 - 0.3 - (FOH) A Through E // Excavate and Install Footings and Stem Walls Rebars (Re-Start Works) | 3d | 2026-02-25 A | 2026-02-27 A | FDN.1301 | 100% | 2026-03-11 | 2026-03-13 | 646 | FOH | Y |  |  |  |
| FDN.1060 |  | Foundation / CL 0.1 - 0.3 - (FOH) A Through E // Form, Prep & Pour and Install Stem walls | 5d | 2026-02-27 A | 2026-03-03 A | FDN.1302, FDN.1050 SS+8d | 100% | 2026-03-16 | 2026-03-20 | 645 | FOH | Y | 0 |  |  |
| FDN.1232 |  | Foundation / CL 0.1 - 0.3 - (FOH) A Through E // Install Waterproofing | 2d | 2026-03-04 A | 2026-03-07 A | TB.WP.1030, FDN.1060, A2240 | 100% | 2026-03-23 | 2026-03-24 | 647 | FOH | Y | 0 |  |  |
| FDN.1266 |  | Foundation / CL 0.1 - 0.3 - (FOH) A Through E // Install Drain Tiles & Storm Drains | 6d | 2026-03-09 A | 2026-03-16 A | FDN.1232 | 100% | 2026-04-20 | 2026-04-27 | 650 | FOH | Y | 0 |  |  |
| FDN.1276 |  | Foundation / CL 0.1 - 0.3 - (FOH) A Through E // Install Interior Colum Foundations | 2d | 2026-03-09 A | 2026-03-12 A | FDN.1060 | 100% | 2026-03-23 | 2026-03-24 | 650 | FOH | Y | 0 |  |  |
| FDN.1286 |  | Foundation / CL 0.1 - 0.3 - (FOH) A Through E // Install Underslab Plumbing | 5d | 2026-03-24 A | 2026-04-01 A | TB.MECH.1030, FDN.1276 SS+5d | 100% | 2026-04-07 | 2026-04-13 | 649 | FOH | Y | 0 |  |  |
| FDN.1296 |  | Foundation / CL 0.1 - 0.3 - (FOH) A Through E // Install Underslab Electrical | 15d | 2026-03-31 A | 2026-04-08 A | TB.ELEC.1030, FDN.1286 SS+5d | 100% | 2026-04-14 | 2026-05-04 | 649 | FOH | Y | 0 | HELIX | PRICE |
|  | 1 | **Column line 0.1 Through 1.9 (DH1100)** |  | 2026-02-10 | 2026-04-14 |  |  |  |  |  |  |  |  |  |  |
| FDN.1010 |  | Foundation / CL 0.1 Through 1.9 (DH1100) // Install Interior Colum Foundations | 2d | 2026-02-10 A | 2026-03-17 A | FDN.1235, FDN.1060, FDN.1040 SS+6d | 100% | 2026-03-23 | 2026-03-24 | 650 | DH1100 | Y | 0 |  |  |
| FDN.1040 |  | Foundation / CL 0.1 Through 1.9 (DH1100) // Excavate and Install Footings and Stem Walls Rebars | 3d | 2026-02-27 A | 2026-03-05 A | FDN.1302, A2650, FDN.1050 | 100% | 2026-03-11 | 2026-03-13 | 651 | DH1100 | Y |  |  |  |
| FDN.1235 |  | Foundation / CL 0.1 Through 1.9 (DH1100) // Form Prep and Pour Footings and Stem Walls | 5d | 2026-03-06 A | 2026-03-12 A | FDN.1040 | 100% | 2026-03-16 | 2026-03-20 | 651 | DH1100 | Y |  |  |  |
| FDN.1231 |  | Foundation / CL 0.1 Through 1.9 (DH1100) // Install Waterproofing | 3d | 2026-03-17 A | 2026-03-24 A | FDN.1235, FDN.1232 | 100% | 2026-03-23 | 2026-03-25 | 652 | DH1100 | Y | 0 |  |  |
| FDN.1233 |  | Foundation / CL 0.1 Through 1.9 (DH1100) // Install Underslab Electrical | 15d | 2026-03-24 A | 2026-04-08 A | FDN.1000 SS+5d, A2120 | 100% | 2026-05-01 | 2026-05-21 | 649 | DH1100 | Y | 0 | HELIX | PRICE |
| FDN.1000 |  | Foundation / CL 0.1 Through 1.9 (DH1100) // Install Underslab Plumbing (Deep U/G) | 5d | 2026-03-25 A | 2026-03-30 A | A2180, A2830, FDN.1010 SS+5d, A2570, TB.FP.1030 FF | 100% | 2026-04-20 | 2026-04-24 | 649 | DH1100 | Y | 0 |  |  |
| FDN.1236 |  | Foundation / CL 0.1 Through 1.9 (DH1100) // Install Drain Tiles & Storm Drains | 6d | 2026-03-26 A | 2026-04-02 A | FDN.1010, FDN.1266, FDN.1231 | 100% | 2026-04-07 | 2026-04-14 | 650 | DH1100 | Y | 0 |  |  |
| FDN.1322 |  | Foundation / CL 0.1 Through 1.9 (DH1100) // Install Underslab Plumbing (Shallow U/G) | 2d | 2026-04-13 A | 2026-04-14 A | FDN.1000 | 100% |  |  | 649 | DH1100 | Y | 0 |  |  |
|  | 2 | **Column Line 2.1 Through 2.9 (DH1200)** |  | 2026-03-05 | 2026-04-27 |  |  |  |  |  |  |  |  |  |  |
| FDN.1070 |  | Foundation / CL 2.1 Through 2.9 (DH1200) // Excavate and Install Footings and Stem Walls Rebars | 3d | 2026-03-05 A | 2026-03-09 A | FDN.1040 SS | 100% | 2026-03-25 | 2026-03-27 | 656 | DH1200 | Y |  |  |  |
| FDN.1080 |  | Foundation / CL 2.1 Through 2.9 (DH1200) // Install Interior Colum Foundations | 2d | 2026-03-09 A | 2026-03-12 A | FDN.1010, FDN.1070 | 100% | 2026-03-30 | 2026-03-31 | 655 | DH1200 | Y | 0 |  |  |
| FDN.1237 |  | Foundation / CL 2.1 Through 2.9 (DH1200) // Form Prep and Pour Footings and Stem Walls | 5d | 2026-03-12 A | 2026-03-18 A | FDN.1070 | 100% | 2026-03-30 | 2026-04-03 | 656 | DH1200 | Y |  |  |  |
| FDN.1238 |  | Foundation / CL 2.1 Through 2.9 (DH1200) // Install Waterproofing | 3d | 2026-03-18 A | 2026-03-23 A | FDN.1237 | 100% | 2026-04-06 | 2026-04-08 | 652 | DH1200 | Y | 0 |  |  |
| FDN.1090 |  | Foundation / CL 2.1 Through 2.9 (DH1200) // Install Under Slab Plumbing (Deep U/G) | 5d | 2026-03-27 A | 2026-04-01 A | FDN.1239 SS, FDN.1080 SS+5d | 100% | 2026-04-13 | 2026-04-17 | 654 | DH1200 | Y | 0 |  |  |
| FDN.1239 |  | Foundation / CL 2.1 Through 2.9 (DH1200) // Install Drain Tiles & Storm Drains | 6d | 2026-03-27 A | 2026-04-03 A | FDN.1080, FDN.1238 | 100% | 2026-04-01 | 2026-04-08 | 650 | DH1200 | Y | 0 |  |  |
| FDN.1234 |  | Foundation / CL 2.1 Through 2.9 (DH1200) // Install Under Slab Electrical | 15d | 2026-04-09 A | 2026-04-25 A | FDN.1090 SS+5d | 100% | 2026-04-15 | 2026-05-05 | 654 | DH1200 | Y | 0 | HELIX | PRICE |
| FDN.1332 |  | Foundation / CL 2.1 Through 2.9 (DH1200) // Install Under Slab Plumbing (Shallow U/G) | 5d | 2026-04-16 A | 2026-04-27 A | FDN.1322, FDN.1090 | 100% | 2026-04-16 | 2026-04-22 | 654 | DH1200 | Y | 0 |  |  |

| ID | WBS | Activity | Duration | Start | Finish | Predecessors | Complete | Planned start | Planned finish | MSP Activity ID | QTS - AREA | 12 - SUFFOLK - Export_to_Procore | 05 -SUFFOLK - Building Phase | QTS - Subcontractor | QTS - Resp |
| --- | --- | --- | --- | --- | --- | --- | --- | --- | --- | --- | --- | --- | --- | --- | --- |
|  | 3 | **Column Line 3.1 Through 3.9 (DH1300)** |  | 2026-03-09 | 2026-07-10 |  |  |  |  |  |  |  |  |  |  |
| FDN.1100 |  | Foundation / CL 3.1 Through 3.9 (DH1300) // Excavate and Install Footings and Stem Walls Rebars | 3d | 2026-03-09 A | 2026-03-12 A | FDN.1070 SS+7d | 100% | 2026-04-03 | 2026-04-07 | 660 | DH1300 | Y |  |  |  |
| FDN.1110 |  | Foundation / CL 3.1 Through 3.9 (DH1300) // Install Interior Colum Foundations | 2d | 2026-03-12 A | 2026-03-17 A | FDN.1080, FDN.1100 | 100% | 2026-04-08 | 2026-04-09 | 659 | DH1300 | Y | 0 |  |  |
| FDN.1240 |  | Foundation / CL 3.1 Through 3.9 (DH1300) // Form Prep and Pour Footings and Stem Walls | 5d | 2026-03-17 A | 2026-03-20 A | FDN.1100 | 100% | 2026-04-08 | 2026-04-14 | 656 | DH1300 | Y |  |  |  |
| FDN.1241 |  | Foundation / CL 3.1 Through 3.9 (DH1300) // Install Waterproofing | 3d | 2026-03-21 A | 2026-03-24 A | FDN.1240 FF, FDN.1240 | 100% | 2026-04-15 | 2026-04-17 | 652 | DH1300 | Y | 0 |  |  |
| FDN.1120 |  | Foundation / CL 3.1 Through 3.9 (DH1300) // Install Under Slab Plumbing (Deep U/G) | 5d | 2026-03-30 A | 2026-04-03 A | FDN.1242 SS, FDN.1110 SS+5d | 100% | 2026-04-20 | 2026-04-24 | 658 | DH1300 | Y | 0 |  |  |
| FDN.1242 |  | Foundation / CL 3.1 Through 3.9 (DH1300) // Install Drain Tiles & Storm Drains | 6d | 2026-04-01 A | 2026-04-07 A | FDN.1110, FDN.1241 FF, FDN.1241 | 100% | 2026-04-01 | 2026-04-08 | 650 | DH1300 | Y | 0 |  |  |
| FDN.1312 |  | Foundation / CL 3.1 Through 3.9 (DH1300) // Install Under Slab Plumbing (Shallow U/G) | 2d | 2026-04-28 A | 2026-04-29 A | FDN.1332 | 100% |  |  | 658 | DH1300 | Y | 0 |  |  |
| FDN.1243 |  | Foundation / CL 3.1 Through 3.9 (DH1300) // Install Under Slab Electrical | 15d | 2026-04-29 A | 2026-07-10 A | FDN.1120 SS+5d | 100% | 2026-04-29 | 2026-05-19 | 658 | DH1300 | Y | 0 | HELIX | PRICE |
|  | 4 | **Column Line 4.1 Through 4.9 (DH1400)** |  | 2026-03-11 | 2026-05-19 |  |  |  |  |  |  |  |  |  |  |
| FDN.1130 |  | Foundation / CL 4.1 Through 4.9 (DH1400) // Excavate and Install Footings and Stem Walls Rebars | 3d | 2026-03-11 A | 2026-03-14 A | FDN.1100 SS+7d | 100% | 2026-04-14 | 2026-04-16 | 664 | DH1400 | Y |  |  |  |
| FDN.1140 |  | Foundation / CL 4.1 Through 4.9 (DH1400) // Install Interior Colum Foundations | 2d | 2026-03-14 A | 2026-03-17 A | FDN.1110, FDN.1130 | 100% | 2026-04-17 | 2026-04-20 | 663 | DH1400 | Y | 0 |  |  |
| FDN.1244 |  | Foundation / CL 4.1 Through 4.9 (DH1400) // Form Prep and Pour Footings and Stem Walls | 5d | 2026-03-17 A | 2026-03-21 A | FDN.1130 | 100% | 2026-04-17 | 2026-04-23 | 656 | DH1400 | Y |  |  |  |
| FDN.1245 |  | Foundation / CL 4.1 Through 4.9 (DH1400) // Install Waterproofing | 3d | 2026-03-23 A | 2026-03-25 A | FDN.1244 SS, FDN.1244 FF, FDN.1244 | 100% | 2026-04-24 | 2026-04-28 | 652 | DH1400 | Y | 0 |  |  |
| FDN.1150 |  | Foundation / CL 4.1 Through 4.9 (DH1400) // Install Under Slab Plumbing (Deep U/G) | 5d | 2026-04-01 A | 2026-04-06 A | FDN.1246 SS, FDN.1140 SS+5d | 100% | 2026-04-27 | 2026-05-01 | 662 | DH1400 | Y | 0 |  |  |
| FDN.1246 |  | Foundation / CL 4.1 Through 4.9 (DH1400) // Install Drain Tiles & Storm Drains | 6d | 2026-04-01 A | 2026-04-07 A | FDN.1242, FDN.1140, FDN.1245 SS, FDN.1245 FF, FDN.1245 | 100% | 2026-04-09 | 2026-04-16 | 650 | DH1400 | Y | 0 |  |  |
| FDN.1247 |  | Foundation / CL 4.1 Through 4.9 (DH1400) // Install Under Slab Electrical | 15d | 2026-04-29 A | 2026-05-19 A | FDN.1150 SS+5d | 100% |  |  | 658 | DH1400 | Y | 0 | HELIX | PRICE |
| FDN.1333 |  | Foundation / CL 4.1 Through 4.9 (DH1400) // Install Under Slab Plumbing (Shallow U/G) | 2d | 2026-04-29 A | 2026-04-30 A | FDN.1312, FDN.1150 | 100% |  |  | 662 | DH1400 | Y | 0 |  |  |
|  | 5 | **Column Line 5.2 Through 5.9 (DH1500)** |  | 2026-03-14 | 2026-05-20 |  |  |  |  |  |  |  |  |  |  |
| FDN.1160 |  | Foundation / CL 5.2 Through 5.9 (DH1500) // Excavate and Install Footings and Stem Walls Rebars | 3d | 2026-03-14 A | 2026-03-17 A | FDN.1130 SS+7d | 100% | 2026-04-01 | 2026-04-03 | 668 | DH1500 | Y |  |  |  |
| FDN.1170 |  | Foundation / CL 5.2 Through 5.9 (DH1500) // Install Interior Colum Foundations | 2d | 2026-03-17 A | 2026-03-18 A | FDN.1140, FDN.1160 | 100% | 2026-04-06 | 2026-04-07 | 667 | DH1500 | Y | 0 |  |  |
| FDN.1248 |  | Foundation / CL 5.2 Through 5.9 (DH1500) // Form Prep and Pour Footings and Stem Walls | 5d | 2026-03-19 A | 2026-03-23 A | FDN.1160 | 100% | 2026-04-06 | 2026-04-10 | 656 | DH1500 | Y |  |  |  |
| FDN.1249 |  | Foundation / CL 5.2 Through 5.9 (DH1500) // Install Waterproofing | 3d | 2026-03-24 A | 2026-03-27 A | FDN.1248 SF, FDN.1248 SS, FDN.1248 FF, FDN.1248 | 100% | 2026-04-13 | 2026-04-15 | 652 | DH1500 | Y | 0 |  |  |
| FDN.1334 |  | Foundation / CL 5.2 Through 5.9 (DH1500) // Install Under Slab Plumbing (Deep U/G) | 2d | 2026-04-03 A | 2026-04-09 A | FDN.1170 SS+5d | 100% | 2026-05-11 | 2026-05-13 | 666 | DH1500 | Y | 0 |  |  |
| FDN.1250 |  | Foundation / CL 5.2 Through 5.9 (DH1500) // Install Drain Tiles & Storm Drains | 6d | 2026-04-07 A | 2026-04-13 A | FDN.1170, FDN.1249 SF, FDN.1249 SS, FDN.1249 FF, FDN.1249 | 100% | 2026-04-17 | 2026-04-27 | 650 | DH1500 | Y | 0 |  |  |
| FDN.1180 |  | Foundation / CL 5.2 Through 5.9 (DH1500) // Install Under Slab Plumbing (Shallow U/G) | 2d | 2026-04-30 A | 2026-05-01 A | FDN.1333, FDN.1250, FDN.1170 SS+5d, FDN.1334 | 100% |  |  | 666 | DH1500 | Y | 0 |  |  |
| FDN.1251 |  | Foundation / CL 5.2 Through 5.9 (DH1500) // Install Under Slab Electrical | 15d | 2026-04-30 A | 2026-05-20 A | FDN.1243, FDN.1180 SS+5d, FDN.1334 | 100% |  |  | 658 | DH1500 | Y | 0 | HELIX | PRICE |

| ID | WBS | Activity | Duration | Start | Finish | Predecessors | Complete | Planned start | Planned finish | MSP Activity ID | QTS - AREA | 12 - SUFFOLK - Export_to_Procore | 05 -SUFFOLK - Building Phase | QTS - Subcontractor | QTS - Resp |
| --- | --- | --- | --- | --- | --- | --- | --- | --- | --- | --- | --- | --- | --- | --- | --- |
|  | 6 | **Column Line 6.1 Through 7.2 (DH1600)** |  | 2026-03-20 | 2026-06-11 |  |  |  |  |  |  |  |  |  |  |
| FDN.1190 |  | Foundation / CL 6.1 Through 7.2 (DH1600) // Excavate and Install Footings and Stem Walls Rebars | 3d | 2026-03-20 A | 2026-03-21 A | FDN.1160 SS+7d | 100% | 2026-04-10 | 2026-04-14 | 672 | DH1600 | Y |  |  |  |
| FDN.1200 |  | Foundation / CL 6.1 Through 7.2 (DH1600) // Install Interior Colum Foundations | 2d | 2026-03-23 A | 2026-03-24 A | FDN.1170, FDN.1190 | 100% | 2026-04-15 | 2026-04-16 | 671 | DH1600 | Y | 0 |  |  |
| FDN.1252 |  | Foundation / CL 6.1 Through 7.2 (DH1600) // Form Prep and Pour Footings and Stem Walls | 5d | 2026-03-24 A | 2026-03-28 A | FDN.1190 | 100% | 2026-04-15 | 2026-04-21 | 656 | DH1600 | Y |  |  |  |
| FDN.1253 |  | Foundation / CL 6.1 Through 7.2 (DH1600) // Install Waterproofing | 3d | 2026-03-30 A | 2026-04-02 A | FDN.1252 SF, FDN.1252 SS, FDN.1252 FF, FDN.1252 | 100% | 2026-04-22 | 2026-04-24 | 652 | DH1600 | Y | 0 |  |  |
| FDN.1210 |  | Foundation / CL 6.1 Through 7.2 (DH1600) // Install Under Slab Plumbing (Deep U/G) | 5d | 2026-04-08 A | 2026-04-14 A | FDN.1254, FDN.1200 SS+5d | 100% | 2026-04-27 | 2026-05-04 | 670 | DH1600 | Y | 0 |  |  |
| FDN.1254 |  | Foundation / CL 6.1 Through 7.2 (DH1600) // Install Drain Tiles & Storm Drains | 6d | 2026-04-14 A | 2026-04-20 A | FDN.1200, FDN.1253 SF, FDN.1253 SS, FDN.1253 FF, FDN.1253 | 100% | 2026-04-17 | 2026-04-27 | 650 | DH1600 | Y | 0 |  |  |
| FDN.1335 |  | Foundation / CL 6.1 Through 7.2 (DH1600) // Install Under Slab Plumbing (Shallow U/G) | 2d | 2026-05-19 A | 2026-05-20 A | FDN.1180 | 100% |  |  | 666 | DH1600 | Y | 0 |  |  |
| FDN.1255 |  | Foundation / CL 6.1 Through 7.2 (DH1600) // Install Under Slab Electrical | 15d | 2026-05-29 A | 2026-06-11 A | FDN.1251, FDN.1210 SS+5d, FDN.1335 | 100% | 2026-05-29 | 2026-06-18 | 658 | DH1600 | Y | 0 | HELIX | PRICE |
|  | 8 | **Column Line 7.2 - (BOH) A Through E** |  | 2026-03-23 | 2026-07-07 |  |  |  |  |  |  |  |  |  |  |
| FDN.1298 |  | Foundation / CL 7.2 - (BOH) A Through E // Install Interior Colum Foundations | 3d | 2026-03-23 A | 2026-03-25 A | FDN.1190 | 100% | 2026-04-15 | 2026-04-17 | 650 | BOH | Y | 0 |  |  |
| FDN.1230 |  | Foundation / CL 7.2 - (BOH) A Through E // Excavate and Install Footings and Stem Walls Rebar | 5d | 2026-03-25 A | 2026-03-27 A | FDN.1190 SS+7d | 100% | 2026-04-21 | 2026-04-27 | 675 | BOH | Y |  |  |  |
| FDN.1220 |  | Foundation / CL 7.2 - (BOH) A Through E // Form and Install Stem walls | 5d | 2026-03-26 A | 2026-03-28 A | FDN.1230 SS+5d | 100% | 2026-04-28 | 2026-05-04 | 674 | BOH | Y | 0 |  |  |
| FDN.1256 |  | Foundation / CL 7.2 - (BOH) A Through E // Install Waterproofing | 3d | 2026-03-30 A | 2026-04-03 A | FDN.1220 | 100% | 2026-05-05 | 2026-05-07 | 652 | BOH | Y | 0 |  |  |
| FDN.1297 |  | Foundation / CL 7.2 - (BOH) A Through E // Install Drain Tiles & Storm Drains | 6d | 2026-04-15 A | 2026-05-01 A | FDN.1298, FDN.1256 | 100% | 2026-04-17 | 2026-04-27 | 650 | BOH | Y | 0 |  |  |
| FDN.1299 |  | Foundation / CL 7.2 - (BOH) A Through E // Install Underslab Plumbing | 5d | 2026-05-05 A | 2026-05-11 A | FDN.1297 FS+3d, FDN.1298 SS+5d | 100% | 2026-06-08 | 2026-06-12 | 649 | BOH | Y | 0 |  |  |
| FDN.1300 |  | Foundation / CL 7.2 - (BOH) A Through E // Install Underslab Electrical | 15d | 2026-05-14 A | 2026-07-07 A | FDN.1299 SS+5d | 100% | 2026-06-15 | 2026-07-06 | 649 | BOH | Y | 0 | HELIX | PRICE |
|  | 5 | **Slab on Grade** |  | 2026-04-15 | 2026-08-26 |  |  |  |  |  |  |  |  |  |  |
|  | 1 | **FOH** |  | 2026-04-15 | 2026-05-07 |  |  |  |  |  |  |  |  |  |  |
| SOG.1481 |  | FOH // SOG - Rock Grade Walls | 1d | 2026-04-15 A | 2026-04-16 A | SOG.1431 SS | 100% | 2026-04-15 | 2026-04-15 | 786 | FOH | Y | 0 |  |  |
| SOG.1431 |  | FOH // SOG - Re-establish Sub-grade | 1d | 2026-04-16 A | 2026-04-17 A | A2060, A2030 | 100% | 2026-04-15 | 2026-04-15 | 786 | FOH | Y | 0 |  |  |
| SOG.1483 |  | FOH // SOG - Pad Remediation | 2d | 2026-04-16 A | 2026-04-18 A | SOG.1481 | 100% | 2026-04-15 | 2026-04-16 | 786 | FOH | Y | 0 |  |  |
| SOG.1489 |  | FOH // SOG - Rock Grade | 1d | 2026-04-16 A | 2026-04-16 A | SOG.1481 | 100% |  |  | 786 | FOH | Y | 0 |  |  |
| SOG.1484 |  | FOH // SOG - Backfill & Foam Walls | 1d | 2026-04-18 A | 2026-04-18 A | SOG.1481 | 100% | 2026-04-16 | 2026-04-16 | 786 | FOH | Y | 0 |  |  |
| SOG.1482 |  | FOH // SOG - Install Sanitary Line (West Side) | 3d | 2026-04-20 A | 2026-04-22 A | SOG.1481 SS | 100% | 2026-04-15 | 2026-04-17 | 786 | FOH | Y | 0 |  |  |
| SOG.1487 |  | FOH // SOG - Dock Leveller Base | 1d | 2026-04-20 A | 2026-04-20 A | SOG.1484 | 100% | 2026-04-17 | 2026-04-17 | 786 | FOH | Y | 0 |  |  |
| SOG.1485 |  | FOH // SOG - Shallow Under Ground | 5d | 2026-04-22 A | 2026-04-24 A | SOG.1482 | 100% | 2026-04-20 | 2026-04-24 | 786 | FOH | Y | 0 |  |  |
| SOG.1486 |  | FOH // SOG - Power Branch (West to East) | 5d | 2026-04-23 A | 2026-04-28 A | SOG.1485 SS+2d | 100% | 2026-04-22 | 2026-04-28 | 786 | FOH | Y | 0 |  |  |
| SOG.1493 |  | FOH // SOG - Sanitary Stack test | 2d | 2026-04-27 A | 2026-04-28 A | SOG.1485 | 100% |  |  | 786 | FOH | Y | 0 |  |  |
| SOG.1488 |  | FOH // SOG - Rock Grade | 3d | 2026-04-29 A | 2026-05-01 A | SOG.1483, SOG.1487 | 100% |  |  | 786 | FOH | Y | 0 |  |  |
| SOG.1490 |  | FOH // SOG - Set Fixtures | 2d | 2026-04-29 A | 2026-04-30 A | SOG.1493, SOG.1489 | 100% |  |  | 786 | FOH | Y | 0 |  |  |
| SOG.1492 |  | FOH // SOG - Grounding | 2d | 2026-04-29 A | 2026-04-30 A | SOG.1486 | 100% |  |  | 786 | FOH | Y | 0 |  |  |
| SOG.1432 |  | FOH // SOG - Vapor Barrier | 2d | 2026-04-30 A | 2026-05-04 A | SOG.1487, SOG.1483, SOG.1493, SOG.1488, SOG.1431 SS | 100% | 2026-04-29 | 2026-04-30 | 786 | FOH | Y | 0 |  |  |
| SOG.1491 |  | FOH // SOG - Install Floor Boxes | 1d | 2026-04-30 A | 2026-04-30 A | SOG.1492 | 100% | 2026-05-01 | 2026-05-01 | 786 | FOH | Y | 0 |  |  |
| SOG.1433 |  | FOH // SOG - Rebar Set & Tie | 2d | 2026-05-01 A | 2026-05-04 A | SOG.1490, SOG.1432 SS | 100% |  |  | 786 | FOH | Y | 0 |  |  |
| SOG.1495 |  | FOH // SOG - Truck route Prep/ QAQC Pre-Pour | 2d | 2026-05-01 A | 2026-05-04 A | SOG.1491, SOG.1490 | 100% |  |  | 786 | FOH | Y | 0 |  |  |
| SOG.1434 |  | FOH // SOG - Pour #1 | 1d | 2026-05-04 A | 2026-05-04 A | SOG.1495 SS, FDN.1296, SOG.1433 | 100% |  |  | 786 | FOH | Y | 0 |  |  |
| SOG.1435 |  | FOH // SOG - Concrete Cure | 3d | 2026-05-05 A | 2026-05-07 A | SOG.1434 | 100% |  |  | 786 | FOH | Y | 0 |  |  |

| ID | WBS | Activity | Duration | Start | Finish | Predecessors | Complete | Planned start | Planned finish | MSP Activity ID | QTS - AREA | 05 -SUFFOLK - Building Phase | 12 - SUFFOLK - Export_to_Procore |
| --- | --- | --- | --- | --- | --- | --- | --- | --- | --- | --- | --- | --- | --- |
|  | 2 | **DH1100** |  | 2026-06-10 | 2026-07-20 |  |  |  |  |  |  |  |  |
| SOG.1437 |  | DH 1100 // SOG - Re-establish Sub-grade | 1d | 2026-06-10 A | 2026-06-10 A | STRUCTURE.7655, SOG.1431 | 100% | 2026-06-19 | 2026-06-19 | 786 | DH1100 | 0 | Y |
| SOG.1508 |  | DH 1100 // SOG - Rock Grade Walls | 1d | 2026-06-11 A | 2026-06-11 A | SOG.1437 SS | 100% | 2026-06-19 | 2026-06-19 | 786 | DH1100 | 0 | Y |
| SOG.1515 |  | DH 1100 // SOG - Shallow Under Ground | 5d | 2026-06-12 A | 2026-06-16 A | SOG.1508 SS | 100% | 2026-06-19 | 2026-06-25 | 786 | DH1100 | 0 | Y |
| SOG.1517 |  | DH 1100 // SOG - Sanitary Stack test | 2d | 2026-06-19 A | 2026-06-22 A | SOG.1515 SS | 100% |  |  | 786 | DH1100 | 0 | Y |
| SOG.1518 |  | DH 1100 // SOG - Vapor Barrier | 2d | 2026-06-23 A | 2026-06-24 A | SOG.1437, SOG.1508, SOG.1517 | 100% |  |  | 786 | DH1100 | 0 | Y |
| SOG.1519 |  | DH 1100 // SOG - Set Fixtures | 2d | 2026-06-23 A | 2026-06-24 A | SOG.1437, SOG.1517 | 100% |  |  | 786 | DH1100 | 0 | Y |
| SOG.1522 |  | DH 1100 // SOG - Rebar Set & Tie | 3d | 2026-06-25 A | 2026-07-06 A | SOG.1519, SOG.1518 SS | 100% | 2026-06-25 | 2026-06-29 | 786 | DH1100 | 0 | Y |
| SOG.1523 |  | DH 1100 // SOG - Truck route Prep/ QAQC Pre-Pour | 1d | 2026-07-07 A | 2026-07-07 A | SOG.1515 SS, SOG.1519 | 100% | 2026-07-24 | 2026-07-24 | 786 | DH1100 | 0 | Y |
| SOG.1440 |  | DH 1100 // SOG - Pour #3 (DH Side) | 1d | 2026-07-08 A | 2026-07-08 A | SOG.1522, SOG.1523, SOG.1434, FDN.1233 | 100% |  |  | 786 | DH1100 | 0 | Y |
| SOG.1441 |  | DH 1100 // SOG - Pour #4 (ER Side) | 1d | 2026-07-08 A | 2026-07-08 A | SOG.1440 | 100% | 2026-07-10 | 2026-07-10 | 786 | DH1100 | 0 | Y |
| SOG.1496 |  | DH 1100 // SOG - Pour #5 (CL2.4) DH Side | 1d | 2026-07-17 A | 2026-07-17 A | STRUCTURE.7656, SOG.1441 | 100% |  |  | 786 | DH1100 | 0 | Y |
| SOG.1442 |  | DH 1100 // SOG - Concrete Cure | 1d | 2026-07-20 A | 2026-07-20 A | SOG.1496 | 100% |  |  | 786 | DH1100 | 0 | Y |
|  | 3 | **DH1200** |  | 2026-06-19 | 2026-07-25 |  |  |  |  |  |  |  |  |
| SOG.1528 |  | DH 1200 // SOG - Install Sanitary Line (West Side) | 3d | 2026-06-19 A | 2026-06-23 A | SOG.1524 SS | 100% |  |  | 786 | DH1200 | 0 | Y |
| SOG.1535 |  | DH 1200 // SOG - Set Fixtures | 2d | 2026-06-24 A | 2026-06-25 A | SOG.1533, SOG.1525 | 100% |  |  | 786 | DH1200 | 0 | Y |
| SOG.1536 |  | DH 1200 // SOG - Grounding | 2d | 2026-06-24 A | 2026-06-25 A | SOG.1532 | 100% |  |  | 786 | DH1200 | 0 | Y |
| SOG.1537 |  | DH 1200 // SOG - Install Floor Boxes | 1d | 2026-06-26 A | 2026-06-26 A | SOG.1536 | 100% |  |  | 786 | DH1200 | 0 | Y |
| SOG.1538 |  | DH 1200 // SOG - Rebar Set & Tie | 2d | 2026-06-26 A | 2026-06-29 A | SOG.1535, SOG.1534 SS | 100% |  |  | 786 | DH1200 | 0 | Y |
| SOG.1443 |  | DH 1200 // SOG - Re-establish Sub-grade | 3d | 2026-07-06 A | 2026-07-08 A | STRUCTURE.7656 | 100% |  |  | 786 | DH1200 | 0 | Y |
| SOG.1533 |  | DH 1200 // SOG - Sanitary Stack test | 2d | 2026-07-06 A | 2026-07-07 A | SOG.1531 | 100% |  |  | 786 | DH1200 | 0 | Y |
| SOG.1524 |  | DH 1200 // SOG - Rock Grade Walls | 1d | 2026-07-07 A | 2026-07-07 A | SOG.1443 | 100% |  |  | 786 | DH1200 | 0 | Y |
| SOG.1525 |  | DH 1200 // SOG - Rock Grade | 1d | 2026-07-07 A | 2026-07-07 A | SOG.1443 | 100% |  |  | 786 | DH1200 | 0 | Y |
| SOG.1526 |  | DH 1200 // SOG - Pad Remediation | 2d | 2026-07-07 A | 2026-07-08 A | SOG.1443 | 100% |  |  | 786 | DH1200 | 0 | Y |
| SOG.1531 |  | DH 1200 // SOG - Shallow Under Ground | 5d | 2026-07-10 A | 2026-07-16 A | SOG.1528 | 100% |  |  | 786 | DH1200 | 0 | Y |
| SOG.1532 |  | DH 1200 // SOG - Power Branch (West to East) | 2d | 2026-07-14 A | 2026-07-15 A | SOG.1531 SS+2d | 100% |  |  | 786 | DH1200 | 0 | Y |
| SOG.1534 |  | DH 1200 // SOG - Vapor Barrier | 2d | 2026-07-15 A | 2026-07-17 A | SOG.1524, SOG.1526, SOG.1533 | 100% | 2026-07-15 | 2026-07-16 | 786 | DH1200 | 0 | Y |
| SOG.1539 |  | DH 1200 // SOG - Truck route Prep/ QAQC Pre-Pour | 2d | 2026-07-20 A | 2026-07-21 A | SOG.1537, SOG.1535 | 100% | 2026-06-29 | 2026-06-30 | 786 | DH1200 | 0 | Y |
| SOG.1498 |  | DH 1200 // SOG - Pour #6 (CL 3.1) DH Side | 1d | 2026-07-21 A | 2026-07-21 A | SOG.1538, SOG.1539, FDN.1234, SOG.1441 | 100% | 2026-07-01 | 2026-07-01 | 786 | DH1200 | 0 | Y |
| SOG.1499 |  | DH 1200 // SOG - Pour #7 (CL 3.1) ER Side | 1d | 2026-07-23 A | 2026-07-23 A | SOG.1498 | 100% | 2026-07-02 | 2026-07-02 | 786 | DH1200 | 0 | Y |
| SOG.1448 |  | DH 1200 // SOG - Concrete Cure | 1d | 2026-07-24 A | 2026-07-25 A | SOG.1499 | 100% | 2026-07-27 | 2026-07-27 | 786 | DH1200 | 0 | Y |

| ID | WBS | Activity | Duration | Start | Finish | Predecessors | Complete | Planned start | Planned finish | MSP Activity ID | QTS - AREA | 05 -SUFFOLK - Building Phase | 12 - SUFFOLK - Export_to_Procore |
| --- | --- | --- | --- | --- | --- | --- | --- | --- | --- | --- | --- | --- | --- |
|  | 4 | **DH1300** |  | 2026-07-07 | 2026-08-04 |  |  |  |  |  |  |  |  |
| SOG.1449 |  | DH 1300 // SOG - Re-establish Sub-grade | 1d | 2026-07-07 A | 2026-07-07 A | STRUCTURE.7657, SOG.1443 | 100% |  |  | 786 | DH1300 | 0 | Y |
| SOG.1547 |  | DH 1300 // SOG - Shallow Under Ground | 5d | 2026-07-07 A | 2026-07-13 A | SOG.1544 | 100% |  |  | 786 | DH1300 | 0 | Y |
| SOG.1548 |  | DH 1300 // SOG - Power Branch (West to East) | 5d | 2026-07-07 A | 2026-07-13 A | SOG.1547 SS+2d | 100% |  |  | 786 | DH1300 | 0 | Y |
| SOG.1540 |  | DH 1300 // SOG - Rock Grade Walls | 1d | 2026-07-08 A | 2026-07-08 A | SOG.1449 | 100% |  |  | 786 | DH1300 | 0 | Y |
| SOG.1541 |  | DH 1300 // SOG - Rock Grade | 1d | 2026-07-08 A | 2026-07-08 A | SOG.1449 | 100% |  |  | 786 | DH1300 | 0 | Y |
| SOG.1542 |  | DH 1300 // SOG - Pad Remediation | 2d | 2026-07-08 A | 2026-07-09 A | SOG.1449 | 100% |  |  | 786 | DH1300 | 0 | Y |
| SOG.1543 |  | DH 1300 // SOG - Backfill & Foam Walls | 1d | 2026-07-09 A | 2026-07-09 A | SOG.1540 | 100% |  |  | 786 | DH1300 | 0 | Y |
| SOG.1546 |  | DH 1300 // SOG - Rock Grade | 3d | 2026-07-09 A | 2026-07-13 A | SOG.1542, SOG.1545 | 100% |  |  | 786 | DH1300 | 0 | Y |
| SOG.1549 |  | DH 1300 // SOG - Sanitary Stack test | 2d | 2026-07-13 A | 2026-07-14 A | SOG.1547 | 100% |  |  | 786 | DH1300 | 0 | Y |
| SOG.1552 |  | DH 1300 // SOG - Grounding | 2d | 2026-07-14 A | 2026-07-15 A | SOG.1548 | 100% |  |  | 786 | DH1300 | 0 | Y |
| SOG.1544 |  | DH 1300 // SOG - Install Sanitary Line (West Side) | 3d | 2026-07-15 A | 2026-07-17 A | SOG.1540 SS | 100% |  |  | 786 | DH1300 | 0 | Y |
| SOG.1545 |  | DH 1300 // SOG - Dock Leveller Base | 1d | 2026-07-15 A | 2026-07-15 A | SOG.1543 | 100% | 2026-07-24 | 2026-07-24 | 786 | DH1300 | 0 | Y |
| SOG.1550 |  | DH 1300 // SOG - Vapor Barrier | 2d | 2026-07-17 A | 2026-07-20 A | SOG.1549, SOG.1546 | 100% |  |  | 786 | DH1300 | 0 | Y |
| SOG.1551 |  | DH 1300 // SOG - Set Fixtures | 2d | 2026-07-20 A | 2026-07-21 A | SOG.1549, SOG.1541 | 100% |  |  | 786 | DH1300 | 0 | Y |
| SOG.1554 |  | DH 1300 // SOG - Rebar Set & Tie | 2d | 2026-07-21 A | 2026-07-22 A | SOG.1551, SOG.1550 SS | 100% |  |  | 786 | DH1300 | 0 | Y |
| SOG.1553 |  | DH 1300 // SOG - Install Floor Boxes | 1d | 2026-07-24 A | 2026-07-24 A | SOG.1552 | 100% |  |  | 786 | DH1300 | 0 | Y |
| SOG.1555 |  | DH 1300 // SOG - Truck route Prep/ QAQC Pre-Pour | 2d | 2026-07-27 A | 2026-07-28 A | SOG.1553, SOG.1551 | 100% |  |  | 786 | DH1300 | 0 | Y |
| SOG.1452 |  | DH 1300 // SOG - Pour #8 (DH Side) | 1d | 2026-07-29 A | 2026-07-29 A | FDN.1243, SOG.1554, SOG.1555 | 100% |  |  | 786 | DH1300 | 0 | Y |
| SOG.1453 |  | DH 1300 // SOG - Pour #9 (ER Side) | 1d | 2026-08-03 A | 2026-08-03 A | SOG.1452 FF, SOG.1452 | 100% | 2026-07-30 | 2026-07-30 | 786 | DH1300 | 0 | Y |
| SOG.1454 |  | DH 1300 // SOG - Concrete Cure | 1d | 2026-08-04 A | 2026-08-04 A | SOG.1453 | 100% | 2026-07-31 | 2026-07-31 | 786 | DH1300 | 0 | Y |
|  | 5 | **DH1400** |  | 2026-07-13 | 2026-08-11 |  |  |  |  |  |  |  |  |
| SOG.1455 |  | DH 1400 // SOG - Re-establish Sub-grade | 1d | 2026-07-13 A | 2026-07-13 A | STRUCTURE.7658, SOG.1449 | 100% |  |  | 786 | DH1400 | 0 | Y |
| SOG.1556 |  | DH 1400 // SOG - Rock Grade Walls | 1d | 2026-07-14 A | 2026-07-14 A | SOG.1455 | 100% |  |  | 786 | DH1400 | 0 | Y |
| SOG.1557 |  | DH 1400 // SOG - Rock Grade | 1d | 2026-07-14 A | 2026-07-14 A | SOG.1455 | 100% |  |  | 786 | DH1400 | 0 | Y |
| SOG.1558 |  | DH 1400 // SOG - Pad Remediation | 2d | 2026-07-14 A | 2026-07-15 A | SOG.1455 | 100% |  |  | 786 | DH1400 | 0 | Y |
| SOG.1560 |  | DH 1400 // SOG - Install Sanitary Line (West Side) | 3d | 2026-07-14 A | 2026-07-16 A | SOG.1556 SS | 100% |  |  | 786 | DH1400 | 0 | Y |
| SOG.1559 |  | DH 1400 // SOG - Backfill & Foam Walls | 1d | 2026-07-15 A | 2026-07-15 A | SOG.1556 | 100% |  |  | 786 | DH1400 | 0 | Y |
| SOG.1562 |  | DH 1400 // SOG - Rock Grade | 3d | 2026-07-16 A | 2026-07-20 A | SOG.1558, SOG.1559 | 100% |  |  | 786 | DH1400 | 0 | Y |
| SOG.1563 |  | DH 1400 // SOG - Shallow Under Ground | 5d | 2026-07-16 A | 2026-07-22 A | SOG.1560 | 100% |  |  | 786 | DH1400 | 0 | Y |
| SOG.1564 |  | DH 1400 // SOG - Power Branch (West to East) | 5d | 2026-07-16 A | 2026-07-22 A | SOG.1563 SS+2d | 100% |  |  | 786 | DH1400 | 0 | Y |
| SOG.1565 |  | DH 1400 // SOG - Sanitary Stack test | 2d | 2026-07-24 A | 2026-07-27 A | SOG.1563 | 100% |  |  | 786 | DH1400 | 0 | Y |
| SOG.1568 |  | DH 1400 // SOG - Grounding | 2d | 2026-07-24 A | 2026-07-27 A | SOG.1564 | 100% |  |  | 786 | DH1400 | 0 | Y |
| SOG.1566 |  | DH 1400 // SOG - Vapor Barrier | 2d | 2026-07-28 A | 2026-08-03 A | SOG.1565, SOG.1562 | 100% | 2026-07-28 | 2026-07-29 | 786 | DH1400 | 0 | Y |
| SOG.1567 |  | DH 1400 // SOG - Set Fixtures | 2d | 2026-07-28 A | 2026-08-03 A | SOG.1565, SOG.1557 | 100% | 2026-07-28 | 2026-07-29 | 786 | DH1400 | 0 | Y |
| SOG.1569 |  | DH 1400 // SOG - Install Floor Boxes | 1d | 2026-07-28 A | 2026-08-03 A | SOG.1568 | 100% | 2026-07-28 | 2026-07-28 | 786 | DH1400 | 0 | Y |
| SOG.1570 |  | DH 1400 // SOG - Rebar Set & Tie | 2d | 2026-08-03 A | 2026-08-04 A | SOG.1567, SOG.1566 SS | 100% | 2026-07-30 | 2026-07-31 | 786 | DH1400 | 0 | Y |
| SOG.1571 |  | DH 1400 // SOG - Truck route Prep/ QAQC Pre-Pour | 2d | 2026-08-03 A | 2026-08-04 A | SOG.1569, SOG.1567 | 100% | 2026-07-30 | 2026-07-31 | 786 | DH1400 | 0 | Y |
| SOG.1458 |  | DH 1400 // SOG - Pour #10 (CL 4.4) DH Side | 1d | 2026-08-06 A | 2026-08-06 A | FDN.1247, SOG.1570 FS+1d, SOG.1571, SOG.1453 | 100% | 2026-08-04 | 2026-08-04 | 786 | DH1400 | 0 | Y |
| SOG.1459 |  | DH 1400 // SOG - Pour #11 (CL 4.4) ER Side | 1d | 2026-08-10 A | 2026-08-10 A | SOG.1458 FF, SOG.1458 FS+1d | 100% | 2026-08-06 | 2026-08-06 | 786 | DH1400 | 0 | Y |
| SOG.1460 |  | DH 1400 // SOG - Concrete Cure | 1d | 2026-08-11 A | 2026-08-11 A | SOG.1459 | 100% | 2026-08-07 | 2026-08-07 | 786 | DH1400 | 0 | Y |

| ID | WBS | Activity | Duration | Start | Finish | Predecessors | Complete | Planned start | Planned finish | MSP Activity ID | QTS - AREA | 05 -SUFFOLK - Building Phase | 12 - SUFFOLK - Export_to_Procore |
| --- | --- | --- | --- | --- | --- | --- | --- | --- | --- | --- | --- | --- | --- |
|  | 6 | **DH1500** |  | 2026-07-14 | 2026-08-26 |  |  |  |  |  |  |  |  |
| SOG.1461 |  | DH 1500 // SOG - Re-establish Sub-grade | 1d | 2026-07-14 A | 2026-07-14 A | STRUCTURE.7659, SOG.1455 | 100% |  |  | 786 | DH1500 | 0 | Y |
| SOG.1572 |  | DH 1500 // SOG - Rock Grade Walls | 1d | 2026-07-15 A | 2026-07-15 A | SOG.1461 | 100% |  |  | 786 | DH1500 | 0 | Y |
| SOG.1573 |  | DH 1500 // SOG - Rock Grade | 1d | 2026-07-15 A | 2026-07-15 A | SOG.1461 | 100% |  |  | 786 | DH1500 | 0 | Y |
| SOG.1574 |  | DH 1500 // SOG - Pad Remediation | 2d | 2026-07-15 A | 2026-07-16 A | SOG.1461 | 100% |  |  | 786 | DH1500 | 0 | Y |
| SOG.1575 |  | DH 1500 // SOG - Backfill & Foam Walls | 1d | 2026-07-16 A | 2026-07-16 A | SOG.1572 | 100% |  |  | 786 | DH1500 | 0 | Y |
| SOG.1576 |  | DH 1500 // SOG - Install Sanitary Line (West Side) | 3d | 2026-07-16 A | 2026-07-20 A | SOG.1572 SS | 100% |  |  | 786 | DH1500 | 0 | Y |
| SOG.1579 |  | DH 1500 // SOG - Shallow Under Ground | 5d | 2026-07-24 A | 2026-08-05 A | SOG.1576 | 100% | 2026-07-24 | 2026-07-30 | 786 | DH1500 | 0 | Y |
| SOG.1581 |  | DH 1500 // SOG - Sanitary Stack test | 2d | 2026-07-27 A | 2026-07-29 A | SOG.1579 SS | 100% | 2026-07-31 | 2026-08-03 | 786 | DH1500 | 0 | Y |
| SOG.1582 |  | DH 1500 // SOG - Vapor Barrier | 2d | 2026-08-03 A | 2026-08-04 A | SOG.1581, SOG.1574 | 100% | 2026-08-04 | 2026-08-05 | 786 | DH1500 | 0 | Y |
| SOG.1583 |  | DH 1500 // SOG - Set Fixtures | 2d | 2026-08-03 A | 2026-08-04 A | SOG.1581, SOG.1573, SOG.1575 | 100% | 2026-08-04 | 2026-08-05 | 786 | DH1500 | 0 | Y |
| SOG.1584 |  | DH 1500 // SOG - Grounding | 2d | 2026-08-03 A | 2026-08-04 A | SOG.1579 SS | 100% | 2026-08-04 | 2026-08-05 | 786 | DH1500 | 0 | Y |
| SOG.1585 |  | DH 1500 // SOG - Install Floor Boxes | 1d | 2026-08-05 A | 2026-08-05 A | SOG.1584 | 100% | 2026-08-06 | 2026-08-06 | 786 | DH1500 | 0 | Y |
| SOG.1586 |  | DH 1500 // SOG - Rebar Set & Tie | 2d | 2026-08-05 A | 2026-08-06 A | SOG.1583, SOG.1582 SS | 100% | 2026-08-06 | 2026-08-07 | 786 | DH1500 | 0 | Y |
| SOG.1587 |  | DH 1500 // SOG - Truck route Prep/ QAQC Pre-Pour | 2d | 2026-08-19 A | 2026-08-19 A | SOG.1585, SOG.1583 | 100% | 2026-08-07 | 2026-08-10 | 786 | DH1500 | 0 | Y |
| SOG.1464 |  | DH 1500 // SOG - Pour #12 (DH Side) | 1d | 2026-08-20 A | 2026-08-20 A | FDN.1251, SOG.1586, SOG.1587 SS | 100% | 2026-08-11 | 2026-08-11 | 786 | DH1500 | 0 | Y |
| SOG.1577 |  | DH 1500 // SOG - Dock Leveller Base | 1d | 2026-08-24 A | 2026-08-24 A | SOG.1464 SS | 100% | 2026-07-24 | 2026-07-24 | 786 | DH1500 | 0 | Y |
| SOG.1465 |  | DH 1500 // SOG - Pour #13 (ER Side) | 1d | 2026-08-25 A | 2026-08-25 A | SOG.1464, SOG.1577 SS | 100% | 2026-08-13 | 2026-08-13 | 786 | DH1500 | 0 | Y |
| SOG.1466 |  | DH 1500 // SOG - Concrete Cure | 1d | 2026-08-26 A | 2026-08-26 A | SOG.1465 | 100% | 2026-08-14 | 2026-08-14 | 786 | DH1500 | 0 |  |
|  | 7 | **DH1600** |  | 2026-07-24 | 2026-08-19 |  |  |  |  |  |  |  |  |
| SOG.1467 |  | DH 1600 // SOG - Re-establish Sub-grade | 1d | 2026-07-24 A | 2026-07-24 A | STRUCTURE.7660, SOG.1461 | 100% |  |  | 786 | DH1600 | 0 | Y |
| SOG.1588 |  | DH 1600 // SOG - Rock Grade Walls | 1d | 2026-07-27 A | 2026-07-27 A | SOG.1467 | 100% |  |  | 786 | DH1600 | 0 | Y |
| SOG.1589 |  | DH 1600 // SOG - Rock Grade | 1d | 2026-07-27 A | 2026-07-27 A | SOG.1467 | 100% |  |  | 786 | DH1600 | 0 | Y |
| SOG.1590 |  | DH 1600 // SOG - Pad Remediation | 2d | 2026-07-27 A | 2026-07-28 A | SOG.1467 | 100% |  |  | 786 | DH1600 | 0 | Y |
| SOG.1592 |  | DH 1600 // SOG - Install Sanitary Line (West Side) | 3d | 2026-07-27 A | 2026-07-29 A | SOG.1588 SS | 100% |  |  | 786 | DH1600 | 0 | Y |
| SOG.1594 |  | DH 1600 // SOG - Rock Grade | 3d | 2026-07-27 A | 2026-07-27 A | SOG.1590, SOG.1591 | 100% | 2026-07-30 | 2026-08-03 | 786 | DH1600 | 0 | Y |
| SOG.1595 |  | DH 1600 // SOG - Shallow Under Ground | 5d | 2026-07-27 A | 2026-07-27 A | SOG.1592 | 100% | 2026-07-30 | 2026-08-05 | 786 | DH1600 | 0 | Y |
| SOG.1591 |  | DH 1600 // SOG - Backfill & Foam Walls | 1d | 2026-07-28 A | 2026-07-28 A | SOG.1588 | 100% |  |  | 786 | DH1600 | 0 | Y |
| SOG.1597 |  | DH 1600 // SOG - Sanitary Stack test | 2d | 2026-07-28 A | 2026-07-29 A | SOG.1595 | 100% | 2026-08-06 | 2026-08-07 | 786 | DH1600 | 0 | Y |
| SOG.1596 |  | DH 1600 // SOG - Power Branch (West to East) | 5d | 2026-08-03 A | 2026-08-07 A | SOG.1595 SS+2d | 100% |  |  | 786 | DH1600 | 0 | Y |
| SOG.1598 |  | DH 1600 // SOG - Vapor Barrier | 2d | 2026-08-03 A | 2026-08-04 A | SOG.1597, SOG.1594 | 100% | 2026-08-10 | 2026-08-11 | 786 | DH1600 | 0 | Y |
| SOG.1599 |  | DH 1600 // SOG - Set Fixtures | 2d | 2026-08-03 A | 2026-08-04 A | SOG.1597, SOG.1589 | 100% | 2026-08-10 | 2026-08-11 | 786 | DH1600 | 0 | Y |
| SOG.1602 |  | DH 1600 // SOG - Rebar Set & Tie | 2d | 2026-08-05 A | 2026-08-06 A | SOG.1599, SOG.1598 SS | 100% | 2026-08-12 | 2026-08-13 | 786 | DH1600 | 0 | Y |
| SOG.1600 |  | DH 1600 // SOG - Grounding | 2d | 2026-08-10 A | 2026-08-11 A | SOG.1596 | 100% |  |  | 786 | DH1600 | 0 | Y |
| SOG.1471 |  | DH 1600 // SOG - Pour #15 (CL 6.4) ER Side | 1d | 2026-08-11 A | 2026-08-11 A | SOG.1602, SOG.1603, SOG.1603 FF | 100% | 2026-08-20 | 2026-08-20 | 786 | DH1600 | 0 |  |
| SOG.1601 |  | DH 1600 // SOG - Install Floor Boxes | 1d | 2026-08-12 A | 2026-08-12 A | SOG.1600 | 100% |  |  | 786 | DH1600 | 0 | Y |
| SOG.1603 |  | DH 1600 // SOG - Truck route Prep/ QAQC Pre-Pour | 2d | 2026-08-13 A | 2026-08-14 A | SOG.1601, SOG.1599 | 100% |  |  | 786 | DH1600 | 0 | Y |
| SOG.1470 |  | DH 1600 // SOG - Pour #14 (CL 6.4) DH Side | 1d | 2026-08-18 A | 2026-08-18 A | FDN.1255, SOG.1603 FS+2d, SOG.1471 | 100% |  |  | 786 | DH1600 | 0 |  |
| SOG.1472 |  | DH 1600 // SOG - Concrete Cure | 1d | 2026-08-19 A | 2026-08-19 A | SOG.1470 | 100% | 2026-08-21 | 2026-08-21 | 786 | DH1600 | 0 |  |

| ID | WBS | Activity | Duration | Start | Finish | Predecessors | Complete | Planned start | Planned finish | Calendar | MSP Activity ID | QTS - AREA | 05 -SUFFOLK - Building Phase | 12 - SUFFOLK - Export_to_Procore |
| --- | --- | --- | --- | --- | --- | --- | --- | --- | --- | --- | --- | --- | --- | --- |
|  | 8 | **BOH** |  | 2026-05-11 | 2026-06-16 |  |  |  |  |  |  |  |  |  |
| SOG.1608 |  | BOH // SOG - Install Sanitary Line (West Side) | 3d | 2026-05-11 A | 2026-05-13 A | SOG.1482 | 100% | 2026-05-14 | 2026-05-18 |  | 786 | BOH | 0 | Y |
| SOG.1611 |  | BOH // SOG - Shallow Under Ground | 5d | 2026-05-12 A | 2026-05-14 A | SOG.1608 | 100% | 2026-05-19 | 2026-05-26 |  | 786 | BOH | 0 | Y |
| SOG.1612 |  | BOH // SOG - Power Branch (West to East) | 5d | 2026-05-14 A | 2026-05-20 A | SOG.1611 SS+2d | 100% | 2026-06-03 | 2026-06-09 |  | 786 | BOH | 0 | Y |
| SOG.1613 |  | BOH // SOG - Sanitary Stack test | 2d | 2026-05-14 A | 2026-05-15 A | SOG.1611 | 100% | 2026-05-27 | 2026-05-28 |  | 786 | BOH | 0 | Y |
| SOG.1473 |  | BOH // SOG - Re-establish Sub-grade | 1d | 2026-05-16 A | 2026-05-16 A | SOG.1431 | 100% | 2026-06-03 | 2026-06-03 |  | 786 | BOH | 0 | Y |
| SOG.1606 |  | BOH // SOG - Pad Remediation | 2d | 2026-05-16 A | 2026-05-16 A | SOG.1473 | 100% | 2026-06-03 | 2026-06-04 |  | 786 | BOH | 0 | Y |
| SOG.1604 |  | BOH // SOG - Rock Grade Walls | 1d | 2026-05-18 A | 2026-05-18 A | SOG.1473 | 100% | 2026-06-04 | 2026-06-04 |  | 786 | BOH | 0 | Y |
| SOG.1607 |  | BOH // SOG - Backfill & Foam Walls | 1d | 2026-05-19 A | 2026-05-19 A | SOG.1604 | 100% | 2026-06-05 | 2026-06-05 |  | 786 | BOH | 0 | Y |
| SOG.1605 |  | BOH // SOG - Rock Grade | 1d | 2026-05-20 A | 2026-05-20 A | SOG.1604 | 100% | 2026-06-05 | 2026-06-05 |  | 786 | BOH | 0 | Y |
| SOG.1614 |  | BOH // SOG - Vapor Barrier | 2d | 2026-05-20 A | 2026-05-22 A | SOG.1607, SOG.1606, SOG.1613 | 100% | 2026-06-08 | 2026-06-09 |  | 786 | BOH | 0 | Y |
| SOG.1615 |  | BOH // SOG - Set Fixtures | 2d | 2026-05-21 A | 2026-05-23 A | SOG.1613, SOG.1605 | 100% | 2026-06-08 | 2026-06-09 |  | 786 | BOH | 0 | Y |
| SOG.1616 |  | BOH // SOG - Grounding | 2d | 2026-05-21 A | 2026-05-26 A | SOG.1612 | 100% | 2026-06-03 | 2026-06-04 |  | 786 | BOH | 0 | Y |
| SOG.1618 |  | BOH // SOG - Rebar Set & Tie | 2d | 2026-05-25 A | 2026-05-26 A | SOG.1615, SOG.1614 SS | 100% | 2026-06-03 | 2026-06-04 |  | 786 | BOH | 0 | Y |
| SOG.1617 |  | BOH // SOG - Install Floor Boxes | 6d | 2026-05-27 A | 2026-06-13 A | SOG.1616 | 100% | 2026-06-03 | 2026-06-10 |  | 786 | BOH | 0 | Y |
| SOG.1619 |  | BOH // SOG - Truck route Prep/ QAQC Pre-Pour | 2d | 2026-06-13 A | 2026-06-15 A | SOG.1617, SOG.1615 | 100% | 2026-06-15 | 2026-06-16 |  | 786 | BOH | 0 | Y |
| SOG.1476 |  | BOH // SOG - Pour #2 | 1d | 2026-06-15 A | 2026-06-15 A | SOG.1618, FDN.1300 SS+5d, SOG.1619 FF | 100% | 2026-06-16 | 2026-06-16 |  | 786 | BOH | 0 | Y |
| SOG.1478 |  | BOH // SOG - Concrete Cure | 1d | 2026-06-16 A | 2026-06-16 A | SOG.1476 | 100% | 2026-06-17 | 2026-06-17 |  | 786 | BOH | 0 | Y |
|  | 3 | **Steel** |  | 2026-05-08 | 2026-07-23 |  |  |  |  |  |  |  |  |  |
|  | 7 | **Column Line 0.1 Through 1.0 (FOH)** |  | 2026-05-08 | 2026-05-28 |  |  |  |  |  |  |  |  |  |
| STRUCTURE.7617 |  | Steel / CL 0.1 Through 1.0 (FOH) // Crane 1 -Erect steel Column and Joist | 5d | 2026-05-08 A | 2026-05-20 A | SOG.1435 SS, TB.SS.1030, A2090 | 100% | 2026-05-09 | 2026-05-14 | Calendar 06 - 6 Day Work Week w/ Holidays | 678 | FOH | 0 | Y |
| STRUCTURE.7630 |  | Steel / CL 0.1 Through 1.0 (FOH) // Crane 2 -Erect steel Column and Joist | 5d | 2026-05-11 A | 2026-05-20 A | STRUCTURE.7617 SS | 100% | 2026-05-13 | 2026-05-18 | Calendar 06 - 6 Day Work Week w/ Holidays | 678 | FOH | 0 | Y |
| STRUCTURE.7615 |  | Steel / CL 0.1 Through 1.0 (FOH) // Crane 1 - Plumb, bolt, weld steel | 5d | 2026-05-21 A | 2026-05-27 A | STRUCTURE.7617 | 100% |  |  | Calendar 06 - 6 Day Work Week w/ Holidays | 679 | FOH | 0 | Y |
| STRUCTURE.7631 |  | Steel / CL 0.1 Through 1.0 (FOH) // Crane 2 - Plumb, bolt, weld steel | 5d | 2026-05-21 A | 2026-05-27 A | STRUCTURE.7630 | 100% |  |  | Calendar 06 - 6 Day Work Week w/ Holidays | 679 | FOH | 0 | Y |
| STRUCTURE.7616 |  | Steel / CL 0.1 Through 1.0 (FOH) // Crane 1 - Install pan decking | 3d | 2026-05-23 A | 2026-05-27 A | STRUCTURE.7615 FF, STRUCTURE.7615 SS | 100% |  |  | Calendar 06 - 6 Day Work Week w/ Holidays | 680 | FOH | 0 | Y |
| STRUCTURE.7632 |  | Steel / CL 0.1 Through 1.0 (FOH) // Crane 2 - Install pan decking | 3d | 2026-05-23 A | 2026-05-27 A | STRUCTURE.7631 FF, STRUCTURE.7631 SS | 100% |  |  | Calendar 06 - 6 Day Work Week w/ Holidays | 680 | FOH | 0 | Y |
| STRUCTURE.7654 |  | Steel / CL 0.1 Through 1.0 (FOH) // FOH - Turnover | 1d | 2026-05-28 A | 2026-05-28 A | STRUCTURE.7632, STRUCTURE.7616 | 100% |  |  | Calendar 06 - 6 Day Work Week w/ Holidays | 680 | FOH | 0 | Y |

Notes:
- SOG.1617: Scheduler Notes: Adverse Weather 06/09 to 06/13

| ID | WBS | Activity | Duration | Start | Finish | Predecessors | Complete | Planned start | Planned finish | Calendar | MSP Activity ID | QTS - AREA | 05 -SUFFOLK - Building Phase | 12 - SUFFOLK - Export_to_Procore |
| --- | --- | --- | --- | --- | --- | --- | --- | --- | --- | --- | --- | --- | --- | --- |
|  | 1 | **Column line 1.1 Through 2.0 (DH1100)** |  | 2026-05-21 | 2026-06-02 |  |  |  |  |  |  |  |  |  |
| STRUCTURE.7370 |  | Steel / CL 1.1 Through 2.0 (DH1100) // Crane 1 - Erect steel Column and Joist | 5d | 2026-05-21 A | 2026-05-27 A | STRUCTURE.7617 | 100% |  |  | Calendar 06 - 6 Day Work Week w/ Holidays | 678 | DH1100 | 0 | Y |
| STRUCTURE.7633 |  | Steel / CL 1.1 Through 2.0 (DH1100) // Crane 2 -Erect steel Column and Joist | 5d | 2026-05-21 A | 2026-05-27 A | STRUCTURE.7630 | 100% |  |  | Calendar 06 - 6 Day Work Week w/ Holidays | 678 | DH1100 | 0 | Y |
| STRUCTURE.7380 |  | Steel / CL 1.1 Through 2.0 (DH1100) // Crane 1 -Plumb, bolt, weld steel | 5d | 2026-05-23 A | 2026-05-29 A | STRUCTURE.7370 SS+2d | 100% |  |  | Calendar 06 - 6 Day Work Week w/ Holidays | 679 | DH1100 | 0 | Y |
| STRUCTURE.7634 |  | Steel / CL 1.1 Through 2.0 (DH1100) // Crane 2 - Plumb, bolt, weld steel | 5d | 2026-05-23 A | 2026-05-29 A | STRUCTURE.7633 SS+2d | 100% |  |  | Calendar 06 - 6 Day Work Week w/ Holidays | 679 | DH1100 | 0 | Y |
| STRUCTURE.7635 |  | Steel / CL 1.1 Through 2.0 (DH1100) // Crane 2 - Install pan decking | 3d | 2026-05-27 A | 2026-05-29 A | STRUCTURE.7634 SS+2d | 100% |  |  | Calendar 06 - 6 Day Work Week w/ Holidays | 680 | DH1100 | 0 | Y |
| STRUCTURE.7390 |  | Steel / CL 1.1 Through 2.0 (DH1100) // Crane 1 - Install pan decking | 3d | 2026-05-30 A | 2026-06-01 A | STRUCTURE.7380 | 100% | 2026-05-30 | 2026-06-02 | Calendar 06 - 6 Day Work Week w/ Holidays | 680 | DH1100 | 0 | Y |
| STRUCTURE.7655 |  | Steel / CL 1.1 Through 2.0 (DH1100) // DH1100 - Turnover | 1d | 2026-06-02 A | 2026-06-02 A | STRUCTURE.7635, STRUCTURE.7390 | 100% | 2026-06-03 | 2026-06-03 | Calendar 06 - 6 Day Work Week w/ Holidays | 680 | DH1100 | 0 | Y |
|  | 2 | **Column Line 2.1 Through 3.0 (DH1200)** |  | 2026-05-28 | 2026-06-27 |  |  |  |  |  |  |  |  |  |
| STRUCTURE.7400 |  | Steel / CL 2.1 Through 3.0 (DH1200) // Crane 1 - Erect steel Column and Joist | 5d | 2026-05-28 A | 2026-06-02 A | STRUCTURE.7370 | 100% |  |  | Calendar 06 - 6 Day Work Week w/ Holidays | 682 | DH1200 | 0 | Y |
| STRUCTURE.7636 |  | Steel / CL 2.1 Through 3.0 (DH1200) // Crane 2 -Erect steel Column and Joist | 5d | 2026-05-28 A | 2026-06-02 A | STRUCTURE.7633 | 100% |  |  | Calendar 06 - 6 Day Work Week w/ Holidays | 678 | DH1200 | 0 | Y |
| STRUCTURE.7410 |  | Steel / CL 2.1 Through 3.0 (DH1200) // Crane 1 - Plumb, bolt, weld steel | 5d | 2026-05-30 A | 2026-06-09 A | STRUCTURE.7400 SS+2d | 100% | 2026-05-30 | 2026-06-04 | Calendar 06 - 6 Day Work Week w/ Holidays | 683 | DH1200 | 0 | Y |
| STRUCTURE.7637 |  | Steel / CL 2.1 Through 3.0 (DH1200) // Crane 2 - Plumb, bolt, weld steel | 5d | 2026-05-30 A | 2026-06-09 A | STRUCTURE.7636 SS+2d | 100% | 2026-05-30 | 2026-06-04 | Calendar 06 - 6 Day Work Week w/ Holidays | 679 | DH1200 | 0 | Y |
| STRUCTURE.7420 |  | Steel / CL 2.1 Through 3.0 (DH1200) // Crane 1 - Install pan decking | 2d | 2026-06-10 A | 2026-06-26 A | STRUCTURE.7410, STRUCTURE.7663 | 100% | 2026-06-10 | 2026-06-11 | Calendar 06 - 6 Day Work Week w/ Holidays | 684 | DH1200 | 0 | Y |
| STRUCTURE.7638 |  | Steel / CL 2.1 Through 3.0 (DH1200) // Crane 2 - Install pan decking | 3d | 2026-06-10 A | 2026-06-26 A | STRUCTURE.7637 SS+2d, STRUCTURE.7663 | 100% | 2026-06-10 | 2026-06-12 | Calendar 06 - 6 Day Work Week w/ Holidays | 680 | DH1200 | 0 | Y |
| STRUCTURE.7662 |  | ISSU01- Steel / CL 2.1 Through 3.0 (DH1200) // Demob of Installed Column | 1d | 2026-06-19 A | 2026-06-22 A | STRUCTURE.7637 | 100% | 2026-06-10 | 2026-06-10 | Calendar 06 - 6 Day Work Week w/ Holidays | 684 | DH1200 | 0 | Y |
| STRUCTURE.7663 |  | ISSU01- Steel / CL 2.1 Through 3.0 (DH1200) // Re-Install / Re-Work of Column Line | 2d | 2026-06-23 A | 2026-06-24 A | STRUCTURE.7662 | 100% |  |  | Calendar 06 - 6 Day Work Week w/ Holidays | 684 | DH1200 | 0 | Y |
| STRUCTURE.7656 |  | Steel / CL 2.1 Through 3.0 (DH1200) // DH1200 - Turnover | 1d | 2026-06-27 A | 2026-06-27 A | STRUCTURE.7638, STRUCTURE.7420 | 100% |  |  | Calendar 06 - 6 Day Work Week w/ Holidays | 680 | DH1200 | 0 | Y |
|  | 3 | **Column Line 3.1 Through 4.0 (DH1300)** |  | 2026-06-03 | 2026-06-29 |  |  |  |  |  |  |  |  |  |
| STRUCTURE.7430 |  | Steel / CL 3.1 Through 4.0 (DH1300) // Crane 1 - Erect steel Column and Joist | 5d | 2026-06-03 A | 2026-06-09 A | STRUCTURE.7400 | 100% | 2026-06-10 | 2026-06-15 | Calendar 06 - 6 Day Work Week w/ Holidays | 686 | DH1300 | 0 | Y |
| STRUCTURE.7639 |  | Steel / CL 3.1 Through 4.0 (DH1300) // Crane 2 -Erect steel Column and Joist | 5d | 2026-06-03 A | 2026-06-09 A | STRUCTURE.7636 | 100% | 2026-06-10 | 2026-06-15 | Calendar 06 - 6 Day Work Week w/ Holidays | 678 | DH1300 | 0 | Y |
| STRUCTURE.7440 |  | Steel / CL 3.1 Through 4.0 (DH1300) // Crane 1 - Plumb, bolt, weld steel | 5d | 2026-06-04 A | 2026-06-24 A | STRUCTURE.7430 SS+2d | 100% | 2026-06-04 | 2026-06-09 | Calendar 06 - 6 Day Work Week w/ Holidays | 687 | DH1300 | 0 | Y |
| STRUCTURE.7640 |  | Steel / CL 3.1 Through 4.0 (DH1300) // Crane 2 - Plumb, bolt, weld steel | 5d | 2026-06-04 A | 2026-06-09 A | STRUCTURE.7639 SS+2d | 100% |  |  | Calendar 06 - 6 Day Work Week w/ Holidays | 679 | DH1300 | 0 | Y |
| STRUCTURE.7450 |  | Steel / CL 3.1 Through 4.0 (DH1300) // Crane 1 - Install pan decking | 3d | 2026-06-10 A | 2026-06-27 A | STRUCTURE.7440, STRUCTURE.7420 | 100% | 2026-06-18 | 2026-06-20 | Calendar 06 - 6 Day Work Week w/ Holidays | 688 | DH1300 | 0 | Y |
| STRUCTURE.7641 |  | Steel / CL 3.1 Through 4.0 (DH1300) // Crane 2 - Install pan decking | 3d | 2026-06-10 A | 2026-06-27 A | STRUCTURE.7640 SS+2d, STRUCTURE.7638 | 100% | 2026-06-10 | 2026-06-12 | Calendar 06 - 6 Day Work Week w/ Holidays | 680 | DH1300 | 0 | Y |
| STRUCTURE.7657 |  | Steel / CL 3.1 Through 4.0 (DH1300) // DH1300 - Turnover | 1d | 2026-06-27 A | 2026-06-29 A | STRUCTURE.7450, STRUCTURE.7641 | 100% | 2026-06-27 | 2026-06-27 | Calendar 06 - 6 Day Work Week w/ Holidays | 680 | DH1300 | 0 | Y |

| ID | WBS | Activity | Duration | Start | Finish | Predecessors | Complete | Planned start | Planned finish | Calendar | MSP Activity ID | QTS - AREA | 05 -SUFFOLK - Building Phase | 12 - SUFFOLK - Export_to_Procore |
| --- | --- | --- | --- | --- | --- | --- | --- | --- | --- | --- | --- | --- | --- | --- |
|  | 4 | **Column Line 4.1 Through 5.0 (DH1400)** |  | 2026-06-27 | 2026-07-10 |  |  |  |  |  |  |  |  |  |
| STRUCTURE.7460 |  | Steel / CL 4.1 Through 5.0 (DH1400) // Crane 1 - Erect steel Column and Joist | 5d | 2026-06-27 A | 2026-07-03 A | STRUCTURE.7430, STRUCTURE.7450 | 100% | 2026-06-27 | 2026-07-02 | Calendar 06 - 6 Day Work Week w/ Holidays | 690 | DH1400 | 0 | Y |
| STRUCTURE.7642 |  | Steel / CL 4.1 Through 5.0 (DH1400) // Crane 2 -Erect steel Column and Joist | 5d | 2026-06-27 A | 2026-07-03 A | STRUCTURE.7639, STRUCTURE.7641 | 100% | 2026-06-27 | 2026-07-02 | Calendar 06 - 6 Day Work Week w/ Holidays | 678 | DH1400 | 0 | Y |
| STRUCTURE.7470 |  | Steel / CL 4.1 Through 5.0 (DH1400) // Crane 1 - Plumb, bolt, weld steel | 5d | 2026-06-30 A | 2026-07-10 A | STRUCTURE.7460 SS+2d | 100% | 2026-06-30 | 2026-07-06 | Calendar 06 - 6 Day Work Week w/ Holidays | 691 | DH1400 | 0 | Y |
| STRUCTURE.7643 |  | Steel / CL 4.1 Through 5.0 (DH1400) // Crane 2 - Plumb, bolt, weld steel | 5d | 2026-06-30 A | 2026-07-10 A | STRUCTURE.7642 SS+2d | 100% | 2026-06-30 | 2026-07-06 | Calendar 06 - 6 Day Work Week w/ Holidays | 679 | DH1400 | 0 | Y |
| STRUCTURE.7480 |  | Steel / CL 4.1 Through 5.0 (DH1400) // Crane 1 - Install pan decking | 3d | 2026-07-08 A | 2026-07-10 A | STRUCTURE.7470 | 100% |  |  | Calendar 06 - 6 Day Work Week w/ Holidays | 692 | DH1400 | 0 | Y |
| STRUCTURE.7644 |  | Steel / CL 4.1 Through 5.0 (DH1400) // Crane 2 - Install pan decking | 3d | 2026-07-08 A | 2026-07-10 A | STRUCTURE.7643 SS+2d | 100% | 2026-06-24 | 2026-06-26 | Calendar 06 - 6 Day Work Week w/ Holidays | 680 | DH1400 | 0 | Y |
| STRUCTURE.7658 |  | Steel / CL 4.1 Through 5.0 (DH1400) // DH1400 - Turnover | 1d | 2026-07-10 A | 2026-07-10 A | STRUCTURE.7644, STRUCTURE.7480 | 100% |  |  | Calendar 06 - 6 Day Work Week w/ Holidays | 680 | DH1400 | 0 | Y |
|  | 5 | **Column Line 5.2 Through 6.0 (DH1500)** |  | 2026-06-22 | 2026-07-03 |  |  |  |  |  |  |  |  |  |
| STRUCTURE.7490 |  | Steel / CL 5.2 Through 6.0 (DH1500) // Crane 1 - Erect steel Column and Joist | 5d | 2026-06-22 A | 2026-06-26 A | STRUCTURE.7460 SS+2d | 100% |  |  | Calendar 06 - 6 Day Work Week w/ Holidays | 694 | DH1500 | 0 | Y |
| STRUCTURE.7645 |  | Steel / CL 5.2 Through 6.0 (DH1500) // Crane 2 -Erect steel Column and Joist | 5d | 2026-06-22 A | 2026-06-26 A | STRUCTURE.7642 SS+2d | 100% |  |  | Calendar 06 - 6 Day Work Week w/ Holidays | 678 | DH1500 | 0 | Y |
| STRUCTURE.7500 |  | Steel / CL 5.2 Through 6.0 (DH1500) // Crane 1 - Plumb, bolt, weld steel | 5d | 2026-06-24 A | 2026-06-29 A | STRUCTURE.7490 SS+2d | 100% |  |  | Calendar 06 - 6 Day Work Week w/ Holidays | 695 | DH1500 | 0 | Y |
| STRUCTURE.7646 |  | Steel / CL 5.2 Through 6.0 (DH1500) // Crane 2 - Plumb, bolt, weld steel | 5d | 2026-06-24 A | 2026-06-29 A | STRUCTURE.7645 SS+2d | 100% |  |  | Calendar 06 - 6 Day Work Week w/ Holidays | 679 | DH1500 | 0 | Y |
| STRUCTURE.7647 |  | Steel / CL 5.2 Through 6.0 (DH1500) // Crane 2 - Install pan decking | 3d | 2026-06-26 A | 2026-06-29 A | STRUCTURE.7646 SS+2d | 100% |  |  | Calendar 06 - 6 Day Work Week w/ Holidays | 680 | DH1500 | 0 | Y |
| STRUCTURE.7510 |  | Steel / CL 5.2 Through 6.0 (DH1500) // Crane 1 - Install pan decking | 3d | 2026-06-30 A | 2026-07-02 A | STRUCTURE.7500 | 100% |  |  | Calendar 06 - 6 Day Work Week w/ Holidays | 696 | DH1500 | 0 | Y |
| STRUCTURE.7659 |  | Steel / CL 5.2 Through 6.0 (DH1500) // DH1500 - Turnover | 1d | 2026-07-03 A | 2026-07-03 A | STRUCTURE.7647, STRUCTURE.7510 | 100% |  |  | Calendar 06 - 6 Day Work Week w/ Holidays | 680 | DH1500 | 0 | Y |
|  | 6 | **Column Line 6.1 Through 7.0 (DH1600)** |  | 2026-06-27 | 2026-07-23 |  |  |  |  |  |  |  |  |  |
| STRUCTURE.7520 |  | Steel / CL 6.1 Through 7.0 (DH1600) // Crane 1 - Erect steel Column and Joist | 5d | 2026-06-27 A | 2026-07-02 A | STRUCTURE.7490 | 100% |  |  | Calendar 06 - 6 Day Work Week w/ Holidays | 698 | DH1600 | 0 | Y |
| STRUCTURE.7648 |  | Steel / CL 6.1 Through 7.0 (DH1600) // Crane 2 -Erect steel Column and Joist | 5d | 2026-06-27 A | 2026-07-02 A | STRUCTURE.7645 | 100% |  |  | Calendar 06 - 6 Day Work Week w/ Holidays | 678 | DH1600 | 0 | Y |
| STRUCTURE.7530 |  | Steel / CL 6.1 Through 7.0 (DH1600) // Crane 1 - Plumb, bolt, weld steel | 5d | 2026-06-30 A | 2026-07-06 A | STRUCTURE.7520 SS+2d | 100% |  |  | Calendar 06 - 6 Day Work Week w/ Holidays | 699 | DH1600 | 0 | Y |
| STRUCTURE.7649 |  | Steel / CL 6.1 Through 7.0 (DH1600) // Crane 2 - Plumb, bolt, weld steel | 5d | 2026-06-30 A | 2026-07-06 A | STRUCTURE.7648 SS+2d | 100% |  |  | Calendar 06 - 6 Day Work Week w/ Holidays | 679 | DH1600 | 0 | Y |
| STRUCTURE.7650 |  | Steel / CL 6.1 Through 7.0 (DH1600) // Crane 2 - Install pan decking | 3d | 2026-07-02 A | 2026-07-22 A | STRUCTURE.7649 SS+2d | 100% | 2026-07-02 | 2026-07-06 | Calendar 06 - 6 Day Work Week w/ Holidays | 680 | DH1600 | 0 | Y |
| STRUCTURE.7540 |  | Steel / CL 6.1 Through 7.0 (DH1600) // Crane 1 - Install pan decking | 3d | 2026-07-07 A | 2026-07-22 A | STRUCTURE.7530 | 100% | 2026-07-07 | 2026-07-09 | Calendar 06 - 6 Day Work Week w/ Holidays | 700 | DH1600 | 0 | Y |
| STRUCTURE.7660 |  | Steel / CL 6.1 Through 7.0 (DH1600) // DH1600 - Turnover | 1d | 2026-07-23 A | 2026-07-23 A | STRUCTURE.7650, STRUCTURE.7540 | 100% |  |  | Calendar 06 - 6 Day Work Week w/ Holidays | 680 | DH1600 | 0 | Y |

| ID | WBS | Activity | Duration | Start | Finish | Predecessors | Complete | Planned start | Planned finish | Calendar | MSP Activity ID | QTS - AREA | 05 -SUFFOLK - Building Phase | 12 - SUFFOLK - Export_to_Procore |
| --- | --- | --- | --- | --- | --- | --- | --- | --- | --- | --- | --- | --- | --- | --- |
|  | 8 | **Column Line 7.1 Through 7.3 (BOH)** |  | 2026-06-27 | 2026-07-13 |  |  |  |  |  |  |  |  |  |
| STRUCTURE.7620 |  | Steel / CL 7.1 Through 7.3 (BOH) // Crane 1 - Erect steel Column and Joist | 5d | 2026-06-27 A | 2026-07-02 A | STRUCTURE.7520 SS | 100% |  |  | Calendar 06 - 6 Day Work Week w/ Holidays | 678 | BOH | 0 | Y |
| STRUCTURE.7618 |  | Steel / CL 7.1 Through 7.3 (BOH) // Crane 1 - Plumb, bolt, weld steel | 5d | 2026-06-30 A | 2026-07-06 A | STRUCTURE.7620 SS+2d | 100% |  |  | Calendar 06 - 6 Day Work Week w/ Holidays | 679 | BOH | 0 | Y |
| STRUCTURE.7651 |  | Steel / CL 7.1 Through 7.3 (BOH) // Crane 2 -Erect steel Column and Joist | 5d | 2026-07-03 A | 2026-07-09 A | STRUCTURE.7648 | 100% |  |  | Calendar 06 - 6 Day Work Week w/ Holidays | 678 | BOH | 0 | Y |
| STRUCTURE.7619 |  | Steel / CL 7.1 Through 7.3 (BOH) // Crane 1 - Install pan decking | 3d | 2026-07-07 A | 2026-07-09 A | STRUCTURE.7618 | 100% |  |  | Calendar 06 - 6 Day Work Week w/ Holidays | 680 | BOH | 0 | Y |
| STRUCTURE.7652 |  | Steel / CL 7.1 Through 7.3 (BOH) // Crane 2 - Plumb, bolt, weld steel | 5d | 2026-07-07 A | 2026-07-11 A | STRUCTURE.7651 SS+2d | 100% |  |  | Calendar 06 - 6 Day Work Week w/ Holidays | 679 | BOH | 0 | Y |
| STRUCTURE.7653 |  | Steel / CL 7.1 Through 7.3 (BOH) // Crane 2 - Install pan decking | 3d | 2026-07-09 A | 2026-07-11 A | STRUCTURE.7652 SS+2d | 100% |  |  | Calendar 06 - 6 Day Work Week w/ Holidays | 680 | BOH | 0 | Y |
| STRUCTURE.7661 |  | Steel / CL 7.1 Through 7.3 (BOH) // BOH - Turnover | 1d | 2026-07-13 A | 2026-07-13 A | STRUCTURE.7653, STRUCTURE.7619 | 100% |  |  | Calendar 06 - 6 Day Work Week w/ Holidays | 680 | BOH | 0 | Y |
|  | 10 | **Roofing** |  | 2026-05-29 | 2026-10-15 |  |  |  |  |  |  |  |  |  |
|  | 1 | **FOH** |  | 2026-05-29 | 2026-06-15 |  |  |  |  |  |  |  |  |  |
| STRUCTURE.7550 |  | Roofing / FOH // Set Equipment Curbs (Column Lines 0.1 - 1.1) FOH | 3d | 2026-05-29 A | 2026-06-02 A | STRUCTURE.7654, FDN.1266 | 100% |  |  |  | 778 | FOH |  | Y |
| STRUCTURE.7611 |  | Roofing / FOH // Install roofing system(Column 0.1-1.1) | 6d | 2026-05-29 A | 2026-06-15 A | STRUCTURE.7550 SS | 100% | 2026-05-29 | 2026-06-05 |  | 773 | FOH | 0 | Y |
|  | 2 | **DH1100** |  | 2026-06-05 | 2026-07-02 |  |  |  |  |  |  |  |  |  |
| STRUCTURE.7612 |  | Roofing / DH 1100 // Set Equipment Curbs (Column Lines 1.1 - 2.1) DH1100 | 2d | 2026-06-05 A | 2026-06-08 A | STRUCTURE.7655, STRUCTURE.7550 | 100% |  |  |  | 778 | DH1100 |  | Y |
| STRUCTURE.1690 |  | Roofing / DH 1100 // Install roofing System | 10d | 2026-06-09 A | 2026-07-02 A | A2270, STRUCTURE.7612, STRUCTURE.7611 | 100% | 2026-06-15 | 2026-06-26 |  | 773 | DH1100 | 0 | Y |
|  | 3 | **DH1200** |  | 2026-06-19 | 2026-07-17 |  |  |  |  |  |  |  |  |  |
| STRUCTURE.7560 |  | Roofing / DH 1200 // Set Equipment Curbs (Column lines 1.9 - 2.2) | 2d | 2026-06-19 A | 2026-06-22 A | STRUCTURE.7656, STRUCTURE.7612 | 100% |  |  |  | 779 | DH1200 |  | Y |
| STRUCTURE.6770 |  | Roofing / DH 1200 // Install roofing (Column 2.1-2.9) | 10d | 2026-06-29 A | 2026-07-17 A | STRUCTURE.7420, STRUCTURE.6860 SS, STRUCTURE.7090 SS, STRUCTURE.1690 | 100% | 2026-06-29 | 2026-07-13 |  | 774 | DH1200 | 0 | Y |
|  | 4 | **DH1300** |  | 2026-06-29 | 2026-09-10 |  |  |  |  |  |  |  |  |  |
| STRUCTURE.7570 |  | Roofing / DH 1300 // Set Equipment Curbs (Column Lines 2.9 - 3.1) | 2d | 2026-06-29 A | 2026-06-30 A | STRUCTURE.7657, STRUCTURE.7560 | 100% |  |  |  | 780 | DH1300 |  | Y |
| STRUCTURE.6780 |  | Roofing / DH 1300 // Install roofing (Column 3.1-3.9) | 10d | 2026-07-28 A | 2026-09-10 A | STRUCTURE.7450, STRUCTURE.6900 SS, STRUCTURE.7130 SS, STRUCTURE.6770, STRUCTURE.6770 FF | 100% | 2026-07-24 | 2026-08-06 |  | 775 | DH1300 | 0 | Y |
|  | 5 | **DH1400** |  | 2026-07-02 | 2026-10-10 |  |  |  |  |  |  |  |  |  |
| STRUCTURE.7580 |  | Roofing / DH 1400 // Set Equipment Curbs (Column Lines 3.9 - 4.2) | 2d | 2026-07-02 A | 2026-07-06 A | STRUCTURE.7658, STRUCTURE.7570 | 100% |  |  |  | 781 | DH1400 |  | Y |
| STRUCTURE.6790 |  | Roofing / DH 1400 // Install roofing (Column 4.1-4.9) | 10d | 2026-09-24 A | 2026-10-10 A | STRUCTURE.7480, STRUCTURE.6940 SS, STRUCTURE.7170 SS, STRUCTURE.6780 | 100% | 2026-08-07 | 2026-08-20 |  | 776 | DH1400 | 0 |  |

| ID | WBS | Activity | Duration | Start | Finish | Predecessors | Complete | Remaining | Planned start | Planned finish | Total float | Free float | MSP Activity ID | QTS - AREA | 12 - SUFFOLK - Export_to_Procore | 05 -SUFFOLK - Building Phase |
| --- | --- | --- | --- | --- | --- | --- | --- | --- | --- | --- | --- | --- | --- | --- | --- | --- |
|  | 6 | **DH1500** |  | 2026-07-07 | 2026-10-15 |  |  |  |  |  |  |  |  |  |  |  |
| STRUCTURE.7590 |  | Roofing / DH 1500 // Set Equipment Curbs (Column Lines 4.9 - 5.1) | 2d | 2026-07-07 A | 2026-07-08 A | STRUCTURE.7659, STRUCTURE.7580 | 100% |  |  |  |  |  | 782 | DH1500 | Y |  |
| STRUCTURE.7340 |  | Roofing / DH 1500 // Install roofing (Column 5.1-5.9) | 10d | 2026-09-11 A | 2026-10-15 | STRUCTURE.6780, STRUCTURE.7510, STRUCTURE.6980 SS, STRUCTURE.7210 SS | 80% | 2d | 2026-08-21 | 2026-09-03 | 180d | 6d | 777 | DH1500 |  | 0 |
|  | 7 | **DH1600** |  | 2026-07-09 | 2026-09-02 |  |  |  |  |  |  |  |  |  |  |  |
| STRUCTURE.7600 |  | Roofing / DH 1600 // Set Equipment Curbs (Column Lines 5.9 - 6.2) | 2d | 2026-07-09 A | 2026-07-10 A | STRUCTURE.7660, STRUCTURE.7590 | 100% |  |  |  |  |  | 783 | DH1600 | Y |  |
| STRUCTURE.7350 |  | Roofing / DH 1600 // Install roofing (Column 6.1-7.3) | 10d | 2026-08-26 A | 2026-09-02 A | STRUCTURE.7540, STRUCTURE.7090 SS, STRUCTURE.7250 SS, STRUCTURE.7600 | 100% |  | 2026-09-04 | 2026-09-18 |  |  | 14 | DH1600 |  | 0 |
|  | 8 | **BOH** |  | 2026-07-13 | 2026-09-02 |  |  |  |  |  |  |  |  |  |  |  |
| STRUCTURE.7610 |  | Roofing / BOH // Set Equipment Curbs (Column Lines 6.9 - 7.2) | 3d | 2026-07-13 A | 2026-07-30 A | STRUCTURE.7661, STRUCTURE.7618, STRUCTURE.7600 | 100% |  | 2026-07-13 | 2026-07-15 |  |  | 784 | BOH | Y |  |
| STRUCTURE.7613 |  | Roofing / BOH // Install roofing (Column 6.1-7.3) | 10d | 2026-08-26 A | 2026-09-02 A | STRUCTURE.7350 | 100% |  | 2026-09-21 | 2026-10-02 |  |  | 14 | BOH |  | 0 |
|  | 9 | **IMPs** |  | 2026-05-29 | 2026-11-04 |  |  |  |  |  |  |  |  |  |  |  |
|  | 4 | **South (FOH)** |  | 2026-05-29 | 2026-10-20 |  |  |  |  |  |  |  |  |  |  |  |
| STRUCTURE.4920 |  | IMPs / South (FOH) // Install Exterior Framing and Substrate South elevation (FOH) A-E Line | 10d | 2026-05-29 A | 2026-06-19 A | STRUCTURE.7654 | 100% |  | 2026-05-29 | 2026-06-11 |  |  | 705 | FOH | Y |  |
| STRUCTURE.4910 |  | IMPs / South (FOH) // Set IMP wall South Elevation (FOH) A-E Line | 5d | 2026-06-03 A | 2026-06-10 A | TB.MP.1030, A2910, STRUCTURE.4920 SS+3d | 100% |  | 2026-06-03 | 2026-06-09 |  |  | 703 | FOH | Y |  |
| STRUCTURE.4880 |  | IMPs / South (FOH) // Install FOH Entry Curtain Wall | 5d | 2026-06-19 A | 2026-06-25 A | STRUCTURE.4910, A2910 | 100% |  |  |  |  |  | 13 | FOH | Y | 0 |
| STRUCTURE.5370 |  | IMPs / South (FOH) // Install exterior windows and doors South Elevation (FOH) A-E line | 5d | 2026-09-01 A | 2026-09-08 A | A2300, STRUCTURE.4880 | 100% |  | 2026-07-24 | 2026-07-30 |  |  | 704 | FOH |  | 0 |
| STRUCTURE.4890 |  | IMPs / South (FOH) // Install Gutter and Down Spouts | 5d | 2026-10-14 | 2026-10-20 | STRUCTURE.5370, A2910, STRUCTURE.4880 SS |  |  |  |  | 185d | 11d | 11 | FOH |  | 0 |
|  | 1 | **East** |  | 2026-06-03 | 2026-08-08 |  |  |  |  |  |  |  |  |  |  |  |
|  | 1 | **Column line 0.1 Through 1.9 (DH1100)** |  | 2026-06-03 | 2026-06-09 |  |  |  |  |  |  |  |  |  |  |  |
| STRUCTURE.4850 |  | East / CL 0.1 Through 1.9 (DH1100) // Set IMP walls East Elevation | 5d | 2026-06-03 A | 2026-06-09 A | STRUCTURE.7655 SS, A2910 | 100% |  |  |  |  |  | 708 | DH1100 | Y | 0 |
|  | 2 | **Column Line 2.1 Through 2.9 (DH1200)** |  | 2026-06-19 | 2026-06-25 |  |  |  |  |  |  |  |  |  |  |  |
| STRUCTURE.6860 |  | East / CL 2.1 Through 2.9 (DH1200) // Set IMP walls East Elevation | 5d | 2026-06-19 A | 2026-06-25 A | STRUCTURE.7655, STRUCTURE.4850 | 100% |  |  |  |  |  | 713 | DH1200 | Y | 0 |
|  | 3 | **Column Line 3.1 Through 3.9 (DH1300)** |  | 2026-06-26 | 2026-07-02 |  |  |  |  |  |  |  |  |  |  |  |
| STRUCTURE.6900 |  | East / CL 3.1 Through 3.9 (DH1300) // Set IMP walls East Elevation | 5d | 2026-06-26 A | 2026-07-02 A | STRUCTURE.7655, STRUCTURE.6860 | 100% |  |  |  |  |  | 718 | DH1300 | Y | 0 |
|  | 4 | **Column Line 4.1 Through 4.9 (DH1400)** |  | 2026-07-06 | 2026-07-10 |  |  |  |  |  |  |  |  |  |  |  |
| STRUCTURE.6940 |  | East / CL 4.1 Through 4.9 (DH1400) // Set IMP walls East Elevation | 5d | 2026-07-06 A | 2026-07-10 A | STRUCTURE.7655, STRUCTURE.6900 | 100% |  |  |  |  |  | 723 | DH1400 | Y | 0 |

Notes:
- STRUCTURE.4850: Constraints and Assumptions: On-Hold Due to Column rework (DH1100 East Steel) / Resume 06/25

| ID | WBS | Activity | Duration | Start | Finish | Predecessors | Complete | Planned start | Planned finish | Total float | Free float | MSP Activity ID | QTS - AREA | 05 -SUFFOLK - Building Phase | 12 - SUFFOLK - Export_to_Procore |
| --- | --- | --- | --- | --- | --- | --- | --- | --- | --- | --- | --- | --- | --- | --- | --- |
|  | 5 | **Column Line 5.2 Through 5.9 (DH1500)** |  | 2026-07-13 | 2026-07-17 |  |  |  |  |  |  |  |  |  |  |
| STRUCTURE.6980 |  | East / CL 5.2 Through 5.9 (DH1500) // Set IMP walls East Elevation | 5d | 2026-07-13 A | 2026-07-17 A | STRUCTURE.7655, STRUCTURE.6940 | 100% |  |  |  |  | 728 | DH1500 | 0 | Y |
|  | 6 | **Column Line 6.1 Through 7.2 (DH1600)** |  | 2026-07-20 | 2026-08-08 |  |  |  |  |  |  |  |  |  |  |
| STRUCTURE.7020 |  | East / CL 6.1 Through 7.2 (DH1600) // Set IMP walls East Elevation | 5d | 2026-07-20 A | 2026-08-08 A | STRUCTURE.7655, STRUCTURE.6980 | 100% | 2026-07-20 | 2026-07-24 |  |  | 15 | DH1600 | 0 | Y |
|  | 3 | **West** |  | 2026-06-03 | 2026-11-04 |  |  |  |  |  |  |  |  |  |  |
|  | 1 | **Column line 0.1 Through 1.9 (DH1100)** |  | 2026-06-03 | 2026-06-12 |  |  |  |  |  |  |  |  |  |  |
| STRUCTURE.7050 |  | West / CL 0.1 Through 1.9 (DH1100) // Set IMP walls West Elevation | 5d | 2026-06-03 A | 2026-06-12 A | STRUCTURE.7655 | 100% | 2026-06-10 | 2026-06-16 |  |  | 738 | DH1100 | 0 | Y |
|  | 2 | **Column Line 2.1 Through 2.9 (DH1200)** |  | 2026-06-19 | 2026-07-23 |  |  |  |  |  |  |  |  |  |  |
| STRUCTURE.7090 |  | West / CL 2.1 Through 2.9 (DH1200) // Set IMP walls West Elevation | 5d | 2026-06-19 A | 2026-06-25 A | STRUCTURE.7655, STRUCTURE.7656, STRUCTURE.7050 | 100% |  |  |  |  | 743 | DH1200 | 0 | Y |
| STRUCTURE.7120 |  | West / CL 2.1 Through 2.9 (DH1200) // Install Gutter and Down Spouts West Elevation | 4d | 2026-07-17 A | 2026-07-23 A | STRUCTURE.6770, STRUCTURE.7050, STRUCTURE.7090 | 100% |  |  |  |  | 746 | DH1200 | 0 | Y |
|  | 3 | **Column Line 3.1 Through 3.9 (DH1300)** |  | 2026-06-26 | 2026-10-19 |  |  |  |  |  |  |  |  |  |  |
| STRUCTURE.7130 |  | West / CL 3.1 Through 3.9 (DH1300) // Set IMP walls West Elevation | 5d | 2026-06-26 A | 2026-07-02 A | STRUCTURE.7655, STRUCTURE.7090 | 100% |  |  |  |  | 748 | DH1300 | 0 | Y |
| STRUCTURE.7160 |  | West / CL 3.1 Through 3.9 (DH1300) // Install Gutter and Down Spouts West Elevation | 4d | 2026-10-14 | 2026-10-19 | STRUCTURE.6780, STRUCTURE.7050, STRUCTURE.7090, STRUCTURE.7130, STRUCTURE.7120 |  |  |  | 174d | 0d | 751 | DH1300 | 0 |  |
|  | 4 | **Column Line 4.1 Through 4.9 (DH1400)** |  | 2026-07-17 | 2026-10-23 |  |  |  |  |  |  |  |  |  |  |
| STRUCTURE.7170 |  | West / CL 4.1 Through 4.9 (DH1400) // Set IMP walls West Elevation | 5d | 2026-07-17 A | 2026-07-24 A | STRUCTURE.7655, STRUCTURE.7130 | 100% | 2026-07-06 | 2026-07-10 |  |  | 753 | DH1400 | 0 | Y |
| STRUCTURE.7200 |  | West / CL 4.1 Through 4.9 (DH1400) // Install Gutter and Down Spouts West Elevation | 4d | 2026-10-20 | 2026-10-23 | STRUCTURE.6790, STRUCTURE.7050, STRUCTURE.7090, STRUCTURE.7130, STRUCTURE.7170, STRUCTURE.7160 |  |  |  | 174d | 0d | 756 | DH1400 | 0 |  |
|  | 5 | **Column Line 5.2 Through 5.9 (DH1500)** |  | 2026-07-25 | 2026-10-29 |  |  |  |  |  |  |  |  |  |  |
| STRUCTURE.7210 |  | West / CL 5.2 Through 5.9 (DH1500) // Set IMP walls West Elevation | 5d | 2026-07-25 A | 2026-07-29 A | STRUCTURE.7655, STRUCTURE.7170 | 100% | 2026-07-24 | 2026-07-30 |  |  | 758 | DH1500 | 0 | Y |
| STRUCTURE.7240 |  | West / CL 5.2 Through 5.9 (DH1500) // Install Gutter and Down Spouts West Elevation | 4d | 2026-10-26 | 2026-10-29 | STRUCTURE.7340, STRUCTURE.7050, STRUCTURE.7090, STRUCTURE.7130, STRUCTURE.7170, STRUCTURE.7210, STRUCTURE.7200 |  |  |  | 174d | 0d | 761 | DH1500 | 0 |  |
|  | 6 | **Column Line 6.1 Through 7.2 (DH1600)** |  | 2026-07-30 | 2026-11-04 |  |  |  |  |  |  |  |  |  |  |
| STRUCTURE.7250 |  | West / CL 6.1 Through 7.2 (DH1600) // Set IMP walls West Elevation | 5d | 2026-07-30 A | 2026-08-08 A | STRUCTURE.7655, STRUCTURE.7210 | 100% | 2026-07-31 | 2026-08-06 |  |  | 763 | DH1600 | 0 | Y |
| STRUCTURE.7280 |  | West / CL 6.1 Through 7.2 (DH1600) // Install Gutter and Down Spouts West Elevation | 4d | 2026-10-30 | 2026-11-04 | STRUCTURE.7350, STRUCTURE.7050, STRUCTURE.7090, STRUCTURE.7130, STRUCTURE.7170, STRUCTURE.7210, STRUCTURE.7250, STRUCTURE.7240 |  |  |  | 174d | 0d | 766 | DH1600 | 0 |  |
|  | 2 | **North (BOH)** |  | 2026-09-09 | 2026-10-26 |  |  |  |  |  |  |  |  |  |  |
| STRUCTURE.7300 |  | North (BOH) / // Set IMP wall South Elevation (BOH) A-E Line | 5d | 2026-09-09 A | 2026-10-01 A | STRUCTURE.7250 | 100% | 2026-08-07 | 2026-08-13 |  |  | 12 | BOH |  | Y |
| STRUCTURE.7320 |  | North (BOH) / // Install exterior windows and doors South Elevation (BOH) A-E line | 5d | 2026-10-14 | 2026-10-20 | STRUCTURE.7300 |  |  |  | 181d | 0d | 770 | BOH | 0 | Y |
| STRUCTURE.7330 |  | North (BOH) / // Install Gutter and Down Spouts | 4d | 2026-10-21 | 2026-10-26 | STRUCTURE.7613, STRUCTURE.7300, STRUCTURE.7320 |  |  |  | 181d | 7d | 769 | BOH | 0 |  |

| ID | WBS | Activity | Type | Duration | Start | Finish | Predecessors | Complete | Planned start | Planned finish | MSP Activity ID | QTS - AREA | 05 -SUFFOLK - Building Phase | 12 - SUFFOLK - Export_to_Procore | QTS - DASH | QTS - Subcontractor | QTS - Resp |
| --- | --- | --- | --- | --- | --- | --- | --- | --- | --- | --- | --- | --- | --- | --- | --- | --- | --- |
|  | 9 | **Interior Build-Outs** |  |  | 2026-04-29 | 2027-06-24 |  |  |  |  |  |  |  |  |  |  |  |
|  | 7 | **House Systems** |  |  | 2026-05-29 | 2027-01-04 |  |  |  |  |  |  |  |  |  |  |  |
|  | 2 | **Front of House (FOH)** |  |  | 2026-05-29 | 2026-12-24 |  |  |  |  |  |  |  |  |  |  |  |
|  | 16 | **Priority Walls** |  |  | 2026-05-29 | 2026-11-02 |  |  |  |  |  |  |  |  |  |  |  |
|  | 1 | **Priority Rooms** |  |  | 2026-05-29 | 2026-11-02 |  |  |  |  |  |  |  |  |  |  |  |
|  | 10 | **UPS. 0144** |  |  | 2026-06-03 | 2026-09-09 |  |  |  |  |  |  |  |  |  |  |  |
| ADMIN.5109 |  | FOH/UPS. 0144 // Frame Priority Walls |  | 3d | 2026-06-03 A | 2026-06-10 A | ADMIN.5083 SS+1d | 100% | 2026-06-03 | 2026-06-05 | 806 | FOH | 1 | Y | PRI |  |  |
| ADMIN.5114 |  | FOH/UPS. 0144 // MEPF In-wall rough-in |  | 4d | 2026-06-09 A | 2026-07-16 A | ADMIN.5109 | 100% | 2026-06-09 | 2026-06-12 | 873 | FOH | 1 | Y | PRI | HELIX | SM |
| ADMIN.5110 |  | FOH/UPS. 0144 // MEPF Layout of Overhead Supports |  | 8d | 2026-06-10 A | 2026-06-30 A | ADMIN.5109 | 100% | 2026-06-10 | 2026-06-19 | 852 | FOH | 1 | Y | PRI | HELIX | SM |
| ADMIN.5112 |  | FOH/UPS. 0144 // Install MEPF Overhead Supports |  | 2d | 2026-06-19 A | 2026-07-02 A | ADMIN.5110 SS+2d | 100% | 2026-06-19 | 2026-06-22 | 851 | FOH | 1 | Y | PRI | HELIX | SM |
| ADMIN.5111 |  | FOH/UPS. 0144 // Top Down Install of Sheetrock - Priority Walls |  | 6d | 2026-07-17 A | 2026-07-24 A | ADMIN.5795, ADMIN.5110 | 100% | 2026-08-12 | 2026-08-19 | 809 | FOH | 1 | Y | PRI |  |  |
| ADMIN.5795 |  | FOH/UPS. 0144 // In-Wall Inspection |  | 1d | 2026-07-17 A | 2026-07-17 A | ADMIN.5114 | 100% | 2026-08-11 | 2026-08-11 | 873 | FOH | 1 | Y | PRI |  |  |
| ADMIN.5113 |  | FOH/UPS. 0144 // MEPF Overhead Install |  | 1d | 2026-07-23 A | 2026-08-03 A | ADMIN.5112 SS+5d | 100% | 2026-07-24 | 2026-07-24 | 853 | FOH | 1 | Y | PRI | HELIX | SM |
| ADMIN.5796 |  | FOH/UPS. 0144 // Finish Top-down Sheetrock - Priority Walls |  | 6d | 2026-07-24 A | 2026-07-31 A | ADMIN.5111 | 100% | 2026-08-20 | 2026-08-27 | 809 | FOH | 1 | Y | PRI |  |  |
| ADMIN.5797 |  | FOH/UPS. 0144 // Rough-In Split System |  | 5d | 2026-08-19 A | 2026-08-22 A | ADMIN.5111 | 100% | 2026-08-20 | 2026-08-26 | 874 | FOH | 1 | Y | PRI |  |  |
| ADMIN.5115 |  | FOH/UPS. 0144 // Install Fire Alarm and Security |  | 3d | 2026-08-20 A | 2026-08-24 A | ADMIN.5113 | 100% | 2026-08-07 | 2026-08-11 | 873 | FOH | 1 | Y | PRI | HELIX | W |
| ADMIN.5116 |  | FOH/UPS. 0144 // 1-Side & Finish Priority Walls |  | 2d | 2026-08-20 A | 2026-08-21 A | ADMIN.5114, ADMIN.5113 | 100% | 2026-08-11 | 2026-08-12 | 816 | FOH | 1 | Y | PRI |  |  |
| ADMIN.5829 |  | FOH/UPS. 0144 // BMS & EPMS Rough In |  | 2d | 2026-08-20 A | 2026-08-21 A | ADMIN.5115, ADMIN.5115 SS | 100% | 2026-09-30 | 2026-10-01 |  | FOH |  |  |  |  |  |
| ADMIN.5117 |  | FOH/UPS. 0144 // Tape and Finish Walls |  | 3d | 2026-08-24 A | 2026-08-25 A | ADMIN.5796, ADMIN.5116 | 100% | 2026-08-28 | 2026-09-01 | 820 | FOH | 1 | Y | PRI |  |  |
| ADMIN.5798 |  | FOH/UPS. 0144 // Mini Split Condensate Piping |  | 2d | 2026-08-24 A | 2026-08-25 A | ADMIN.5111, ADMIN.5797 | 100% | 2026-08-27 | 2026-08-28 | 874 | FOH | 1 | Y | PRI |  |  |
| ADMIN.5118 |  | FOH/UPS. 0144 // Final paint |  | 2d | 2026-08-25 A | 2026-08-26 A | ADMIN.5117 FF, ADMIN.5115 | 100% | 2026-09-02 | 2026-09-03 | 872 | FOH | 1 | Y | PRI |  |  |
| ADMIN.5121 |  | FOH/UPS. 0144 // Install Doors and Hardware |  | 1d | 2026-08-25 A | 2026-08-25 A | ADMIN.5109 | 100% | 2026-07-24 | 2026-07-24 | 837 | FOH | 1 | Y | PRI |  |  |
| ADMIN.5120 |  | FOH/UPS. 0144 // Install Trim-Out |  | 1d | 2026-08-26 A | 2026-08-26 A | ADMIN.5798 | 100% | 2026-09-03 | 2026-09-03 | 876 | FOH | 1 | Y | PRI | HELIX | SM |
| ADMIN.5119 |  | FOH/UPS. 0144 // Install Flooring and Base |  | 1d | 2026-08-27 A | 2026-08-27 A | ADMIN.5118 SS | 100% | 2026-09-02 | 2026-09-02 | 874 | FOH | 1 | Y | PRI |  |  |
| ADMIN.5799 |  | FOH/UPS. 0144 // Install Ladder Rack |  | 4d | 2026-08-27 A | 2026-09-01 A | ADMIN.5113 | 100% | 2026-09-04 | 2026-09-10 | 874 | FOH | 1 | Y | PRI |  |  |
| ADMIN.5122 |  | FOH/UPS. 0144 // QTS L1 Punch Walk | milestone | 0d | 2026-09-09 A | 2026-09-09 A | ADMIN.5119 FF, ADMIN.5118, ADMIN.5121, ADMIN.5120, ADMIN.5799 | 100% | 2026-09-03 | 2026-09-03 | 877 | FOH | 1 | Y | PRI |  |  |
| ADMIN.5760 |  | FOH/UPS. 0144 // FOH- Room Ready to Receive Equipment | milestone | 0d | 2026-09-09 A | 2026-09-09 A | ADMIN.5118, ADMIN.5818 FF, ADMIN.5122 | 100% | 2026-09-04 | 2026-09-04 | 872 | FOH | 1 | Y | PRI | HELIX | SM |

| ID | WBS | Activity | Type | Duration | Start | Finish | Predecessors | Complete | Planned start | Planned finish | Total float | Free float | MSP Activity ID | QTS - AREA | 05 -SUFFOLK - Building Phase | 12 - SUFFOLK - Export_to_Procore | QTS - DASH | QTS - Subcontractor | QTS - Resp |
| --- | --- | --- | --- | --- | --- | --- | --- | --- | --- | --- | --- | --- | --- | --- | --- | --- | --- | --- | --- |
|  | 13 | **DCIM 1000A1** |  |  | 2026-06-03 | 2026-09-09 |  |  |  |  |  |  |  |  |  |  |  |  |  |
| ADMIN.5800 |  | FOH/DCIM 1000A1 // Frame Priority Walls |  | 3d | 2026-06-03 A | 2026-06-05 A | ADMIN.5109 SS | 100% |  |  |  |  | 806 | FOH | 1 | Y | PRI |  |  |
| ADMIN.5806 |  | FOH/DCIM 1000A1 // Top Down Install of Sheetrock - Priority Walls |  | 6d | 2026-06-05 A | 2026-06-15 A | ADMIN.5800 | 100% | 2026-06-22 | 2026-06-29 |  |  | 809 | FOH | 1 | Y | PRI |  |  |
| ADMIN.5804 |  | FOH/DCIM 1000A1 // MEPF Layout of Overhead Supports |  | 8d | 2026-06-10 A | 2026-06-18 A | ADMIN.5800 SS | 100% | 2026-06-10 | 2026-06-19 |  |  | 852 | FOH | 1 | Y | PRI | HELIX | SM |
| ADMIN.5805 |  | FOH/DCIM 1000A1 // Install MEPF Overhead Supports |  | 2d | 2026-06-15 A | 2026-06-22 A | ADMIN.5804 SS+2d | 100% | 2026-06-15 | 2026-06-16 |  |  | 851 | FOH | 1 | Y | PRI | HELIX | SM |
| ADMIN.5811 |  | FOH/DCIM 1000A1 // Finish Top-down Sheetrock - Priority Walls |  | 6d | 2026-06-16 A | 2026-06-23 A | ADMIN.5806 | 100% | 2026-07-24 | 2026-07-31 |  |  | 809 | FOH | 1 | Y | PRI |  |  |
| ADMIN.5802 |  | FOH/DCIM 1000A1 // MEPF In-wall rough-in |  | 4d | 2026-06-19 A | 2026-06-24 A | ADMIN.5800 | 100% |  |  |  |  | 873 | FOH | 1 | Y | PRI | HELIX | SM |
| ADMIN.5809 |  | FOH/DCIM 1000A1 // Rough-In Split System |  | 5d | 2026-07-16 A | 2026-07-22 A | ADMIN.5806 | 100% | 2026-07-24 | 2026-07-30 |  |  | 874 | FOH | 1 | Y | PRI |  |  |
| ADMIN.5807 |  | FOH/DCIM 1000A1 // MEPF Overhead Install |  | 10d | 2026-07-22 A | 2026-08-04 A | ADMIN.5805 SS+5d | 100% | 2026-07-24 | 2026-08-06 |  |  | 853 | FOH | 1 | Y | PRI | HELIX | SM |
| ADMIN.5808 |  | FOH/DCIM 1000A1 // 1-Side & Finish Priority Walls |  | 2d | 2026-07-22 A | 2026-07-24 A | ADMIN.5802 SS, ADMIN.5803 FF | 100% | 2026-08-07 | 2026-08-10 |  |  | 816 | FOH | 1 | Y | PRI |  |  |
| ADMIN.5803 |  | FOH/DCIM 1000A1 // In-Wall Inspection |  | 1d | 2026-07-24 A | 2026-07-24 A | ADMIN.5802 | 100% |  |  |  |  | 873 | FOH | 1 | Y | PRI |  |  |
| ADMIN.5810 |  | FOH/DCIM 1000A1 // Install Fire Alarm and Security |  | 3d | 2026-08-20 A | 2026-08-24 A | ADMIN.5807 | 100% | 2026-08-07 | 2026-08-11 |  |  | 873 | FOH | 1 | Y | PRI | HELIX | W |
| ADMIN.5812 |  | FOH/DCIM 1000A1 // Mini Split Condensate Piping |  | 2d | 2026-08-20 A | 2026-08-21 A | ADMIN.5806, ADMIN.5809 | 100% | 2026-07-31 | 2026-08-03 |  |  | 874 | FOH | 1 | Y | PRI |  |  |
| ADMIN.5813 |  | FOH/DCIM 1000A1 // Tape and Finish Walls |  | 3d | 2026-08-20 A | 2026-08-24 A | ADMIN.5811, ADMIN.5808 | 100% | 2026-08-11 | 2026-08-13 |  |  | 820 | FOH | 1 | Y | PRI |  |  |
| ADMIN.5839 |  | FOH/DCIM 1000A1 // BMS & EPMS Rough In |  | 2d | 2026-08-20 A | 2026-08-21 A | ADMIN.5829 FF, ADMIN.5810 SS, ADMIN.5810 FF | 100% | 2026-09-30 | 2026-10-01 |  |  |  | FOH |  |  |  |  |  |
| ADMIN.5815 |  | FOH/DCIM 1000A1 // Final paint |  | 2d | 2026-08-25 A | 2026-08-26 A | ADMIN.5813, ADMIN.5810 | 100% | 2026-08-14 | 2026-08-17 |  |  | 872 | FOH | 1 | Y | PRI |  |  |
| ADMIN.5801 |  | FOH/DCIM 1000A1 // Install Doors and Hardware |  | 1d | 2026-08-26 A | 2026-08-26 A | ADMIN.5800, ADMIN.5808 | 100% | 2026-08-11 | 2026-08-11 |  |  | 837 | FOH | 1 | Y | PRI |  |  |
| ADMIN.5816 |  | FOH/DCIM 1000A1 // Install Trim-Out |  | 1d | 2026-08-26 A | 2026-08-26 A | ADMIN.5812 | 100% | 2026-08-17 | 2026-08-17 |  |  | 876 | FOH | 1 | Y | PRI | HELIX | SM |
| ADMIN.5814 |  | FOH/DCIM 1000A1 // Install Flooring and Base |  | 1d | 2026-08-27 A | 2026-08-27 A | ADMIN.5815 SS | 100% | 2026-08-14 | 2026-08-14 |  |  | 874 | FOH | 1 | Y | PRI |  |  |
| ADMIN.5819 |  | FOH/DCIM 1000A1 // Install Ladder Rack |  | 4d | 2026-08-27 A | 2026-09-01 A | ADMIN.5807 | 100% | 2026-08-18 | 2026-08-21 |  |  | 874 | FOH | 1 | Y | PRI |  |  |
| ADMIN.5817 |  | FOH/DCIM 1000A1 // QTS L1 Punch Walk | milestone | 0d | 2026-09-09 A | 2026-09-09 A | ADMIN.5814 FF, ADMIN.5815, ADMIN.5801, ADMIN.5816, ADMIN.5819 | 100% | 2026-08-17 | 2026-08-17 |  |  | 877 | FOH | 1 | Y | PRI |  |  |
| ADMIN.5818 |  | FOH/DCIM 1000A1 // FOH- Room Ready to Receive Equipment | milestone | 0d | 2026-09-09 A | 2026-09-09 A | ADMIN.5815, ADMIN.5817 | 100% | 2026-08-18 | 2026-08-18 |  |  | 872 | FOH | 1 | Y | PRI | HELIX | SM |
|  | 12 | **MMR1A1 . 1000A2** |  |  | 2026-06-03 | 2026-10-30 |  |  |  |  |  |  |  |  |  |  |  |  |  |
| ADMIN.5137 |  | FOH/MMR1A1 . 1000A2 // Frame Priority Walls |  | 3d | 2026-06-03 A | 2026-06-05 A | ADMIN.5800 SS | 100% |  |  |  |  | 806 | FOH | 1 | Y | PRI |  |  |
| ADMIN.5139 |  | FOH/MMR1A1 . 1000A2 // Top Down Install of Sheetrock - Priority Walls |  | 2d | 2026-06-08 A | 2026-06-09 A | ADMIN.5137 | 100% | 2026-06-22 | 2026-06-23 |  |  | 809 | FOH | 1 | Y | PRI |  |  |
| ADMIN.5138 |  | FOH/MMR1A1 . 1000A2 // MEPF Layout of Overhead Supports |  | 8d | 2026-06-10 A | 2026-06-25 A | ADMIN.5137 | 100% | 2026-06-10 | 2026-06-19 |  |  | 852 | FOH | 1 | Y | PRI | HELIX | SM |
| ADMIN.5142 |  | FOH/MMR1A1 . 1000A2 // MEPF In-wall rough-in |  | 13d | 2026-06-10 A | 2026-06-26 A | ADMIN.5139 | 100% | 2026-08-14 | 2026-09-01 |  |  | 873 | FOH | 1 | Y | PRI | HELIX | SM |
| ADMIN.5140 |  | FOH/MMR1A1 . 1000A2 // Install MEPF Overhead Supports |  | 2d | 2026-06-25 A | 2026-07-09 A | ADMIN.5138 SS+2d | 100% | 2026-07-24 | 2026-07-27 |  |  | 851 | FOH | 1 | Y | PRI | HELIX | SM |
| ADMIN.5141 |  | FOH/MMR1A1 . 1000A2 // MEPF Overhead Install |  | 0d | 2026-08-03 A | 2026-08-03 A | ADMIN.5140 SS+5d | 100% | 2026-07-31 | 2026-07-31 |  |  | 853 | FOH | 1 | Y | PRI | HELIX | SM |
| ADMIN.5144 |  | FOH/MMR1A1 . 1000A2 // 1-Side & Finish Priority Walls |  | 2d | 2026-08-18 A | 2026-08-21 A | ADMIN.5142, ADMIN.5141, ADMIN.5139 | 100% | 2026-09-02 | 2026-09-03 |  |  | 816 | FOH | 1 | Y | PRI |  |  |
| ADMIN.5143 |  | FOH/MMR1A1 . 1000A2 // Install Fire Alarm and Security |  | 10d | 2026-08-19 A | 2026-09-01 A | ADMIN.5141 | 100% | 2026-08-14 | 2026-08-27 |  |  | 873 | FOH | 1 | Y | PRI | HELIX | W |
| ADMIN.5849 |  | FOH/MMR1A1 . 1000A2 // BMS & EPMS Rough In |  | 3d | 2026-08-19 A | 2026-08-21 A | ADMIN.5839 FF, ADMIN.5143 SS, ADMIN.5143 FF | 100% | 2026-09-30 | 2026-10-02 |  |  |  |  |  |  |  |  |  |
| ADMIN.5145 |  | FOH/MMR1A1 . 1000A2 // Tape and Finish Walls |  | 3d | 2026-08-24 A | 2026-08-25 A | ADMIN.5144 | 100% | 2026-09-04 | 2026-09-09 |  |  | 820 | FOH | 1 | Y | PRI |  |  |
| ADMIN.5146 |  | FOH/MMR1A1 . 1000A2 // Final paint |  | 2d | 2026-08-26 A | 2026-08-26 A | ADMIN.5145, ADMIN.5143 | 100% | 2026-09-10 | 2026-09-11 |  |  | 872 | FOH | 1 | Y | PRI |  |  |
| ADMIN.5147 |  | FOH/MMR1A1 . 1000A2 // Install Flooring and Base |  | 3d | 2026-08-27 A | 2026-08-31 A | ADMIN.5146 | 100% | 2026-09-14 | 2026-09-16 |  |  | 874 | FOH | 1 | Y | PRI |  |  |
| ADMIN.5762 |  | FOH/MMR1A1 . 1000A2 // FOH- Room Ready to Receive Equipment | milestone | 0d | 2026-08-27 A | 2026-08-27 A | ADMIN.5146 | 100% | 2026-09-14 | 2026-09-14 |  |  | 872 | FOH | 1 | Y | PRI | HELIX | SM |
| ADMIN.5148 |  | FOH/MMR1A1 . 1000A2 // Install Trim-Out |  | 1d | 2026-09-01 A | 2026-09-01 A | ADMIN.5147 | 100% | 2026-09-17 | 2026-09-17 |  |  | 876 | FOH | 1 |  | PRI | HELIX | SM |
| ADMIN.5150 |  | FOH/MMR1A1 . 1000A2 // Finish & Clean |  | 1d | 2026-09-02 A | 2026-09-02 A | ADMIN.5148 | 100% | 2026-09-21 | 2026-09-21 |  |  | 877 | FOH | 1 |  | PRI |  |  |
| ADMIN.5149 |  | FOH/MMR1A1 . 1000A2 // Install Doors and Hardware |  | 1d | 2026-10-30 | 2026-10-30 | ADMIN.5191 SS, ADMIN.5849 FF, ADMIN.5762 SS, ADMIN.5148 |  |  |  | 21d | 23d | 837 | FOH | 1 |  | PRI |  |  |

| ID | WBS | Activity | Type | Duration | Start | Finish | Predecessors | Complete | Planned start | Planned finish | Total float | Free float | MSP Activity ID | QTS - AREA | 05 -SUFFOLK - Building Phase | 12 - SUFFOLK - Export_to_Procore | QTS - DASH | QTS - Subcontractor | QTS - Resp |
| --- | --- | --- | --- | --- | --- | --- | --- | --- | --- | --- | --- | --- | --- | --- | --- | --- | --- | --- | --- |
|  | 23 | **SDF 0154** |  |  | 2026-06-03 | 2026-10-30 |  |  |  |  |  |  |  |  |  |  |  |  |  |
| ADMIN.5375 |  | FOH/SDF 0154 // Frame Priority Walls |  | 3d | 2026-06-03 A | 2026-06-18 A | ADMIN.5137 SS | 100% | 2026-06-03 | 2026-06-05 |  |  | 806 | FOH | 1 | Y | PRI |  |  |
| ADMIN.5376 |  | FOH/SDF 0154 // MEPF Layout of Overhead Supports |  | 8d | 2026-06-10 A | 2026-06-22 A | ADMIN.5375 | 100% | 2026-06-10 | 2026-06-19 |  |  | 852 | FOH | 1 | Y | PRI | HELIX | SM |
| ADMIN.5377 |  | FOH/SDF 0154 // Top Down Install of Sheetrock - Priority Walls |  | 2d | 2026-06-19 A | 2026-06-22 A | ADMIN.5376 | 100% |  |  |  |  | 809 | FOH | 1 | Y | PRI |  |  |
| ADMIN.5378 |  | FOH/SDF 0154 // Install MEPF Overhead Supports |  | 2d | 2026-06-23 A | 2026-07-07 A | ADMIN.5376 SS+2d | 100% | 2026-07-24 | 2026-07-27 |  |  | 851 | FOH | 1 | Y | PRI | HELIX | SM |
| ADMIN.5380 |  | FOH/SDF 0154 // MEPF In-wall rough-in |  | 2d | 2026-06-23 A | 2026-06-24 A | ADMIN.5377 | 100% | 2026-08-14 | 2026-08-17 |  |  | 873 | FOH | 1 | Y | PRI | HELIX | SM |
| ADMIN.5379 |  | FOH/SDF 0154 // MEPF Overhead Install |  | 10d | 2026-07-08 A | 2026-08-03 A | ADMIN.5378 SS+5d | 100% | 2026-07-31 | 2026-08-13 |  |  | 853 | FOH | 1 | Y | PRI | HELIX | SM |
| ADMIN.5382 |  | FOH/SDF 0154 // 1-Side & Finish Priority Walls |  | 2d | 2026-08-04 A | 2026-08-05 A | ADMIN.5380, ADMIN.5377 | 100% | 2026-08-18 | 2026-08-19 |  |  | 816 | FOH | 1 | Y | PRI |  |  |
| ADMIN.5381 |  | FOH/SDF 0154 // Install Fire Alarm and Security |  | 3d | 2026-08-18 A | 2026-08-20 A | ADMIN.5379 | 100% | 2026-08-14 | 2026-08-18 |  |  | 873 | FOH | 1 | Y | PRI | HELIX | W |
| ADMIN.5383 |  | FOH/SDF 0154 // Tape and Finish Walls |  | 3d | 2026-08-20 A | 2026-08-24 A | ADMIN.5382 | 100% |  |  |  |  | 820 | FOH | 1 | Y | PRI |  |  |
| ADMIN.5859 |  | FOH/SDF 0154 // BMS & EPMS Rough In |  | 2d | 2026-08-20 A | 2026-08-21 A | ADMIN.5381, ADMIN.5381 FF | 100% | 2026-09-30 | 2026-10-01 |  |  |  | FOH |  |  |  |  |  |
| ADMIN.5384 |  | FOH/SDF 0154 // Final paint |  | 2d | 2026-08-25 A | 2026-08-26 A | ADMIN.5383, ADMIN.5381 | 100% |  |  |  |  | 872 | FOH | 1 | Y | PRI |  |  |
| ADMIN.5385 |  | FOH/SDF 0154 // Install Flooring and Base |  | 3d | 2026-08-27 A | 2026-08-31 A | ADMIN.5792 SS, ADMIN.5384 | 100% |  |  |  |  | 874 | FOH | 1 | Y | PRI |  |  |
| ADMIN.5792 |  | FOH/SDF 0154 // FOH- Room Ready to Receive Equipment | milestone | 0d | 2026-08-27 A | 2026-08-27 A | ADMIN.5384 | 100% |  |  |  |  | 872 | FOH | 1 | Y | PRI |  |  |
| ADMIN.5386 |  | FOH/SDF 0154 // Install Trim-Out |  | 1d | 2026-09-01 A | 2026-09-01 A | ADMIN.5385 | 100% |  |  |  |  | 876 | FOH | 1 |  | PRI | HELIX | SM |
| ADMIN.5388 |  | FOH/SDF 0154 // Finish & Clean |  | 1d | 2026-09-02 A | 2026-09-02 A | ADMIN.5386 | 100% | 2026-09-03 | 2026-09-03 |  |  | 877 | FOH | 1 |  | PRI |  |  |
| ADMIN.5387 |  | FOH/SDF 0154 // Install Doors and Hardware |  | 1d | 2026-10-30 | 2026-10-30 | ADMIN.5191 SS, ADMIN.5859 FF, ADMIN.5386 |  |  |  | 21d | 23d | 837 | FOH | 1 |  | PRI |  |  |
|  | 15 | **House Elec .0142** |  |  | 2026-05-29 | 2026-11-02 |  |  |  |  |  |  |  |  |  |  |  |  |  |
| ADMIN.5794 |  | FOH/House Elec .0142 // Priority Walls Layout |  | 2d | 2026-05-29 A | 2026-06-01 A | STRUCTURE.7654 | 100% |  |  |  |  | 806 | FOH | 1 | Y | PRI |  |  |
| ADMIN.5083 |  | FOH/House Elec .0142 // Frame Priority Walls |  | 3d | 2026-06-02 A | 2026-06-05 A | ADMIN.5794, STRUCTURE.7654, SOG.1434, TB.DC.1030, A2060 | 100% | 2026-06-02 | 2026-06-04 |  |  | 806 | FOH | 1 | Y | PRI |  |  |
| ADMIN.1030 |  | FOH/House Elec .0142 // Install MEPF High-Overhead Supports & Installs |  | 10d | 2026-06-08 A | 2026-06-19 A | ADMIN.5083 | 100% | 2026-07-24 | 2026-08-06 |  |  | 851 | FOH | 1 | Y | PRI | HELIX | SM |
| ADMIN.1020 |  | FOH/House Elec .0142 // MEPF Layout of Overhead Supports |  | 8d | 2026-06-10 A | 2026-06-20 A | ADMIN.5083 | 100% | 2026-06-10 | 2026-06-19 |  |  | 852 | FOH | 1 | Y | PRI | HELIX | SM |
| ADMIN.5108 |  | FOH/House Elec .0142 // MEPF In-wall rough-in |  | 9d | 2026-06-12 A | 2026-06-24 A | ADMIN.5083 | 100% |  |  |  |  | 873 | FOH | 1 | Y | PRI | HELIX | SM |
| ADMIN.5086 |  | FOH/House Elec .0142 // Install Fire Alarm and Security |  | 8d | 2026-06-15 A | 2026-06-24 A | ADMIN.5108 | 100% |  |  |  |  | 873 | FOH | 1 | Y | PRI | HELIX | W |
| ADMIN.5869 |  | FOH/House Elec .0142 // BMS & EPMS Rough In |  | 3d | 2026-06-15 A | 2026-06-17 A | ADMIN.5086 SS, ADMIN.5086 FF | 100% | 2026-09-30 | 2026-10-02 |  |  |  |  |  |  |  |  |  |
| ADMIN.5105 |  | FOH/House Elec .0142 // Top Down Install of Sheetrock - Priority Walls |  | 2d | 2026-06-19 A | 2026-06-22 A | ADMIN.5083 | 100% | 2026-06-22 | 2026-06-23 |  |  | 809 | FOH | 1 | Y | PRI |  |  |
| ADMIN.5790 |  | FOH/House Elec .0142 // In-Wall Inspection |  | 1d | 2026-06-25 A | 2026-06-25 A | ADMIN.5108 | 100% | 2026-07-24 | 2026-07-24 |  |  | 852 | FOH | 1 | Y | PRI |  |  |
| ADMIN.5106 |  | FOH/House Elec .0142 // 1-Side & Finish Priority Walls |  | 2d | 2026-07-15 A | 2026-07-16 A | ADMIN.5790, ADMIN.5105 | 100% | 2026-07-27 | 2026-07-28 |  |  | 816 | FOH | 1 | Y | PRI |  |  |
| ADMIN.1040 |  | FOH/House Elec .0142 // MEPF Low - Overhead Install |  | 0d | 2026-08-10 A | 2026-08-14 A | ADMIN.1030 SS+5d, ADMIN.1020 | 100% | 2026-08-05 | 2026-08-05 |  |  | 853 | FOH | 1 | Y | PRI | HELIX | SM |
| ADMIN.5791 |  | FOH/House Elec .0142 // Install Lighting |  | 2d | 2026-08-17 A | 2026-08-18 A | ADMIN.5382 | 100% | 2026-08-19 | 2026-08-20 |  |  | 853 | FOH | 1 | Y | PRI |  |  |
| ADMIN.5107 |  | FOH/House Elec .0142 // Tape and Finish Walls |  | 3d | 2026-08-20 A | 2026-08-24 A | ADMIN.5106 | 100% | 2026-07-29 | 2026-07-31 |  |  | 820 | FOH | 1 | Y | PRI |  |  |
| ADMIN.5087 |  | FOH/House Elec .0142 // Final paint |  | 2d | 2026-08-25 A | 2026-08-26 A | ADMIN.5086, ADMIN.5107 | 100% | 2026-08-03 | 2026-08-04 |  |  | 872 | FOH | 1 | Y | PRI |  |  |
| ADMIN.5088 |  | FOH/House Elec .0142 // Install Flooring and Base |  | 3d | 2026-08-27 A | 2026-08-31 A | ADMIN.5087 | 100% | 2026-08-20 | 2026-08-24 |  |  | 874 | FOH | 1 | Y | PRI |  |  |
| ADMIN.5090 |  | FOH/House Elec .0142 // Install Trim-Out |  | 1d | 2026-09-02 A | 2026-09-02 A | ADMIN.5791, ADMIN.5759 SS, ADMIN.5088 | 100% | 2026-08-25 | 2026-08-25 |  |  | 876 | FOH | 1 |  | PRI | HELIX | SM |
| ADMIN.5759 |  | FOH/House Elec .0142 // FOH/House Elec - Room Ready to Receive Equipment | milestone | 0d | 2026-09-02 A | 2026-09-02 A | ADMIN.5088, ADMIN.5087 | 100% | 2026-08-25 | 2026-08-25 |  |  | 872 | FOH | 1 |  | PRI | HELIX | SM |
| DH1100.12116 |  | FOH/House Elec .0142 // Set House SWD Switch - SWD-HSE-1A-MAIN |  | 1d | 2026-09-24 A | 2026-09-24 A | ADMIN.5759 SS | 100% | 2026-08-25 | 2026-08-25 |  |  | 1120 | FOH | 2 |  | PRI |  |  |
| ADMIN.5095 |  | FOH/House Elec .0142 // Install Doors and Hardware |  | 1d | 2026-10-30 | 2026-10-30 | ADMIN.5191 SS, ADMIN.1040 |  |  |  | 20d | 0d | 837 | FOH | 1 | Y | PRI |  |  |
| ADMIN.5091 |  | FOH/House Elec .0142 // Finish & Clean |  | 1d | 2026-11-02 | 2026-11-02 | ADMIN.5869 FF, DH1100.12116, ADMIN.5090, ADMIN.5095 |  |  |  | 20d | 22d | 877 | FOH | 1 |  | PRI |  |  |

| ID | WBS | Activity | Type | Duration | Start | Finish | Predecessors | Complete | Planned start | Planned finish | Total float | Free float | MSP Activity ID | QTS - AREA | 05 -SUFFOLK - Building Phase | 12 - SUFFOLK - Export_to_Procore | QTS - DASH | QTS - Subcontractor | QTS - Resp |
| --- | --- | --- | --- | --- | --- | --- | --- | --- | --- | --- | --- | --- | --- | --- | --- | --- | --- | --- | --- |
|  | 21 | **Other Rooms** |  |  | 2026-06-10 | 2026-12-04 |  |  |  |  |  |  |  |  |  |  |  |  |  |
|  | 1 | **ELI . 0142** |  |  | 2026-06-10 | 2026-11-02 |  |  |  |  |  |  |  |  |  |  |  |  |  |
| ADMIN.5151 |  | FOH/ELI 0142 // Frame Walls |  | 3d | 2026-06-10 A | 2026-06-12 A | ADMIN.5137 | 100% |  |  |  |  | 806 | FOH | 1 | Y | OR |  |  |
| ADMIN.5152 |  | FOH/ELI 0142 // MEPF Layout of Overhead Supports |  | 8d | 2026-06-15 A | 2026-06-20 A | ADMIN.5151, A2840 | 100% | 2026-06-15 | 2026-06-24 |  |  | 852 | FOH | 1 | Y | OR | HELIX | SM |
| ADMIN.5154 |  | FOH/ELI 0142 // Install MEPF Overhead Supports |  | 2d | 2026-06-17 A | 2026-06-19 A | ADMIN.5152 SS+2d | 100% | 2026-06-17 | 2026-06-18 |  |  | 851 | FOH | 1 | Y | OR | HELIX | SM |
| ADMIN.5153 |  | FOH/ELI 0142 // Top Down Install of Sheetrock - Priority Walls |  | 2d | 2026-06-19 A | 2026-06-22 A | ADMIN.5152 | 100% |  |  |  |  | 809 | FOH | 1 | Y | OR |  |  |
| ADMIN.5156 |  | FOH/ELI 0142 // MEPF In-wall rough-in |  | 2d | 2026-06-23 A | 2026-06-24 A | ADMIN.5153 | 100% | 2026-08-07 | 2026-08-10 |  |  | 873 | FOH | 1 | Y | OR | HELIX | SM |
| ADMIN.5158 |  | FOH/ELI 0142 // 1-Side & Finish Priority Walls |  | 2d | 2026-06-25 A | 2026-06-26 A | ADMIN.5156, ADMIN.5153 | 100% | 2026-08-11 | 2026-08-12 |  |  | 816 | FOH | 1 | Y | OR |  |  |
| ADMIN.5155 |  | FOH/ELI 0142 // MEPF Overhead Install |  | 10d | 2026-07-31 A | 2026-08-13 A | ADMIN.5154 SS+5d | 100% | 2026-07-24 | 2026-08-06 |  |  | 853 | FOH | 1 | Y | OR | HELIX | SM |
| ADMIN.5159 |  | FOH/ELI 0142 // Tape and Finish Walls |  | 3d | 2026-08-10 A | 2026-08-12 A | ADMIN.5158 | 100% | 2026-08-13 | 2026-08-17 |  |  | 820 | FOH | 1 | Y | OR |  |  |
| ADMIN.5763 |  | FOH/ELI 0142 // FOH- Room Ready to Receive Equipment | milestone | 0d | 2026-08-13 A | 2026-08-13 A | ADMIN.5159 | 100% | 2026-08-18 | 2026-08-18 |  |  | 872 | FOH | 1 | Y | OR | HELIX | SM |
| ADMIN.5157 |  | FOH/ELI 0142 // Install Fire Alarm and Security |  | 3d | 2026-08-14 A | 2026-08-18 A | ADMIN.5155 | 100% | 2026-08-07 | 2026-08-11 |  |  | 873 | FOH | 1 | Y | OR | HELIX | W |
| ADMIN.5879 |  | FOH/ELI 0142 // BMS & EPMS Rough In |  | 2d | 2026-08-14 A | 2026-08-17 A | ADMIN.5157 SS, ADMIN.5157 FF | 100% | 2026-09-30 | 2026-10-01 |  |  |  | FOH |  |  |  |  |  |
| ADMIN.5160 |  | FOH/ELI 0142 // Final paint |  | 2d | 2026-08-19 A | 2026-08-20 A | ADMIN.5159, ADMIN.5157 | 100% | 2026-08-18 | 2026-08-19 |  |  | 872 | FOH | 1 | Y | OR |  |  |
| ADMIN.5161 |  | FOH/ELI 0142 // Install Flooring and Base |  | 3d | 2026-08-21 A | 2026-08-22 A | ADMIN.5160 | 100% | 2026-08-20 | 2026-08-24 |  |  | 874 | FOH | 1 |  | OR |  |  |
| ADMIN.5162 |  | FOH/ELI 0142 // Install Trim-Out |  | 1d | 2026-08-24 A | 2026-08-24 A | ADMIN.5161 | 100% | 2026-08-25 | 2026-08-25 |  |  | 876 | FOH | 1 |  | OR | HELIX | SM |
| ADMIN.5163 |  | FOH/ELI 0142 // Install Doors and Hardware |  | 1d | 2026-10-30 | 2026-10-30 | ADMIN.5190, ADMIN.5763 SS, ADMIN.5162 |  |  |  | 20d | 0d | 837 | FOH | 1 |  | OR |  |  |
| ADMIN.5164 |  | FOH/ELI 0142 // Finish & Clean |  | 1d | 2026-11-02 | 2026-11-02 | ADMIN.5879 FF, ADMIN.5163, ADMIN.5162 |  |  |  | 20d | 22d | 877 | FOH | 1 |  | OR |  |  |
|  | 11 | **EF1R . 1000A3** |  |  | 2026-06-15 | 2026-10-30 |  |  |  |  |  |  |  |  |  |  |  |  |  |
| ADMIN.5165 |  | FOH/EF1R . 1000A3 // Frame Walls |  | 3d | 2026-06-15 A | 2026-06-17 A | ADMIN.5151 | 100% |  |  |  |  | 806 | FOH | 1 | Y | OR |  |  |
| ADMIN.5166 |  | FOH/EF1R . 1000A3 // MEPF Layout of Overhead Supports |  | 8d | 2026-06-18 A | 2026-06-18 A | ADMIN.5165 | 100% | 2026-06-18 | 2026-06-29 |  |  | 852 | FOH | 1 | Y | OR | HELIX | SM |
| ADMIN.5167 |  | FOH/EF1R . 1000A3 // Top Down Install of Sheetrock - Priority Walls |  | 2d | 2026-06-18 A | 2026-06-19 A | ADMIN.5166 | 100% | 2026-06-30 | 2026-07-01 |  |  | 809 | FOH | 1 | Y | OR |  |  |
| ADMIN.5168 |  | FOH/EF1R . 1000A3 // Install MEPF Overhead Supports |  | 2d | 2026-06-18 A | 2026-07-02 A | ADMIN.5166 SS | 100% | 2026-06-22 | 2026-06-23 |  |  | 851 | FOH | 1 | Y | OR | HELIX | SM |
| ADMIN.5169 |  | FOH/EF1R . 1000A3 // MEPF Overhead Install |  | 10d | 2026-07-06 A | 2026-07-17 A | ADMIN.5168 SS+5d | 100% | 2026-07-24 | 2026-08-06 |  |  | 853 | FOH | 1 | Y | OR | HELIX | SM |
| ADMIN.5170 |  | FOH/EF1R . 1000A3 // MEPF In-wall rough-in |  | 2d | 2026-07-17 A | 2026-07-20 A | ADMIN.5169 | 100% | 2026-08-07 | 2026-08-10 |  |  | 873 | FOH | 1 | Y | OR | HELIX | SM |
| ADMIN.5171 |  | FOH/EF1R . 1000A3 // Install Fire Alarm and Security |  | 3d | 2026-07-17 A | 2026-07-21 A | ADMIN.5169 | 100% | 2026-08-07 | 2026-08-11 |  |  | 873 | FOH | 1 | Y | OR | HELIX | W |
| ADMIN.5889 |  | FOH/EF1R . 1000A3 // BMS & EPMS Rough In |  | 2d | 2026-07-17 A | 2026-07-20 A | ADMIN.5171 SS, ADMIN.5171 FF | 100% | 2026-09-30 | 2026-10-01 |  |  |  | FOH |  |  |  |  |  |
| ADMIN.5172 |  | FOH/EF1R . 1000A3 // 1-Side & Finish Priority Walls |  | 2d | 2026-07-21 A | 2026-07-22 A | ADMIN.5170, ADMIN.5169, ADMIN.5167 | 100% | 2026-08-11 | 2026-08-12 |  |  | 816 | FOH | 1 | Y | OR |  |  |
| ADMIN.5173 |  | FOH/EF1R . 1000A3 // Tape and Finish Walls |  | 3d | 2026-08-03 A | 2026-08-05 A | ADMIN.5172 | 100% | 2026-08-13 | 2026-08-17 |  |  | 820 | FOH | 1 | Y | OR |  |  |
| ADMIN.5764 |  | FOH/EF1R . 1000A3 // FOH- Room Ready to Receive Equipment | milestone | 0d | 2026-08-05 A | 2026-08-05 A | ADMIN.5173 | 100% | 2026-08-18 | 2026-08-18 |  |  | 872 | FOH | 1 |  | OR | HELIX | SM |
| ADMIN.5174 |  | FOH/EF1R . 1000A3 // Final paint |  | 2d | 2026-08-06 A | 2026-08-07 A | ADMIN.5173, ADMIN.5171 | 100% | 2026-08-18 | 2026-08-19 |  |  | 872 | FOH | 1 |  | OR |  |  |
| ADMIN.5175 |  | FOH/EF1R . 1000A3 // Install Flooring and Base |  | 3d | 2026-08-18 A | 2026-08-20 A | ADMIN.5174 | 100% | 2026-08-20 | 2026-08-24 |  |  | 874 | FOH | 1 |  | OR |  |  |
| ADMIN.5176 |  | FOH/EF1R . 1000A3 // Install Trim-Out |  | 1d | 2026-08-21 A | 2026-08-21 A | ADMIN.5175 | 100% | 2026-08-25 | 2026-08-25 |  |  | 876 | FOH | 1 |  | OR | HELIX | SM |
| ADMIN.5178 |  | FOH/EF1R . 1000A3 // Finish & Clean |  | 1d | 2026-10-01 A | 2026-10-02 A | ADMIN.5889 FF, ADMIN.5176 | 100% | 2026-10-01 | 2026-10-01 |  |  | 877 | FOH | 1 |  | OR |  |  |
| ADMIN.5177 |  | FOH/EF1R . 1000A3 // Install Doors and Hardware |  | 1d | 2026-10-30 | 2026-10-30 | ADMIN.5190, ADMIN.5764 SS, ADMIN.5176 |  |  |  | 21d | 23d | 837 | FOH | 1 |  | OR |  |  |

| ID | WBS | Activity | Type | Duration | Start | Finish | Predecessors | Complete | Planned start | Planned finish | Total float | Free float | MSP Activity ID | QTS - AREA | 05 -SUFFOLK - Building Phase | 12 - SUFFOLK - Export_to_Procore | QTS - DASH | QTS - Subcontractor | QTS - Resp |
| --- | --- | --- | --- | --- | --- | --- | --- | --- | --- | --- | --- | --- | --- | --- | --- | --- | --- | --- | --- |
|  | 9 | **Fire . 0140** |  |  | 2026-06-15 | 2026-11-02 |  |  |  |  |  |  |  |  |  |  |  |  |  |
| ADMIN.5179 |  | FOH/Fire . 0140 // Frame Walls |  | 3d | 2026-06-15 A | 2026-06-17 A | ADMIN.5165 | 100% | 2026-06-18 | 2026-06-22 |  |  | 806 | FOH | 1 | Y | OR |  |  |
| ADMIN.5180 |  | FOH/Fire . 0140 // MEPF Layout of Overhead Supports |  | 8d | 2026-06-16 A | 2026-06-18 A | ADMIN.5179 | 100% | 2026-06-23 | 2026-07-02 |  |  | 852 | FOH | 1 | Y | OR | HELIX | SM |
| ADMIN.5182 |  | FOH/Fire . 0140 // Install MEPF Overhead Supports |  | 2d | 2026-06-18 A | 2026-07-02 A | ADMIN.5180 SS+2d | 100% | 2026-06-25 | 2026-06-26 |  |  | 851 | FOH | 1 | Y | OR | HELIX | SM |
| ADMIN.5181 |  | FOH/Fire . 0140 // Top Down Install of Sheetrock - Priority Walls |  | 2d | 2026-06-19 A | 2026-07-16 A | ADMIN.5180 | 100% | 2026-06-19 | 2026-06-22 |  |  | 809 | FOH | 1 | Y | OR |  |  |
| ADMIN.5184 |  | FOH/Fire . 0140 // MEPF In-wall rough-in |  | 2d | 2026-07-17 A | 2026-07-20 A | ADMIN.5181 | 100% | 2026-08-07 | 2026-08-10 |  |  | 873 | FOH | 1 | Y | OR | HELIX | SM |
| ADMIN.5186 |  | FOH/Fire . 0140 // 1-Side & Finish Priority Walls |  | 2d | 2026-07-21 A | 2026-07-22 A | ADMIN.5184, ADMIN.5181 | 100% | 2026-08-11 | 2026-08-12 |  |  | 816 | FOH | 1 | Y | OR |  |  |
| ADMIN.5183 |  | FOH/Fire . 0140 // MEPF Overhead Install |  | 10d | 2026-07-31 A | 2026-08-17 A | ADMIN.5182 SS+5d | 100% | 2026-07-24 | 2026-08-06 |  |  | 853 | FOH | 1 | Y | OR | HELIX | SM |
| ADMIN.5187 |  | FOH/Fire . 0140 // Tape and Finish Walls |  | 3d | 2026-08-17 A | 2026-08-18 A | ADMIN.5186 | 100% | 2026-08-13 | 2026-08-17 |  |  | 820 | FOH | 1 |  | OR |  |  |
| ADMIN.5185 |  | FOH/Fire . 0140 // Install Fire Alarm and Security |  | 3d | 2026-08-18 A | 2026-08-20 A | ADMIN.5183 | 100% | 2026-08-07 | 2026-08-11 |  |  | 873 | FOH | 1 | Y | OR | HELIX | W |
| ADMIN.5899 |  | FOH/Fire . 0140 // BMS & EPMS Rough In |  | 2d | 2026-08-18 A | 2026-08-19 A | ADMIN.5185 SS, ADMIN.5185 FF | 100% | 2026-09-30 | 2026-10-01 |  |  |  | FOH |  |  |  |  |  |
| ADMIN.5188 |  | FOH/Fire . 0140 // Final paint |  | 2d | 2026-08-21 A | 2026-08-21 A | ADMIN.5187, ADMIN.5185 | 100% | 2026-08-18 | 2026-08-19 |  |  | 872 | FOH | 1 |  | OR |  |  |
| ADMIN.5765 |  | FOH/Fire . 0140 // FOH- Room Ready to Receive Equipment | milestone | 0d | 2026-09-14 A | 2026-09-14 A | ADMIN.5183 | 100% | 2026-08-25 | 2026-08-25 |  |  | 872 | FOH | 1 |  | OR | HELIX | SM |
| ADMIN.5189 |  | FOH/Fire . 0140 // Install Flooring and Base |  | 3d | 2026-10-14 | 2026-10-16 | ADMIN.5188 |  |  |  | 20d | 0d | 874 | FOH | 1 |  | OR |  |  |
| ADMIN.5497 |  | FOH/Fire . 0140 // Install Ceiling grid |  | 4d | 2026-10-19 | 2026-10-22 | ADMIN.5189, ADMIN.5186, ADMIN.5183 |  |  |  | 20d | 0d | 873 | FOH | 1 |  | OR |  |  |
| ADMIN.5498 |  | FOH/Fire . 0140 // Hang hard-lid ceiling |  | 2d | 2026-10-23 | 2026-10-26 | ADMIN.5497 |  |  |  | 20d | 0d | 873 | FOH | 1 |  | OR |  |  |
| ADMIN.5499 |  | FOH/Fire . 0140 // Hang / drop Ceiling trims |  | 2d | 2026-10-27 | 2026-10-28 | ADMIN.5498 |  |  |  | 20d | 0d | 873 | FOH | 1 |  | OR |  |  |
| ADMIN.5190 |  | FOH/Fire . 0140 // Install Trim-Out |  | 1d | 2026-10-29 | 2026-10-29 | ADMIN.5499, ADMIN.5189 |  |  |  | 20d | 0d | 876 | FOH | 1 |  | OR | HELIX | SM |
| ADMIN.5191 |  | FOH/Fire . 0140 // Install Doors and Hardware |  | 1d | 2026-10-30 | 2026-10-30 | ADMIN.5765 SS, ADMIN.5190 |  |  |  | 20d | 0d | 837 | FOH | 1 |  | OR |  |  |
| ADMIN.5192 |  | FOH/Fire . 0140 // Finish & Clean |  | 1d | 2026-11-02 | 2026-11-02 | ADMIN.5899 FF, ADMIN.5191, ADMIN.5190 |  |  |  | 20d | 22d | 877 | FOH | 1 |  | OR |  |  |
|  | 14 | **Tenant Office 0115** |  |  | 2026-06-18 | 2026-11-02 |  |  |  |  |  |  |  |  |  |  |  |  |  |
| ADMIN.5194 |  | FOH/Tenant Office 0115 // MEPF Layout of Overhead Supports |  | 3d | 2026-06-18 A | 2026-06-22 A | ADMIN.5193 SS | 100% |  |  |  |  | 852 | FOH | 1 | Y | OR | HELIX | SM |
| ADMIN.5193 |  | FOH/Tenant Office 0115 // Frame Walls |  | 3d | 2026-06-19 A | 2026-06-23 A | ADMIN.5179 | 100% |  |  |  |  | 806 | FOH | 1 | Y | OR |  |  |
| ADMIN.5195 |  | FOH/Tenant Office 0115 // Top Down Install of Sheetrock - Priority Walls |  | 2d | 2026-06-23 A | 2026-06-24 A | ADMIN.5194 | 100% | 2026-07-24 | 2026-07-27 |  |  | 809 | FOH | 1 | Y | OR |  |  |
| ADMIN.5196 |  | FOH/Tenant Office 0115 // Install MEPF Overhead Supports |  | 2d | 2026-06-23 A | 2026-07-07 A | ADMIN.5194 SS+2d | 100% | 2026-07-24 | 2026-07-27 |  |  | 851 | FOH | 1 | Y | OR | HELIX | SM |
| ADMIN.5197 |  | FOH/Tenant Office 0115 // MEPF Overhead Install |  | 10d | 2026-07-08 A | 2026-08-08 A | ADMIN.5196 SS+5d | 100% | 2026-07-31 | 2026-08-13 |  |  | 853 | FOH | 1 | Y | OR | HELIX | SM |
| ADMIN.5198 |  | FOH/Tenant Office 0115 // MEPF In-wall rough-in |  | 2d | 2026-08-10 A | 2026-08-11 A | ADMIN.5197 | 100% | 2026-08-14 | 2026-08-17 |  |  | 873 | FOH | 1 |  | OR | HELIX | SM |
| ADMIN.5200 |  | FOH/Tenant Office 0115 // 1-Side & Finish Priority Walls |  | 2d | 2026-08-17 A | 2026-08-18 A | ADMIN.5198, ADMIN.5197, ADMIN.5195 | 100% | 2026-08-18 | 2026-08-19 |  |  | 816 | FOH | 1 |  | OR |  |  |
| ADMIN.5199 |  | FOH/Tenant Office 0115 // Install Fire Alarm and Security |  | 3d | 2026-08-18 A | 2026-08-19 A | ADMIN.5197 | 100% | 2026-08-14 | 2026-08-18 |  |  | 873 | FOH | 1 |  | OR | HELIX | W |
| ADMIN.5909 |  | FOH/Tenant Office 0115 // BMS & EPMS Rough In |  | 2d | 2026-08-18 A | 2026-08-19 A | ADMIN.5199 SS, ADMIN.5199 FF | 100% | 2026-09-30 | 2026-10-01 |  |  |  | FOH |  |  |  |  |  |
| ADMIN.5201 |  | FOH/Tenant Office 0115 // Tape and Finish Walls |  | 3d | 2026-08-19 A | 2026-08-21 A | ADMIN.5200 | 100% | 2026-08-20 | 2026-08-24 |  |  | 820 | FOH | 1 |  | OR |  |  |
| ADMIN.5202 |  | FOH/Tenant Office 0115 // Final paint |  | 2d | 2026-08-24 A | 2026-08-25 A | ADMIN.5201, ADMIN.5199 | 100% | 2026-08-25 | 2026-08-26 |  |  | 872 | FOH | 1 |  | OR |  |  |
| ADMIN.5766 |  | FOH/Tenant Office 0115 // FOH- Room Ready to Receive Equipment | milestone | 0d | 2026-08-26 A | 2026-08-26 A | ADMIN.5202 | 100% | 2026-09-30 | 2026-09-30 |  |  | 872 | FOH | 1 |  | OR | HELIX | SM |
| ADMIN.5203 |  | FOH/Tenant Office 0115 // Install Flooring and Base |  | 3d | 2026-10-14 | 2026-10-16 | ADMIN.5766, ADMIN.5202 |  |  |  | 28d | 0d | 874 | FOH | 1 |  | OR |  |  |
| ADMIN.5204 |  | FOH/Tenant Office 0115 // Install Trim-Out |  | 1d | 2026-10-19 | 2026-10-19 | ADMIN.5203 |  |  |  | 28d | 8d | 876 | FOH | 1 |  | OR | HELIX | SM |
| ADMIN.5205 |  | FOH/Tenant Office 0115 // Install Doors and Hardware |  | 1d | 2026-10-30 | 2026-10-30 | ADMIN.5190, ADMIN.5766 SS, ADMIN.5204 |  |  |  | 20d | 0d | 837 | FOH | 1 |  | OR |  |  |
| ADMIN.5206 |  | FOH/Tenant Office 0115 // Finish & Clean |  | 1d | 2026-11-02 | 2026-11-02 | ADMIN.5909 FF, ADMIN.5205, ADMIN.5204 |  |  |  | 20d | 22d | 877 | FOH | 1 |  | OR |  |  |

| ID | WBS | Activity | Type | Duration | Start | Finish | Predecessors | Complete | Planned start | Planned finish | Total float | Free float | MSP Activity ID | QTS - Subcontractor | QTS - AREA | QTS - Resp | 05 -SUFFOLK - Building Phase | 12 - SUFFOLK - Export_to_Procore | QTS - DASH |
| --- | --- | --- | --- | --- | --- | --- | --- | --- | --- | --- | --- | --- | --- | --- | --- | --- | --- | --- | --- |
|  | 2 | **Roof .0125** |  |  | 2026-06-18 | 2026-11-02 |  |  |  |  |  |  |  |  |  |  |  |  |  |
| ADMIN.5208 |  | FOH/Roof .0125 // MEPF Layout of Overhead Supports |  | 3d | 2026-06-18 A | 2026-06-22 A | ADMIN.5207 | 100% |  |  |  |  | 852 | HELIX | FOH | SM | 1 | Y | OR |
| ADMIN.5210 |  | FOH/Roof .0125 // Install MEPF Overhead Supports |  | 2d | 2026-06-19 A | 2026-07-23 A | ADMIN.5208 SS+2d | 100% | 2026-06-19 | 2026-06-22 |  |  | 851 | HELIX | FOH | SM | 1 | Y | OR |
| ADMIN.5207 |  | FOH/Roof .0125 // Frame Walls |  | 3d | 2026-06-24 A | 2026-06-26 A | ADMIN.5193 | 100% |  |  |  |  | 806 |  | FOH |  | 1 | Y | OR |
| ADMIN.5209 |  | FOH/Roof .0125 // Top Down Install of Sheetrock - Priority Walls |  | 2d | 2026-08-06 A | 2026-08-07 A | ADMIN.5208 | 100% | 2026-07-24 | 2026-07-27 |  |  | 809 |  | FOH |  | 1 | Y | OR |
| ADMIN.5211 |  | FOH/Roof .0125 // MEPF Overhead Install |  | 10d | 2026-08-10 A | 2026-08-13 A | ADMIN.5210 SS+5d | 100% | 2026-07-24 | 2026-08-06 |  |  | 853 | HELIX | FOH | SM | 1 | Y | OR |
| ADMIN.5212 |  | FOH/Roof .0125 // MEPF In-wall rough-in |  | 2d | 2026-08-13 A | 2026-08-14 A | ADMIN.5211 | 100% | 2026-08-07 | 2026-08-10 |  |  | 873 | HELIX | FOH | SM | 1 |  | OR |
| ADMIN.5214 |  | FOH/Roof .0125 // 1-Side & Finish Priority Walls |  | 2d | 2026-09-14 A | 2026-09-15 A | ADMIN.5212, ADMIN.5211, ADMIN.5209 | 100% | 2026-08-11 | 2026-08-12 |  |  | 816 |  | FOH |  | 1 |  | OR |
| ADMIN.5215 |  | FOH/Roof .0125 // Tape and Finish Walls |  | 3d | 2026-09-16 A | 2026-09-18 A | ADMIN.5214 | 100% | 2026-08-13 | 2026-08-17 |  |  | 820 |  | FOH |  | 1 |  | OR |
| ADMIN.5213 |  | FOH/Roof .0125 // Install Fire Alarm and Security |  | 3d | 2026-09-17 A | 2026-09-18 A | ADMIN.5211 | 100% | 2026-08-07 | 2026-08-11 |  |  | 873 | HELIX | FOH | W | 1 |  | OR |
| ADMIN.5919 |  | FOH/Roof .0125 // BMS & EPMS Rough In |  | 2d | 2026-09-17 A | 2026-09-18 A | ADMIN.5213 SS, ADMIN.5213 FF | 100% | 2026-09-30 | 2026-10-01 |  |  |  |  | FOH |  |  |  |  |
| ADMIN.5216 |  | FOH/Roof .0125 // Final paint |  | 2d | 2026-09-21 A | 2026-09-22 A | ADMIN.5215, ADMIN.5213 | 100% | 2026-08-18 | 2026-08-19 |  |  | 872 |  | FOH |  | 1 |  | OR |
| ADMIN.5767 |  | FOH/Roof .0125 // FOH- Room Ready to Receive Equipment | milestone | 0d | 2026-09-23 A | 2026-09-23 A | ADMIN.5216 | 100% | 2026-09-30 | 2026-09-30 |  |  | 872 | HELIX | FOH | SM | 1 |  | OR |
| ADMIN.5217 |  | FOH/Roof .0125 // Install Flooring and Base |  | 3d | 2026-10-14 | 2026-10-16 | ADMIN.5767, ADMIN.5216 |  |  |  | 28d | 0d | 874 |  | FOH |  | 1 |  | OR |
| ADMIN.5218 |  | FOH/Roof .0125 // Install Trim-Out |  | 1d | 2026-10-19 | 2026-10-19 | ADMIN.5217 |  |  |  | 28d | 8d | 876 | HELIX | FOH | SM | 1 |  | OR |
| ADMIN.5219 |  | FOH/Roof .0125 // Install Doors and Hardware |  | 1d | 2026-10-30 | 2026-10-30 | ADMIN.5190, ADMIN.5767 SS, ADMIN.5218 |  |  |  | 20d | 0d | 837 |  | FOH |  | 1 |  | OR |
| ADMIN.5220 |  | FOH/Roof .0125 // Finish & Clean |  | 1d | 2026-11-02 | 2026-11-02 | ADMIN.5919 FF, ADMIN.5219, ADMIN.5218 |  |  |  | 20d | 22d | 877 |  | FOH |  | 1 |  | OR |
|  | 4 | **QTS Flex .0114** |  |  | 2026-06-18 | 2026-10-28 |  |  |  |  |  |  |  |  |  |  |  |  |  |
| ADMIN.5460 |  | FOH/QTS Flex .0114 // MEPF Layout of Overhead Supports |  | 3d | 2026-06-18 A | 2026-06-22 A | ADMIN.5459 | 100% |  |  |  |  | 852 | HELIX | FOH | SM | 1 | Y | OR |
| ADMIN.5462 |  | FOH/QTS Flex .0114 // Install MEPF Overhead Supports |  | 2d | 2026-06-19 A | 2026-06-23 A | ADMIN.5460 SS+2d | 100% | 2026-06-19 | 2026-06-22 |  |  | 851 | HELIX | FOH | SM | 1 | Y | OR |
| ADMIN.5459 |  | FOH/QTS Flex .0114 // Frame Walls |  | 3d | 2026-06-23 A | 2026-06-25 A | ADMIN.5207 | 100% |  |  |  |  | 806 |  | FOH |  | 1 | Y | OR |
| ADMIN.5461 |  | FOH/QTS Flex .0114 // Top Down Install of Sheetrock - Priority Walls |  | 2d | 2026-08-03 A | 2026-08-04 A | ADMIN.5460 | 100% | 2026-07-24 | 2026-07-27 |  |  | 809 |  | FOH |  | 1 | Y | OR |
| ADMIN.5463 |  | FOH/QTS Flex .0114 // MEPF Overhead Install |  | 10d | 2026-08-03 A | 2026-08-14 A | ADMIN.5462 SS+5d | 100% | 2026-07-24 | 2026-08-06 |  |  | 853 | HELIX | FOH | SM | 1 | Y | OR |
| ADMIN.5464 |  | FOH/QTS Flex .0114 // MEPF In-wall rough-in |  | 2d | 2026-08-12 A | 2026-08-13 A | ADMIN.5463 | 100% | 2026-08-07 | 2026-08-10 |  |  | 873 | HELIX | FOH | SM | 1 |  | OR |
| ADMIN.5929 |  | FOH/QTS Flex .0114 // BMS & EPMS Rough In |  | 2d | 2026-08-17 A | 2026-08-18 A | ADMIN.5465 SS, ADMIN.5465 FF | 100% | 2026-09-30 | 2026-10-01 |  |  |  |  | FOH |  |  |  |  |
| ADMIN.5466 |  | FOH/QTS Flex .0114 // 1-Side & Finish Priority Walls |  | 2d | 2026-09-14 A | 2026-09-15 A | ADMIN.5464, ADMIN.5463, ADMIN.5461 | 100% | 2026-08-11 | 2026-08-12 |  |  | 816 |  | FOH |  | 1 |  | OR |
| ADMIN.5467 |  | FOH/QTS Flex .0114 // Tape and Finish Walls |  | 3d | 2026-09-16 A | 2026-09-17 A | ADMIN.5466 | 100% | 2026-08-13 | 2026-08-17 |  |  | 820 |  | FOH |  | 1 |  | OR |
| ADMIN.5465 |  | FOH/QTS Flex .0114 // Install Fire Alarm and Security |  | 3d | 2026-09-17 A | 2026-09-18 A | ADMIN.5463 | 100% | 2026-08-07 | 2026-08-11 |  |  | 873 | HELIX | FOH | W | 1 |  | OR |
| ADMIN.5468 |  | FOH/QTS Flex .0114 // Final paint |  | 2d | 2026-09-21 A | 2026-09-22 A | ADMIN.5467, ADMIN.5465 | 100% | 2026-08-18 | 2026-08-19 |  |  | 872 |  | FOH |  | 1 |  | OR |
| ADMIN.5768 |  | FOH/QTS Flex .0114 // FOH- Room Ready to Receive Equipment | milestone | 0d | 2026-09-23 A | 2026-09-23 A | ADMIN.5468 | 100% | 2026-09-30 | 2026-09-30 |  |  | 872 | HELIX | FOH | SM | 1 |  | OR |
| ADMIN.5469 |  | FOH/QTS Flex .0114 // Install Flooring and Base |  | 3d | 2026-10-14 | 2026-10-16 | ADMIN.5768, ADMIN.5468 |  |  |  | 28d | 0d | 874 |  | FOH |  | 1 |  | OR |
| ADMIN.5470 |  | FOH/QTS Flex .0114 // Install Trim-Out |  | 1d | 2026-10-19 | 2026-10-19 | ADMIN.5469 |  |  |  | 28d | 5d | 876 | HELIX | FOH | SM | 1 |  | OR |
| ADMIN.5471 |  | FOH/QTS Flex .0114 // Install Doors and Hardware |  | 1d | 2026-10-27 | 2026-10-27 | ADMIN.5246, ADMIN.5768 SS, ADMIN.5470 |  |  |  | 23d | 0d | 837 |  | FOH |  | 1 |  | OR |
| ADMIN.5472 |  | FOH/QTS Flex .0114 // Finish & Clean |  | 1d | 2026-10-28 | 2026-10-28 | ADMIN.5929 FF, ADMIN.5471, ADMIN.5470 |  |  |  | 23d | 25d | 877 |  | FOH |  | 1 |  | OR |

| ID | WBS | Activity | Duration | Start | Finish | Predecessors | Complete | Planned start | Planned finish | Total float | Free float | MSP Activity ID | QTS - Subcontractor | QTS - AREA | QTS - Resp | 05 -SUFFOLK - Building Phase | QTS - DASH | 12 - SUFFOLK - Export_to_Procore |
| --- | --- | --- | --- | --- | --- | --- | --- | --- | --- | --- | --- | --- | --- | --- | --- | --- | --- | --- |
|  | 3 | **Restroom .M0111 / W 0110** |  | 2026-06-23 | 2026-11-06 |  |  |  |  |  |  |  |  |  |  |  |  |  |
| ADMIN.5099 |  | FOH/Restroom .M0111 / W 0110 // MEP rough in of Soffits / Hardlids | 2d | 2026-06-23 A | 2026-06-24 A | ADMIN.5460 | 100% |  |  |  |  | 808 | HELIX | FOH | SM | 1 | OR |  |
| ADMIN.4814 |  | FOH/Restroom .M0111 / W 0110 // Install MEP Overhead | 3d | 2026-09-07 A | 2026-09-09 A | ADMIN.5460 | 100% | 2026-07-24 | 2026-07-28 |  |  | 927 | HELIX | FOH | SM | 1 | OR | Y |
| ADMIN.5100 |  | FOH/Restroom .M0111 / W 0110 // Backing & Blocking | 1d | 2026-09-08 A | 2026-09-08 A | ADMIN.5099 | 100% | 2026-07-29 | 2026-07-29 |  |  | 845 |  | FOH |  | 1 | OR |  |
| ADMIN.4813 |  | FOH/Restroom .M0111 / W 0110 // Install Sprinkler Riser System | 10d | 2026-09-10 A | 2026-09-22 A | ADMIN.4814 | 100% | 2026-07-29 | 2026-08-11 |  |  | 926 |  | FOH |  | 1 | OR |  |
| ADMIN.4810 |  | FOH/Restroom .M0111 / W 0110 // Tape and Finish Walls | 5d | 2026-09-24 A | 2026-09-29 A | ADMIN.5100 | 100% | 2026-07-30 | 2026-08-05 |  |  | 909 |  | FOH |  | 1 | OR |  |
| ADMIN.4815 |  | FOH/Restroom .M0111 / W 0110 // Install Fire Alarm | 5d | 2026-09-24 A | 2026-09-29 A | ADMIN.4813 | 100% | 2026-08-12 | 2026-08-18 |  |  | 928 | HELIX | FOH | W | 1 | OR |  |
| ADMIN.4811 |  | FOH/Restroom .M0111 / W 0110 // Prime and Paint | 3d | 2026-10-14 | 2026-10-16 | ADMIN.4810 |  |  |  | 25d | 0d | 845 |  | FOH |  | 1 | OR |  |
| ADMIN.5101 |  | FOH/Restroom .M0111 / W 0110 // Install Wall & Floor tiles | 5d | 2026-10-14 | 2026-10-20 | ADMIN.4810 |  |  |  | 16d | 0d | 845 |  | FOH |  | 1 | OR |  |
| ADMIN.4812 |  | FOH/Restroom .M0111 / W 0110 // Install FRP | 2d | 2026-10-19 | 2026-10-20 | ADMIN.4811 |  |  |  | 25d | 9d | 925 |  | FOH |  | 1 | OR |  |
| ADMIN.4816 |  | FOH/Restroom .M0111 / W 0110 // Install Lighting | 2d | 2026-10-21 | 2026-10-22 | ADMIN.5101, ADMIN.4811, ADMIN.4815 |  |  |  | 23d | 7d | 929 | HELIX | FOH | SM | 1 | OR |  |
| ADMIN.5102 |  | FOH/Restroom .M0111 / W 0110 // Millwork On-Field Measurement | 1d | 2026-10-21 | 2026-10-21 | ADMIN.5101 |  |  |  | 16d | 0d | 845 |  | FOH |  | 1 | OR |  |
| ADMIN.5104 |  | FOH/Restroom .M0111 / W 0110 // Install Toilet Accesories | 3d | 2026-10-22 | 2026-10-26 | ADMIN.5102 |  |  |  | 16d | 0d | 845 |  | FOH |  | 1 | OR |  |
| ADMIN.5103 |  | FOH/Restroom .M0111 / W 0110 // Install Toilet Partition & Millwork | 5d | 2026-10-27 | 2026-11-02 | ADMIN.5104 |  |  |  | 16d | 0d | 845 |  | FOH |  | 1 | OR |  |
| ADMIN.4817 |  | FOH/Restroom .M0111 / W 0110 // Finish Trim and Devices | 3d | 2026-11-03 | 2026-11-05 | ADMIN.4812, ADMIN.5103, ADMIN.4816 |  |  |  | 16d | 0d | 930 | HELIX | FOH | SM | 1 | OR |  |
| ADMIN.4818 |  | FOH/Restroom .M0111 / W 0110 // Finish & Clean | 1d | 2026-11-06 | 2026-11-06 | ADMIN.4817 |  |  |  | 16d | 18d | 931 |  | FOH |  | 1 | OR |  |
|  | 5 | **Janitor 0109** |  | 2026-06-18 | 2026-10-28 |  |  |  |  |  |  |  |  |  |  |  |  |  |
| ADMIN.5221 |  | FOH/Janitor 0109 // Frame Walls | 3d | 2026-06-18 A | 2026-06-22 A | ADMIN.5179 | 100% |  |  |  |  | 806 |  | FOH |  | 1 | OR |  |
| ADMIN.5222 |  | FOH/Janitor 0109 // MEPF Layout of Overhead Supports | 2d | 2026-06-19 A | 2026-06-22 A | ADMIN.5221 | 100% |  |  |  |  | 852 | HELIX | FOH | SM | 1 | OR |  |
| ADMIN.5223 |  | FOH/Janitor 0109 // Top Down Install of Sheetrock - Priority Walls | 2d | 2026-08-03 A | 2026-08-04 A | ADMIN.5222 | 100% | 2026-07-29 | 2026-07-30 |  |  | 809 |  | FOH |  | 1 | OR |  |
| ADMIN.5224 |  | FOH/Janitor 0109 // Install MEPF Overhead Supports | 2d | 2026-08-03 A | 2026-08-14 A | ADMIN.5222 SS+2d | 100% | 2026-07-29 | 2026-07-30 |  |  | 851 | HELIX | FOH | SM | 1 | OR |  |
| ADMIN.5225 |  | FOH/Janitor 0109 // MEPF Overhead Install | 10d | 2026-08-04 A | 2026-08-17 A | ADMIN.5224 SS+5d | 100% | 2026-08-05 | 2026-08-18 |  |  | 853 | HELIX | FOH | SM | 1 | OR |  |
| ADMIN.5226 |  | FOH/Janitor 0109 // MEPF In-wall rough-in | 2d | 2026-08-10 A | 2026-08-11 A | ADMIN.5225 | 100% | 2026-08-19 | 2026-08-20 |  |  | 873 | HELIX | FOH | SM | 1 | OR |  |
| ADMIN.5227 |  | FOH/Janitor 0109 // Install Fire Alarm and Security | 3d | 2026-09-08 A | 2026-09-10 A | ADMIN.5225 | 100% | 2026-08-19 | 2026-08-21 |  |  | 873 | HELIX | FOH | W | 1 | OR |  |
| ADMIN.5939 |  | FOH/Janitor 0109 // BMS & EPMS Rough In | 2d | 2026-09-08 A | 2026-09-09 A | ADMIN.5227 SS, ADMIN.5227 FF | 100% | 2026-09-30 | 2026-10-01 |  |  |  |  | FOH |  |  |  |  |
| ADMIN.5228 |  | FOH/Janitor 0109 // 1-Side & Finish Priority Walls | 2d | 2026-09-14 A | 2026-09-15 A | ADMIN.5226, ADMIN.5225, ADMIN.5223 | 100% | 2026-08-21 | 2026-08-24 |  |  | 816 |  | FOH |  | 1 | OR |  |
| ADMIN.5229 |  | FOH/Janitor 0109 // Tape and Finish Walls | 3d | 2026-09-16 A | 2026-09-18 A | ADMIN.5228 | 100% | 2026-08-25 | 2026-08-27 |  |  | 820 |  | FOH |  | 1 | OR |  |
| ADMIN.5230 |  | FOH/Janitor 0109 // Final paint | 2d | 2026-09-21 A | 2026-09-22 A | ADMIN.5229, ADMIN.5227 | 100% | 2026-08-28 | 2026-08-31 |  |  | 872 |  | FOH |  | 1 | OR |  |
| ADMIN.5231 |  | FOH/Janitor 0109 // Install Flooring and Base | 3d | 2026-10-14 | 2026-10-16 | ADMIN.5230 |  |  |  | 28d | 0d | 874 |  | FOH |  | 1 | OR |  |
| ADMIN.5232 |  | FOH/Janitor 0109 // Install Trim-Out | 1d | 2026-10-19 | 2026-10-19 | ADMIN.5231 |  |  |  | 28d | 5d | 876 | HELIX | FOH | SM | 1 | OR |  |
| ADMIN.5233 |  | FOH/Janitor 0109 // Install Doors and Hardware | 1d | 2026-10-27 | 2026-10-27 | ADMIN.5246, ADMIN.5232 |  |  |  | 23d | 0d | 837 |  | FOH |  | 1 | OR |  |
| ADMIN.5234 |  | FOH/Janitor 0109 // Finish & Clean | 1d | 2026-10-28 | 2026-10-28 | ADMIN.5939 FF, ADMIN.5233, ADMIN.5232 |  |  |  | 23d | 25d | 877 |  | FOH |  | 1 | OR |  |

| ID | WBS | Activity | Type | Duration | Start | Finish | Predecessors | Complete | Planned start | Planned finish | Total float | Free float | MSP Activity ID | QTS - AREA | 05 -SUFFOLK - Building Phase | QTS - DASH | QTS - Subcontractor | QTS - Resp |
| --- | --- | --- | --- | --- | --- | --- | --- | --- | --- | --- | --- | --- | --- | --- | --- | --- | --- | --- |
|  | 6 | **Water 1000A4** |  |  | 2026-06-18 | 2026-10-28 |  |  |  |  |  |  |  |  |  |  |  |  |
| ADMIN.5235 |  | FOH/Water 1000A4 // Frame Walls |  | 3d | 2026-06-18 A | 2026-06-22 A | ADMIN.5221 | 100% |  |  |  |  | 806 | FOH | 1 | OR |  |  |
| ADMIN.5236 |  | FOH/Water 1000A4 // MEPF Layout of Overhead Supports |  | 8d | 2026-08-03 A | 2026-08-05 A | ADMIN.5235 | 100% | 2026-07-29 | 2026-08-07 |  |  | 852 | FOH | 1 | OR | HELIX | SM |
| ADMIN.5237 |  | FOH/Water 1000A4 // Top Down Install of Sheetrock - Priority Walls |  | 2d | 2026-08-06 A | 2026-08-07 A | ADMIN.5236 | 100% | 2026-08-10 | 2026-08-11 |  |  | 809 | FOH | 1 | OR |  |  |
| ADMIN.5240 |  | FOH/Water 1000A4 // MEPF In-wall rough-in |  | 2d | 2026-08-10 A | 2026-08-11 A | ADMIN.5237 | 100% | 2026-08-21 | 2026-08-24 |  |  | 873 | FOH | 1 | OR | HELIX | SM |
| ADMIN.5238 |  | FOH/Water 1000A4 // Install MEPF Overhead Supports |  | 2d | 2026-08-24 A | 2026-08-25 A | ADMIN.5236 FS+2d | 100% | 2026-07-31 | 2026-08-03 |  |  | 851 | FOH | 1 | OR | HELIX | SM |
| ADMIN.5239 |  | FOH/Water 1000A4 // MEPF Overhead Install |  | 10d | 2026-08-26 A | 2026-09-09 A | ADMIN.5238 | 100% | 2026-08-07 | 2026-08-20 |  |  | 853 | FOH | 1 | OR | HELIX | SM |
| ADMIN.5243 |  | FOH/Water 1000A4 // Tape and Finish Walls |  | 3d | 2026-09-14 A | 2026-09-16 A | ADMIN.5242 | 100% | 2026-10-02 | 2026-10-06 |  |  | 820 | FOH | 1 | OR |  |  |
| ADMIN.5242 |  | FOH/Water 1000A4 // 1-Side & Finish Priority Walls |  | 2d | 2026-09-17 A | 2026-09-18 A | ADMIN.5240, ADMIN.5239, ADMIN.5237 | 100% | 2026-09-30 | 2026-10-01 |  |  | 816 | FOH | 1 | OR |  |  |
| ADMIN.5241 |  | FOH/Water 1000A4 // Install Fire Alarm and Security |  | 3d | 2026-10-14 | 2026-10-16 | ADMIN.5239 |  |  |  | 23d | 0d | 873 | FOH | 1 | OR | HELIX | W |
| ADMIN.5949 |  | FOH/Water 1000A4 // BMS & EPMS Rough In |  | 2d | 2026-10-15 | 2026-10-16 | ADMIN.5241 SS, ADMIN.5241 FF |  |  |  | 25d | 2d |  |  |  |  |  |  |
| ADMIN.5244 |  | FOH/Water 1000A4 // Final paint |  | 2d | 2026-10-19 | 2026-10-20 | ADMIN.5243, ADMIN.5241, ADMIN.5949 FF |  |  |  | 23d | 0d | 872 | FOH | 1 | OR |  |  |
| ADMIN.5245 |  | FOH/Water 1000A4 // Install Flooring and Base |  | 3d | 2026-10-21 | 2026-10-23 | ADMIN.5244 |  |  |  | 23d | 0d | 874 | FOH | 1 | OR |  |  |
| ADMIN.5246 |  | FOH/Water 1000A4 // Install Trim-Out |  | 1d | 2026-10-26 | 2026-10-26 | ADMIN.5245 |  |  |  | 23d | 0d | 876 | FOH | 1 | OR | HELIX | SM |
| ADMIN.5247 |  | FOH/Water 1000A4 // Install Doors and Hardware |  | 1d | 2026-10-27 | 2026-10-27 | ADMIN.5246 |  |  |  | 23d | 0d | 837 | FOH | 1 | OR |  |  |
| ADMIN.5248 |  | FOH/Water 1000A4 // Finish & Clean |  | 1d | 2026-10-28 | 2026-10-28 | ADMIN.5247, ADMIN.5246 |  |  |  | 23d | 25d | 877 | FOH | 1 | OR |  |  |
|  | 7 | **Welness 0108** |  |  | 2026-06-19 | 2026-11-03 |  |  |  |  |  |  |  |  |  |  |  |  |
| ADMIN.5249 |  | FOH/Welness 0108 // Frame Walls |  | 3d | 2026-06-19 A | 2026-06-23 A | ADMIN.5235 SS | 100% |  |  |  |  | 806 | FOH | 1 | OR |  |  |
| ADMIN.5250 |  | FOH/Welness 0108 // MEPF Layout of Overhead Supports |  | 8d | 2026-06-25 A | 2026-07-07 A | ADMIN.5249 | 100% | 2026-07-29 | 2026-08-07 |  |  | 852 | FOH | 1 | OR | HELIX | SM |
| ADMIN.5251 |  | FOH/Welness 0108 // Top Down Install of Sheetrock - Priority Walls |  | 2d | 2026-08-04 A | 2026-08-05 A | ADMIN.5250 | 100% | 2026-08-10 | 2026-08-11 |  |  | 809 | FOH | 1 | OR |  |  |
| ADMIN.5254 |  | FOH/Welness 0108 // MEPF In-wall rough-in |  | 2d | 2026-08-06 A | 2026-08-07 A | ADMIN.5251 | 100% | 2026-08-21 | 2026-08-24 |  |  | 873 | FOH | 1 | OR | HELIX | SM |
| ADMIN.5252 |  | FOH/Welness 0108 // Install MEPF Overhead Supports |  | 2d | 2026-08-26 A | 2026-08-27 A | ADMIN.5250 | 100% | 2026-07-31 | 2026-08-03 |  |  | 851 | FOH | 1 | OR | HELIX | SM |
| ADMIN.5253 |  | FOH/Welness 0108 // MEPF Overhead Install |  | 10d | 2026-08-31 A | 2026-09-14 A | ADMIN.5252 | 100% | 2026-08-07 | 2026-08-20 |  |  | 853 | FOH | 1 | OR | HELIX | SM |
| ADMIN.5255 |  | FOH/Welness 0108 // Install Fire Alarm and Security |  | 3d | 2026-09-24 A | 2026-09-28 A | ADMIN.5253 | 100% | 2026-08-21 | 2026-08-25 |  |  | 873 | FOH | 1 | OR | HELIX | W |
| ADMIN.5256 |  | FOH/Welness 0108 // 1-Side & Finish Priority Walls |  | 2d | 2026-09-24 A | 2026-09-25 A | ADMIN.5254, ADMIN.5253, ADMIN.5251 | 100% | 2026-08-25 | 2026-08-26 |  |  | 816 | FOH | 1 | OR |  |  |
| ADMIN.5959 |  | FOH/Welness 0108 // BMS & EPMS Rough In |  | 2d | 2026-09-24 A | 2026-09-25 A | ADMIN.5255 SS, ADMIN.5255 FF | 100% | 2026-09-30 | 2026-10-01 |  |  |  | FOH |  |  |  |  |
| ADMIN.5257 |  | FOH/Welness 0108 // Tape and Finish Walls |  | 3d | 2026-09-28 A | 2026-09-29 A | ADMIN.5256 | 100% | 2026-08-27 | 2026-08-31 |  |  | 820 | FOH | 1 | OR |  |  |
| ADMIN.5258 |  | FOH/Welness 0108 // Final paint |  | 2d | 2026-10-14 | 2026-10-15 | ADMIN.5257, ADMIN.5255, ADMIN.5959 FF |  |  |  | 19d | 0d | 872 | FOH | 1 | OR |  |  |
| ADMIN.5259 |  | FOH/Welness 0108 // Install Flooring and Base |  | 3d | 2026-10-16 | 2026-10-20 | ADMIN.5258 |  |  |  | 19d | 0d | 874 | FOH | 1 | OR |  |  |
| ADMIN.5473 |  | FOH/Welness 0108 // Install Ceiling grid |  | 4d | 2026-10-21 | 2026-10-26 | ADMIN.5259, ADMIN.5256, ADMIN.5253 |  |  |  | 19d | 0d | 873 | FOH | 1 | OR |  |  |
| ADMIN.5474 |  | FOH/Welness 0108 // Hang / drop Ceiling tiles |  | 2d | 2026-10-27 | 2026-10-28 | ADMIN.5473 |  |  |  | 19d | 0d | 873 | FOH | 1 | OR |  |  |
| ADMIN.5475 |  | FOH/Welness 0108 // Hang / drop Ceiling trims |  | 2d | 2026-10-29 | 2026-10-30 | ADMIN.5474 |  |  |  | 19d | 0d | 873 | FOH | 1 | OR |  |  |
| ADMIN.5260 |  | FOH/Welness 0108 // Install Trim-Out |  | 1d | 2026-10-30 | 2026-10-30 | ADMIN.5475 FF, ADMIN.5259 |  |  |  | 19d | 0d | 876 | FOH | 1 | OR | HELIX | SM |
| ADMIN.5261 |  | FOH/Welness 0108 // Install Doors and Hardware |  | 1d | 2026-11-02 | 2026-11-02 | ADMIN.5246, ADMIN.5769 SS, ADMIN.5260 |  |  |  | 19d | 0d | 837 | FOH | 1 | OR |  |  |
| ADMIN.5769 |  | FOH/Welness 0108 // FOH- Room Ready to Receive Equipment | milestone | 0d | 2026-11-02 | 2026-11-02 | ADMIN.5475 |  |  |  | 19d | 0d | 872 | FOH | 1 | OR | HELIX | SM |
| ADMIN.5262 |  | FOH/Welness 0108 // Finish & Clean |  | 1d | 2026-11-03 | 2026-11-03 | ADMIN.5261, ADMIN.5260 |  |  |  | 19d | 21d | 877 | FOH | 1 | OR |  |  |

| ID | WBS | Activity | Type | Duration | Start | Finish | Predecessors | Complete | Remaining | Planned start | Planned finish | Total float | Free float | MSP Activity ID | QTS - AREA | 05 -SUFFOLK - Building Phase | QTS - DASH | QTS - Subcontractor | QTS - Resp |
| --- | --- | --- | --- | --- | --- | --- | --- | --- | --- | --- | --- | --- | --- | --- | --- | --- | --- | --- | --- |
|  | 8 | **Corridor 0112 / Freedom Cafe 0105** |  |  | 2026-06-19 | 2026-11-03 |  |  |  |  |  |  |  |  |  |  |  |  |  |
| ADMIN.5263 |  | FOH/Corridor 0112 / Freedom Cafe 0105 // Frame Walls |  | 3d | 2026-06-19 A | 2026-06-23 A | ADMIN.5249 SS | 100% |  |  |  |  |  | 806 | FOH | 1 | OR |  |  |
| ADMIN.5264 |  | FOH/Corridor 0112 / Freedom Cafe 0105 // MEPF Layout of Overhead Supports |  | 8d | 2026-06-24 A | 2026-07-06 A | ADMIN.5263 | 100% |  | 2026-07-29 | 2026-08-07 |  |  | 852 | FOH | 1 | COR | HELIX | SM |
| ADMIN.5265 |  | FOH/Corridor 0112 / Freedom Cafe 0105 // Top Down Install of Sheetrock - Priority Walls |  | 2d | 2026-08-03 A | 2026-08-04 A | ADMIN.5264 | 100% |  | 2026-08-10 | 2026-08-11 |  |  | 809 | FOH | 1 | COR |  |  |
| ADMIN.5268 |  | FOH/Corridor 0112 / Freedom Cafe 0105 // MEPF In-wall rough-in |  | 2d | 2026-08-05 A | 2026-08-06 A | ADMIN.5265 | 100% |  | 2026-08-21 | 2026-08-24 |  |  | 873 | FOH | 1 | COR | HELIX | SM |
| ADMIN.5266 |  | FOH/Corridor 0112 / Freedom Cafe 0105 // Install MEPF Overhead Supports |  | 2d | 2026-09-01 A | 2026-09-02 A | ADMIN.5264 SS+2d | 100% |  | 2026-07-31 | 2026-08-03 |  |  | 851 | FOH | 1 | COR | HELIX | SM |
| ADMIN.5267 |  | FOH/Corridor 0112 / Freedom Cafe 0105 // MEPF Overhead Install |  | 10d | 2026-09-03 A | 2026-09-16 A | ADMIN.5266 | 100% |  | 2026-08-07 | 2026-08-20 |  |  | 853 | FOH | 1 | COR | HELIX | SM |
| ADMIN.5269 |  | FOH/Corridor 0112 / Freedom Cafe 0105 // Install Fire Alarm and Security |  | 3d | 2026-09-17 A | 2026-09-21 A | ADMIN.5267 | 100% |  | 2026-08-21 | 2026-08-25 |  |  | 873 | FOH | 1 | COR | HELIX | W |
| ADMIN.5270 |  | FOH/Corridor 0112 / Freedom Cafe 0105 // 1-Side & Finish Priority Walls |  | 2d | 2026-09-17 A | 2026-09-18 A | ADMIN.5268, ADMIN.5267, ADMIN.5265 | 100% |  | 2026-08-25 | 2026-08-26 |  |  | 816 | FOH | 1 | COR |  |  |
| ADMIN.5969 |  | FOH/Corridor 0112 / Freedom Cafe 0105 // BMS & EPMS Rough In |  | 2d | 2026-09-17 A | 2026-09-18 A | ADMIN.5269 SS, ADMIN.5269 FF | 100% |  | 2026-09-30 | 2026-10-01 |  |  |  | FOH |  |  |  |  |
| ADMIN.5271 |  | FOH/Corridor 0112 / Freedom Cafe 0105 // Tape and Finish Walls |  | 3d | 2026-09-21 A | 2026-09-22 A | ADMIN.5270 | 100% |  | 2026-08-27 | 2026-08-31 |  |  | 820 | FOH | 1 | COR |  |  |
| ADMIN.5272 |  | FOH/Corridor 0112 / Freedom Cafe 0105 // Final paint |  | 2d | 2026-10-14 | 2026-10-15 | ADMIN.5271, ADMIN.5269, ADMIN.5969 FF |  |  |  |  | 19d | 0d | 872 | FOH | 1 | COR |  |  |
| ADMIN.5273 |  | FOH/Corridor 0112 / Freedom Cafe 0105 // Install Flooring and Base |  | 3d | 2026-10-16 | 2026-10-20 | ADMIN.5272 |  |  |  |  | 19d | 0d | 874 | FOH | 1 | COR |  |  |
| ADMIN.5503 |  | FOH/Corridor 0112 / Freedom Cafe 0105 // Install Ceiling grid |  | 4d | 2026-10-21 | 2026-10-26 | ADMIN.5273, ADMIN.5270 |  |  |  |  | 19d | 0d | 873 | FOH | 1 | COR |  |  |
| ADMIN.5504 |  | FOH/Corridor 0112 / Freedom Cafe 0105 // Hang Hard-Lid Ceiling |  | 2d | 2026-10-27 | 2026-10-28 | ADMIN.5503 |  |  |  |  | 19d | 0d | 873 | FOH | 1 | COR |  |  |
| ADMIN.5505 |  | FOH/Corridor 0112 / Freedom Cafe 0105 // Hang / drop Ceiling trims |  | 2d | 2026-10-29 | 2026-10-30 | ADMIN.5504 |  |  |  |  | 19d | 0d | 873 | FOH | 1 | COR |  |  |
| ADMIN.5274 |  | FOH/Corridor 0112 / Freedom Cafe 0105 // Install Trim-Out |  | 1d | 2026-10-30 | 2026-10-30 | ADMIN.5505 FF, ADMIN.5273 |  |  |  |  | 19d | 0d | 876 | FOH | 1 | COR | HELIX | SM |
| ADMIN.5275 |  | FOH/Corridor 0112 / Freedom Cafe 0105 // Install Doors and Hardware |  | 1d | 2026-11-02 | 2026-11-02 | ADMIN.5274 |  |  |  |  | 19d | 0d | 837 | FOH | 1 | COR |  |  |
| ADMIN.5276 |  | FOH/Corridor 0112 / Freedom Cafe 0105 // Finish & Clean |  | 1d | 2026-11-03 | 2026-11-03 | ADMIN.5275, ADMIN.5274 |  |  |  |  | 19d | 21d | 877 | FOH | 1 | COR |  |  |
|  | 16 | **Conference 0103** |  |  | 2026-06-18 | 2026-11-06 |  |  |  |  |  |  |  |  |  |  |  |  |  |
| ADMIN.5277 |  | FOH/Conference 0103 // Frame Walls |  | 3d | 2026-06-18 A | 2026-06-23 A | ADMIN.5263 SS | 100% |  | 2026-06-19 | 2026-06-23 |  |  | 806 | FOH | 1 | OR |  |  |
| ADMIN.5278 |  | FOH/Conference 0103 // MEPF Layout of Overhead Supports |  | 8d | 2026-08-19 A | 2026-08-28 A | ADMIN.5277 | 100% |  | 2026-07-29 | 2026-08-07 |  |  | 852 | FOH | 1 | OR | HELIX | SM |
| ADMIN.5280 |  | FOH/Conference 0103 // Install MEPF Overhead Supports |  | 2d | 2026-08-31 A | 2026-09-01 A | ADMIN.5278 FS+2d | 100% |  | 2026-07-31 | 2026-08-03 |  |  | 851 | FOH | 1 | OR | HELIX | SM |
| ADMIN.5281 |  | FOH/Conference 0103 // MEPF Overhead Install |  | 10d | 2026-09-02 A | 2026-09-16 A | ADMIN.5280 | 100% |  | 2026-08-07 | 2026-08-20 |  |  | 853 | FOH | 1 | OR | HELIX | SM |
| ADMIN.5279 |  | FOH/Conference 0103 // Top Down Install of Sheetrock - Priority Walls |  | 2d | 2026-09-14 A | 2026-09-15 A | ADMIN.5278 | 100% |  | 2026-08-10 | 2026-08-11 |  |  | 809 | FOH | 1 | OR |  |  |
| ADMIN.5285 |  | FOH/Conference 0103 // Tape and Finish Walls |  | 3d | 2026-09-14 A | 2026-10-16 | ADMIN.5284 |  | 3d | 2026-08-27 | 2026-08-31 | 16d | 0d | 820 | FOH | 1 | OR |  |  |
| ADMIN.5282 |  | FOH/Conference 0103 // MEPF In-wall rough-in |  | 2d | 2026-09-17 A | 2026-09-18 A | ADMIN.5281 | 100% |  | 2026-08-21 | 2026-08-24 |  |  | 873 | FOH | 1 | OR | HELIX | SM |
| ADMIN.5283 |  | FOH/Conference 0103 // Install Fire Alarm and Security |  | 3d | 2026-09-17 A | 2026-09-21 A | ADMIN.5281 | 100% |  | 2026-08-21 | 2026-08-25 |  |  | 873 | FOH | 1 | OR | HELIX | W |
| ADMIN.5979 |  | FOH/Conference 0103 // BMS & EPMS Rough In |  | 2d | 2026-09-17 A | 2026-09-18 A | ADMIN.5283 SS, ADMIN.5283 FF | 100% |  | 2026-09-30 | 2026-10-01 |  |  |  | FOH |  |  |  |  |
| ADMIN.5284 |  | FOH/Conference 0103 // 1-Side & Finish Priority Walls |  | 2d | 2026-09-24 A | 2026-09-25 A | ADMIN.5282, ADMIN.5281, ADMIN.5279 | 100% |  | 2026-08-25 | 2026-08-26 |  |  | 816 | FOH | 1 | OR |  |  |
| ADMIN.5286 |  | FOH/Conference 0103 // Final paint |  | 2d | 2026-10-19 | 2026-10-20 | ADMIN.5285, ADMIN.5283, ADMIN.5979 FF |  |  |  |  | 16d | 0d | 872 | FOH | 1 | OR |  |  |
| ADMIN.5287 |  | FOH/Conference 0103 // Install Flooring and Base |  | 3d | 2026-10-21 | 2026-10-23 | ADMIN.5286 |  |  |  |  | 16d | 0d | 874 | FOH | 1 | OR |  |  |
| ADMIN.5479 |  | FOH/Conference 0103 // Install Ceiling grid |  | 4d | 2026-10-26 | 2026-10-29 | ADMIN.5287, ADMIN.5284 |  |  |  |  | 16d | 0d | 873 | FOH | 1 | OR |  |  |
| ADMIN.5480 |  | FOH/Conference 0103 // Hang / drop Ceiling tiles |  | 2d | 2026-10-30 | 2026-11-02 | ADMIN.5479 |  |  |  |  | 16d | 0d | 873 | FOH | 1 | OR |  |  |
| ADMIN.5481 |  | FOH/Conference 0103 // Hang / drop Ceiling trims |  | 2d | 2026-11-03 | 2026-11-04 | ADMIN.5480 |  |  |  |  | 16d | 0d | 873 | FOH | 1 | OR |  |  |
| ADMIN.5288 |  | FOH/Conference 0103 // Install Trim-Out |  | 1d | 2026-11-04 | 2026-11-04 | ADMIN.5481 FF, ADMIN.5287 |  |  |  |  | 16d | 0d | 876 | FOH | 1 | OR | HELIX | SM |
| ADMIN.5289 |  | FOH/Conference 0103 // Install Doors and Hardware |  | 1d | 2026-11-05 | 2026-11-05 | ADMIN.5770 SS, ADMIN.5288 |  |  |  |  | 16d | 0d | 837 | FOH | 1 | OR |  |  |
| ADMIN.5770 |  | FOH/Conference 0103 // FOH- Room Ready to Receive Equipment | milestone | 0d | 2026-11-05 | 2026-11-05 | ADMIN.5481 |  |  |  |  | 16d | 0d | 872 | FOH | 1 | OR | HELIX | SM |
| ADMIN.5290 |  | FOH/Conference 0103 // Finish & Clean |  | 1d | 2026-11-06 | 2026-11-06 | ADMIN.5289, ADMIN.5288 |  |  |  |  | 16d | 18d | 877 | FOH | 1 | OR |  |  |

| ID | WBS | Activity | Type | Duration | Start | Finish | Predecessors | Complete | Remaining | Planned start | Planned finish | Total float | Free float | MSP Activity ID | QTS - AREA | 05 -SUFFOLK - Building Phase | QTS - DASH | QTS - Subcontractor | QTS - Resp |
| --- | --- | --- | --- | --- | --- | --- | --- | --- | --- | --- | --- | --- | --- | --- | --- | --- | --- | --- | --- |
|  | 17 | **Conference 0102** |  |  | 2026-06-18 | 2026-11-03 |  |  |  |  |  |  |  |  |  |  |  |  |  |
| ADMIN.5291 |  | FOH/Conference 0102 // Frame Walls |  | 3d | 2026-06-18 A | 2026-06-22 A | ADMIN.5277 SS | 100% |  |  |  |  |  | 806 | FOH | 1 | OR |  |  |
| ADMIN.5293 |  | FOH/Conference 0102 // Top Down Install of Sheetrock - Priority Walls |  | 2d | 2026-06-23 A | 2026-06-24 A | ADMIN.5291 | 100% |  |  |  |  |  | 809 | FOH | 1 | OR |  |  |
| ADMIN.5292 |  | FOH/Conference 0102 // MEPF Layout of Overhead Supports |  | 8d | 2026-08-19 A | 2026-08-28 A | ADMIN.5291 | 100% |  | 2026-07-29 | 2026-08-07 |  |  | 852 | FOH | 1 | OR | HELIX | SM |
| ADMIN.5294 |  | FOH/Conference 0102 // Install MEPF Overhead Supports |  | 2d | 2026-08-31 A | 2026-09-01 A | ADMIN.5292 SS+2d | 100% |  | 2026-07-31 | 2026-08-03 |  |  | 851 | FOH | 1 | OR | HELIX | SM |
| ADMIN.5295 |  | FOH/Conference 0102 // MEPF Overhead Install |  | 10d | 2026-09-02 A | 2026-09-16 A | ADMIN.5294 SS+5d | 100% |  | 2026-08-07 | 2026-08-20 |  |  | 853 | FOH | 1 | OR | HELIX | SM |
| ADMIN.5299 |  | FOH/Conference 0102 // Tape and Finish Walls |  | 3d | 2026-09-14 A | 2026-10-14 | ADMIN.5298 | 100% | 0d | 2026-08-27 | 2026-08-31 | 19d | 0d | 820 | FOH | 1 | OR |  |  |
| ADMIN.5296 |  | FOH/Conference 0102 // MEPF In-wall rough-in |  | 2d | 2026-09-17 A | 2026-09-18 A | ADMIN.5295 | 100% |  | 2026-08-21 | 2026-08-24 |  |  | 873 | FOH | 1 | OR | HELIX | SM |
| ADMIN.5297 |  | FOH/Conference 0102 // Install Fire Alarm and Security |  | 3d | 2026-09-17 A | 2026-09-21 A | ADMIN.5295 | 100% |  | 2026-08-21 | 2026-08-25 |  |  | 873 | FOH | 1 | OR | HELIX | W |
| ADMIN.5989 |  | FOH/Conference 0102 // BMS & EPMS Rough In |  | 2d | 2026-09-17 A | 2026-09-18 A | ADMIN.5297 SS, ADMIN.5297 FF | 100% |  | 2026-09-30 | 2026-10-01 |  |  |  | FOH |  |  |  |  |
| ADMIN.5298 |  | FOH/Conference 0102 // 1-Side & Finish Priority Walls |  | 2d | 2026-09-24 A | 2026-09-25 A | ADMIN.5296, ADMIN.5295, ADMIN.5293 | 100% |  | 2026-08-25 | 2026-08-26 |  |  | 816 | FOH | 1 | OR |  |  |
| ADMIN.5300 |  | FOH/Conference 0102 // Final paint |  | 2d | 2026-10-14 | 2026-10-15 | ADMIN.5299, ADMIN.5297, ADMIN.5989 FF |  |  |  |  | 19d | 0d | 872 | FOH | 1 | OR |  |  |
| ADMIN.5301 |  | FOH/Conference 0102 // Install Flooring and Base |  | 3d | 2026-10-16 | 2026-10-20 | ADMIN.5300 |  |  |  |  | 19d | 0d | 874 | FOH | 1 | OR |  |  |
| ADMIN.5482 |  | FOH/Conference 0102 // Install Ceiling grid |  | 4d | 2026-10-21 | 2026-10-26 | ADMIN.5301, ADMIN.5298 |  |  |  |  | 19d | 0d | 873 | FOH | 1 | OR |  |  |
| ADMIN.5483 |  | FOH/Conference 0102 // Hang / drop Ceiling tiles |  | 2d | 2026-10-27 | 2026-10-28 | ADMIN.5482 |  |  |  |  | 19d | 0d | 873 | FOH | 1 | OR |  |  |
| ADMIN.5484 |  | FOH/Conference 0102 // Hang / drop Ceiling trims |  | 2d | 2026-10-29 | 2026-10-30 | ADMIN.5483 |  |  |  |  | 19d | 0d | 873 | FOH | 1 | OR |  |  |
| ADMIN.5302 |  | FOH/Conference 0102 // Install Trim-Out |  | 1d | 2026-10-30 | 2026-10-30 | ADMIN.5484 FF, ADMIN.5301 |  |  |  |  | 19d | 0d | 876 | FOH | 1 | OR | HELIX | SM |
| ADMIN.5303 |  | FOH/Conference 0102 // Install Doors and Hardware |  | 1d | 2026-11-02 | 2026-11-02 | ADMIN.5771 SS, ADMIN.5302 |  |  |  |  | 19d | 0d | 837 | FOH | 1 | OR |  |  |
| ADMIN.5771 |  | FOH/Conference 0102 // FOH- Room Ready to Receive Equipment | milestone | 0d | 2026-11-02 | 2026-11-02 | ADMIN.5484 |  |  |  |  | 19d | 0d | 872 | FOH | 1 | OR | HELIX | SM |
| ADMIN.5304 |  | FOH/Conference 0102 // Finish & Clean |  | 1d | 2026-11-03 | 2026-11-03 | ADMIN.5303, ADMIN.5302 |  |  |  |  | 19d | 21d | 877 | FOH | 1 | OR |  |  |
|  | 18 | **Lobby 0101 / Vestibule 0100** |  |  | 2026-07-16 | 2026-10-23 |  |  |  |  |  |  |  |  |  |  |  |  |  |
| ADMIN.5305 |  | FOH/Lobby 0101 / Vestibule 0100 // Frame Walls |  | 3d | 2026-07-16 A | 2026-07-20 A | ADMIN.5291 SS | 100% |  | 2026-07-29 | 2026-07-31 |  |  | 806 | FOH | 1 | OR |  |  |
| ADMIN.5306 |  | FOH/Lobby 0101 / Vestibule 0100 // MEPF Layout of Overhead Supports |  | 8d | 2026-07-21 A | 2026-07-30 A | ADMIN.5305 | 100% |  | 2026-08-03 | 2026-08-12 |  |  | 852 | FOH | 1 | OR | HELIX | SM |
| ADMIN.5307 |  | FOH/Lobby 0101 / Vestibule 0100 // Top Down Install of Sheetrock - Priority Walls |  | 2d | 2026-08-03 A | 2026-08-04 A | ADMIN.5306 | 100% |  | 2026-08-13 | 2026-08-14 |  |  | 809 | FOH | 1 | OR |  |  |
| ADMIN.5308 |  | FOH/Lobby 0101 / Vestibule 0100 // Install MEPF Overhead Supports |  | 2d | 2026-08-03 A | 2026-08-04 A | ADMIN.5306 SS+2d | 100% |  | 2026-08-05 | 2026-08-06 |  |  | 851 | FOH | 1 | OR | HELIX | SM |
| ADMIN.5310 |  | FOH/Lobby 0101 / Vestibule 0100 // MEPF In-wall rough-in |  | 2d | 2026-08-05 A | 2026-08-06 A | ADMIN.5307 | 100% |  | 2026-08-26 | 2026-08-27 |  |  | 873 | FOH | 1 | OR | HELIX | SM |
| ADMIN.5312 |  | FOH/Lobby 0101 / Vestibule 0100 // 1-Side & Finish Priority Walls |  | 2d | 2026-08-07 A | 2026-08-10 A | ADMIN.5310, ADMIN.5307 | 100% |  | 2026-08-28 | 2026-08-31 |  |  | 816 | FOH | 1 | OR |  |  |
| ADMIN.5313 |  | FOH/Lobby 0101 / Vestibule 0100 // Tape and Finish Walls |  | 3d | 2026-08-11 A | 2026-08-13 A | ADMIN.5312 | 100% |  | 2026-09-01 | 2026-09-03 |  |  | 820 | FOH | 1 | OR |  |  |
| ADMIN.5309 |  | FOH/Lobby 0101 / Vestibule 0100 // MEPF Overhead Install |  | 10d | 2026-08-25 A | 2026-09-29 A | ADMIN.5308 SS+5d | 100% |  | 2026-08-12 | 2026-08-25 |  |  | 853 | FOH | 1 | OR | HELIX | SM |
| ADMIN.5311 |  | FOH/Lobby 0101 / Vestibule 0100 // Install Fire Alarm and Security |  | 3d | 2026-09-09 A | 2026-09-11 A | ADMIN.5309 SS | 100% |  | 2026-08-26 | 2026-08-28 |  |  | 873 | FOH | 1 | OR | HELIX | W |
| ADMIN.5999 |  | FOH/Lobby 0101 / Vestibule 0100 // BMS & EPMS Rough In |  | 2d | 2026-09-09 A | 2026-09-10 A | ADMIN.5311 SS, ADMIN.5311 FF | 100% |  | 2026-09-30 | 2026-10-01 |  |  |  | FOH |  |  |  |  |
| ADMIN.5500 |  | FOH/Lobby 0101 / Vestibule 0100 // Install Ceiling grid |  | 4d | 2026-09-30 A | 2026-10-09 A | ADMIN.5312 | 100% |  | 2026-09-30 | 2026-10-05 |  |  | 873 | FOH | 1 | OR |  |  |
| ADMIN.5501 |  | FOH/Lobby 0101 / Vestibule 0100 // Hang Hard-Lid Ceiling |  | 2d | 2026-10-06 A | 2026-10-13 A | ADMIN.5500 | 100% |  | 2026-10-06 | 2026-10-07 |  |  | 873 | FOH | 1 | OR |  |  |
| ADMIN.5314 |  | FOH/Lobby 0101 / Vestibule 0100 // Final paint |  | 2d | 2026-10-14 | 2026-10-15 | ADMIN.5313, ADMIN.5311, ADMIN.5999 FF |  |  |  |  | 26d | 0d | 872 | FOH | 1 | OR |  |  |
| ADMIN.5502 |  | FOH/Lobby 0101 / Vestibule 0100 // Hang / drop Ceiling trims |  | 2d | 2026-10-14 | 2026-10-15 | ADMIN.5501 |  |  |  |  | 29d | 3d | 873 | FOH | 1 | OR |  |  |
| ADMIN.5315 |  | FOH/Lobby 0101 / Vestibule 0100 // Install Flooring and Base |  | 3d | 2026-10-16 | 2026-10-20 | ADMIN.5314 |  |  |  |  | 26d | 0d | 874 | FOH | 1 | OR |  |  |
| ADMIN.5316 |  | FOH/Lobby 0101 / Vestibule 0100 // Install Trim-Out |  | 1d | 2026-10-21 | 2026-10-21 | ADMIN.5502, ADMIN.5315 |  |  |  |  | 26d | 0d | 876 | FOH | 1 | OR | HELIX | SM |
| ADMIN.5317 |  | FOH/Lobby 0101 / Vestibule 0100 // Install Doors and Hardware |  | 1d | 2026-10-22 | 2026-10-22 | ADMIN.5316 |  |  |  |  | 26d | 0d | 837 | FOH | 1 | OR |  |  |
| ADMIN.5318 |  | FOH/Lobby 0101 / Vestibule 0100 // Finish & Clean |  | 1d | 2026-10-23 | 2026-10-23 | ADMIN.5317, ADMIN.5316 |  |  |  |  | 26d | 28d | 877 | FOH | 1 | OR |  |  |

| ID | WBS | Activity | Type | Duration | Start | Finish | Predecessors | Complete | Planned start | Planned finish | Total float | Free float | MSP Activity ID | QTS - AREA | 05 -SUFFOLK - Building Phase | QTS - DASH | QTS - Subcontractor | QTS - Resp |
| --- | --- | --- | --- | --- | --- | --- | --- | --- | --- | --- | --- | --- | --- | --- | --- | --- | --- | --- |
|  | 19 | **Badging 0152** |  |  | 2026-06-19 | 2026-11-03 |  |  |  |  |  |  |  |  |  |  |  |  |
| ADMIN.5319 |  | FOH/Badging 0152 // Frame Walls |  | 3d | 2026-06-19 A | 2026-06-23 A | ADMIN.5179 | 100% |  |  |  |  | 806 | FOH | 1 | OR |  |  |
| ADMIN.5321 |  | FOH/Badging 0152 // Top Down Install of Sheetrock - Priority Walls |  | 2d | 2026-06-23 A | 2026-06-24 A | ADMIN.5319 | 100% |  |  |  |  | 809 | FOH | 1 | OR |  |  |
| ADMIN.5320 |  | FOH/Badging 0152 // MEPF Layout of Overhead Supports |  | 8d | 2026-06-25 A | 2026-07-07 A | ADMIN.5319 | 100% | 2026-07-29 | 2026-08-07 |  |  | 852 | FOH | 1 | OR | HELIX | SM |
| ADMIN.5322 |  | FOH/Badging 0152 // Install MEPF Overhead Supports |  | 2d | 2026-07-09 A | 2026-07-10 A | ADMIN.5320 SS+2d | 100% | 2026-07-31 | 2026-08-03 |  |  | 851 | FOH | 1 | OR | HELIX | SM |
| ADMIN.5324 |  | FOH/Badging 0152 // MEPF In-wall rough-in |  | 2d | 2026-07-20 A | 2026-07-21 A | ADMIN.5320 | 100% | 2026-08-21 | 2026-08-24 |  |  | 873 | FOH | 1 | OR | HELIX | SM |
| ADMIN.5326 |  | FOH/Badging 0152 // 1-Side & Finish Priority Walls |  | 2d | 2026-07-23 A | 2026-07-24 A | ADMIN.5324, ADMIN.5321 | 100% | 2026-08-25 | 2026-08-26 |  |  | 816 | FOH | 1 | OR |  |  |
| ADMIN.5327 |  | FOH/Badging 0152 // Tape and Finish Walls |  | 3d | 2026-08-03 A | 2026-08-05 A | ADMIN.5326 | 100% | 2026-08-27 | 2026-08-31 |  |  | 820 | FOH | 1 | OR |  |  |
| ADMIN.5323 |  | FOH/Badging 0152 // MEPF Overhead Install |  | 10d | 2026-08-18 A | 2026-08-31 A | ADMIN.5322 | 100% | 2026-08-07 | 2026-08-20 |  |  | 853 | FOH | 1 | OR | HELIX | SM |
| ADMIN.5325 |  | FOH/Badging 0152 // Install Fire Alarm and Security |  | 3d | 2026-09-08 A | 2026-09-10 A | ADMIN.5323 | 100% | 2026-08-21 | 2026-08-25 |  |  | 873 | FOH | 1 | OR | HELIX | W |
| ADMIN.6009 |  | FOH/Badging 0152 // BMS & EPMS Rough In |  | 2d | 2026-09-08 A | 2026-09-09 A | ADMIN.5325 SS, ADMIN.5325 FF | 100% | 2026-09-30 | 2026-10-01 |  |  |  | FOH |  |  |  |  |
| ADMIN.5328 |  | FOH/Badging 0152 // Final paint |  | 2d | 2026-10-14 | 2026-10-15 | ADMIN.5327, ADMIN.5325, ADMIN.6009 FF |  |  |  | 19d | 0d | 872 | FOH | 1 | OR |  |  |
| ADMIN.5329 |  | FOH/Badging 0152 // Install Flooring and Base |  | 3d | 2026-10-16 | 2026-10-20 | ADMIN.5328 |  |  |  | 19d | 0d | 874 | FOH | 1 | OR |  |  |
| ADMIN.5485 |  | FOH/Badging 0152 // Install Ceiling grid |  | 4d | 2026-10-21 | 2026-10-26 | ADMIN.5329, ADMIN.5326 |  |  |  | 19d | 0d | 873 | FOH | 1 | OR |  |  |
| ADMIN.5486 |  | FOH/Badging 0152 // Hang / drop Ceiling tiles |  | 2d | 2026-10-27 | 2026-10-28 | ADMIN.5485 |  |  |  | 19d | 0d | 873 | FOH | 1 | OR |  |  |
| ADMIN.5487 |  | FOH/Badging 0152 // Hang / drop Ceiling trims |  | 2d | 2026-10-29 | 2026-10-30 | ADMIN.5486 |  |  |  | 19d | 0d | 873 | FOH | 1 | OR |  |  |
| ADMIN.5330 |  | FOH/Badging 0152 // Install Trim-Out |  | 1d | 2026-10-30 | 2026-10-30 | ADMIN.5487 FF, ADMIN.5329 |  |  |  | 19d | 0d | 876 | FOH | 1 | OR | HELIX | SM |
| ADMIN.5331 |  | FOH/Badging 0152 // Install Doors and Hardware |  | 1d | 2026-11-02 | 2026-11-02 | ADMIN.5772 SS, ADMIN.5330 |  |  |  | 19d | 0d | 837 | FOH | 1 | OR |  |  |
| ADMIN.5772 |  | FOH/Badging 0152 // FOH- Room Ready to Receive Equipment | milestone | 0d | 2026-11-02 | 2026-11-02 | ADMIN.5487 |  |  |  | 19d | 0d | 872 | FOH | 1 | OR | HELIX | SM |
| ADMIN.5332 |  | FOH/Badging 0152 // Finish & Clean |  | 1d | 2026-11-03 | 2026-11-03 | ADMIN.5331, ADMIN.5330 |  |  |  | 19d | 21d | 877 | FOH | 1 | OR |  |  |
|  | 20 | **Security Vestibule 0130/0131** |  |  | 2026-06-19 | 2026-11-04 |  |  |  |  |  |  |  |  |  |  |  |  |
| ADMIN.5333 |  | FOH/Security Vestibule 0130/0131 // Frame Walls |  | 3d | 2026-06-19 A | 2026-06-23 A | ADMIN.5319 SS | 100% |  |  |  |  | 806 | FOH | 1 | OR |  |  |
| ADMIN.5335 |  | FOH/Security Vestibule 0130/0131 // Top Down Install of Sheetrock - Priority Walls |  | 2d | 2026-06-23 A | 2026-06-24 A | ADMIN.5333 | 100% |  |  |  |  | 809 | FOH | 1 | OR |  |  |
| ADMIN.5334 |  | FOH/Security Vestibule 0130/0131 // MEPF Layout of Overhead Supports |  | 8d | 2026-07-02 A | 2026-07-14 A | ADMIN.5333 | 100% | 2026-07-29 | 2026-08-07 |  |  | 852 | FOH | 1 | OR | HELIX | SM |
| ADMIN.5336 |  | FOH/Security Vestibule 0130/0131 // Install MEPF Overhead Supports |  | 2d | 2026-07-06 A | 2026-07-07 A | ADMIN.5334 SS+2d | 100% | 2026-07-31 | 2026-08-03 |  |  | 851 | FOH | 1 | OR | HELIX | SM |
| ADMIN.5338 |  | FOH/Security Vestibule 0130/0131 // MEPF In-wall rough-in |  | 2d | 2026-08-03 A | 2026-08-04 A | ADMIN.5335 | 100% | 2026-08-21 | 2026-08-24 |  |  | 873 | FOH | 1 | OR | HELIX | SM |
| ADMIN.5340 |  | FOH/Security Vestibule 0130/0131 // 1-Side & Finish Priority Walls |  | 2d | 2026-08-05 A | 2026-08-06 A | ADMIN.5338, ADMIN.5335 | 100% | 2026-08-25 | 2026-08-26 |  |  | 816 | FOH | 1 | OR |  |  |
| ADMIN.5341 |  | FOH/Security Vestibule 0130/0131 // Tape and Finish Walls |  | 3d | 2026-08-06 A | 2026-08-10 A | ADMIN.5340 | 100% | 2026-08-27 | 2026-08-31 |  |  | 820 | FOH | 1 | OR |  |  |
| ADMIN.5337 |  | FOH/Security Vestibule 0130/0131 // MEPF Overhead Install |  | 10d | 2026-08-24 A | 2026-09-04 A | ADMIN.5336 | 100% | 2026-08-07 | 2026-08-20 |  |  | 853 | FOH | 1 | OR | HELIX | SM |
| ADMIN.5339 |  | FOH/Security Vestibule 0130/0131 // Install Fire Alarm and Security |  | 3d | 2026-09-08 A | 2026-09-10 A | ADMIN.5337 | 100% | 2026-08-21 | 2026-08-25 |  |  | 873 | FOH | 1 | OR | HELIX | W |
| ADMIN.6019 |  | FOH/Security Vestibule 0130/0131 // BMS & EPMS Rough In |  | 2d | 2026-09-08 A | 2026-09-09 A | ADMIN.5339 SS, ADMIN.5339 FF | 100% | 2026-09-30 | 2026-10-01 |  |  |  | FOH |  |  |  |  |
| ADMIN.5342 |  | FOH/Security Vestibule 0130/0131 // Final paint |  | 2d | 2026-10-14 | 2026-10-15 | ADMIN.5341, ADMIN.5339, ADMIN.6019 FF |  |  |  | 18d | 0d | 872 | FOH | 1 | OR |  |  |
| ADMIN.5343 |  | FOH/Security Vestibule 0130/0131 // Install Flooring and Base |  | 3d | 2026-10-16 | 2026-10-20 | ADMIN.5342 |  |  |  | 18d | 0d | 874 | FOH | 1 | OR |  |  |
| ADMIN.5488 |  | FOH/Security Vestibule 0130/0131 // Install Ceiling grid |  | 4d | 2026-10-21 | 2026-10-26 | ADMIN.5343, ADMIN.5340 |  |  |  | 18d | 0d | 873 | FOH | 1 | OR |  |  |
| ADMIN.5489 |  | FOH/Security Vestibule 0130/0131 // Hang / drop Ceiling tiles |  | 2d | 2026-10-27 | 2026-10-28 | ADMIN.5488 |  |  |  | 18d | 0d | 873 | FOH | 1 | OR |  |  |
| ADMIN.5490 |  | FOH/Security Vestibule 0130/0131 // Hang / drop Ceiling trims |  | 2d | 2026-10-29 | 2026-10-30 | ADMIN.5489 |  |  |  | 18d | 0d | 873 | FOH | 1 | OR |  |  |
| ADMIN.5344 |  | FOH/Security Vestibule 0130/0131 // Install Trim-Out |  | 1d | 2026-11-02 | 2026-11-02 | ADMIN.5490, ADMIN.5343 |  |  |  | 18d | 0d | 876 | FOH | 1 | OR | HELIX | SM |
| ADMIN.5345 |  | FOH/Security Vestibule 0130/0131 // Install Doors and Hardware |  | 1d | 2026-11-03 | 2026-11-03 | ADMIN.5344 |  |  |  | 18d | 0d | 837 | FOH | 1 | OR |  |  |
| ADMIN.5346 |  | FOH/Security Vestibule 0130/0131 // Finish & Clean |  | 1d | 2026-11-04 | 2026-11-04 | ADMIN.5345, ADMIN.5344 |  |  |  | 18d | 20d | 877 | FOH | 1 | OR |  |  |

| ID | WBS | Activity | Duration | Start | Finish | Predecessors | Complete | Planned start | Planned finish | Total float | Free float | MSP Activity ID | QTS - AREA | 05 -SUFFOLK - Building Phase | QTS - DASH | QTS - Subcontractor | QTS - Resp |
| --- | --- | --- | --- | --- | --- | --- | --- | --- | --- | --- | --- | --- | --- | --- | --- | --- | --- |
|  | 21 | **Security Office 0155** |  | 2026-06-19 | 2026-11-03 |  |  |  |  |  |  |  |  |  |  |  |  |
| ADMIN.5347 |  | FOH/Security Office 0155 // Frame Walls | 3d | 2026-06-19 A | 2026-06-23 A | ADMIN.5333 SS | 100% |  |  |  |  | 806 | FOH | 1 | OR |  |  |
| ADMIN.5349 |  | FOH/Security Office 0155 // Top Down Install of Sheetrock - Priority Walls | 2d | 2026-06-23 A | 2026-06-24 A | ADMIN.5347 | 100% |  |  |  |  | 809 | FOH | 1 | OR |  |  |
| ADMIN.5348 |  | FOH/Security Office 0155 // MEPF Layout of Overhead Supports | 8d | 2026-06-29 A | 2026-07-09 A | ADMIN.5347 | 100% | 2026-07-29 | 2026-08-07 |  |  | 852 | FOH | 1 | OR | HELIX | SM |
| ADMIN.5350 |  | FOH/Security Office 0155 // Install MEPF Overhead Supports | 2d | 2026-07-06 A | 2026-07-07 A | ADMIN.5348 SS+2d | 100% | 2026-07-31 | 2026-08-03 |  |  | 851 | FOH | 1 | OR | HELIX | SM |
| ADMIN.5352 |  | FOH/Security Office 0155 // MEPF In-wall rough-in | 2d | 2026-07-16 A | 2026-07-17 A | ADMIN.5350 | 100% | 2026-08-21 | 2026-08-24 |  |  | 873 | FOH | 1 | OR | HELIX | SM |
| ADMIN.5354 |  | FOH/Security Office 0155 // 1-Side & Finish Priority Walls | 2d | 2026-08-03 A | 2026-08-04 A | ADMIN.5352, ADMIN.5349 | 100% | 2026-08-25 | 2026-08-26 |  |  | 816 | FOH | 1 | OR |  |  |
| ADMIN.5355 |  | FOH/Security Office 0155 // Tape and Finish Walls | 3d | 2026-08-05 A | 2026-08-07 A | ADMIN.5354 | 100% | 2026-08-27 | 2026-08-31 |  |  | 820 | FOH | 1 | OR |  |  |
| ADMIN.5351 |  | FOH/Security Office 0155 // MEPF Overhead Install | 10d | 2026-08-18 A | 2026-08-31 A | ADMIN.5350 | 100% | 2026-08-07 | 2026-08-20 |  |  | 853 | FOH | 1 | OR | HELIX | SM |
| ADMIN.5353 |  | FOH/Security Office 0155 // Install Fire Alarm and Security | 3d | 2026-09-03 A | 2026-09-08 A | ADMIN.5351 | 100% | 2026-08-21 | 2026-08-25 |  |  | 873 | FOH | 1 | OR | HELIX | W |
| ADMIN.6029 |  | FOH/Security Office 0155 // BMS & EPMS Rough In | 2d | 2026-09-03 A | 2026-09-04 A | ADMIN.5353 SS, ADMIN.5353 FF | 100% | 2026-09-30 | 2026-10-01 |  |  |  | FOH |  |  |  |  |
| ADMIN.5356 |  | FOH/Security Office 0155 // Final paint | 2d | 2026-10-14 | 2026-10-15 | ADMIN.5355, ADMIN.5353, ADMIN.6029 FF |  |  |  | 19d | 0d | 872 | FOH | 1 | OR |  |  |
| ADMIN.5357 |  | FOH/Security Office 0155 // Install Flooring and Base | 3d | 2026-10-16 | 2026-10-20 | ADMIN.5356 |  |  |  | 19d | 0d | 874 | FOH | 1 | OR |  |  |
| ADMIN.5491 |  | FOH/Security Office 0155 // Install Ceiling grid | 4d | 2026-10-21 | 2026-10-26 | ADMIN.5357, ADMIN.5354 |  |  |  | 19d | 0d | 873 | FOH | 1 | OR |  |  |
| ADMIN.5492 |  | FOH/Security Office 0155 // Hang / drop Ceiling tiles | 2d | 2026-10-27 | 2026-10-28 | ADMIN.5491 |  |  |  | 19d | 0d | 873 | FOH | 1 | OR |  |  |
| ADMIN.5493 |  | FOH/Security Office 0155 // Hang / drop Ceiling trims | 2d | 2026-10-29 | 2026-10-30 | ADMIN.5492 |  |  |  | 19d | 0d | 873 | FOH | 1 | OR |  |  |
| ADMIN.5358 |  | FOH/Security Office 0155 // Install Trim-Out | 1d | 2026-10-30 | 2026-10-30 | ADMIN.5493 FF, ADMIN.5357 |  |  |  | 19d | 0d | 876 | FOH | 1 | OR | HELIX | SM |
| ADMIN.5359 |  | FOH/Security Office 0155 // Install Doors and Hardware | 1d | 2026-11-02 | 2026-11-02 | ADMIN.5358 |  |  |  | 19d | 0d | 837 | FOH | 1 | OR |  |  |
| ADMIN.5360 |  | FOH/Security Office 0155 // Finish & Clean | 1d | 2026-11-03 | 2026-11-03 | ADMIN.5359, ADMIN.5358 |  |  |  | 19d | 21d | 877 | FOH | 1 | OR |  |  |
|  | 22 | **Security Suite 0150** |  | 2026-06-19 | 2026-11-03 |  |  |  |  |  |  |  |  |  |  |  |  |
| ADMIN.5361 |  | FOH/Security Suite 0150 // Frame Walls | 3d | 2026-06-19 A | 2026-06-23 A | ADMIN.5347 SS | 100% |  |  |  |  | 806 | FOH | 1 | OR |  |  |
| ADMIN.5363 |  | FOH/Security Suite 0150 // Top Down Install of Sheetrock - Priority Walls | 2d | 2026-06-23 A | 2026-06-24 A | ADMIN.5361 | 100% |  |  |  |  | 809 | FOH | 1 | OR |  |  |
| ADMIN.5362 |  | FOH/Security Suite 0150 // MEPF Layout of Overhead Supports | 8d | 2026-06-26 A | 2026-07-08 A | ADMIN.5361 | 100% | 2026-07-29 | 2026-08-07 |  |  | 852 | FOH | 1 | OR | HELIX | SM |
| ADMIN.5364 |  | FOH/Security Suite 0150 // Install MEPF Overhead Supports | 2d | 2026-07-02 A | 2026-07-06 A | ADMIN.5362 SS+2d | 100% | 2026-07-31 | 2026-08-03 |  |  | 851 | FOH | 1 | OR | HELIX | SM |
| ADMIN.5366 |  | FOH/Security Suite 0150 // MEPF In-wall rough-in | 2d | 2026-07-09 A | 2026-07-10 A | ADMIN.5363 | 100% | 2026-08-21 | 2026-08-24 |  |  | 873 | FOH | 1 | OR | HELIX | SM |
| ADMIN.5368 |  | FOH/Security Suite 0150 // 1-Side & Finish Priority Walls | 2d | 2026-07-13 A | 2026-07-14 A | ADMIN.5366, ADMIN.5363 | 100% | 2026-08-25 | 2026-08-26 |  |  | 816 | FOH | 1 | OR |  |  |
| ADMIN.5369 |  | FOH/Security Suite 0150 // Tape and Finish Walls | 3d | 2026-08-03 A | 2026-08-05 A | ADMIN.5368 | 100% | 2026-08-27 | 2026-08-31 |  |  | 820 | FOH | 1 | OR |  |  |
| ADMIN.5365 |  | FOH/Security Suite 0150 // MEPF Overhead Install | 10d | 2026-08-24 A | 2026-09-04 A | ADMIN.5364 | 100% | 2026-08-07 | 2026-08-20 |  |  | 853 | FOH | 1 | OR | HELIX | SM |
| ADMIN.5367 |  | FOH/Security Suite 0150 // Install Fire Alarm and Security | 3d | 2026-09-08 A | 2026-09-10 A | ADMIN.5365 | 100% | 2026-08-21 | 2026-08-25 |  |  | 873 | FOH | 1 | OR | HELIX | W |
| ADMIN.6039 |  | FOH/Security Suite 0150 // BMS & EPMS Rough In | 2d | 2026-09-08 A | 2026-09-09 A | ADMIN.5367 SS, ADMIN.5367 FF | 100% | 2026-09-30 | 2026-10-01 |  |  |  | FOH |  |  |  |  |
| ADMIN.5370 |  | FOH/Security Suite 0150 // Final paint | 2d | 2026-10-14 | 2026-10-15 | ADMIN.5369, ADMIN.5367, ADMIN.6039 FF |  |  |  | 19d | 0d | 872 | FOH | 1 | OR |  |  |
| ADMIN.5371 |  | FOH/Security Suite 0150 // Install Flooring and Base | 3d | 2026-10-16 | 2026-10-20 | ADMIN.5370 |  |  |  | 19d | 0d | 874 | FOH | 1 | OR |  |  |
| ADMIN.5494 |  | FOH/Security Suite 0150 // Install Ceiling grid | 4d | 2026-10-21 | 2026-10-26 | ADMIN.5371, ADMIN.5368 |  |  |  | 19d | 0d | 873 | FOH | 1 | OR |  |  |
| ADMIN.5495 |  | FOH/Security Suite 0150 // Hang / drop Ceiling tiles | 2d | 2026-10-27 | 2026-10-28 | ADMIN.5494 |  |  |  | 19d | 0d | 873 | FOH | 1 | OR |  |  |
| ADMIN.5496 |  | FOH/Security Suite 0150 // Hang / drop Ceiling trims | 2d | 2026-10-29 | 2026-10-30 | ADMIN.5495 |  |  |  | 19d | 0d | 873 | FOH | 1 | OR |  |  |
| ADMIN.5372 |  | FOH/Security Suite 0150 // Install Trim-Out | 1d | 2026-10-30 | 2026-10-30 | ADMIN.5496 FF, ADMIN.5371 |  |  |  | 19d | 0d | 876 | FOH | 1 | OR | HELIX | SM |
| ADMIN.5373 |  | FOH/Security Suite 0150 // Install Doors and Hardware | 1d | 2026-11-02 | 2026-11-02 | ADMIN.5372 |  |  |  | 19d | 0d | 837 | FOH | 1 | OR |  |  |
| ADMIN.5374 |  | FOH/Security Suite 0150 // Finish & Clean | 1d | 2026-11-03 | 2026-11-03 | ADMIN.5373, ADMIN.5372 |  |  |  | 19d | 21d | 877 | FOH | 1 | OR |  |  |

| ID | WBS | Activity | Duration | Start | Finish | Predecessors | Complete | Planned start | Planned finish | Total float | Free float | MSP Activity ID | QTS - Subcontractor | QTS - AREA | QTS - Resp | 05 -SUFFOLK - Building Phase | 12 - SUFFOLK - Export_to_Procore | QTS - DASH |
| --- | --- | --- | --- | --- | --- | --- | --- | --- | --- | --- | --- | --- | --- | --- | --- | --- | --- | --- |
|  | 24 | **Security Storage 0151** |  | 2026-06-18 | 2026-11-03 |  |  |  |  |  |  |  |  |  |  |  |  |  |
| ADMIN.5390 |  | FOH/Security Storage 0151 // MEPF Layout of Overhead Supports | 3d | 2026-06-18 A | 2026-06-22 A | ADMIN.5389 | 100% |  |  |  |  | 852 | HELIX | FOH | SM | 1 | Y | OR |
| ADMIN.5389 |  | FOH/Security Storage 0151 // Frame Walls | 3d | 2026-06-19 A | 2026-06-23 A | ADMIN.5375 SS | 100% |  |  |  |  | 806 |  | FOH |  | 1 | Y | OR |
| ADMIN.5392 |  | FOH/Security Storage 0151 // Install MEPF Overhead Supports | 2d | 2026-06-19 A | 2026-07-23 A | ADMIN.5390 SS+2d | 100% | 2026-06-19 | 2026-06-22 |  |  | 851 | HELIX | FOH | SM | 1 | Y | OR |
| ADMIN.5391 |  | FOH/Security Storage 0151 // Top Down Install of Sheetrock - Priority Walls | 2d | 2026-07-02 A | 2026-07-06 A | ADMIN.5390 | 100% | 2026-07-24 | 2026-07-27 |  |  | 809 |  | FOH |  | 1 | Y | OR |
| ADMIN.5394 |  | FOH/Security Storage 0151 // MEPF In-wall rough-in | 2d | 2026-07-07 A | 2026-07-08 A | ADMIN.5391 | 100% | 2026-08-07 | 2026-08-10 |  |  | 873 | HELIX | FOH | SM | 1 | Y | OR |
| ADMIN.5396 |  | FOH/Security Storage 0151 // 1-Side & Finish Priority Walls | 2d | 2026-07-24 A | 2026-07-27 A | ADMIN.5394, ADMIN.5391 | 100% | 2026-08-11 | 2026-08-12 |  |  | 816 |  | FOH |  | 1 | Y | OR |
| ADMIN.5397 |  | FOH/Security Storage 0151 // Tape and Finish Walls | 3d | 2026-08-03 A | 2026-08-05 A | ADMIN.5396 | 100% | 2026-08-13 | 2026-08-17 |  |  | 820 |  | FOH |  | 1 | Y | OR |
| ADMIN.5393 |  | FOH/Security Storage 0151 // MEPF Overhead Install | 10d | 2026-08-20 A | 2026-09-04 A | ADMIN.5392 SS+5d | 100% | 2026-07-24 | 2026-08-06 |  |  | 853 | HELIX | FOH | SM | 1 | Y | OR |
| ADMIN.5395 |  | FOH/Security Storage 0151 // Install Fire Alarm and Security | 3d | 2026-09-08 A | 2026-09-10 A | ADMIN.5393 | 100% | 2026-08-07 | 2026-08-11 |  |  | 873 | HELIX | FOH | W | 1 | Y | OR |
| ADMIN.6049 |  | FOH/Security Storage 0151 // BMS & EPMS Rough In | 2d | 2026-09-08 A | 2026-09-09 A | ADMIN.5395 SS, ADMIN.5395 FF | 100% | 2026-09-30 | 2026-10-01 |  |  |  |  | FOH |  |  |  |  |
| ADMIN.5398 |  | FOH/Security Storage 0151 // Final paint | 2d | 2026-10-14 | 2026-10-15 | ADMIN.5397, ADMIN.5395, ADMIN.6049 FF |  |  |  | 26d | 0d | 872 |  | FOH |  | 1 | Y | OR |
| ADMIN.5399 |  | FOH/Security Storage 0151 // Install Flooring and Base | 3d | 2026-10-16 | 2026-10-20 | ADMIN.5398 |  |  |  | 26d | 0d | 874 |  | FOH |  | 1 |  | OR |
| ADMIN.5400 |  | FOH/Security Storage 0151 // Install Trim-Out | 1d | 2026-10-21 | 2026-10-21 | ADMIN.5399 |  |  |  | 26d | 7d | 876 | HELIX | FOH | SM | 1 |  | OR |
| ADMIN.5401 |  | FOH/Security Storage 0151 // Install Doors and Hardware | 1d | 2026-11-02 | 2026-11-02 | ADMIN.5372, ADMIN.5400 |  |  |  | 19d | 0d | 837 |  | FOH |  | 1 |  | OR |
| ADMIN.5402 |  | FOH/Security Storage 0151 // Finish & Clean | 1d | 2026-11-03 | 2026-11-03 | ADMIN.5401, ADMIN.5400 |  |  |  | 19d | 21d | 877 |  | FOH |  | 1 |  | OR |
|  | 25 | **RR Dock 0163** |  | 2026-06-10 | 2026-11-03 |  |  |  |  |  |  |  |  |  |  |  |  |  |
| ADMIN.5404 |  | FOH/RR Dock 0163 // MEPF Layout of Overhead Supports | 10d | 2026-06-10 A | 2026-06-23 A | ADMIN.5403 | 100% |  |  |  |  | 852 | HELIX | FOH | SM | 1 | Y | OR |
| ADMIN.5406 |  | FOH/RR Dock 0163 // Install MEPF Overhead Supports | 2d | 2026-06-11 A | 2026-06-23 A | ADMIN.5404 SS+2d | 100% | 2026-06-11 | 2026-06-12 |  |  | 851 | HELIX | FOH | SM | 1 | Y | OR |
| ADMIN.5403 |  | FOH/RR Dock 0163 // Frame Walls | 3d | 2026-06-19 A | 2026-06-23 A | ADMIN.5389 SS | 100% |  |  |  |  | 806 |  | FOH |  | 1 | Y | OR |
| ADMIN.5405 |  | FOH/RR Dock 0163 // Top Down Install of Sheetrock - Priority Walls | 2d | 2026-07-06 A | 2026-07-07 A | ADMIN.5404 | 100% | 2026-07-24 | 2026-07-27 |  |  | 809 |  | FOH |  | 1 | Y | OR |
| ADMIN.5408 |  | FOH/RR Dock 0163 // MEPF In-wall rough-in | 2d | 2026-07-09 A | 2026-07-10 A | ADMIN.5403, ADMIN.5405 | 100% | 2026-08-07 | 2026-08-10 |  |  | 873 | HELIX | FOH | SM | 1 | Y | OR |
| ADMIN.5407 |  | FOH/RR Dock 0163 // MEPF Overhead Install | 10d | 2026-08-31 A | 2026-09-14 A | ADMIN.5406 | 100% | 2026-07-24 | 2026-08-06 |  |  | 853 | HELIX | FOH | SM | 1 | Y | OR |
| ADMIN.5409 |  | FOH/RR Dock 0163 // Install Fire Alarm and Security | 3d | 2026-09-15 A | 2026-09-17 A | ADMIN.5407 | 100% | 2026-08-07 | 2026-08-11 |  |  | 873 | HELIX | FOH | W | 1 | Y | OR |
| ADMIN.6059 |  | FOH/RR Dock 0163 // BMS & EPMS Rough In | 2d | 2026-09-15 A | 2026-09-16 A | ADMIN.5409 SS, ADMIN.5409 FF | 100% | 2026-09-30 | 2026-10-01 |  |  |  |  | FOH |  |  |  |  |
| ADMIN.5410 |  | FOH/RR Dock 0163 // 1-Side & Finish Priority Walls | 2d | 2026-09-24 A | 2026-09-25 A | ADMIN.5408, ADMIN.5407, ADMIN.5405 | 100% | 2026-08-11 | 2026-08-12 |  |  | 816 |  | FOH |  | 1 | Y | OR |
| ADMIN.5411 |  | FOH/RR Dock 0163 // Tape and Finish Walls | 3d | 2026-09-28 A | 2026-09-29 A | ADMIN.5410 | 100% | 2026-08-13 | 2026-08-17 |  |  | 820 |  | FOH |  | 1 | Y | OR |
| ADMIN.5412 |  | FOH/RR Dock 0163 // Final paint | 2d | 2026-10-14 | 2026-10-15 | ADMIN.5411, ADMIN.5409, ADMIN.6059 FF |  |  |  | 26d | 0d | 872 |  | FOH |  | 1 | Y | OR |
| ADMIN.5413 |  | FOH/RR Dock 0163 // Install Flooring and Base | 3d | 2026-10-16 | 2026-10-20 | ADMIN.5412 |  |  |  | 26d | 0d | 874 |  | FOH |  | 1 |  | OR |
| ADMIN.5414 |  | FOH/RR Dock 0163 // Install Trim-Out | 1d | 2026-10-21 | 2026-10-21 | ADMIN.5413 |  |  |  | 26d | 7d | 876 | HELIX | FOH | SM | 1 |  | OR |
| ADMIN.5415 |  | FOH/RR Dock 0163 // Install Doors and Hardware | 1d | 2026-11-02 | 2026-11-02 | ADMIN.5372, ADMIN.5414 |  |  |  | 19d | 0d | 837 |  | FOH |  | 1 |  | OR |
| ADMIN.5416 |  | FOH/RR Dock 0163 // Finish & Clean | 1d | 2026-11-03 | 2026-11-03 | ADMIN.5415, ADMIN.5414 |  |  |  | 19d | 21d | 877 |  | FOH |  | 1 |  | OR |

| ID | WBS | Activity | Type | Duration | Start | Finish | Predecessors | Complete | Remaining | Planned start | Planned finish | Total float | Free float | MSP Activity ID | QTS - Subcontractor | QTS - AREA | QTS - Resp | 05 -SUFFOLK - Building Phase | 12 - SUFFOLK - Export_to_Procore | QTS - DASH | MBTA: Work Type |
| --- | --- | --- | --- | --- | --- | --- | --- | --- | --- | --- | --- | --- | --- | --- | --- | --- | --- | --- | --- | --- | --- |
|  | 26 | **Dock Storage 0162** |  |  | 2026-06-18 | 2026-10-26 |  |  |  |  |  |  |  |  |  |  |  |  |  |  |  |
| ADMIN.5418 |  | FOH/Dock Storage 0162 // MEPF Layout of Overhead Supports |  | 3d | 2026-06-18 A | 2026-06-22 A | ADMIN.5417 | 100% |  |  |  |  |  | 852 | HELIX | FOH | SM | 1 | Y | OR |  |
| ADMIN.5417 |  | FOH/Dock Storage 0162 // Frame Walls |  | 3d | 2026-06-19 A | 2026-06-23 A | ADMIN.5403 SS | 100% |  |  |  |  |  | 806 |  | FOH |  | 1 | Y | OR |  |
| ADMIN.5420 |  | FOH/Dock Storage 0162 // Install MEPF Overhead Supports |  | 2d | 2026-06-19 A | 2026-07-23 A | ADMIN.5418 SS | 100% |  | 2026-06-19 | 2026-06-22 |  |  | 851 | HELIX | FOH | SM | 1 | Y | OR |  |
| ADMIN.5422 |  | FOH/Dock Storage 0162 // MEPF In-wall rough-in |  | 2d | 2026-06-24 A | 2026-07-02 A | ADMIN.5420 | 100% |  | 2026-06-24 | 2026-06-25 |  |  | 873 | HELIX | FOH | SM | 1 | Y | OR |  |
| ADMIN.5423 |  | FOH/Dock Storage 0162 // Install Fire Alarm and Security |  | 3d | 2026-06-24 A | 2026-09-02 A | ADMIN.5420 | 100% |  | 2026-06-24 | 2026-06-26 |  |  | 873 | HELIX | FOH | W | 1 | Y | OR |  |
| ADMIN.5419 |  | FOH/Dock Storage 0162 // Top Down Install of Sheetrock - Priority Walls |  | 2d | 2026-07-06 A | 2026-07-07 A | ADMIN.5418 | 100% |  | 2026-07-24 | 2026-07-27 |  |  | 809 |  | FOH |  | 1 | Y | OR |  |
| ADMIN.5424 |  | FOH/Dock Storage 0162 // 1-Side & Finish Priority Walls |  | 2d | 2026-07-16 A | 2026-07-17 A | ADMIN.5422, ADMIN.5419 | 100% |  | 2026-08-11 | 2026-08-12 |  |  | 816 |  | FOH |  | 1 | Y | OR |  |
| ADMIN.5425 |  | FOH/Dock Storage 0162 // Tape and Finish Walls |  | 3d | 2026-08-04 A | 2026-08-06 A | ADMIN.5424 | 100% |  | 2026-08-13 | 2026-08-17 |  |  | 820 |  | FOH |  | 1 | Y | OR |  |
| ADMIN.5421 |  | FOH/Dock Storage 0162 // MEPF Overhead Install |  | 10d | 2026-08-24 A | 2026-09-29 A | ADMIN.5420 | 100% |  | 2026-07-24 | 2026-08-06 |  |  | 853 | HELIX | FOH | SM | 1 | Y | OR |  |
| ADMIN.5428 |  | FOH/Dock Storage 0162 // Install Trim-Out |  | 1d | 2026-09-08 A | 2026-09-08 A | ADMIN.5423 | 100% |  | 2026-08-25 | 2026-08-25 |  |  | 876 | HELIX | FOH | SM | 1 |  | OR |  |
| ADMIN.6069 |  | FOH/Dock Storage 0162 // BMS & EPMS Rough In |  | 2d | 2026-10-14 | 2026-10-15 | ADMIN.5423, ADMIN.5423 FF |  |  |  |  | 25d | 0d |  |  | FOH |  |  |  |  |  |
| ADMIN.5426 |  | FOH/Dock Storage 0162 // Final paint |  | 2d | 2026-10-16 | 2026-10-19 | ADMIN.6069, ADMIN.5425, ADMIN.5423 |  |  |  |  | 25d | 0d | 872 |  | FOH |  | 1 | Y | OR |  |
| ADMIN.5427 |  | FOH/Dock Storage 0162 // Install Flooring and Base |  | 3d | 2026-10-20 | 2026-10-22 | ADMIN.5426 |  |  |  |  | 25d | 0d | 874 |  | FOH |  | 1 | Y | OR |  |
| ADMIN.5429 |  | FOH/Dock Storage 0162 // Install Doors and Hardware |  | 1d | 2026-10-23 | 2026-10-23 | ADMIN.5428, ADMIN.5427 |  |  |  |  | 25d | 0d | 837 |  | FOH |  | 1 |  | OR |  |
| ADMIN.5430 |  | FOH/Dock Storage 0162 // Finish & Clean |  | 1d | 2026-10-26 | 2026-10-26 | ADMIN.5421, ADMIN.5429, ADMIN.5428 |  |  |  |  | 25d | 27d | 877 |  | FOH |  | 1 |  | OR |  |
|  | 27 | **Loading Dock 0160** |  |  | 2026-06-24 | 2026-12-04 |  |  |  |  |  |  |  |  |  |  |  |  |  |  |  |
| DH1300.LD.2012 |  | FOH / Loading Dock #0160 // Overhead Fire Protection |  | 5d | 2026-06-24 A | 2026-06-30 A | ADMIN.5222 | 100% |  | 2026-07-29 | 2026-08-04 |  |  |  |  | FOH |  |  |  | OR | Con/Install |
| DH1300.LD.2013 |  | FOH / Loading Dock #0160 // Overhead Mechanical Piping |  | 5d | 2026-06-30 A | 2026-07-07 A | DH1300.LD.2012 | 100% |  | 2026-08-05 | 2026-08-11 |  |  |  |  | FOH |  |  |  | OR | Con/Install |
| DH1300.LD.2014 |  | FOH / Loading Dock #0160 // OH Electrical Rough |  | 5d | 2026-07-07 A | 2026-07-13 A | DH1300.LD.2013 | 100% |  | 2026-08-12 | 2026-08-18 |  |  |  | HELIX | FOH | SM |  |  | OR | Con/Install |
| DH1300.LD.2015 |  | FOH / Loading Dock #0160 // Overhead Mechanical Duct |  | 5d | 2026-07-08 A | 2026-07-14 A | DH1300.LD.2013 | 100% |  | 2026-08-12 | 2026-08-18 |  |  |  |  | FOH |  |  |  | OR | Con/Install |
| DH1300.LD.2017 |  | FOH / Loading Dock #0160 // Top of Wall Fire Stop |  | 2d | 2026-07-13 A | 2026-07-14 A | DH1300.LD.2014 | 100% |  | 2026-08-19 | 2026-08-20 |  |  |  |  | FOH |  |  |  | OR | Con/Install |
| DH1300.LD.2018 |  | FOH / Loading Dock #0160 // Install Dock Levelers |  | 2d | 2026-07-15 A | 2026-07-16 A | DH1300.LD.2015 | 100% |  | 2026-08-19 | 2026-08-20 |  |  |  |  | FOH |  |  |  | OR | Con/Install |
| DH1300.LD.2016 |  | FOH / Loading Dock #0160 // In-Wall Electrical Rough |  | 5d | 2026-07-17 A | 2026-07-23 A | DH1300.LD.2014 | 100% |  | 2026-08-19 | 2026-08-25 |  |  |  | HELIX | FOH | SM |  |  | OR | Con/Install |
| DH1300.LD.2019 |  | FOH / Loading Dock #0160 // In-Wall Inspection |  | 1d | 2026-07-28 A | 2026-07-28 A | DH1300.LD.2018, DH1300.LD.2016 | 100% |  | 2026-08-26 | 2026-08-26 |  |  |  |  | FOH |  |  |  | OR | Con/Install |
| DH1300.LD.2020 |  | FOH / Loading Dock #0160 // Hang, Tape, & Finish Drywall |  | 10d | 2026-09-15 A | 2026-10-20 | DH1300.LD.2019 | 50% | 5d | 2026-09-30 | 2026-10-14 | -2d | 0d |  |  | FOH |  |  |  | OR | Con/Install |
| DH1300.LD.2021 |  | FOH / Loading Dock #0160 // Paint Walls |  | 5d | 2026-10-21 | 2026-10-27 | DH1300.LD.2020 |  |  |  |  | -2d | 0d |  |  | FOH |  |  |  | OR | Con/Install |
| DH1300.LD.2022 |  | FOH / Loading Dock #0160 // Install Fire Alarm |  | 5d | 2026-10-28 | 2026-11-03 | DH1300.LD.2017, DH1300.LD.2015, DH1300.LD.2021 |  |  |  |  | -2d | 0d |  | HELIX | FOH | W |  |  | OR | Con/Install |
| DH1300.LD.2023 |  | FOH / Loading Dock #0160 // Pull, Test, & Terminate |  | 6d | 2026-10-28 | 2026-11-04 | DH1300.LD.2021 |  |  |  |  | 3d | 0d |  |  | FOH |  |  |  | OR | Con/Install |
| DH1300.LD.2024 |  | FOH / Loading Dock #0160 // Install Overhead Door - 0160.2 |  | 3d | 2026-11-04 | 2026-11-06 | DH1300.LD.2022, DH1300.LD.2018 |  |  |  |  | -2d | 0d |  |  | FOH |  |  |  | OR | Con/Install |
| DH1300.LD.2027 |  | FOH / Loading Dock #0160 // Install Overhead Lighting Fixtures |  | 5d | 2026-11-05 | 2026-11-12 | DH1300.LD.2023 |  |  |  |  | 3d | 5d |  |  | FOH |  |  |  | OR | Con/Install |
| DH1300.LD.2025 |  | FOH / Loading Dock #0160 // Install Overhead Door - 0160.3 |  | 3d | 2026-11-09 | 2026-11-12 | DH1300.LD.2024 |  |  |  |  | -2d | 0d |  |  | FOH |  |  |  | OR | Con/Install |
| DH1300.LD.2026 |  | FOH / Loading Dock #0160 // Loading Dock Operational | milestone | 0d | 2026-11-12 | 2026-11-12 | DH1300.LD.2025 |  |  |  |  | -2d | 0d |  |  | FOH |  |  |  | OR | Con/Install |
| DH1300.LD.2028 |  | FOH / Loading Dock #0160 // Install Fire Sprinkler Heads |  | 5d | 2026-11-13 | 2026-11-19 | DH1300.LD.2026, DH1300.LD.2022 |  |  |  |  | -2d | 0d |  |  | FOH |  |  |  | OR | Con/Install |
| DH1300.LD.2029 |  | FOH / Loading Dock #0160// Electrical Trim |  | 5d | 2026-11-20 | 2026-11-27 | DH1300.LD.2025, DH1300.LD.2028, DH1300.LD.2027, DH1300.LD.2021 |  |  |  |  | -2d | 0d |  | HELIX | FOH | SM |  |  | OR | Con/Install |
| DH1300.LD.2030 |  | FOH / Loading Dock #0160 // Clean and Punch |  | 5d | 2026-11-30 | 2026-12-04 | DH1300.LD.2029 |  |  |  |  | -2d | 0d |  |  | FOH |  |  |  | OR | Con/Install |

| ID | WBS | Activity | Duration | Start | Finish | Predecessors | Complete | Planned start | Planned finish | Total float | Free float | MSP Activity ID | QTS - Subcontractor | QTS - AREA | QTS - Resp | 05 -SUFFOLK - Building Phase | 12 - SUFFOLK - Export_to_Procore | QTS - DASH |
| --- | --- | --- | --- | --- | --- | --- | --- | --- | --- | --- | --- | --- | --- | --- | --- | --- | --- | --- |
|  | 28 | **Trash 0161** |  | 2026-06-18 | 2026-10-23 |  |  |  |  |  |  |  |  |  |  |  |  |  |
| ADMIN.5446 |  | FOH/Trash 0161 // MEPF Layout of Overhead Supports | 3d | 2026-06-18 A | 2026-06-22 A | ADMIN.5445 | 100% |  |  |  |  | 852 | HELIX | FOH | SM | 1 | Y | OR |
| ADMIN.5445 |  | FOH/Trash 0161 // Frame Walls | 3d | 2026-06-19 A | 2026-06-23 A | ADMIN.5417 SS | 100% |  |  |  |  | 806 |  | FOH |  | 1 | Y | OR |
| ADMIN.5448 |  | FOH/Trash 0161 // Install MEPF Overhead Supports | 2d | 2026-06-19 A | 2026-06-23 A | ADMIN.5446 SS+2d | 100% | 2026-06-19 | 2026-06-22 |  |  | 851 | HELIX | FOH | SM | 1 | Y | OR |
| ADMIN.5447 |  | FOH/Trash 0161 // Top Down Install of Sheetrock - Priority Walls | 2d | 2026-07-06 A | 2026-07-07 A | ADMIN.5446 | 100% | 2026-07-24 | 2026-07-27 |  |  | 809 |  | FOH |  | 1 | Y | OR |
| ADMIN.5449 |  | FOH/Trash 0161 // MEPF Overhead Install | 8d | 2026-07-14 A | 2026-07-23 A | ADMIN.5448 SS+5d | 100% | 2026-07-24 | 2026-08-04 |  |  | 853 | HELIX | FOH | SM | 1 | Y | OR |
| ADMIN.5450 |  | FOH/Trash 0161 // MEPF In-wall rough-in | 2d | 2026-07-24 A | 2026-07-27 A | ADMIN.5449 | 100% | 2026-08-05 | 2026-08-06 |  |  | 873 | HELIX | FOH | SM | 1 | Y | OR |
| ADMIN.5452 |  | FOH/Trash 0161 // 1-Side & Finish Priority Walls | 2d | 2026-08-03 A | 2026-08-04 A | ADMIN.5450, ADMIN.5449, ADMIN.5447 | 100% | 2026-08-07 | 2026-08-10 |  |  | 816 |  | FOH |  | 1 | Y | OR |
| ADMIN.5453 |  | FOH/Trash 0161 // Tape and Finish Walls | 3d | 2026-08-05 A | 2026-08-07 A | ADMIN.5452 | 100% | 2026-08-11 | 2026-08-13 |  |  | 820 |  | FOH |  | 1 | Y | OR |
| ADMIN.5451 |  | FOH/Trash 0161 // Install Fire Alarm and Security | 3d | 2026-09-24 A | 2026-09-28 A | ADMIN.5449 | 100% | 2026-08-05 | 2026-08-07 |  |  | 873 | HELIX | FOH | W | 1 | Y | OR |
| ADMIN.6079 |  | FOH/Trash 0161 // BMS & EPMS Rough In | 2d | 2026-09-24 A | 2026-09-25 A | ADMIN.5451 SS, ADMIN.5451 FF | 100% | 2026-09-30 | 2026-10-01 |  |  |  |  | FOH |  |  |  |  |
| ADMIN.5454 |  | FOH/Trash 0161 // Final paint | 2d | 2026-10-14 | 2026-10-15 | ADMIN.5453, ADMIN.5451, ADMIN.6079 FF |  |  |  | -4d | 0d | 872 |  | FOH |  | 1 | Y | OR |
| ADMIN.5455 |  | FOH/Trash 0161 // Install Flooring and Base | 3d | 2026-10-16 | 2026-10-20 | ADMIN.5454 |  |  |  | -4d | 0d | 874 |  | FOH |  | 1 | Y | OR |
| ADMIN.5456 |  | FOH/Trash 0161 // Install Trim-Out | 1d | 2026-10-21 | 2026-10-21 | ADMIN.5455 |  |  |  | -4d | 0d | 876 | HELIX | FOH | SM | 1 |  | OR |
| ADMIN.5457 |  | FOH/Trash 0161 // Install Doors and Hardware | 1d | 2026-10-22 | 2026-10-22 | ADMIN.5456 |  |  |  | -4d | 0d | 837 |  | FOH |  | 1 |  | OR |
| ADMIN.5458 |  | FOH/Trash 0161 // Finish & Clean | 1d | 2026-10-23 | 2026-10-23 | ADMIN.5457, ADMIN.5456 |  |  |  | -4d | 0d | 877 |  | FOH |  | 1 |  | OR |
|  | 1 | **Equipment** |  | 2026-07-13 | 2026-11-25 |  |  |  |  |  |  |  |  |  |  |  |  |  |
|  | 2 | **Roof - RTUs** |  | 2026-07-13 | 2026-11-25 |  |  |  |  |  |  |  |  |  |  |  |  |  |
|  | 1 | **Column Lines 01 thru 1.1** |  | 2026-07-13 | 2026-11-25 |  |  |  |  |  |  |  |  |  |  |  |  |  |
| DH1100.7840 |  | FOH/Roof - RTUs // Install RTU-RT Units - RTU-RT- 01 | 1d | 2026-07-13 A | 2026-07-13 A | STRUCTURE.1690, STRUCTURE.7550 | 100% | 2026-07-24 | 2026-07-24 |  |  | 1120 |  | FOH |  | 2 | Y |  |
| DH1100.7860 |  | FOH/Roof - RTUs // Install Mechanical Piping | 15d | 2026-10-14 | 2026-11-03 | DH1100.7840, STRUCTURE.1690, DH1100.7840 SS |  |  |  | -16d | 0d | 1117 |  | FOH |  | 2 | Y |  |
| DH1200.7790 |  | FOH/Roof - RTUs // Install Electrical Conduit and Controls Piping | 15d | 2026-10-21 | 2026-11-10 | DH1100.7860 FF+5d, STRUCTURE.1690, DH1100.7840 SS, FOH.MS-3 |  |  |  | -2d | 2d | 1118 | HELIX | FOH | SM | 2 |  |  |
| DH1100.7870 |  | FOH/Roof - RTUs // Install heat trace system | 15d | 2026-11-04 | 2026-11-25 | DH1100.7860 |  |  |  | -16d | 0d | 1116 | HELIX | FOH | JT | 2 |  |  |
|  | 1 | **Gen - XFMRs etc** |  | 2026-08-07 | 2026-10-16 |  |  |  |  |  |  |  |  |  |  |  |  |  |
| DH1100.12096 |  | FOH/Gen - XFMRs etc // Set House Generator - GEN-HSE-FOH | 6d | 2026-08-07 A | 2026-08-07 A | STRUCTURE.7450, FDN.1296 | 100% | 2026-07-24 | 2026-07-31 |  |  | 1120 | HELIX | FOH | D18A | 2 | Y |  |
| DH1100.12110 |  | FOH/Gen - XFMRs etc // Set House XFMR - XFMR-HSE-FOH | 1d | 2026-08-07 A | 2026-08-07 A | DH1100.12096 FF | 100% | 2026-07-27 | 2026-07-27 |  |  | 1120 | HELIX | FOH | D18A | 2 | Y |  |
| DH1100.12111 |  | FOH/Gen - XFMRs etc // Set House XFMR - XFMR-HSE-1Da | 1d | 2026-08-28 A | 2026-08-28 A | DH1100.12110 FF | 100% | 2026-07-28 | 2026-07-28 |  |  | 1120 | HELIX | FOH | D18A | 2 | Y |  |
| DH1100.12098 |  | FOH/Gen - XFMRs etc // Set House Static Transfer Switch - STS-HSE-1A1 | 1d | 2026-10-14 | 2026-10-14 | ADMIN.5759, ADMIN.5759 SS, DH1100.12111, DH1100.12110, DH1100.12096 |  |  |  | 1d | 0d | 1120 | HELIX | FOH | SM | 2 |  |  |
| DH1100.12104 |  | FOH/Gen - XFMRs etc // Set House UPS - UPS-HSE-1A1 | 1d | 2026-10-14 | 2026-10-14 | ADMIN.5759 SS, DH1100.12111 |  |  |  | 1d | 0d | 1120 | HELIX | FOH | SM | 2 |  |  |
| DH1100.12099 |  | FOH/Gen - XFMRs etc // Set House Static Transfer Switch - STS-HSE-1A2 | 1d | 2026-10-15 | 2026-10-15 | DH1100.12098 |  |  |  | 1d | 0d | 1120 | HELIX | FOH | SM | 2 |  |  |
| DH1100.12105 |  | FOH/Gen - XFMRs etc // Set House UPS - UPS-HSE-1A2 | 1d | 2026-10-15 | 2026-10-15 | DH1100.12104 |  |  |  | 1d | 0d | 1120 | HELIX | FOH | SM | 2 |  |  |
| DH1100.12100 |  | FOH/Gen - XFMRs etc // Set House Static Transfer Switch - STS-HSE-1C | 1d | 2026-10-16 | 2026-10-16 | DH1100.12099 |  |  |  | 1d | 5d | 1120 | HELIX | FOH | SM | 2 |  |  |
| DH1100.12106 |  | FOH/Gen - XFMRs etc // Set House UPS - UPS-HSE-1C | 1d | 2026-10-16 | 2026-10-16 | DH1100.12105 |  |  |  | 1d | 5d | 1120 | HELIX | FOH | SM | 2 |  |  |

| ID | WBS | Activity | Type | Duration | Start | Finish | Predecessors | Complete | Remaining | Planned start | Planned finish | Total float | Free float | QTS - Subcontractor | QTS - AREA | QTS - DASH | MSP Activity ID | 05 -SUFFOLK - Building Phase | 12 - SUFFOLK - Export_to_Procore | QTS - Resp |
| --- | --- | --- | --- | --- | --- | --- | --- | --- | --- | --- | --- | --- | --- | --- | --- | --- | --- | --- | --- | --- |
|  | 2 | **Commissioning & Start Up** |  |  | 2026-10-26 | 2026-12-24 |  |  |  |  |  |  |  |  |  |  |  |  |  |  |
| HSE-SYS-STU-1 |  | FOH/Commissioning & Start Up // L3 Start-Up |  | 10d | 2026-10-26 | 2026-11-06 | DH1100.12106, DH1100.12100, ADMIN.5458 |  |  |  |  | -4d | 12d | HELIX | FOH | Cx |  |  |  |  |
| HSE-SYS-STU-2 |  | FOH/Commissioning & Start Up // L4 Cx |  | 15d | 2026-11-27 | 2026-12-17 | DH1100.7870, HSE-SYS-STU-1 |  |  |  |  | -16d | 0d |  | FOH | Cx |  |  |  |  |
| HSE-SYS-STU-16 |  | FOH/Commissioning & Start Up // FOH Clean & Punch | milestone | 0d | 2026-12-04 | 2026-12-04 | ADMIN.5177, ADMIN.5387, ADMIN.5149, ADMIN.5091 FF, DH1300.LD.2030 FF, ADMIN.5458 FF, ADMIN.5430 FF, ADMIN.5416 FF, ADMIN.5402 FF, ADMIN.5388 FF, ADMIN.5374 FF, ADMIN.5360 FF, ADMIN.5346 FF, ADMIN.5332 FF, ADMIN.5318 FF, ADMIN.5304 FF, ADMIN.5290 FF, ADMIN.5276 FF, ADMIN.5262 FF, ADMIN.5248 FF, ADMIN.5234 FF, ADMIN.5192 FF, ADMIN.4818 FF, ADMIN.5472 FF, ADMIN.5220 FF, ADMIN.5206 FF, ADMIN.5178 FF, ADMIN.5164 FF, ADMIN.5150 FF, ADMIN.5122 FF |  |  |  |  | -2d | 14d |  | FOH | Cx |  |  |  |  |
| HSE-SYS-STU-3 |  | FOH/Commissioning & Start Up // L5 Cx (Completes Jan 01 2027) |  | 5d | 2026-12-18 | 2026-12-24 | HSE-SYS-STU-2 |  |  |  |  | -16d | 0d |  | FOH | Cx |  |  |  |  |
|  | 1 | **Back of House (BOH)** |  |  | 2026-08-03 | 2027-01-04 |  |  |  |  |  |  |  |  |  |  |  |  |  |  |
|  | 16 | **Priority Walls** |  |  | 2026-08-03 | 2026-11-12 |  |  |  |  |  |  |  |  |  |  |  |  |  |  |
|  | 1 | **Priority Rooms** |  |  | 2026-08-03 | 2026-11-12 |  |  |  |  |  |  |  |  |  |  |  |  |  |  |
|  | 15 | **House Elec 1000G15** |  |  | 2026-08-03 | 2026-11-12 |  |  |  |  |  |  |  |  |  |  |  |  |  |  |
| ADMIN.5506 |  | BOH/House Elec 1000G15 // Frame Priority Walls |  | 3d | 2026-08-03 A | 2026-08-05 A | SOG.1478, STRUCTURE.7540 | 100% |  | 2026-07-24 | 2026-07-28 |  |  |  | BOH | PRI | 806 | 1 | Y |  |
| ADMIN.5507 |  | BOH/House Elec 1000G15 // MEPF Layout of Overhead Supports |  | 8d | 2026-08-04 A | 2026-08-13 A | ADMIN.5506 | 100% |  | 2026-07-29 | 2026-08-07 |  |  | HELIX | BOH | PRI | 852 | 1 | Y | SM |
| ADMIN.5509 |  | BOH/House Elec 1000G15 // Install MEPF Overhead Supports |  | 2d | 2026-08-05 A | 2026-09-17 A | ADMIN.5507 SS+2d | 100% |  | 2026-07-31 | 2026-08-03 |  |  | HELIX | BOH | PRI | 851 | 1 | Y | SM |
| ADMIN.5511 |  | BOH/House Elec 1000G15 // MEPF In-wall rough-in |  | 2d | 2026-08-05 A | 2026-09-24 A | ADMIN.5506 | 100% |  | 2026-08-21 | 2026-08-24 |  |  | HELIX | BOH | PRI | 873 | 1 |  | SM |
| ADMIN.5508 |  | BOH/House Elec 1000G15 // Top Down Install of Sheetrock - Priority Walls |  | 2d | 2026-09-17 A | 2026-09-18 A | ADMIN.5507 | 100% |  | 2026-08-10 | 2026-08-11 |  |  |  | BOH | PRI | 809 | 1 | Y |  |
| ADMIN.5514 |  | BOH/House Elec 1000G15 // Tape and Finish Walls |  | 3d | 2026-09-21 A | 2026-09-23 A | ADMIN.5508 | 100% |  | 2026-10-19 | 2026-10-21 |  |  |  | BOH | PRI | 820 | 1 |  |  |
| ADMIN.5515 |  | BOH/House Elec 1000G15 // Final paint |  | 2d | 2026-09-22 A | 2026-09-23 A | ADMIN.5514 FF | 100% |  | 2026-10-22 | 2026-10-23 |  |  |  | BOH | PRI | 872 | 1 |  |  |
| ADMIN.5510 |  | BOH/House Elec 1000G15 // MEPF Overhead Install |  | 10d | 2026-09-25 A | 2026-10-27 | ADMIN.5509 FS+5d |  | 10d | 2026-08-07 | 2026-08-20 | 13d | 0d | HELIX | BOH | PRI | 853 | 1 | Y | SM |
| ADMIN.6089 |  | BOH/House Elec 1000G15 // BMS & EPMS Rough In |  | 2d | 2026-10-05 A | 2026-10-06 A | ADMIN.5506 | 100% |  | 2026-10-16 | 2026-10-19 |  |  |  | BOH |  |  |  |  |  |
| ADMIN.5513 |  | BOH/House Elec 1000G15 // 1-Side & Finish Priority Walls |  | 2d | 2026-10-08 A | 2026-10-28 | ADMIN.5511, ADMIN.5510 FF+1d, ADMIN.5508 |  | 2d | 2026-10-15 | 2026-10-16 | 15d | 2d |  | BOH | PRI | 816 | 1 |  |  |
| ADMIN.5512 |  | BOH/House Elec 1000G15 // Install Fire Alarm and Security |  | 3d | 2026-10-28 | 2026-10-30 | ADMIN.5510 |  |  |  |  | 13d | 0d | HELIX | BOH | PRI | 873 | 1 |  | W |
| ADMIN.6249 |  | BOH/House Elec 1000G15 // Final paint (12' and Below) |  | 2d | 2026-11-02 | 2026-11-03 | ADMIN.5513, ADMIN.5515, ADMIN.6089, ADMIN.5512 |  |  |  |  | 13d | 0d |  |  |  |  |  |  |  |
| ADMIN.5516 |  | BOH/House Elec 1000G15 // Install Flooring and Base |  | 3d | 2026-11-04 | 2026-11-06 | ADMIN.6249, ADMIN.5515 |  |  |  |  | 13d | 0d |  | BOH | PRI | 874 | 1 |  |  |
| ADMIN.5773 |  | BOH/House Elec 1000G15 // BOH - Room Ready to Receive Equipment | milestone | 0d | 2026-11-04 | 2026-11-04 | ADMIN.6249, ADMIN.5515 |  |  |  |  | 17d | 4d | HELIX | BOH | PRI | 820 | 1 |  | SM |
| ADMIN.5517 |  | BOH/House Elec 1000G15 // Install Trim-Out |  | 1d | 2026-11-09 | 2026-11-09 | ADMIN.5516 |  |  |  |  | 13d | 0d | HELIX | BOH | PRI | 876 | 1 |  | SM |
| ADMIN.5518 |  | BOH/House Elec 1000G15 // Install Doors and Hardware |  | 1d | 2026-11-10 | 2026-11-10 | ADMIN.5773 SS, ADMIN.5517 |  |  |  |  | 13d | 0d |  | BOH | PRI | 837 | 1 |  |  |
| ADMIN.5519 |  | BOH/House Elec 1000G15 // Finish & Clean |  | 1d | 2026-11-12 | 2026-11-12 | ADMIN.5518, ADMIN.5517 |  |  |  |  | 13d | 27d |  | BOH | PRI | 877 | 1 |  |  |

| ID | WBS | Activity | Type | Duration | Start | Finish | Predecessors | Complete | Remaining | Planned start | Planned finish | Total float | Free float | MSP Activity ID | QTS - AREA | 05 -SUFFOLK - Building Phase | 12 - SUFFOLK - Export_to_Procore | QTS - DASH | QTS - Subcontractor | QTS - Resp |
| --- | --- | --- | --- | --- | --- | --- | --- | --- | --- | --- | --- | --- | --- | --- | --- | --- | --- | --- | --- | --- |
|  | 10 | **UPS 1000G14** |  |  | 2026-08-06 | 2026-11-12 |  |  |  |  |  |  |  |  |  |  |  |  |  |  |
| ADMIN.5520 |  | BOH/UPS 1000G14 // Frame Priority Walls |  | 3d | 2026-08-06 A | 2026-08-10 A | ADMIN.5506 | 100% |  | 2026-07-29 | 2026-07-31 |  |  | 806 | BOH | 1 | Y | PRI |  |  |
| ADMIN.5525 |  | BOH/UPS 1000G14 // MEPF In-wall rough-in |  | 2d | 2026-08-10 A | 2026-09-24 A | ADMIN.5520 | 100% |  | 2026-08-26 | 2026-08-27 |  |  | 873 | BOH | 1 |  | PRI | HELIX | SM |
| ADMIN.5521 |  | BOH/UPS 1000G14 // MEPF Layout of Overhead Supports |  | 8d | 2026-09-04 A | 2026-09-18 A | ADMIN.5520 | 100% |  | 2026-08-03 | 2026-08-12 |  |  | 852 | BOH | 1 | Y | PRI | HELIX | SM |
| ADMIN.5523 |  | BOH/UPS 1000G14 // Install MEPF Overhead Supports |  | 2d | 2026-09-17 A | 2026-09-25 A | ADMIN.5521 SS+2d | 100% |  | 2026-08-05 | 2026-08-06 |  |  | 851 | BOH | 1 | Y | PRI | HELIX | SM |
| ADMIN.5522 |  | BOH/UPS 1000G14 // Top Down Install of Sheetrock - Priority Walls |  | 2d | 2026-09-21 A | 2026-09-25 A | ADMIN.5521 | 100% |  | 2026-08-13 | 2026-08-14 |  |  | 809 | BOH | 1 | Y | PRI |  |  |
| ADMIN.5524 |  | BOH/UPS 1000G14 // MEPF Overhead Install |  | 10d | 2026-09-24 A | 2026-10-27 | ADMIN.5523 SS+5d |  | 10d | 2026-08-12 | 2026-08-25 | 13d | 0d | 853 | BOH | 1 | Y | PRI | HELIX | SM |
| ADMIN.5528 |  | BOH/UPS 1000G14 // Tape and Finish Walls |  | 3d | 2026-10-01 A | 2026-10-07 A | ADMIN.5522 | 100% |  | 2026-10-19 | 2026-10-21 |  |  | 820 | BOH | 1 |  | PRI |  |  |
| ADMIN.6099 |  | BOH/UPS 1000G14 // BMS & EPMS Rough In |  | 2d | 2026-10-05 A | 2026-10-06 A | ADMIN.5520 | 100% |  | 2026-10-16 | 2026-10-19 |  |  |  | BOH |  |  |  |  |  |
| ADMIN.5527 |  | BOH/UPS 1000G14 // 1-Side & Finish Priority Walls |  | 2d | 2026-10-08 A | 2026-10-27 | ADMIN.5525, ADMIN.5524 FF, ADMIN.5522 |  | 2d | 2026-10-15 | 2026-10-16 | 16d | 3d | 816 | BOH | 1 |  | PRI |  |  |
| ADMIN.5526 |  | BOH/UPS 1000G14 // Install Fire Alarm and Security |  | 3d | 2026-10-28 | 2026-10-30 | ADMIN.5524 |  |  |  |  | 13d | 0d | 873 | BOH | 1 |  | PRI | HELIX | W |
| ADMIN.5529 |  | BOH/UPS 1000G14 // Final paint |  | 2d | 2026-11-02 | 2026-11-03 | ADMIN.5527, ADMIN.5528, ADMIN.5526, ADMIN.6099 FF |  |  |  |  | 13d | 0d | 872 | BOH | 1 |  | PRI |  |  |
| ADMIN.5530 |  | BOH/UPS 1000G14 // Install Flooring and Base |  | 3d | 2026-11-04 | 2026-11-06 | ADMIN.5529 |  |  |  |  | 13d | 0d | 874 | BOH | 1 |  | PRI |  |  |
| ADMIN.5774 |  | BOH/UPS 1000G14 // BOH - Room Ready to Receive Equipment | milestone | 0d | 2026-11-04 | 2026-11-04 | ADMIN.5529 |  |  |  |  | 17d | 4d | 820 | BOH | 1 |  | PRI | HELIX | SM |
| ADMIN.5531 |  | BOH/UPS 1000G14 // Install Trim-Out |  | 1d | 2026-11-09 | 2026-11-09 | ADMIN.5530 |  |  |  |  | 13d | 0d | 876 | BOH | 1 |  | PRI | HELIX | SM |
| ADMIN.5532 |  | BOH/UPS 1000G14 // Install Doors and Hardware |  | 1d | 2026-11-10 | 2026-11-10 | ADMIN.5774 SS, ADMIN.5531 |  |  |  |  | 13d | 0d | 837 | BOH | 1 |  | PRI |  |  |
| ADMIN.5533 |  | BOH/UPS 1000G14 // Finish & Clean |  | 1d | 2026-11-12 | 2026-11-12 | ADMIN.5532, ADMIN.5531 |  |  |  |  | 13d | 27d | 877 | BOH | 1 |  | PRI |  |  |
|  | 9 | **Fire 1000G12** |  |  | 2026-08-10 | 2026-11-12 |  |  |  |  |  |  |  |  |  |  |  |  |  |  |
| ADMIN.5534 |  | BOH/Fire 1000G12 // Frame Priority Walls |  | 3d | 2026-08-10 A | 2026-08-12 A | ADMIN.5520 | 100% |  | 2026-08-03 | 2026-08-05 |  |  | 806 | BOH | 1 | Y | PRI |  |  |
| ADMIN.5539 |  | BOH/Fire 1000G12 // MEPF In-wall rough-in |  | 2d | 2026-08-12 A | 2026-09-25 A | ADMIN.5534 | 100% |  | 2026-08-31 | 2026-09-01 |  |  | 873 | BOH | 1 |  | PRI | HELIX | SM |
| ADMIN.5535 |  | BOH/Fire 1000G12 // MEPF Layout of Overhead Supports |  | 8d | 2026-09-04 A | 2026-09-16 A | ADMIN.5534 | 100% |  | 2026-08-06 | 2026-08-17 |  |  | 852 | BOH | 1 | Y | PRI | HELIX | SM |
| ADMIN.5536 |  | BOH/Fire 1000G12 // Top Down Install of Sheetrock - Priority Walls |  | 2d | 2026-09-17 A | 2026-09-18 A | ADMIN.5535 | 100% |  | 2026-08-18 | 2026-08-19 |  |  | 809 | BOH | 1 |  | PRI |  |  |
| ADMIN.5537 |  | BOH/Fire 1000G12 // Install MEPF Overhead Supports |  | 2d | 2026-09-17 A | 2026-09-18 A | ADMIN.5535 SS+2d | 100% |  | 2026-08-10 | 2026-08-11 |  |  | 851 | BOH | 1 | Y | PRI | HELIX | SM |
| ADMIN.5538 |  | BOH/Fire 1000G12 // MEPF Overhead Install |  | 10d | 2026-09-24 A | 2026-10-27 | ADMIN.5537 SS+5d |  | 10d | 2026-08-17 | 2026-08-28 | 13d | 0d | 853 | BOH | 1 |  | PRI | HELIX | SM |
| ADMIN.5542 |  | BOH/Fire 1000G12 // Tape and Finish Walls |  | 3d | 2026-10-01 A | 2026-10-06 A | ADMIN.5536 | 100% |  | 2026-10-19 | 2026-10-21 |  |  | 820 | BOH | 1 |  | PRI |  |  |
| ADMIN.6109 |  | BOH/Fire 1000G12 // BMS & EPMS Rough In |  | 2d | 2026-10-05 A | 2026-10-06 A | ADMIN.5534 | 100% |  | 2026-10-16 | 2026-10-19 |  |  |  | BOH |  |  |  |  |  |
| ADMIN.5541 |  | BOH/Fire 1000G12 // 1-Side & Finish Priority Walls |  | 2d | 2026-10-08 A | 2026-10-27 | ADMIN.5539, ADMIN.5538 FF, ADMIN.5536 |  | 2d | 2026-10-15 | 2026-10-16 | 16d | 3d | 816 | BOH | 1 |  | PRI |  |  |
| ADMIN.5540 |  | BOH/Fire 1000G12 // Install Fire Alarm and Security |  | 3d | 2026-10-28 | 2026-10-30 | ADMIN.5538 |  |  |  |  | 13d | 0d | 873 | BOH | 1 |  | PRI | HELIX | W |
| ADMIN.5543 |  | BOH/Fire 1000G12 // Final paint |  | 2d | 2026-11-02 | 2026-11-03 | ADMIN.5541, ADMIN.5542, ADMIN.5540, ADMIN.6109 FF |  |  |  |  | 13d | 0d | 872 | BOH | 1 |  | PRI |  |  |
| ADMIN.5544 |  | BOH/Fire 1000G12 // Install Flooring and Base |  | 3d | 2026-11-04 | 2026-11-06 | ADMIN.5543 |  |  |  |  | 13d | 0d | 874 | BOH | 1 |  | PRI |  |  |
| ADMIN.5775 |  | BOH/Fire 1000G12 // BOH - Room Ready to Receive Equipment | milestone | 0d | 2026-11-04 | 2026-11-04 | ADMIN.5543 |  |  |  |  | 17d | 4d | 820 | BOH | 1 |  | PRI | HELIX | SM |
| ADMIN.5545 |  | BOH/Fire 1000G12 // Install Trim-Out |  | 1d | 2026-11-09 | 2026-11-09 | ADMIN.5544 |  |  |  |  | 13d | 0d | 876 | BOH | 1 |  | PRI | HELIX | SM |
| ADMIN.5546 |  | BOH/Fire 1000G12 // Install Doors and Hardware |  | 1d | 2026-11-10 | 2026-11-10 | ADMIN.5775 SS, ADMIN.5545 |  |  |  |  | 13d | 0d | 837 | BOH | 1 |  | PRI |  |  |
| ADMIN.5547 |  | BOH/Fire 1000G12 // Finish & Clean |  | 1d | 2026-11-12 | 2026-11-12 | ADMIN.5546, ADMIN.5545 |  |  |  |  | 13d | 27d | 877 | BOH | 1 |  | PRI |  |  |

| ID | WBS | Activity | Type | Duration | Start | Finish | Predecessors | Complete | Remaining | Planned start | Planned finish | Total float | Free float | MSP Activity ID | QTS - AREA | 05 -SUFFOLK - Building Phase | 12 - SUFFOLK - Export_to_Procore | QTS - DASH | QTS - Subcontractor | QTS - Resp |
| --- | --- | --- | --- | --- | --- | --- | --- | --- | --- | --- | --- | --- | --- | --- | --- | --- | --- | --- | --- | --- |
|  | 3 | **MMR1B2** |  |  | 2026-08-12 | 2026-11-03 |  |  |  |  |  |  |  |  |  |  |  |  |  |  |
| ADMIN.5548 |  | BOH/MMR1B2 // Frame Priority Walls |  | 3d | 2026-08-12 A | 2026-08-14 A | ADMIN.5534 | 100% |  | 2026-08-06 | 2026-08-10 |  |  | 806 | BOH | 1 | Y | PRI |  |  |
| ADMIN.5553 |  | BOH/MMR1B2 // MEPF In-wall rough-in |  | 2d | 2026-08-14 A | 2026-09-18 A | ADMIN.5548 | 100% |  | 2026-09-03 | 2026-09-04 |  |  | 873 | BOH | 1 |  | PRI | HELIX | SM |
| ADMIN.5549 |  | BOH/MMR1B2 // MEPF Layout of Overhead Supports |  | 8d | 2026-09-04 A | 2026-09-15 A | ADMIN.5548 | 100% |  | 2026-08-11 | 2026-08-20 |  |  | 852 | BOH | 1 | Y | PRI | HELIX | SM |
| ADMIN.5550 |  | BOH/MMR1B2 // Top Down Install of Sheetrock - Priority Walls |  | 2d | 2026-09-17 A | 2026-09-18 A | ADMIN.5549 | 100% |  | 2026-08-21 | 2026-08-24 |  |  | 809 | BOH | 1 |  | PRI |  |  |
| ADMIN.5551 |  | BOH/MMR1B2 // Install MEPF Overhead Supports |  | 2d | 2026-09-17 A | 2026-09-18 A | ADMIN.5549 SS+2d | 100% |  | 2026-08-13 | 2026-08-14 |  |  | 851 | BOH | 1 | Y | PRI | HELIX | SM |
| ADMIN.5552 |  | BOH/MMR1B2 // MEPF Overhead Install |  | 10d | 2026-09-21 A | 2026-10-22 | ADMIN.5551 | 30% | 7d | 2026-08-20 | 2026-09-02 | 19d | 0d | 853 | BOH | 1 |  | PRI | HELIX | SM |
| ADMIN.5556 |  | BOH/MMR1B2 // Tape and Finish Walls |  | 3d | 2026-10-01 A | 2026-10-27 | ADMIN.5554 FF |  | 3d | 2026-10-14 | 2026-10-16 | 19d | 0d | 820 | BOH | 1 |  | PRI |  |  |
| ADMIN.5557 |  | BOH/MMR1B2 // Final paint |  | 2d | 2026-10-05 A | 2026-10-26 | ADMIN.5555 FF, ADMIN.5556 SS, ADMIN.6119 FF |  | 2d | 2026-10-19 | 2026-10-20 | 19d | 0d | 872 | BOH | 1 |  | PRI |  |  |
| ADMIN.6119 |  | BOH/MMR1B2 // BMS & EPMS Rough In |  | 2d | 2026-10-05 A | 2026-10-06 A | ADMIN.5548 | 100% |  | 2026-10-13 | 2026-10-14 |  |  |  | BOH |  |  |  |  |  |
| ADMIN.5555 |  | BOH/MMR1B2 // 1-Side & Finish Priority Walls |  | 2d | 2026-10-09 A | 2026-10-22 | ADMIN.5553, ADMIN.5552 FF, ADMIN.5550 |  | 2d | 2026-10-09 | 2026-10-13 | 21d | 2d | 816 | BOH | 1 |  | PRI |  |  |
| ADMIN.5554 |  | BOH/MMR1B2 // Install Fire Alarm and Security |  | 3d | 2026-10-23 | 2026-10-27 | ADMIN.5552 |  |  |  |  | 19d | 0d | 873 | BOH | 1 |  | PRI | HELIX | W |
| ADMIN.5558 |  | BOH/MMR1B2 // Install Flooring and Base |  | 3d | 2026-10-27 | 2026-10-29 | ADMIN.5557 |  |  |  |  | 19d | 0d | 874 | BOH | 1 |  | PRI |  |  |
| ADMIN.5776 |  | BOH/MMR1B2 // BOH - Room Ready to Receive Equipment | milestone | 0d | 2026-10-27 | 2026-10-27 | ADMIN.5557 |  |  |  |  | 23d | 4d | 820 | BOH | 1 |  | PRI | HELIX | SM |
| ADMIN.5559 |  | BOH/MMR1B2 // Install Trim-Out |  | 1d | 2026-10-30 | 2026-10-30 | ADMIN.5558 |  |  |  |  | 19d | 0d | 876 | BOH | 1 |  | PRI | HELIX | SM |
| ADMIN.5560 |  | BOH/MMR1B2 // Install Doors and Hardware |  | 1d | 2026-11-02 | 2026-11-02 | ADMIN.5776 SS, ADMIN.5559 |  |  |  |  | 19d | 0d | 837 | BOH | 1 |  | PRI |  |  |
| ADMIN.5561 |  | BOH/MMR1B2 // Finish & Clean |  | 1d | 2026-11-03 | 2026-11-03 | ADMIN.5560, ADMIN.5559 |  |  |  |  | 19d | 33d | 877 | BOH | 1 |  | PRI |  |  |
|  | 5 | **IDF 1000G7** |  |  | 2026-08-14 | 2026-11-09 |  |  |  |  |  |  |  |  |  |  |  |  |  |  |
| ADMIN.5562 |  | BOH/IDF 1000G7 // Frame Priority Walls |  | 3d | 2026-08-14 A | 2026-08-18 A | ADMIN.5548 | 100% |  | 2026-08-11 | 2026-08-13 |  |  | 806 | BOH | 1 | Y | PRI |  |  |
| ADMIN.5567 |  | BOH/IDF 1000G7 // MEPF In-wall rough-in |  | 2d | 2026-08-18 A | 2026-09-25 A | ADMIN.5562 | 100% |  | 2026-09-09 | 2026-09-10 |  |  | 873 | BOH | 1 |  | PRI | HELIX | SM |
| ADMIN.5563 |  | BOH/IDF 1000G7 // MEPF Layout of Overhead Supports |  | 8d | 2026-09-04 A | 2026-09-14 A | ADMIN.5562 | 100% |  | 2026-08-14 | 2026-08-25 |  |  | 852 | BOH | 1 |  | PRI | HELIX | SM |
| ADMIN.5565 |  | BOH/IDF 1000G7 // Install MEPF Overhead Supports |  | 2d | 2026-09-17 A | 2026-09-18 A | ADMIN.5563 SS+2d | 100% |  | 2026-08-18 | 2026-08-19 |  |  | 851 | BOH | 1 |  | PRI | HELIX | SM |
| ADMIN.5566 |  | BOH/IDF 1000G7 // MEPF Overhead Install |  | 10d | 2026-09-21 A | 2026-10-23 | ADMIN.5565 SS+5d | 20% | 8d | 2026-08-25 | 2026-09-08 | 15d | 0d | 853 | BOH | 1 |  | PRI | HELIX | SM |
| ADMIN.5564 |  | BOH/IDF 1000G7 // Top Down Install of Sheetrock - Priority Walls |  | 2d | 2026-09-30 A | 2026-10-08 A | ADMIN.5563 | 100% |  | 2026-09-30 | 2026-10-01 |  |  | 809 | BOH | 1 |  | PRI |  |  |
| ADMIN.6129 |  | BOH/IDF 1000G7 // BMS & EPMS Rough In |  | 2d | 2026-10-05 A | 2026-10-06 A | ADMIN.5562 | 100% |  | 2026-10-14 | 2026-10-15 |  |  |  | BOH |  |  |  |  |  |
| ADMIN.5569 |  | BOH/IDF 1000G7 // 1-Side & Finish Priority Walls |  | 2d | 2026-10-09 A | 2026-10-13 A | ADMIN.5567, ADMIN.5564 | 100% |  | 2026-10-13 | 2026-10-14 |  |  | 816 | BOH | 1 |  | PRI |  |  |
| ADMIN.5570 |  | BOH/IDF 1000G7 // Tape and Finish Walls |  | 3d | 2026-10-09 A | 2026-10-16 | ADMIN.5564 SS+2d |  | 3d | 2026-10-15 | 2026-10-19 | 23d | 8d | 820 | BOH | 1 |  | PRI |  |  |
| ADMIN.5568 |  | BOH/IDF 1000G7 // Install Fire Alarm and Security |  | 3d | 2026-10-26 | 2026-10-28 | ADMIN.5566 |  |  |  |  | 15d | 0d | 873 | BOH | 1 |  | PRI | HELIX | W |
| ADMIN.5571 |  | BOH/IDF 1000G7 // Final paint |  | 2d | 2026-10-29 | 2026-10-30 | ADMIN.5569, ADMIN.5570, ADMIN.5568, ADMIN.6129 FF |  |  |  |  | 15d | 0d | 872 | BOH | 1 |  | PRI |  |  |
| ADMIN.5572 |  | BOH/IDF 1000G7 // Install Flooring and Base |  | 3d | 2026-11-02 | 2026-11-04 | ADMIN.5571 |  |  |  |  | 15d | 0d | 874 | BOH | 1 |  | PRI |  |  |
| ADMIN.5777 |  | BOH/IDF 1000G7 // BOH - Room Ready to Receive Equipment | milestone | 0d | 2026-11-02 | 2026-11-02 | ADMIN.5571 |  |  |  |  | 19d | 4d | 820 | BOH | 1 |  | PRI | HELIX | SM |
| ADMIN.5573 |  | BOH/IDF 1000G7 // Install Trim-Out |  | 1d | 2026-11-05 | 2026-11-05 | ADMIN.5572 |  |  |  |  | 15d | 0d | 876 | BOH | 1 |  | PRI | HELIX | SM |
| ADMIN.5574 |  | BOH/IDF 1000G7 // Install Doors and Hardware |  | 1d | 2026-11-06 | 2026-11-06 | ADMIN.5777 SS, ADMIN.5573 |  |  |  |  | 15d | 0d | 837 | BOH | 1 |  | PRI |  |  |
| ADMIN.5575 |  | BOH/IDF 1000G7 // Finish & Clean |  | 1d | 2026-11-09 | 2026-11-09 | ADMIN.5574, ADMIN.5573 |  |  |  |  | 15d | 29d | 877 | BOH | 1 |  | PRI |  |  |

| ID | WBS | Activity | Type | Duration | Start | Finish | Predecessors | Complete | Remaining | Planned start | Planned finish | Total float | Free float | MSP Activity ID | QTS - AREA | 05 -SUFFOLK - Building Phase | QTS - DASH | QTS - Subcontractor | QTS - Resp |
| --- | --- | --- | --- | --- | --- | --- | --- | --- | --- | --- | --- | --- | --- | --- | --- | --- | --- | --- | --- |
|  | 21 | **Other Rooms** |  |  | 2026-08-17 | 2026-12-22 |  |  |  |  |  |  |  |  |  |  |  |  |  |
|  | 11 | **ELI 1000G13** |  |  | 2026-08-17 | 2026-11-17 |  |  |  |  |  |  |  |  |  |  |  |  |  |
| ADMIN.5644 |  | BOH/ELI 1000G13 // Frame Priority Walls |  | 3d | 2026-08-17 A | 2026-08-19 A | ADMIN.5562 | 100% |  | 2026-08-14 | 2026-08-18 |  |  | 806 | BOH | 1 | OR |  |  |
| ADMIN.5645 |  | BOH/ELI 1000G13 // MEPF Layout of Overhead Supports |  | 8d | 2026-10-01 A | 2026-10-06 A | ADMIN.5644 | 100% |  | 2026-10-15 | 2026-10-26 |  |  | 852 | BOH | 1 | OR | HELIX | SM |
| ADMIN.5647 |  | BOH/ELI 1000G13 // Install MEPF Overhead Supports |  | 2d | 2026-10-05 A | 2026-10-07 A | ADMIN.5645 SS+2d | 100% |  | 2026-10-19 | 2026-10-20 |  |  | 851 | BOH | 1 | OR | HELIX | SM |
| ADMIN.6139 |  | BOH/ELI 1000G13 // BMS & EPMS Rough In |  | 2d | 2026-10-05 A | 2026-10-06 A | ADMIN.5644 | 100% |  | 2026-11-10 | 2026-11-12 |  |  |  | BOH |  |  |  |  |
| ADMIN.5648 |  | BOH/ELI 1000G13 // MEPF Overhead Install |  | 10d | 2026-10-09 A | 2026-10-27 | ADMIN.5647 SS+5d |  | 10d | 2026-10-26 | 2026-11-06 | 10d | 0d | 853 | BOH | 1 | OR | HELIX | SM |
| ADMIN.5646 |  | BOH/ELI 1000G13 // Top Down Install of Sheetrock - Priority Walls |  | 2d | 2026-10-13 A | 2026-10-15 | ADMIN.5645 |  | 2d | 2026-10-27 | 2026-10-28 | 19d | 9d | 809 | BOH | 1 | OR |  |  |
| ADMIN.5649 |  | BOH/ELI 1000G13 // MEPF In-wall rough-in |  | 2d | 2026-10-28 | 2026-10-29 | ADMIN.5648 |  |  |  |  | 10d | 0d | 873 | BOH | 1 | OR | HELIX | SM |
| ADMIN.5650 |  | BOH/ELI 1000G13 // Install Fire Alarm and Security |  | 3d | 2026-10-28 | 2026-10-30 | ADMIN.5648 |  |  |  |  | 13d | 3d | 873 | BOH | 1 | OR | HELIX | W |
| ADMIN.5651 |  | BOH/ELI 1000G13 // 1-Side & Finish Priority Walls |  | 2d | 2026-10-29 | 2026-10-30 | ADMIN.5649 FF+1d, ADMIN.5648 FF, ADMIN.5646 |  |  |  |  | 10d | 0d | 816 | BOH | 1 | OR |  |  |
| ADMIN.5652 |  | BOH/ELI 1000G13 // Tape and Finish Walls |  | 3d | 2026-11-02 | 2026-11-04 | ADMIN.5651 |  |  |  |  | 10d | 0d | 820 | BOH | 1 | OR |  |  |
| ADMIN.5653 |  | BOH/ELI 1000G13 // Final paint |  | 2d | 2026-11-05 | 2026-11-06 | ADMIN.5652, ADMIN.5650, ADMIN.6139 FF |  |  |  |  | 10d | 0d | 872 | BOH | 1 | OR |  |  |
| ADMIN.5654 |  | BOH/ELI 1000G13 // Install Flooring and Base |  | 3d | 2026-11-09 | 2026-11-12 | ADMIN.5653 |  |  |  |  | 10d | 0d | 874 | BOH | 1 | OR |  |  |
| ADMIN.5778 |  | BOH/ELI 1000G13 // BOH - Room Ready to Receive Equipment | milestone | 0d | 2026-11-09 | 2026-11-09 | A5697, ADMIN.5653 |  |  |  |  | 14d | 4d | 820 | BOH | 1 | OR | HELIX | SM |
| ADMIN.5655 |  | BOH/ELI 1000G13 // Install Trim-Out |  | 1d | 2026-11-13 | 2026-11-13 | ADMIN.5654 |  |  |  |  | 10d | 0d | 876 | BOH | 1 | OR | HELIX | SM |
| ADMIN.5656 |  | BOH/ELI 1000G13 // Install Doors and Hardware |  | 1d | 2026-11-16 | 2026-11-16 | ADMIN.5778 SS, ADMIN.5655 |  |  |  |  | 10d | 0d | 837 | BOH | 1 | OR |  |  |
| ADMIN.5657 |  | BOH/ELI 1000G13 // Finish & Clean |  | 1d | 2026-11-17 | 2026-11-17 | ADMIN.5656, ADMIN.5655 |  |  |  |  | 10d | 24d | 877 | BOH | 1 | OR |  |  |
|  | 12 | **Flex 1000G11** |  |  | 2026-09-01 | 2026-11-12 |  |  |  |  |  |  |  |  |  |  |  |  |  |
| ADMIN.5658 |  | BOH/Flex 1000G11 // Frame Priority Walls |  | 3d | 2026-09-01 A | 2026-09-03 A | ADMIN.5644 | 100% |  | 2026-08-19 | 2026-08-21 |  |  | 806 | BOH | 1 | OR |  |  |
| ADMIN.5659 |  | BOH/Flex 1000G11 // MEPF Layout of Overhead Supports |  | 8d | 2026-09-09 A | 2026-09-18 A | ADMIN.5658 | 100% |  | 2026-08-24 | 2026-09-02 |  |  | 852 | BOH | 1 | OR | HELIX | SM |
| ADMIN.5660 |  | BOH/Flex 1000G11 // Top Down Install of Sheetrock - Priority Walls |  | 2d | 2026-09-21 A | 2026-09-22 A | ADMIN.5659 | 100% |  | 2026-09-03 | 2026-09-04 |  |  | 809 | BOH | 1 | OR |  |  |
| ADMIN.5661 |  | BOH/Flex 1000G11 // Install MEPF Overhead Supports |  | 2d | 2026-09-21 A | 2026-09-22 A | ADMIN.5659 SS+2d | 100% |  | 2026-08-26 | 2026-08-27 |  |  | 851 | BOH | 1 | OR | HELIX | SM |
| ADMIN.5662 |  | BOH/Flex 1000G11 // MEPF Overhead Install |  | 10d | 2026-09-28 A | 2026-10-27 | ADMIN.5661 SS+5d |  | 10d | 2026-09-02 | 2026-09-16 | 13d | 0d | 853 | BOH | 1 | OR | HELIX | SM |
| ADMIN.6149 |  | BOH/Flex 1000G11 // BMS & EPMS Rough In |  | 2d | 2026-10-05 A | 2026-10-06 A | ADMIN.5658 | 100% |  | 2026-10-16 | 2026-10-19 |  |  |  | BOH |  |  |  |  |
| ADMIN.5663 |  | BOH/Flex 1000G11 // MEPF In-wall rough-in |  | 2d | 2026-10-06 A | 2026-10-07 A | ADMIN.5658 | 100% |  | 2026-10-15 | 2026-10-16 |  |  | 873 | BOH | 1 | OR | HELIX | SM |
| ADMIN.5665 |  | BOH/Flex 1000G11 // 1-Side & Finish Priority Walls |  | 2d | 2026-10-12 A | 2026-10-15 | ADMIN.5663, ADMIN.5660 |  | 2d | 2026-10-19 | 2026-10-20 | 24d | 11d | 816 | BOH | 1 | OR |  |  |
| ADMIN.5666 |  | BOH/Flex 1000G11 // Tape and Finish Walls |  | 3d | 2026-10-13 A | 2026-10-16 | ADMIN.5660 |  | 3d | 2026-10-21 | 2026-10-23 | 23d | 10d | 820 | BOH | 1 | OR |  |  |
| ADMIN.5664 |  | BOH/Flex 1000G11 // Install Fire Alarm and Security |  | 3d | 2026-10-28 | 2026-10-30 | ADMIN.5662 |  |  |  |  | 13d | 0d | 873 | BOH | 1 | OR | HELIX | W |
| ADMIN.5667 |  | BOH/Flex 1000G11 // Final paint |  | 2d | 2026-11-02 | 2026-11-03 | ADMIN.5665, ADMIN.5666, ADMIN.5664, ADMIN.6149 FF |  |  |  |  | 13d | 0d | 872 | BOH | 1 | OR |  |  |
| ADMIN.5668 |  | BOH/Flex 1000G11 // Install Flooring and Base |  | 3d | 2026-11-04 | 2026-11-06 | ADMIN.5667 |  |  |  |  | 13d | 0d | 874 | BOH | 1 | OR |  |  |
| ADMIN.5780 |  | BOH/Flex 1000G11 // BOH - Room Ready to Receive Equipment | milestone | 0d | 2026-11-04 | 2026-11-04 | ADMIN.5667 |  |  |  |  | 17d | 4d | 820 | BOH | 1 | OR | HELIX | SM |
| ADMIN.5669 |  | BOH/Flex 1000G11 // Install Trim-Out |  | 1d | 2026-11-09 | 2026-11-09 | ADMIN.5668 |  |  |  |  | 13d | 0d | 876 | BOH | 1 | OR | HELIX | SM |
| ADMIN.5670 |  | BOH/Flex 1000G11 // Install Doors and Hardware |  | 1d | 2026-11-10 | 2026-11-10 | ADMIN.5780 SS, ADMIN.5669 |  |  |  |  | 13d | 0d | 837 | BOH | 1 | OR |  |  |
| ADMIN.5671 |  | BOH/Flex 1000G11 // Finish & Clean |  | 1d | 2026-11-12 | 2026-11-12 | ADMIN.5670, ADMIN.5669 |  |  |  |  | 13d | 27d | 877 | BOH | 1 | OR |  |  |

| ID | WBS | Activity | Type | Duration | Start | Finish | Predecessors | Complete | Remaining | Planned start | Planned finish | Total float | Free float | MSP Activity ID | QTS - AREA | 05 -SUFFOLK - Building Phase | QTS - DASH | QTS - Subcontractor | QTS - Resp |
| --- | --- | --- | --- | --- | --- | --- | --- | --- | --- | --- | --- | --- | --- | --- | --- | --- | --- | --- | --- |
|  | 14 | **Roof 1000G10** |  |  | 2026-09-08 | 2026-11-12 |  |  |  |  |  |  |  |  |  |  |  |  |  |
| ADMIN.5672 |  | BOH/Roof 1000G10 // Frame Priority Walls |  | 3d | 2026-09-08 A | 2026-09-10 A | ADMIN.5658 | 100% |  | 2026-08-24 | 2026-08-26 |  |  | 806 | BOH | 1 | OR |  |  |
| ADMIN.5673 |  | BOH/Roof 1000G10 // MEPF Layout of Overhead Supports |  | 8d | 2026-09-11 A | 2026-09-21 A | ADMIN.5672 | 100% |  | 2026-08-27 | 2026-09-08 |  |  | 852 | BOH | 1 | OR | HELIX | SM |
| ADMIN.5675 |  | BOH/Roof 1000G10 // Install MEPF Overhead Supports |  | 2d | 2026-09-22 A | 2026-09-23 A | ADMIN.5673 | 100% |  | 2026-08-31 | 2026-09-01 |  |  | 851 | BOH | 1 | OR | HELIX | SM |
| ADMIN.5674 |  | BOH/Roof 1000G10 // Top Down Install of Sheetrock - Priority Walls |  | 2d | 2026-09-24 A | 2026-10-08 A | ADMIN.5673 | 100% |  | 2026-09-09 | 2026-09-10 |  |  | 809 | BOH | 1 | OR |  |  |
| ADMIN.5676 |  | BOH/Roof 1000G10 // MEPF Overhead Install |  | 10d | 2026-09-29 A | 2026-10-27 | ADMIN.5675 SS+5d |  | 10d | 2026-09-08 | 2026-09-21 | 13d | 0d | 853 | BOH | 1 | OR | HELIX | SM |
| ADMIN.6159 |  | BOH/Roof 1000G10 // BMS & EPMS Rough In |  | 2d | 2026-10-05 A | 2026-10-06 A | ADMIN.5672 | 100% |  | 2026-10-16 | 2026-10-19 |  |  |  | BOH |  |  |  |  |
| ADMIN.5677 |  | BOH/Roof 1000G10 // MEPF In-wall rough-in |  | 2d | 2026-10-08 A | 2026-10-09 A | ADMIN.5672 FF | 100% |  | 2026-10-15 | 2026-10-16 |  |  | 873 | BOH | 1 | OR | HELIX | SM |
| ADMIN.5680 |  | BOH/Roof 1000G10 // Tape and Finish Walls |  | 3d | 2026-10-09 A | 2026-10-13 A | ADMIN.5674 | 100% |  | 2026-10-21 | 2026-10-23 |  |  | 820 | BOH | 1 | OR |  |  |
| ADMIN.5679 |  | BOH/Roof 1000G10 // 1-Side & Finish Priority Walls |  | 2d | 2026-10-13 A | 2026-10-15 | ADMIN.5677, ADMIN.5674 |  | 2d | 2026-10-19 | 2026-10-20 | 24d | 11d | 816 | BOH | 1 | OR |  |  |
| ADMIN.5678 |  | BOH/Roof 1000G10 // Install Fire Alarm and Security |  | 3d | 2026-10-28 | 2026-10-30 | ADMIN.5676 |  |  |  |  | 13d | 0d | 873 | BOH | 1 | OR | HELIX | W |
| ADMIN.5681 |  | BOH/Roof 1000G10 // Final paint |  | 2d | 2026-11-02 | 2026-11-03 | ADMIN.5679, ADMIN.5680, ADMIN.5678, ADMIN.6159 FF |  |  |  |  | 13d | 0d | 872 | BOH | 1 | OR |  |  |
| ADMIN.5682 |  | BOH/Roof 1000G10 // Install Flooring and Base |  | 3d | 2026-11-04 | 2026-11-06 | ADMIN.5681 |  |  |  |  | 13d | 0d | 874 | BOH | 1 | OR |  |  |
| ADMIN.5781 |  | BOH/Roof 1000G10 // BOH - Room Ready to Receive Equipment | milestone | 0d | 2026-11-04 | 2026-11-04 | ADMIN.5681 |  |  |  |  | 17d | 4d | 820 | BOH | 1 | OR | HELIX | SM |
| ADMIN.5683 |  | BOH/Roof 1000G10 // Install Trim-Out |  | 1d | 2026-11-09 | 2026-11-09 | ADMIN.5682 |  |  |  |  | 13d | 0d | 876 | BOH | 1 | OR | HELIX | SM |
| ADMIN.5684 |  | BOH/Roof 1000G10 // Install Doors and Hardware |  | 1d | 2026-11-10 | 2026-11-10 | ADMIN.5781 SS, ADMIN.5683 |  |  |  |  | 13d | 0d | 837 | BOH | 1 | OR |  |  |
| ADMIN.5685 |  | BOH/Roof 1000G10 // Finish & Clean |  | 1d | 2026-11-12 | 2026-11-12 | ADMIN.5684, ADMIN.5683 |  |  |  |  | 13d | 27d | 877 | BOH | 1 | OR |  |  |
|  | 13 | **Corridor 1000H** |  |  | 2026-09-14 | 2026-11-16 |  |  |  |  |  |  |  |  |  |  |  |  |  |
| ADMIN.5687 |  | BOH/Corridor 1000H // MEPF Layout of Overhead Supports |  | 8d | 2026-09-14 A | 2026-09-21 A | ADMIN.5672 | 100% |  | 2026-09-01 | 2026-09-11 |  |  | 852 | BOH | 1 | COR | HELIX | SM |
| ADMIN.5686 |  | BOH/Corridor 1000H // Frame Priority Walls |  | 3d | 2026-09-15 A | 2026-09-17 A | ADMIN.5672 | 100% |  | 2026-08-27 | 2026-08-31 |  |  | 806 | BOH | 1 | COR |  |  |
| ADMIN.5689 |  | BOH/Corridor 1000H // Install MEPF Overhead Supports |  | 2d | 2026-09-22 A | 2026-09-23 A | ADMIN.5687 SS+2d | 100% |  | 2026-09-03 | 2026-09-04 |  |  | 851 | BOH | 1 | COR | HELIX | SM |
| ADMIN.5688 |  | BOH/Corridor 1000H // Top Down Install of Sheetrock - Priority Walls |  | 2d | 2026-09-24 A | 2026-10-09 A | ADMIN.5687 | 100% |  | 2026-09-14 | 2026-09-15 |  |  | 809 | BOH | 1 | COR |  |  |
| ADMIN.5690 |  | BOH/Corridor 1000H // MEPF Overhead Install |  | 10d | 2026-09-29 A | 2026-10-27 | ADMIN.5689 SS+5d |  | 10d | 2026-09-11 | 2026-09-24 | 11d | 0d | 853 | BOH | 1 | COR | HELIX | SM |
| ADMIN.6169 |  | BOH/Corridor 1000H // BMS & EPMS Rough In |  | 2d | 2026-10-05 A | 2026-10-14 | ADMIN.5686 | 100% | 0d | 2026-10-16 | 2026-10-19 | 28d | 17d |  | BOH |  |  |  |  |
| ADMIN.5691 |  | BOH/Corridor 1000H // MEPF In-wall rough-in |  | 2d | 2026-10-09 A | 2026-10-15 | ADMIN.5686 |  | 2d | 2026-10-15 | 2026-10-16 | 19d | 8d | 873 | BOH | 1 | COR | HELIX | SM |
| ADMIN.5692 |  | BOH/Corridor 1000H // Install Fire Alarm and Security |  | 3d | 2026-10-28 | 2026-10-30 | ADMIN.5690 |  |  |  |  | 13d | 2d | 873 | BOH | 1 | COR | HELIX | W |
| ADMIN.5693 |  | BOH/Corridor 1000H // 1-Side & Finish Priority Walls |  | 2d | 2026-10-28 | 2026-10-29 | ADMIN.5691, ADMIN.5690, ADMIN.5688 |  |  |  |  | 11d | 0d | 816 | BOH | 1 | COR |  |  |
| ADMIN.5694 |  | BOH/Corridor 1000H // Tape and Finish Walls |  | 3d | 2026-10-30 | 2026-11-03 | ADMIN.5693 |  |  |  |  | 11d | 0d | 820 | BOH | 1 | COR |  |  |
| ADMIN.5695 |  | BOH/Corridor 1000H // Final paint |  | 2d | 2026-11-04 | 2026-11-05 | ADMIN.5694, ADMIN.5692, ADMIN.6169 FF |  |  |  |  | 11d | 0d | 872 | BOH | 1 | COR |  |  |
| ADMIN.5696 |  | BOH/Corridor 1000H // Install Flooring and Base |  | 3d | 2026-11-06 | 2026-11-10 | ADMIN.5695 |  |  |  |  | 11d | 0d | 874 | BOH | 1 | COR |  |  |
| ADMIN.5782 |  | BOH/Corridor 1000H // BOH - Room Ready to Receive Equipment | milestone | 0d | 2026-11-06 | 2026-11-06 | ADMIN.5695 |  |  |  |  | 15d | 4d | 820 | BOH | 1 | COR | HELIX | SM |
| ADMIN.5697 |  | BOH/Corridor 1000H // Install Trim-Out |  | 1d | 2026-11-12 | 2026-11-12 | ADMIN.5696 |  |  |  |  | 11d | 0d | 876 | BOH | 1 | COR | HELIX | SM |
| ADMIN.5698 |  | BOH/Corridor 1000H // Install Doors and Hardware |  | 1d | 2026-11-13 | 2026-11-13 | ADMIN.5782 SS, ADMIN.5697 |  |  |  |  | 11d | 0d | 837 | BOH | 1 | COR |  |  |
| ADMIN.5699 |  | BOH/Corridor 1000H // Finish & Clean |  | 1d | 2026-11-16 | 2026-11-16 | ADMIN.5698, ADMIN.5697 |  |  |  |  | 11d | 25d | 877 | BOH | 1 | COR |  |  |

| ID | WBS | Activity | Type | Duration | Start | Finish | Predecessors | Complete | Remaining | Planned start | Planned finish | Total float | Free float | MSP Activity ID | QTS - Subcontractor | QTS - AREA | QTS - Resp | 05 -SUFFOLK - Building Phase | QTS - DASH |
| --- | --- | --- | --- | --- | --- | --- | --- | --- | --- | --- | --- | --- | --- | --- | --- | --- | --- | --- | --- |
|  | 1 | **EF2R 1000G9** |  |  | 2026-09-14 | 2026-11-12 |  |  |  |  |  |  |  |  |  |  |  |  |  |
| ADMIN.5701 |  | BOH/EF2R 1000G9 // MEPF Layout of Overhead Supports |  | 8d | 2026-09-14 A | 2026-09-21 A | ADMIN.5687 SS | 100% |  | 2026-09-04 | 2026-09-16 |  |  | 852 | HELIX | BOH | SM | 1 | OR |
| ADMIN.5700 |  | BOH/EF2R 1000G9 // Frame Priority Walls |  | 3d | 2026-09-18 A | 2026-09-21 A | ADMIN.5686 | 100% |  | 2026-09-01 | 2026-09-03 |  |  | 806 |  | BOH |  | 1 | OR |
| ADMIN.5703 |  | BOH/EF2R 1000G9 // Install MEPF Overhead Supports |  | 2d | 2026-09-22 A | 2026-09-23 A | ADMIN.5701 SS+2d | 100% |  | 2026-09-09 | 2026-09-10 |  |  | 851 | HELIX | BOH | SM | 1 | OR |
| ADMIN.5702 |  | BOH/EF2R 1000G9 // Top Down Install of Sheetrock - Priority Walls |  | 2d | 2026-09-24 A | 2026-10-09 A | ADMIN.5701 | 100% |  | 2026-09-17 | 2026-09-18 |  |  | 809 |  | BOH |  | 1 | OR |
| ADMIN.5704 |  | BOH/EF2R 1000G9 // MEPF Overhead Install |  | 10d | 2026-09-29 A | 2026-10-27 | ADMIN.5703 SS+5d |  | 10d | 2026-09-16 | 2026-09-29 | 13d | 0d | 853 | HELIX | BOH | SM | 1 | OR |
| ADMIN.6179 |  | BOH/EF2R 1000G9 // BMS & EPMS Rough In |  | 2d | 2026-10-08 A | 2026-10-09 A | ADMIN.5700 | 100% |  | 2026-10-16 | 2026-10-19 |  |  |  |  | BOH |  |  |  |
| ADMIN.5705 |  | BOH/EF2R 1000G9 // MEPF In-wall rough-in |  | 2d | 2026-10-12 A | 2026-10-13 A | ADMIN.5700 | 100% |  | 2026-10-15 | 2026-10-16 |  |  | 873 | HELIX | BOH | SM | 1 | OR |
| ADMIN.5707 |  | BOH/EF2R 1000G9 // 1-Side & Finish Priority Walls |  | 2d | 2026-10-13 A | 2026-10-15 | ADMIN.5705, ADMIN.5702 |  | 2d | 2026-10-19 | 2026-10-20 | 21d | 0d | 816 |  | BOH |  | 1 | OR |
| ADMIN.5708 |  | BOH/EF2R 1000G9 // Tape and Finish Walls |  | 3d | 2026-10-16 | 2026-10-20 | ADMIN.5707 |  |  |  |  | 21d | 8d | 820 |  | BOH |  | 1 | OR |
| ADMIN.5706 |  | BOH/EF2R 1000G9 // Install Fire Alarm and Security |  | 3d | 2026-10-28 | 2026-10-30 | ADMIN.5704 |  |  |  |  | 13d | 0d | 873 | HELIX | BOH | W | 1 | OR |
| ADMIN.5709 |  | BOH/EF2R 1000G9 // Final paint |  | 2d | 2026-11-02 | 2026-11-03 | ADMIN.5708, ADMIN.5706, ADMIN.6179 FF |  |  |  |  | 13d | 0d | 872 |  | BOH |  | 1 | OR |
| ADMIN.5710 |  | BOH/EF2R 1000G9 // Install Flooring and Base |  | 3d | 2026-11-04 | 2026-11-06 | ADMIN.5709 |  |  |  |  | 13d | 0d | 874 |  | BOH |  | 1 | OR |
| ADMIN.5783 |  | BOH/EF2R 1000G9 // BOH - Room Ready to Receive Equipment | milestone | 0d | 2026-11-04 | 2026-11-04 | ADMIN.5709 |  |  |  |  | 17d | 4d | 820 | HELIX | BOH | SM | 1 | OR |
| ADMIN.5711 |  | BOH/EF2R 1000G9 // Install Trim-Out |  | 1d | 2026-11-09 | 2026-11-09 | ADMIN.5710 |  |  |  |  | 13d | 0d | 876 | HELIX | BOH | SM | 1 | OR |
| ADMIN.5712 |  | BOH/EF2R 1000G9 // Install Doors and Hardware |  | 1d | 2026-11-10 | 2026-11-10 | ADMIN.5783 SS, ADMIN.5711 |  |  |  |  | 13d | 0d | 837 |  | BOH |  | 1 | OR |
| ADMIN.5713 |  | BOH/EF2R 1000G9 // Finish & Clean |  | 1d | 2026-11-12 | 2026-11-12 | ADMIN.5712, ADMIN.5711 |  |  |  |  | 13d | 27d | 877 |  | BOH |  | 1 | OR |
|  | 2 | **RR 1025B/1025C/1025D** |  |  | 2026-09-15 | 2026-11-18 |  |  |  |  |  |  |  |  |  |  |  |  |  |
| ADMIN.5628 |  | BOH/RR 1025B-1025C-1025D // MEPF Layout of Overhead Supports |  | 8d | 2026-09-15 A | 2026-09-22 A | ADMIN.5701 SS | 100% |  | 2026-09-10 | 2026-09-21 |  |  | 852 | HELIX | BOH | SM | 1 | OR |
| ADMIN.5627 |  | BOH/RR 1025B-1025C-1025D // Frame Walls |  | 3d | 2026-09-22 A | 2026-09-23 A | ADMIN.5700 | 100% |  | 2026-09-04 | 2026-09-09 |  |  | 806 |  | BOH |  | 1 | OR |
| ADMIN.5630 |  | BOH/RR 1025B-1025C-1025D // Install MEPF Overhead Supports |  | 2d | 2026-09-23 A | 2026-09-23 A | ADMIN.5628 SS+2d | 100% |  | 2026-09-14 | 2026-09-15 |  |  | 851 | HELIX | BOH | SM | 1 | OR |
| ADMIN.5629 |  | BOH/RR 1025B-1025C-1025D // Top Down Install of Sheetrock - Priority Walls |  | 2d | 2026-09-24 A | 2026-10-09 A | ADMIN.5628 | 100% |  | 2026-09-22 | 2026-09-23 |  |  | 809 |  | BOH |  | 1 | OR |
| ADMIN.5631 |  | BOH/RR 1025B-1025C-1025D // MEPF Overhead Install |  | 10d | 2026-09-28 A | 2026-10-27 | ADMIN.5630 SS+5d |  | 10d | 2026-09-21 | 2026-10-02 | 9d | 0d | 853 | HELIX | BOH | SM | 1 | OR |
| ADMIN.6189 |  | BOH/RR 1025B-1025C-1025D // BMS & EPMS Rough In |  | 2d | 2026-10-14 | 2026-10-15 | ADMIN.5627 |  |  |  |  | 26d | 17d |  |  | BOH |  |  |  |
| ADMIN.5632 |  | BOH/RR 1025B-1025C-1025D // MEPF In-wall rough-in |  | 2d | 2026-10-28 | 2026-10-29 | ADMIN.5631 |  |  |  |  | 9d | 0d | 873 | HELIX | BOH | SM | 1 | OR |
| ADMIN.5633 |  | BOH/RR 1025B-1025C-1025D // Install Fire Alarm and Security |  | 3d | 2026-10-28 | 2026-10-30 | ADMIN.5631 |  |  |  |  | 13d | 4d | 873 | HELIX | BOH | W | 1 | OR |
| ADMIN.5634 |  | BOH/RR 1025B-1025C-1025D // 1-Side & Finish Priority Walls |  | 2d | 2026-10-30 | 2026-11-02 | ADMIN.5632, ADMIN.5631, ADMIN.5629 |  |  |  |  | 9d | 0d | 816 |  | BOH |  | 1 | OR |
| ADMIN.5635 |  | BOH/RR 1025B-1025C-1025D // Tape and Finish Walls |  | 3d | 2026-11-03 | 2026-11-05 | ADMIN.5634 |  |  |  |  | 9d | 0d | 820 |  | BOH |  | 1 | OR |
| ADMIN.5636 |  | BOH/RR 1025B-1025C-1025D // Install Ceiling grid |  | 4d | 2026-11-03 | 2026-11-06 | ADMIN.5634 |  |  |  |  | 9d | 0d | 873 |  | BOH |  | 1 | OR |
| ADMIN.5637 |  | BOH/RR 1025B-1025C-1025D // Final paint |  | 2d | 2026-11-06 | 2026-11-09 | ADMIN.5635, ADMIN.5633, ADMIN.6189 FF |  |  |  |  | 9d | 0d | 872 |  | BOH |  | 1 | OR |
| ADMIN.5638 |  | BOH/RR 1025B-1025C-1025D // Hang Hard-Lid Ceiling |  | 2d | 2026-11-09 | 2026-11-10 | ADMIN.5636 |  |  |  |  | 9d | 0d | 873 |  | BOH |  | 1 | OR |
| ADMIN.5639 |  | BOH/RR 1025B-1025C-1025D // Install Flooring and Base |  | 3d | 2026-11-10 | 2026-11-13 | ADMIN.5637 |  |  |  |  | 9d | 0d | 874 |  | BOH |  | 1 | OR |
| ADMIN.5640 |  | BOH/RR 1025B-1025C-1025D // Hang / drop Ceiling trims |  | 2d | 2026-11-12 | 2026-11-13 | ADMIN.5638 |  |  |  |  | 9d | 0d | 873 |  | BOH |  | 1 | OR |
| ADMIN.5641 |  | BOH/RR 1025B-1025C-1025D // Install Trim-Out |  | 1d | 2026-11-16 | 2026-11-16 | ADMIN.5640, ADMIN.5639 |  |  |  |  | 9d | 0d | 876 | HELIX | BOH | SM | 1 | OR |
| ADMIN.5784 |  | BOH/RR 1025B-1025C-1025D // BOH - Room Ready to Receive Equipment | milestone | 0d | 2026-11-16 | 2026-11-16 | ADMIN.5640 |  |  |  |  | 10d | 1d | 820 | HELIX | BOH | SM | 1 | OR |
| ADMIN.5642 |  | BOH/RR 1025B-1025C-1025D // Install Doors and Hardware |  | 1d | 2026-11-17 | 2026-11-17 | ADMIN.5784 SS, ADMIN.5641 |  |  |  |  | 9d | 0d | 837 |  | BOH |  | 1 | OR |
| ADMIN.5643 |  | BOH/RR 1025B-1025C-1025D // Finish & Clean |  | 1d | 2026-11-18 | 2026-11-18 | ADMIN.5642, ADMIN.5641 |  |  |  |  | 9d | 23d | 877 |  | BOH |  | 1 | OR |

| ID | WBS | Activity | Type | Duration | Start | Finish | Predecessors | Complete | Remaining | Planned start | Planned finish | Total float | Free float | MSP Activity ID | QTS - AREA | 05 -SUFFOLK - Building Phase | QTS - DASH | QTS - Subcontractor | QTS - Resp |
| --- | --- | --- | --- | --- | --- | --- | --- | --- | --- | --- | --- | --- | --- | --- | --- | --- | --- | --- | --- |
|  | 3 | **Offices 1025E/1052F/1025G** |  |  | 2026-09-22 | 2026-11-16 |  |  |  |  |  |  |  |  |  |  |  |  |  |
| ADMIN.5613 |  | BOH/1025E-1052F-1025G // Frame Walls |  | 3d | 2026-09-22 A | 2026-09-23 A | ADMIN.5627 SS | 100% |  | 2026-09-10 | 2026-09-14 |  |  | 806 | BOH | 1 | OR |  |  |
| ADMIN.5612 |  | BOH/1025E-1052F-1025G // MEPF Layout of Overhead Supports |  | 8d | 2026-09-24 A | 2026-10-08 A | ADMIN.5613 | 100% |  | 2026-09-15 | 2026-09-24 |  |  | 852 | BOH | 1 | OR | HELIX | SM |
| ADMIN.5610 |  | BOH/1025E-1052F-1025G // Install MEPF Overhead Supports |  | 2d | 2026-09-28 A | 2026-10-08 A | ADMIN.5612 SS+2d | 100% |  | 2026-09-17 | 2026-09-18 |  |  | 851 | BOH | 1 | OR | HELIX | SM |
| ADMIN.5620 |  | BOH/1025E-1052F-1025G // Top Down Install of Sheetrock - Priority Walls |  | 2d | 2026-09-28 A | 2026-10-09 A | ADMIN.5613 | 100% |  | 2026-09-25 | 2026-09-28 |  |  | 809 | BOH | 1 | OR |  |  |
| ADMIN.5611 |  | BOH/1025E-1052F-1025G // MEPF Overhead Install |  | 10d | 2026-10-08 A | 2026-10-27 | ADMIN.5610 SS+5d |  | 10d | 2026-10-05 | 2026-10-19 | 11d | 0d | 853 | BOH | 1 | OR | HELIX | SM |
| ADMIN.6199 |  | BOH/1025E-1052F-1025G // BMS & EPMS Rough In |  | 2d | 2026-10-08 A | 2026-10-15 | ADMIN.5613 |  | 2d | 2026-10-21 | 2026-10-22 | 26d | 15d |  | BOH |  |  |  |  |
| ADMIN.5623 |  | BOH/1025E-1052F-1025G // MEPF In-wall rough-in |  | 2d | 2026-10-13 A | 2026-10-15 | ADMIN.5613 |  | 2d | 2026-10-20 | 2026-10-21 | 19d | 8d | 873 | BOH | 1 | OR | HELIX | SM |
| ADMIN.5617 |  | BOH/1025E-1052F-1025G // Install Fire Alarm and Security |  | 3d | 2026-10-28 | 2026-10-30 | ADMIN.5611 |  |  |  |  | 13d | 2d | 873 | BOH | 1 | OR | HELIX | W |
| ADMIN.5622 |  | BOH/1025E-1052F-1025G // 1-Side & Finish Priority Walls |  | 2d | 2026-10-28 | 2026-10-29 | ADMIN.5623, ADMIN.5611, ADMIN.5620 |  |  |  |  | 11d | 0d | 816 | BOH | 1 | OR |  |  |
| ADMIN.5621 |  | BOH/1025E-1052F-1025G // Tape and Finish Walls |  | 3d | 2026-10-30 | 2026-11-03 | ADMIN.5622 |  |  |  |  | 11d | 0d | 820 | BOH | 1 | OR |  |  |
| ADMIN.5624 |  | BOH/1025E-1052F-1025G // Install Ceiling grid |  | 4d | 2026-10-30 | 2026-11-04 | ADMIN.5622 |  |  |  |  | 11d | 0d | 873 | BOH | 1 | OR |  |  |
| ADMIN.5614 |  | BOH/1025E-1052F-1025G // Final paint |  | 2d | 2026-11-04 | 2026-11-05 | ADMIN.5621, ADMIN.5617, ADMIN.6199 FF |  |  |  |  | 11d | 0d | 872 | BOH | 1 | OR |  |  |
| ADMIN.5625 |  | BOH/1025E-1052F-1025G // Hang hard-lid ceiling |  | 2d | 2026-11-05 | 2026-11-06 | ADMIN.5624 |  |  |  |  | 11d | 0d | 873 | BOH | 1 | OR |  |  |
| ADMIN.5615 |  | BOH/1025E-1052F-1025G // Install Flooring and Base |  | 3d | 2026-11-06 | 2026-11-10 | ADMIN.5614 |  |  |  |  | 11d | 0d | 874 | BOH | 1 | OR |  |  |
| ADMIN.5626 |  | BOH/1025E-1052F-1025G // Hang / drop Ceiling trims |  | 2d | 2026-11-09 | 2026-11-10 | ADMIN.5625 |  |  |  |  | 11d | 0d | 873 | BOH | 1 | OR |  |  |
| ADMIN.5616 |  | BOH/1025E-1052F-1025G // Install Trim-Out |  | 1d | 2026-11-12 | 2026-11-12 | ADMIN.5626, ADMIN.5615 |  |  |  |  | 11d | 0d | 876 | BOH | 1 | OR | HELIX | SM |
| ADMIN.5785 |  | BOH/1025E-1052F-1025G // BOH - Room Ready to Receive Equipment | milestone | 0d | 2026-11-12 | 2026-11-12 | ADMIN.5626 |  |  |  |  | 12d | 1d | 820 | BOH | 1 | OR | HELIX | SM |
| ADMIN.5619 |  | BOH/1025E-1052F-1025G // Install Doors and Hardware |  | 1d | 2026-11-13 | 2026-11-13 | ADMIN.5785 SS, ADMIN.5616 |  |  |  |  | 11d | 0d | 837 | BOH | 1 | OR |  |  |
| ADMIN.5618 |  | BOH/1025E-1052F-1025G // Finish & Clean |  | 1d | 2026-11-16 | 2026-11-16 | ADMIN.5619, ADMIN.5616 |  |  |  |  | 11d | 25d | 877 | BOH | 1 | OR |  |  |
|  | 4 | **Break 1025A** |  |  | 2026-09-21 | 2026-11-18 |  |  |  |  |  |  |  |  |  |  |  |  |  |
| ADMIN.5593 |  | BOH/Break 1025A // Frame Walls |  | 3d | 2026-09-21 A | 2026-09-22 A | ADMIN.5686 | 100% |  | 2026-09-15 | 2026-09-17 |  |  | 806 | BOH | 1 | OR |  |  |
| ADMIN.5594 |  | BOH/Break 1025A // MEPF Layout of Overhead Supports |  | 8d | 2026-09-24 A | 2026-10-08 A | ADMIN.5593 | 100% |  | 2026-09-18 | 2026-09-29 |  |  | 852 | BOH | 1 | OR | HELIX | SM |
| ADMIN.5595 |  | BOH/Break 1025A // Top Down Install of Sheetrock - Priority Walls |  | 2d | 2026-09-28 A | 2026-10-09 A | ADMIN.5593 | 100% |  | 2026-09-30 | 2026-10-01 |  |  | 809 | BOH | 1 | OR |  |  |
| ADMIN.5596 |  | BOH/Break 1025A // Install MEPF Overhead Supports |  | 2d | 2026-09-28 A | 2026-10-09 A | ADMIN.5594 SS+2d | 100% |  | 2026-09-22 | 2026-09-23 |  |  | 851 | BOH | 1 | OR | HELIX | SM |
| ADMIN.5597 |  | BOH/Break 1025A // MEPF Overhead Install |  | 10d | 2026-10-14 | 2026-10-27 | ADMIN.5596 SS+5d |  |  |  |  | 9d | 0d | 853 | BOH | 1 | OR | HELIX | SM |
| ADMIN.6209 |  | BOH/Break 1025A // BMS & EPMS Rough In |  | 2d | 2026-10-14 | 2026-10-15 | ADMIN.5593 |  |  |  |  | 26d | 17d |  | BOH |  |  |  |  |
| ADMIN.5598 |  | BOH/Break 1025A // MEPF In-wall rough-in |  | 2d | 2026-10-28 | 2026-10-29 | ADMIN.5597 |  |  |  |  | 9d | 0d | 873 | BOH | 1 | OR | HELIX | SM |
| ADMIN.5599 |  | BOH/Break 1025A // Install Fire Alarm and Security |  | 3d | 2026-10-28 | 2026-10-30 | ADMIN.5597 |  |  |  |  | 13d | 4d | 873 | BOH | 1 | OR | HELIX | W |
| ADMIN.5600 |  | BOH/Break 1025A // 1-Side & Finish Priority Walls |  | 2d | 2026-10-30 | 2026-11-02 | ADMIN.5598, ADMIN.5597, ADMIN.5595 |  |  |  |  | 9d | 0d | 816 | BOH | 1 | OR |  |  |
| ADMIN.5601 |  | BOH/Break 1025A // Tape and Finish Walls |  | 3d | 2026-11-03 | 2026-11-05 | ADMIN.5600 |  |  |  |  | 9d | 0d | 820 | BOH | 1 | OR |  |  |
| ADMIN.5602 |  | BOH/Break 1025A // Install Ceiling grid |  | 4d | 2026-11-03 | 2026-11-06 | ADMIN.5600 |  |  |  |  | 9d | 0d | 873 | BOH | 1 | OR |  |  |
| ADMIN.5603 |  | BOH/Break 1025A // Final paint |  | 2d | 2026-11-06 | 2026-11-09 | ADMIN.5601, ADMIN.5599, ADMIN.6209 FF |  |  |  |  | 9d | 0d | 872 | BOH | 1 | OR |  |  |
| ADMIN.5604 |  | BOH/Break 1025A // Hang hard-lid ceiling |  | 2d | 2026-11-09 | 2026-11-10 | ADMIN.5602 |  |  |  |  | 9d | 0d | 873 | BOH | 1 | OR |  |  |
| ADMIN.5605 |  | BOH/Break 1025A // Install Flooring and Base |  | 3d | 2026-11-10 | 2026-11-13 | ADMIN.5603 |  |  |  |  | 9d | 0d | 874 | BOH | 1 | OR |  |  |
| ADMIN.5606 |  | BOH/Break 1025A // Hang / drop Ceiling trims |  | 2d | 2026-11-12 | 2026-11-13 | ADMIN.5604 |  |  |  |  | 9d | 0d | 873 | BOH | 1 | OR |  |  |
| ADMIN.5607 |  | BOH/Break 1025A // Install Trim-Out |  | 1d | 2026-11-16 | 2026-11-16 | ADMIN.5606, ADMIN.5605 |  |  |  |  | 9d | 0d | 876 | BOH | 1 | OR | HELIX | SM |
| ADMIN.5786 |  | BOH/Break 1025A // BOH - Room Ready to Receive Equipment | milestone | 0d | 2026-11-16 | 2026-11-16 | ADMIN.5606 |  |  |  |  | 10d | 1d | 820 | BOH | 1 | OR | HELIX | SM |
| ADMIN.5608 |  | BOH/Break 1025A // Install Doors and Hardware |  | 1d | 2026-11-17 | 2026-11-17 | ADMIN.5786 SS, ADMIN.5607 |  |  |  |  | 9d | 0d | 837 | BOH | 1 | OR |  |  |
| ADMIN.5609 |  | BOH/Break 1025A // Finish & Clean |  | 1d | 2026-11-18 | 2026-11-18 | ADMIN.5608, ADMIN.5607 |  |  |  |  | 9d | 23d | 877 | BOH | 1 | OR |  |  |

| ID | WBS | Activity | Type | Duration | Start | Finish | Predecessors | Complete | Remaining | Planned start | Planned finish | Total float | Free float | MSP Activity ID | QTS - AREA | 05 -SUFFOLK - Building Phase | QTS - DASH | QTS - Subcontractor | QTS - Resp |
| --- | --- | --- | --- | --- | --- | --- | --- | --- | --- | --- | --- | --- | --- | --- | --- | --- | --- | --- | --- |
|  | 6 | **QTS Ops 1025** |  |  | 2026-09-23 | 2026-11-20 |  |  |  |  |  |  |  |  |  |  |  |  |  |
| ADMIN.5576 |  | BOH/QTS Ops 1025 // Frame Walls |  | 3d | 2026-09-23 A | 2026-09-29 A | ADMIN.5593 | 100% |  | 2026-09-18 | 2026-09-22 |  |  | 806 | BOH | 1 | OR |  |  |
| ADMIN.5577 |  | BOH/QTS Ops 1025 // MEPF Layout of Overhead Supports |  | 8d | 2026-09-28 A | 2026-10-07 A | ADMIN.5576 SS+5d | 100% |  | 2026-09-23 | 2026-10-02 |  |  | 852 | BOH | 1 | OR | HELIX | SM |
| ADMIN.5578 |  | BOH/QTS Ops 1025 // Top Down Install of Sheetrock - Priority Walls |  | 2d | 2026-09-28 A | 2026-10-09 A | ADMIN.5576 | 100% |  | 2026-10-05 | 2026-10-06 |  |  | 809 | BOH | 1 | OR |  |  |
| ADMIN.6219 |  | BOH/QTS Ops 1025 // BMS & EPMS Rough In |  | 2d | 2026-10-05 A | 2026-10-06 A | ADMIN.5576 | 100% |  | 2026-10-23 | 2026-10-26 |  |  |  | BOH |  |  |  |  |
| ADMIN.5579 |  | BOH/QTS Ops 1025 // Install MEPF Overhead Supports |  | 2d | 2026-10-08 A | 2026-10-14 | ADMIN.5577 SS+2d | 100% | 0d | 2026-09-30 | 2026-10-01 | 7d | 0d | 851 | BOH | 1 | OR | HELIX | SM |
| ADMIN.5580 |  | BOH/QTS Ops 1025 // MEPF Overhead Install |  | 10d | 2026-10-13 A | 2026-10-29 | ADMIN.5579 SS+5d |  | 10d | 2026-10-07 | 2026-10-21 | 7d | 0d | 853 | BOH | 1 | OR | HELIX | SM |
| ADMIN.5581 |  | BOH/QTS Ops 1025 // MEPF In-wall rough-in |  | 2d | 2026-10-30 | 2026-11-02 | ADMIN.5580 |  |  |  |  | 7d | 0d | 873 | BOH | 1 | OR | HELIX | SM |
| ADMIN.5582 |  | BOH/QTS Ops 1025 // Install Fire Alarm and Security |  | 3d | 2026-10-30 | 2026-11-03 | ADMIN.5580 |  |  |  |  | 11d | 4d | 873 | BOH | 1 | OR | HELIX | W |
| ADMIN.5583 |  | BOH/QTS Ops 1025 // 1-Side & Finish Priority Walls |  | 2d | 2026-11-03 | 2026-11-04 | ADMIN.5581, ADMIN.5580, ADMIN.5578 |  |  |  |  | 7d | 0d | 816 | BOH | 1 | OR |  |  |
| ADMIN.5584 |  | BOH/QTS Ops 1025 // Tape and Finish Walls |  | 3d | 2026-11-05 | 2026-11-09 | ADMIN.5583 |  |  |  |  | 7d | 0d | 820 | BOH | 1 | OR |  |  |
| ADMIN.5585 |  | BOH/QTS Ops 1025 // Install Ceiling grid |  | 4d | 2026-11-05 | 2026-11-10 | ADMIN.5583 |  |  |  |  | 7d | 0d | 873 | BOH | 1 | OR |  |  |
| ADMIN.5586 |  | BOH/QTS Ops 1025 // Final paint |  | 2d | 2026-11-10 | 2026-11-12 | ADMIN.5584, ADMIN.5582, ADMIN.6219 FF |  |  |  |  | 7d | 0d | 872 | BOH | 1 | OR |  |  |
| ADMIN.5587 |  | BOH/QTS Ops 1025 // Hang hard-lid ceiling |  | 2d | 2026-11-12 | 2026-11-13 | ADMIN.5585 |  |  |  |  | 7d | 0d | 873 | BOH | 1 | OR |  |  |
| ADMIN.5588 |  | BOH/QTS Ops 1025 // Install Flooring and Base |  | 3d | 2026-11-13 | 2026-11-17 | ADMIN.5586 |  |  |  |  | 7d | 0d | 874 | BOH | 1 | OR |  |  |
| ADMIN.5589 |  | BOH/QTS Ops 1025 // Hang / drop Ceiling trims |  | 2d | 2026-11-16 | 2026-11-17 | ADMIN.5587 |  |  |  |  | 7d | 0d | 873 | BOH | 1 | OR |  |  |
| ADMIN.5590 |  | BOH/QTS Ops 1025 // Install Trim-Out |  | 1d | 2026-11-18 | 2026-11-18 | ADMIN.5589, ADMIN.5588 |  |  |  |  | 7d | 0d | 876 | BOH | 1 | OR | HELIX | SM |
| ADMIN.5787 |  | BOH/QTS Ops 1025 // BOH - Room Ready to Receive Equipment | milestone | 0d | 2026-11-18 | 2026-11-18 | ADMIN.5589 |  |  |  |  | 8d | 1d | 820 | BOH | 1 | OR | HELIX | SM |
| ADMIN.5591 |  | BOH/QTS Ops 1025 // Install Doors and Hardware |  | 1d | 2026-11-19 | 2026-11-19 | ADMIN.5787 SS, ADMIN.5590 |  |  |  |  | 7d | 0d | 837 | BOH | 1 | OR |  |  |
| ADMIN.5592 |  | BOH/QTS Ops 1025 // Finish & Clean |  | 1d | 2026-11-20 | 2026-11-20 | ADMIN.5591, ADMIN.5590 |  |  |  |  | 7d | 21d | 877 | BOH | 1 | OR |  |  |
|  | 7 | **Conf. Room 1025H** |  |  | 2026-09-23 | 2026-11-20 |  |  |  |  |  |  |  |  |  |  |  |  |  |
| ADMIN.5714 |  | BOH/Conf. Room 1025H // Frame Walls |  | 3d | 2026-09-23 A | 2026-09-28 A | ADMIN.5576 SS | 100% |  | 2026-09-18 | 2026-09-22 |  |  | 806 | BOH | 1 | OR |  |  |
| ADMIN.5715 |  | BOH/Conf. Room 1025H // MEPF Layout of Overhead Supports |  | 8d | 2026-09-28 A | 2026-10-07 A | ADMIN.5714 | 100% |  | 2026-09-23 | 2026-10-02 |  |  | 852 | BOH | 1 | OR | HELIX | SM |
| ADMIN.5716 |  | BOH/Conf. Room 1025H // Top Down Install of Sheetrock - Priority Walls |  | 2d | 2026-09-29 A | 2026-10-06 A | ADMIN.5714 | 100% |  | 2026-10-05 | 2026-10-06 |  |  | 809 | BOH | 1 | OR |  |  |
| ADMIN.5717 |  | BOH/Conf. Room 1025H // Install MEPF Overhead Supports |  | 2d | 2026-10-08 A | 2026-10-15 | ADMIN.5715 SS+2d |  | 2d | 2026-10-01 | 2026-10-02 | 7d | 0d | 851 | BOH | 1 | OR | HELIX | SM |
| ADMIN.5718 |  | BOH/Conf. Room 1025H // MEPF Overhead Install |  | 10d | 2026-10-13 A | 2026-10-29 | ADMIN.5717 SS+5d |  | 10d | 2026-10-08 | 2026-10-22 | 7d | 0d | 853 | BOH | 1 | OR | HELIX | SM |
| ADMIN.6229 |  | BOH/Conf. Room 1025H // BMS & EPMS Rough In |  | 2d | 2026-10-14 | 2026-10-15 | ADMIN.5714 |  |  |  |  | 26d | 19d |  | BOH |  |  |  |  |
| ADMIN.5719 |  | BOH/Conf. Room 1025H // MEPF In-wall rough-in |  | 2d | 2026-10-30 | 2026-11-02 | ADMIN.5718 |  |  |  |  | 7d | 0d | 873 | BOH | 1 | OR | HELIX | SM |
| ADMIN.5720 |  | BOH/Conf. Room 1025H // Install Fire Alarm and Security |  | 3d | 2026-10-30 | 2026-11-03 | ADMIN.5718 |  |  |  |  | 11d | 4d | 873 | BOH | 1 | OR | HELIX | W |
| ADMIN.5721 |  | BOH/Conf. Room 1025H // 1-Side & Finish Priority Walls |  | 2d | 2026-11-03 | 2026-11-04 | ADMIN.5719, ADMIN.5718, ADMIN.5716 |  |  |  |  | 7d | 0d | 816 | BOH | 1 | OR |  |  |
| ADMIN.5722 |  | BOH/Conf. Room 1025H // Tape and Finish Walls |  | 3d | 2026-11-05 | 2026-11-09 | ADMIN.5721 |  |  |  |  | 7d | 0d | 820 | BOH | 1 | OR |  |  |
| ADMIN.5723 |  | BOH/Conf. Room 1025H // Install Ceiling grid |  | 4d | 2026-11-05 | 2026-11-10 | ADMIN.5721 |  |  |  |  | 7d | 0d | 873 | BOH | 1 | OR |  |  |
| ADMIN.5724 |  | BOH/Conf. Room 1025H // Final paint |  | 2d | 2026-11-10 | 2026-11-12 | ADMIN.5722, ADMIN.5720, ADMIN.6229 FF |  |  |  |  | 7d | 0d | 872 | BOH | 1 | OR |  |  |
| ADMIN.5725 |  | BOH/Conf. Room 1025H // Hang hard-lid ceiling |  | 2d | 2026-11-12 | 2026-11-13 | ADMIN.5723 |  |  |  |  | 7d | 0d | 873 | BOH | 1 | OR |  |  |
| ADMIN.5726 |  | BOH/Conf. Room 1025H // Install Flooring and Base |  | 3d | 2026-11-13 | 2026-11-17 | ADMIN.5724 |  |  |  |  | 7d | 0d | 874 | BOH | 1 | OR |  |  |
| ADMIN.5727 |  | BOH/Conf. Room 1025H // Hang / drop Ceiling trims |  | 2d | 2026-11-16 | 2026-11-17 | ADMIN.5725 |  |  |  |  | 7d | 0d | 873 | BOH | 1 | OR |  |  |
| ADMIN.5728 |  | BOH/Conf. Room 1025H // Install Trim-Out |  | 1d | 2026-11-18 | 2026-11-18 | ADMIN.5727, ADMIN.5726 |  |  |  |  | 7d | 0d | 876 | BOH | 1 | OR | HELIX | SM |
| ADMIN.5788 |  | BOH/Conf. Room 1025H // BOH - Room Ready to Receive Equipment | milestone | 0d | 2026-11-18 | 2026-11-18 | ADMIN.5727 |  |  |  |  | 8d | 1d | 820 | BOH | 1 | OR | HELIX | SM |
| ADMIN.5729 |  | BOH/Conf. Room 1025H // Install Doors and Hardware |  | 1d | 2026-11-19 | 2026-11-19 | ADMIN.5788 SS, ADMIN.5728 |  |  |  |  | 7d | 0d | 837 | BOH | 1 | OR |  |  |
| ADMIN.5730 |  | BOH/Conf. Room 1025H // Finish & Clean |  | 1d | 2026-11-20 | 2026-11-20 | ADMIN.5729, ADMIN.5728 |  |  |  |  | 7d | 21d | 877 | BOH | 1 | OR |  |  |

| ID | WBS | Activity | Type | Duration | Start | Finish | Predecessors | Complete | Remaining | Planned start | Planned finish | Total float | Free float | MSP Activity ID | QTS - AREA | 05 -SUFFOLK - Building Phase | QTS - DASH | QTS - Subcontractor | QTS - Resp | MBTA: Work Type |
| --- | --- | --- | --- | --- | --- | --- | --- | --- | --- | --- | --- | --- | --- | --- | --- | --- | --- | --- | --- | --- |
|  | 16 | **Flex 1020** |  |  | 2026-09-24 | 2026-11-18 |  |  |  |  |  |  |  |  |  |  |  |  |  |  |
| ADMIN.5731 |  | BOH/Flex 1020 // Frame Priority Walls |  | 3d | 2026-09-24 A | 2026-09-28 A | ADMIN.5714 SS | 100% |  | 2026-09-18 | 2026-09-22 |  |  | 806 | BOH | 1 | OR |  |  |  |
| ADMIN.5732 |  | BOH/Flex 1020 // MEPF Layout of Overhead Supports |  | 8d | 2026-09-29 A | 2026-10-23 | ADMIN.5731 |  | 8d | 2026-09-23 | 2026-10-02 | 9d | 0d | 852 | BOH | 1 | OR | HELIX | SM |  |
| ADMIN.5734 |  | BOH/Flex 1020 // Install MEPF Overhead Supports |  | 2d | 2026-09-29 A | 2026-10-15 | ADMIN.5732 SS |  | 2d | 2026-09-23 | 2026-09-24 | 9d | 0d | 851 | BOH | 1 | OR | HELIX | SM |  |
| ADMIN.6239 |  | BOH/Flex 1020 // BMS & EPMS Rough In |  | 2d | 2026-10-05 A | 2026-10-06 A | ADMIN.5731 | 100% |  | 2026-10-22 | 2026-10-23 |  |  |  | BOH |  |  |  |  |  |
| ADMIN.5735 |  | BOH/Flex 1020 // MEPF Overhead Install |  | 10d | 2026-10-14 | 2026-10-27 | ADMIN.5734 SS+5d |  |  |  |  | 9d | 0d | 853 | BOH | 1 | OR | HELIX | SM |  |
| ADMIN.5733 |  | BOH/Flex 1020 // Top Down Install of Sheetrock - Priority Walls |  | 2d | 2026-10-26 | 2026-10-27 | ADMIN.5732 |  |  |  |  | 11d | 2d | 809 | BOH | 1 | OR |  |  |  |
| ADMIN.5736 |  | BOH/Flex 1020 // MEPF In-wall rough-in |  | 2d | 2026-10-28 | 2026-10-29 | ADMIN.5735 |  |  |  |  | 9d | 0d | 873 | BOH | 1 | OR | HELIX | SM |  |
| ADMIN.5737 |  | BOH/Flex 1020 // Install Fire Alarm and Security |  | 3d | 2026-10-28 | 2026-10-30 | ADMIN.5735 |  |  |  |  | 13d | 4d | 873 | BOH | 1 | OR | HELIX | W |  |
| ADMIN.5738 |  | BOH/Flex 1020 // 1-Side & Finish Priority Walls |  | 2d | 2026-10-30 | 2026-11-02 | ADMIN.5736, ADMIN.5735, ADMIN.5733 |  |  |  |  | 9d | 0d | 816 | BOH | 1 | OR |  |  |  |
| ADMIN.5739 |  | BOH/Flex 1020 // Tape and Finish Walls |  | 3d | 2026-11-03 | 2026-11-05 | ADMIN.5738 |  |  |  |  | 9d | 0d | 820 | BOH | 1 | OR |  |  |  |
| ADMIN.5740 |  | BOH/Flex 1020 // Final paint |  | 2d | 2026-11-06 | 2026-11-09 | ADMIN.5739, ADMIN.5737, ADMIN.6239 FF |  |  |  |  | 9d | 0d | 872 | BOH | 1 | OR |  |  |  |
| ADMIN.5741 |  | BOH/Flex 1020 // Install Flooring and Base |  | 3d | 2026-11-10 | 2026-11-13 | ADMIN.5740 |  |  |  |  | 9d | 0d | 874 | BOH | 1 | OR |  |  |  |
| ADMIN.5742 |  | BOH/Flex 1020 // Install Trim-Out |  | 1d | 2026-11-16 | 2026-11-16 | ADMIN.5741 |  |  |  |  | 9d | 0d | 876 | BOH | 1 | OR | HELIX | SM |  |
| ADMIN.5743 |  | BOH/Flex 1020 // Install Doors and Hardware |  | 1d | 2026-11-17 | 2026-11-17 | ADMIN.5742 |  |  |  |  | 9d | 0d | 837 | BOH | 1 | OR |  |  |  |
| ADMIN.5744 |  | BOH/Flex 1020 // Finish & Clean |  | 1d | 2026-11-18 | 2026-11-18 | ADMIN.5743, ADMIN.5742 |  |  |  |  | 9d | 23d | 877 | BOH | 1 | OR |  |  |  |
|  | 17 | **Loading Dock 1010** |  |  | 2026-09-16 | 2026-12-22 |  |  |  |  |  |  |  |  |  |  |  |  |  |  |
| DH1300.LD.2031 |  | BOH/Loading Dock #1010 // Overhead Fire Protection |  | 5d | 2026-09-16 A | 2026-09-22 A | ADMIN.5549 | 100% |  | 2026-08-21 | 2026-08-27 |  |  |  | BOH |  | OR |  |  | Con/Install |
| DH1300.LD.2032 |  | BOH/Loading Dock #1010 // Overhead Mechanical Piping |  | 5d | 2026-09-24 A | 2026-10-20 | DH1300.LD.2031 |  | 5d | 2026-08-28 | 2026-09-03 | -14d | 0d |  | BOH |  | OR |  |  | Con/Install |
| DH1300.LD.2033 |  | BOH/Loading Dock #1010 // OH Electrical Rough |  | 5d | 2026-10-21 | 2026-10-27 | DH1300.LD.2032 |  |  |  |  | -14d | 0d |  | BOH |  | OR | HELIX | SM | Con/Install |
| DH1300.LD.2034 |  | BOH/Loading Dock #1010 // Overhead Mechanical Duct |  | 5d | 2026-10-21 | 2026-10-27 | DH1300.LD.2032 |  |  |  |  | -14d | 0d |  | BOH |  | OR |  |  | Con/Install |
| DH1300.LD.2035 |  | BOH/Loading Dock #1010 // In-Wall Electrical Rough |  | 2d | 2026-10-28 | 2026-10-29 | DH1300.LD.2033 |  |  |  |  | -14d | 0d |  | BOH |  | OR | HELIX | SM | Con/Install |
| DH1300.LD.2036 |  | BOH/Loading Dock #1010 // Top of Wall Fire Stop |  | 2d | 2026-10-28 | 2026-10-29 | DH1300.LD.2033 |  |  |  |  | 0d | 14d |  | BOH |  | OR |  |  | Con/Install |
| DH1300.LD.2037 |  | BOH/Loading Dock #1010 // Install Dock Levelers |  | 2d | 2026-10-28 | 2026-10-29 | DH1300.LD.2034 |  |  |  |  | -14d | 0d |  | BOH |  | OR |  |  | Con/Install |
| DH1300.LD.2038 |  | BOH/Loading Dock #1010 // In-Wall Inspection |  | 1d | 2026-10-30 | 2026-10-30 | DH1300.LD.2037, DH1300.LD.2035 |  |  |  |  | -14d | 0d |  | BOH |  | OR |  |  | Con/Install |
| DH1300.LD.2039 |  | BOH/Loading Dock #1010 // Hang, Tape, & Finish Drywall |  | 10d | 2026-11-02 | 2026-11-16 | DH1300.LD.2038 |  |  |  |  | -14d | 0d |  | BOH |  | OR |  |  | Con/Install |
| DH1300.LD.2040 |  | BOH/Loading Dock #1010 // Paint Walls |  | 3d | 2026-11-17 | 2026-11-19 | DH1300.LD.2039 |  |  |  |  | -14d | 0d |  | BOH |  | OR |  |  | Con/Install |
| DH1300.LD.2041 |  | BOH/Loading Dock #1010 // Install Fire Alarm |  | 5d | 2026-11-20 | 2026-11-27 | DH1300.LD.2036, DH1300.LD.2034, DH1300.LD.2040 |  |  |  |  | -14d | 0d |  | BOH |  | OR | HELIX | W | Con/Install |
| DH1300.LD.2042 |  | BOH/Loading Dock #1010 // Pull, Test, & Terminate |  | 6d | 2026-11-20 | 2026-11-30 | DH1300.LD.2040 |  |  |  |  | -13d | 0d |  | BOH |  | OR |  |  | Con/Install |
| DH1300.LD.2043 |  | BOH/Loading Dock #1010 // Install Overhead Door - 0160.2 |  | 1d | 2026-11-30 | 2026-11-30 | DH1300.LD.2041, DH1300.LD.2037 |  |  |  |  | -14d | 0d |  | BOH |  | OR |  |  | Con/Install |
| DH1300.LD.2044 |  | BOH/Loading Dock #1010 // Install Overhead Door - 0160.3 |  | 1d | 2026-12-01 | 2026-12-01 | DH1300.LD.2043 |  |  |  |  | -14d | 0d |  | BOH |  | OR |  |  | Con/Install |
| DH1300.LD.2046 |  | BOH/Loading Dock #1010 // Install Overhead Lighting Fixtures |  | 5d | 2026-12-01 | 2026-12-07 | DH1300.LD.2042 |  |  |  |  | -13d | 1d |  | BOH |  | OR | HELIX | SM | Con/Install |
| DH1300.LD.2045 |  | BOH/Loading Dock #1010 // Loading Dock Operational | milestone | 0d | 2026-12-01 | 2026-12-01 | DH1300.LD.2044 |  |  |  |  | -14d | 0d |  | BOH |  | OR |  |  | Con/Install |
| DH1300.LD.2047 |  | BOH/Loading Dock #1010 // Install Fire Sprinkler Heads |  | 5d | 2026-12-02 | 2026-12-08 | DH1300.LD.2045, DH1300.LD.2041 |  |  |  |  | -14d | 0d |  | BOH |  | OR |  |  | Con/Install |
| DH1300.LD.2048 |  | BOH/Loading Dock #1010// Electrical Trim |  | 5d | 2026-12-09 | 2026-12-15 | DH1300.LD.2044, DH1300.LD.2047, DH1300.LD.2046, DH1300.LD.2040 |  |  |  |  | -14d | 0d |  | BOH |  | OR | HELIX | SM | Con/Install |
| DH1300.LD.2049 |  | BOH/Loading Dock #1010 // Clean and Punch |  | 5d | 2026-12-16 | 2026-12-22 | DH1300.LD.2048 |  |  |  |  | -14d | 0d |  | BOH |  | OR |  |  | Con/Install |

| ID | WBS | Activity | Type | Duration | Start | Finish | Predecessors | Complete | Planned start | Planned finish | Total float | Free float | MSP Activity ID | QTS - AREA | 05 -SUFFOLK - Building Phase | QTS - Subcontractor | QTS - Resp | QTS - DASH |
| --- | --- | --- | --- | --- | --- | --- | --- | --- | --- | --- | --- | --- | --- | --- | --- | --- | --- | --- |
|  | 1 | **Equipment** |  |  | 2026-09-14 | 2026-11-10 |  |  |  |  |  |  |  |  |  |  |  |  |
|  | 2 | **Roof - RTUs** |  |  | 2026-09-14 | 2026-11-10 |  |  |  |  |  |  |  |  |  |  |  |  |
|  | 1 | **Column Lines 7.0 thru 7.3** |  |  | 2026-09-14 | 2026-11-10 |  |  |  |  |  |  |  |  |  |  |  |  |
| DH1100.12062 |  | BOH/Roof - RTUs // Set RTU-RT Units - RTU-RT- 17 |  | 3d | 2026-09-14 A | 2026-09-16 A | STRUCTURE.7613, STRUCTURE.7610 | 100% | 2026-10-05 | 2026-10-07 |  |  | 1120 | BOH | 2 |  |  |  |
| DH1100.12063 |  | BOH/Roof - RTUs // Install Mechanical Piping |  | 10d | 2026-10-14 | 2026-10-27 | DH1100.12062, DH1100.12062 SS |  |  |  | -1d | 0d | 1117 | BOH | 2 |  |  |  |
| DH1100.12060 |  | BOH/Roof - RTUs // Install heat trace system |  | 10d | 2026-10-28 | 2026-11-10 | DH1100.12063 |  |  |  | -1d | 0d | 1116 | BOH | 2 | HELIX | JT |  |
| DH1200.7842 |  | BOH/Roof - RTUs // Install Electrical Conduit and Controls Piping |  | 10d | 2026-10-28 | 2026-11-10 | DH1100.12063, DH1100.12062 SS, BOH-MS-3 FF |  |  |  | 14d | 28d | 1118 | BOH | 2 | HELIX |  |  |
|  | 1 | **Gens - XFMRs etc** |  |  | 2026-10-14 | 2026-10-28 |  |  |  |  |  |  |  |  |  |  |  |  |
| DH1100.12097 |  | BOH // Set House Generator - GEN-HSE-BOH |  | 1d | 2026-10-14 | 2026-10-14 | A5694 |  |  |  | 8d | 0d | 1120 | BOH | 2 | HELIX | D18A |  |
| DH1600.2282 |  | BOH // Set House XFMR - XFMR-HSE-BOH |  | 1d | 2026-10-15 | 2026-10-15 | DH1100.12097 |  |  |  | 8d | 0d | 935 | BOH | 2 | HELIX | D18A |  |
| DH1600.2283 |  | BOH // Set House XFMR - XFMR-HSE-1Dp |  | 1d | 2026-10-16 | 2026-10-16 | DH1600.2282 |  |  |  | 8d | 0d | 935 | BOH | 2 | HELIX | D18A |  |
| DH1600.2020 |  | BOH // Set House Static Transfer Switch - STS-HSE-1B1 |  | 1d | 2026-10-19 | 2026-10-19 | DH1600.2283 |  |  |  | 8d | 0d | 935 | BOH | 2 | HELIX | SM |  |
| DH1600.2280 |  | BOH // Set House Static Transfer Switch - STS-HSE-1B2 |  | 1d | 2026-10-20 | 2026-10-20 | DH1600.2020 FF, DH1600.2020 |  |  |  | 8d | 0d | 936 | BOH | 2 | HELIX | SM |  |
| DH1600.2281 |  | BOH // Set House Static Transfer Switch - STS-HSE-1D |  | 1d | 2026-10-21 | 2026-10-21 | DH1600.2280 |  |  |  | 8d | 0d | 936 | BOH | 2 | HELIX | SM |  |
| DH1100.12102 |  | BOH // Set House SWD Switch - SWD-HSE-1B-MAIN |  | 1d | 2026-10-22 | 2026-10-22 | DH1600.2281 |  |  |  | 8d | 0d | 1120 | BOH | 2 | HELIX | SM |  |
| DH1100.12103 |  | BOH // Set House SWD Switch - SWD-HSE-1D-MAIN |  | 1d | 2026-10-23 | 2026-10-23 | DH1100.12102 |  |  |  | 8d | 0d | 1120 | BOH | 2 | HELIX | SM |  |
| DH1100.12107 |  | BOH // Set House UPS - UPS-HSE-1B1 |  | 1d | 2026-10-26 | 2026-10-26 | DH1100.12103, ADMIN.5760 |  |  |  | 8d | 0d | 1120 | BOH | 2 | HELIX | SM |  |
| DH1100.12108 |  | BOH // Set House UPS - UPS-HSE-1B2 |  | 1d | 2026-10-27 | 2026-10-27 | DH1100.12107, ADMIN.5760 |  |  |  | 8d | 0d | 1120 | BOH | 2 | HELIX | SM |  |
| DH1100.12109 |  | BOH // Set House UPS - UPS-HSE-1D |  | 1d | 2026-10-28 | 2026-10-28 | DH1100.12108, ADMIN.5760 |  |  |  | 8d | 9d | 1120 | BOH | 2 | HELIX | SM |  |
|  | 2 | **Commissioning & Start Up** |  |  | 2026-11-12 | 2027-01-04 |  |  |  |  |  |  |  |  |  |  |  |  |
| HSE-SYS-STU-4 |  | BOH/Commissioning & Start Up // L3 Start-Up |  | 15d | 2026-11-12 | 2026-12-03 | DH1100.12060, DH1100.12109 |  |  |  | -1d | 0d |  | BOH |  | HELIX | TBD | Cx |
| HSE-SYS-STU-5 |  | BOH/Commissioning & Start Up // L4 Cx |  | 15d | 2026-12-04 | 2026-12-24 | HSE-SYS-STU-4 |  |  |  | 18d | 0d |  | BOH |  |  | TBD | Cx |
| HSE-SYS-STU-17 |  | BOH/Commissioning & Start Up // BOH Clean & Punch | milestone | 0d | 2026-12-22 | 2026-12-22 | DH1300.LD.2049 FF, ADMIN.5519 FF, ADMIN.5533 FF, ADMIN.5547 FF, ADMIN.5561 FF, ADMIN.5575 FF, ADMIN.5657 FF, ADMIN.5671 FF, ADMIN.5685 FF, ADMIN.5699 FF, ADMIN.5713 FF, ADMIN.5643 FF, ADMIN.5618 FF, ADMIN.5609 FF, ADMIN.5592 FF, ADMIN.5730 FF, ADMIN.5744 FF, BOH-MS-3 FF |  |  |  | -14d | 0d |  | BOH |  |  | TBD | Cx |
| HSE-SYS-STU-6 |  | BOH/Commissioning & Start Up // L5 Cx (Completes Jan 01 2027) |  | 5d | 2026-12-28 | 2027-01-04 | HSE-SYS-STU-17, HSE-SYS-STU-5 |  |  |  | 18d |  |  | BOH |  |  | TBD | Cx |

| ID | WBS | Activity | Duration | Start | Finish | Predecessors | Complete | Planned start | Planned finish | MSP Activity ID | QTS - Subcontractor | QTS - AREA | QTS - Resp | 12 - SUFFOLK - Export_to_Procore | QTS - DASH |
| --- | --- | --- | --- | --- | --- | --- | --- | --- | --- | --- | --- | --- | --- | --- | --- |
|  | 5 | **Data Hall 1100** |  | 2026-04-29 | 2027-02-12 |  |  |  |  |  |  |  |  |  |  |
|  | 10 | **Exterior Build Out** |  | 2026-04-29 | 2026-11-25 |  |  |  |  |  |  |  |  |  |  |
|  | 9 | **Electrical Yard** |  | 2026-06-19 | 2026-08-07 |  |  |  |  |  |  |  |  |  |  |
|  | 3 | **Electrical** |  | 2026-06-19 | 2026-08-07 |  |  |  |  |  |  |  |  |  |  |
|  | 1 | **Underground** |  | 2026-06-19 | 2026-07-27 |  |  |  |  |  |  |  |  |  |  |
|  | 1 | **Column Line 1 to 1.9** |  | 2026-06-19 | 2026-07-27 |  |  |  |  |  |  |  |  |  |  |
| A2920 |  | DH1100/Electrical Yard-Underground // Excavate A110 - F110 XFMR Pads (A-Side) | 1d | 2026-06-19 A | 2026-06-19 A | STRUCTURE.7050 SS+2d, STRUCTURE.7655, FDN.1236 FS+2d, FDN.1235, A2650, FDN.1010 | 100% |  |  | 1048 | HELIX | DH1100 | D18A | Y | EY |
| A2930 |  | DH1100/Electrical Yard-Underground // Run Conduit A110 - F110 XFMR Pads (A-Side) | 2d | 2026-06-22 A | 2026-06-23 A | A2920 | 100% |  |  | 1050 | HELIX | DH1100 | D18A | Y | EY |
| PS920 |  | DH1100/Electrical Yard-Underground // Excavate A110 - F110 XFMR Pads (P-Side) | 1d | 2026-06-23 A | 2026-06-23 A | A5870 | 100% |  |  | 1048 |  | DH1100 |  | Y | EY |
| A3140 |  | DH1100/Electrical Yard-Underground // Backfill A110 - F110 XFMR Pads (A-Side) | 1d | 2026-06-24 A | 2026-07-16 A | A2930 | 100% | 2026-06-24 | 2026-06-24 | 1051 | HELIX | DH1100 | D18A | Y | EY |
| A5868 |  | DH1100/Electrical Yard-Underground // Excavate G110 - R110 XFMR Pads (A-Side) | 1d | 2026-06-25 A | 2026-06-25 A | A3140 | 100% |  |  | 1048 |  | DH1100 |  | Y | EY |
| A5869 |  | DH1100/Electrical Yard-Underground // Run Conduit G110 - R110 XFMR Pads (A-Side) | 2d | 2026-06-26 A | 2026-06-29 A | A5868 | 100% |  |  | 1050 |  | DH1100 |  | Y | EY |
| A5870 |  | DH1100/Electrical Yard-Underground // Backfill G110 - R110 XFMR Pads (A-Side) | 1d | 2026-06-30 A | 2026-07-17 A | A5869 | 100% | 2026-06-30 | 2026-06-30 | 1051 |  | DH1100 |  | Y | EY |
| PS930 |  | DH1100/Electrical Yard-Underground // Run Conduit A110 - F110 XFMR Pads (P-Side) | 2d | 2026-07-20 A | 2026-07-21 A | PS920 | 100% | 2026-07-28 | 2026-07-29 | 1050 |  | DH1100 |  | Y | EY |
| PS140 |  | DH1100/Electrical Yard-Underground // Backfill A110 - F110 XFMR Pads (P-Side) | 1d | 2026-07-22 A | 2026-07-22 A | PS930 | 100% | 2026-07-30 | 2026-07-30 | 1051 |  | DH1100 |  | Y | EY |
| PS868 |  | DH1100/Electrical Yard-Underground // Excavate G110 - R110 XFMR Pads (P-Side) | 1d | 2026-07-23 A | 2026-07-23 A | PS140 | 100% | 2026-07-31 | 2026-07-31 | 1048 |  | DH1100 |  | Y | EY |
| PS869 |  | DH1100/Electrical Yard-Underground // Run Conduit G110 - R110 XFMR Pads (P-Side) | 2d | 2026-07-24 A | 2026-07-27 A | PS868 | 100% | 2026-08-03 | 2026-08-04 | 1050 |  | DH1100 |  | Y | EY |
| PS870 |  | DH1100/Electrical Yard-Underground // Backfill G110 - R110 XFMR Pads (P-Side) | 1d | 2026-07-27 A | 2026-07-27 A | PS869 | 100% | 2026-08-05 | 2026-08-05 | 1051 |  | DH1100 |  | Y | EY |
|  | 2 | **Column Line 1.0 - 1.9** |  | 2026-06-29 | 2026-07-15 |  |  |  |  |  |  |  |  |  |  |
| A3150 |  | DH1100/Electrical Yard-Underground // Excavate From MVG to Transformers | 5d | 2026-06-29 A | 2026-07-06 A | A2920 | 100% | 2026-07-24 | 2026-07-30 | 1053 | HELIX | DH1100 | D18A | Y | EY |
| A3160 |  | DH1100/Electrical Yard-Underground // Install Raceway from MVG to Transformers | 5d | 2026-07-07 A | 2026-07-13 A | A3150 | 100% | 2026-07-31 | 2026-08-06 | 1054 | HELIX | DH1100 | D18A | Y | EY |
| A3170 |  | DH1100/Electrical Yard-Underground // Backfill Raceways from MVG to Transformers | 3d | 2026-07-14 A | 2026-07-15 A | A3160 | 100% | 2026-08-07 | 2026-08-11 | 1055 | HELIX | DH1100 | D18A | Y | EY |
|  | 2 | **Pads** |  | 2026-07-16 | 2026-08-07 |  |  |  |  |  |  |  |  |  |  |
| EP.1020 |  | DH1100/Electrical Yard-Pads // Excavate / Form / Rebar /pour-Finish XFMR Pads | 10d | 2026-07-16 A | 2026-07-29 A | A3170 FF, A3170, A3140 | 100% | 2026-07-27 | 2026-08-07 | 1065 |  | DH1100 |  | Y | EY |
| EP.1010 |  | DH1100/Electrical Yard-Pads // Pad Strip and Cure | 8d | 2026-07-21 A | 2026-07-29 A | EP.1020, A5856, EP.1030 | 100% | 2026-08-20 | 2026-08-31 | 1068 |  | DH1100 |  | Y | EY |
| EP.1030 |  | DH1100/Electrical Yard-Pads // Excavate / Form / Rebar /pour-Finish Pads | 6d | 2026-07-21 A | 2026-07-28 A | A5856, EP.1020 | 100% | 2026-08-12 | 2026-08-19 | 1066 |  | DH1100 |  | Y | EY |
| EP.1031 |  | DH1100/ Xfmr Delivery | 4d | 2026-08-07 A | 2026-08-07 A | EP.1010 | 100% | 2026-07-24 | 2026-07-29 |  |  | DH1100 |  |  |  |

Notes:
- A2920: Schedule Notes: IMP Delay

| ID | WBS | Activity | Duration | Start | Finish | Predecessors | Complete | Planned start | Planned finish | MSP Activity ID | QTS - Subcontractor | QTS - AREA | QTS - Resp | 12 - SUFFOLK - Export_to_Procore | QTS - DASH |
| --- | --- | --- | --- | --- | --- | --- | --- | --- | --- | --- | --- | --- | --- | --- | --- |
|  | 3 | **Equipment** |  | 2026-08-07 | 2026-08-07 |  |  |  |  |  |  |  |  |  |  |
|  | 1 | **A110** |  | 2026-08-07 | 2026-08-07 |  |  |  |  |  |  |  |  |  |  |
| EE..1351 |  | DH1100/Electrical Yard // Set XFMR - XFMR-A110a | 1d | 2026-08-07 A | 2026-08-07 A | EP.1020, EP.1010, EP.1031 | 100% | 2026-09-01 | 2026-09-01 | 537 | HELIX | DH1100 | D18A | Y | EY |
| EE..1352 |  | DH1100/Electrical Yard // Set XFMR - XFMR-A110p | 1d | 2026-08-07 A | 2026-08-07 A | EE..1351 SS | 100% | 2026-09-02 | 2026-09-02 | 537 | HELIX | DH1100 | D18A |  | EY |
|  | 2 | **B110** |  | 2026-08-07 | 2026-08-07 |  |  |  |  |  |  |  |  |  |  |
| EE..1353 |  | DH1100/Electrical Yard // Set XFMR - XFMR-B110a | 1d | 2026-08-07 A | 2026-08-07 A | EE..1352 SS | 100% | 2026-09-03 | 2026-09-03 | 537 | HELIX | DH1100 | D18A |  | EY |
| EE..1354 |  | DH1100/Electrical Yard // Set XFMR - XFMR-B110p | 1d | 2026-08-07 A | 2026-08-07 A | EE..1353 SS | 100% | 2026-09-04 | 2026-09-04 | 537 | HELIX | DH1100 | D18A |  | EY |
|  | 3 | **C110** |  | 2026-08-07 | 2026-08-07 |  |  |  |  |  |  |  |  |  |  |
| EE..1355 |  | DH1100/Electrical Yard // Set XFMR - XFMR-C110a | 1d | 2026-08-07 A | 2026-08-07 A | EE..1354 FF | 100% | 2026-09-08 | 2026-09-08 | 537 | HELIX | DH1100 | D18A |  | EY |
| EE..1356 |  | DH1100/Electrical Yard // Set XFMR - XFMR-C110p | 1d | 2026-08-07 A | 2026-08-07 A | EE..1355 SS | 100% | 2026-09-09 | 2026-09-09 | 537 | HELIX | DH1100 | D18A |  | EY |
|  | 4 | **D110** |  | 2026-08-07 | 2026-08-07 |  |  |  |  |  |  |  |  |  |  |
| EE..1357 |  | DH1100/Electrical Yard // Set XFMR - XFMR-D110a | 1d | 2026-08-07 A | 2026-08-07 A | EE..1356 FF | 100% | 2026-09-10 | 2026-09-10 | 537 | HELIX | DH1100 | D18A |  | EY |
| EE..1358 |  | DH1100/Electrical Yard // Set XFMR - XFMR-D110p | 1d | 2026-08-07 A | 2026-08-07 A | EE..1357 SS | 100% | 2026-09-11 | 2026-09-11 | 537 | HELIX | DH1100 | D18A |  | EY |
|  | 5 | **E110** |  | 2026-08-07 | 2026-08-07 |  |  |  |  |  |  |  |  |  |  |
| EE..1359 |  | DH1100/Electrical Yard // Set XFMR - XFMR-E110a | 1d | 2026-08-07 A | 2026-08-07 A | EE..1358 FF | 100% | 2026-09-14 | 2026-09-14 | 537 | HELIX | DH1100 | D18A |  | EY |
| EE..1360 |  | DH1100/Electrical Yard // Set XFMR - XFMR-E110p | 1d | 2026-08-07 A | 2026-08-07 A | EE..1359 SS | 100% | 2026-09-15 | 2026-09-15 | 537 | HELIX | DH1100 | D18A |  | EY |
|  | 6 | **F110** |  | 2026-08-07 | 2026-08-07 |  |  |  |  |  |  |  |  |  |  |
| EE..1361 |  | DH1100/Electrical Yard // Set XFMR - XFMR-F110a | 1d | 2026-08-07 A | 2026-08-07 A | EE..1360 FF | 100% | 2026-09-16 | 2026-09-16 | 537 | HELIX | DH1100 | D18A |  | EY |
| EE..1362 |  | DH1100/Electrical Yard // Set XFMR - XFMR-F110p | 1d | 2026-08-07 A | 2026-08-07 A | EE..1361 SS | 100% | 2026-09-17 | 2026-09-17 | 537 | HELIX | DH1100 | D18A |  | EY |
|  | 7 | **G110** |  | 2026-08-07 | 2026-08-07 |  |  |  |  |  |  |  |  |  |  |
| EE..1363 |  | DH1100/Electrical Yard // Set XFMR - XFMR-G110a | 1d | 2026-08-07 A | 2026-08-07 A | EE..1362 FF | 100% | 2026-09-18 | 2026-09-18 | 537 | HELIX | DH1100 | D18A |  | EY |
| EE..1364 |  | DH1100/Electrical Yard // Set XFMR - XFMR-G110p | 1d | 2026-08-07 A | 2026-08-07 A | EE..1363 SS | 100% | 2026-09-21 | 2026-09-21 | 537 | HELIX | DH1100 | D18A |  | EY |
|  | 8 | **H110** |  | 2026-08-07 | 2026-08-07 |  |  |  |  |  |  |  |  |  |  |
| EE..1365 |  | DH1100/Electrical Yard // Set XFMR - XFMR-H110a | 1d | 2026-08-07 A | 2026-08-07 A | EE..1364 FF | 100% | 2026-09-22 | 2026-09-22 | 537 | HELIX | DH1100 | D18A |  | EY |
| EE..1366 |  | DH1100/Electrical Yard // Set XFMR - XFMR-H110p | 1d | 2026-08-07 A | 2026-08-07 A | EE..1365 SS | 100% | 2026-09-23 | 2026-09-23 | 537 | HELIX | DH1100 | D18A |  | EY |

| ID | WBS | Activity | Type | Duration | Start | Finish | Predecessors | Complete | Planned start | Planned finish | Constraint | MSP Activity ID | QTS - Subcontractor | QTS - AREA | QTS - Resp | QTS - DASH | 12 - SUFFOLK - Export_to_Procore |
| --- | --- | --- | --- | --- | --- | --- | --- | --- | --- | --- | --- | --- | --- | --- | --- | --- | --- |
|  | 9 | **J110** |  |  | 2026-08-07 | 2026-08-07 |  |  |  |  |  |  |  |  |  |  |  |
| EE..1367 |  | DH1100/Electrical Yard // Set XFMR - XFMR-J110a |  | 1d | 2026-08-07 A | 2026-08-07 A | EE..1366 FF | 100% | 2026-09-24 | 2026-09-24 |  | 537 | HELIX | DH1100 | D18A | EY |  |
| EE..1368 |  | DH1100/Electrical Yard // Set XFMR - XFMR-J110p |  | 1d | 2026-08-07 A | 2026-08-07 A | EE..1367 SS | 100% | 2026-09-25 | 2026-09-25 |  | 537 | HELIX | DH1100 | D18A | EY |  |
|  | 10 | **K110** |  |  | 2026-08-07 | 2026-08-07 |  |  |  |  |  |  |  |  |  |  |  |
| EE..1369 |  | DH1100/Electrical Yard // Set XFMR - XFMR-K110a |  | 1d | 2026-08-07 A | 2026-08-07 A | EE..1368 FF | 100% | 2026-09-28 | 2026-09-28 |  | 537 | HELIX | DH1100 | D18A | EY |  |
| EE..1370 |  | DH1100/Electrical Yard // Set XFMR - XFMR-K110p |  | 1d | 2026-08-07 A | 2026-08-07 A | EE..1369 SS | 100% | 2026-09-29 | 2026-09-29 |  | 537 | HELIX | DH1100 | D18A | EY |  |
|  | 11 | **R110** |  |  | 2026-08-07 | 2026-08-07 |  |  |  |  |  |  |  |  |  |  |  |
| EE..1371 |  | DH1100/Electrical Yard // Set XFMR - XFMR-R110a |  | 1d | 2026-08-07 A | 2026-08-07 A | EE..1370 FF | 100% | 2026-09-30 | 2026-09-30 |  | 537 | HELIX | DH1100 | D18A | EY |  |
| EE..1372 |  | DH1100/Electrical Yard // Set XFMR - XFMR-R110p |  | 1d | 2026-08-07 A | 2026-08-07 A | EE..1371 SS | 100% | 2026-10-01 | 2026-10-01 |  | 537 | HELIX | DH1100 | D18A | EY |  |
|  | 1 | **Mechanical Yard** |  |  | 2026-04-29 | 2026-11-06 |  |  |  |  |  |  |  |  |  |  |  |
|  | 1 | **Pads** |  |  | 2026-04-29 | 2026-07-16 |  |  |  |  |  |  |  |  |  |  |  |
| A3210 |  | DH1100/Mechanical Yard-Pads // Excavate / Form / Rebar / Pour Chiller Pads |  | 15d | 2026-04-29 A | 2026-05-07 A | FDN.1110 | 100% | 2026-05-15 | 2026-06-05 |  | 1074 |  | DH1100 |  | MY | Y |
| A5861 |  | DH1100/Mechanical Yard-Pads // Set 10 " Pipe Supports |  | 4d | 2026-06-19 A | 2026-06-24 A | STRUCTURE.4850 SS+2d, STRUCTURE.7655, A3210 FS+14d | 100% |  |  |  | 1079 |  | DH1100 |  | MY | Y |
| A5862 |  | DH1100/Mechanical Yard-Pads // Exterior Lighting |  | 2d | 2026-06-25 A | 2026-06-26 A | STRUCTURE.4850 SS+4d, A5861 SS+2d | 100% | 2026-07-24 | 2026-07-27 |  | 1079 |  | DH1100 |  | MY | Y |
| A5863 |  | DH1100/Mechanical Yard-Pads // Excavate / Form / Rebar / Pour Support and TES Pads |  | 8d | 2026-06-29 A | 2026-07-06 A | A5862 SS+1d | 100% | 2026-06-29 | 2026-07-09 |  | 1079 |  | DH1100 |  | MY | Y |
| A5864 |  | DH1100/Mechanical Yard-Pads // Conduit Excavation |  | 8d | 2026-07-07 A | 2026-07-16 A | A5863 SS+5d | 100% | 2026-07-27 | 2026-08-05 |  | 1079 |  | DH1100 |  | MY | Y |
| A5865 |  | DH1100/Mechanical Yard-Pads // Install U/G Conduit |  | 8d | 2026-07-07 A | 2026-07-16 A | A5864 SS+2d | 100% | 2026-07-29 | 2026-08-07 |  | 1079 |  | DH1100 |  | MY | Y |
| A5866 |  | DH1100/Mechanical Yard-Pads // Waterproof Conduit Penetrations |  | 6d | 2026-07-07 A | 2026-07-14 A | A5865 SS+1d | 100% | 2026-07-30 | 2026-08-06 |  | 1079 |  | DH1100 |  | MY | Y |
| A5867 |  | DH1100/Mechanical Yard-Pads // Backfill Conduit |  | 8d | 2026-07-07 A | 2026-07-16 A | A5865 SS+2d, A5866 SS+1d | 100% | 2026-07-31 | 2026-08-11 |  | 1079 |  | DH1100 |  | MY | Y |
|  | 5 | **Equipment** |  |  | 2026-07-27 | 2026-11-06 |  |  |  |  |  |  |  |  |  |  |  |
|  | 1 | **A110** |  |  | 2026-07-27 | 2026-09-15 |  |  |  |  |  |  |  |  |  |  |  |
| DH1100.12117 |  | DH1100/Mechanical Yard-A110 // Prep & Pour Pipe Support Foundations |  | 8d | 2026-07-27 A | 2026-08-03 A | A5867 SS+1d | 100% | 2026-08-03 | 2026-08-12 |  | 1083 |  | DH1100 |  | MY | Y |
| DH1100.12023 |  | DH1100/Mechanical Yard-A110 // Install CHWP |  | 4d | 2026-08-17 A | 2026-08-20 A | STRUCTURE.7655, DH1100.12117 SS+7d | 100% | 2026-08-12 | 2026-08-17 |  | 1083 |  | DH1100 |  | MY | Y |
| DH1100.12002 |  | DH1100/Mechanical Yard-A110 // Set TES tank - TES-1CY40-A110 |  | 1d | 2026-09-08 A | 2026-09-08 A | DH1100.12023 | 100% | 2026-08-18 | 2026-08-18 |  | 1083 |  | DH1100 |  | MY | Y |
| DH1100.12001 |  | DH1100/Mechanical Yard-A110 // Set Chiller - CHLR-1CY40-A110 |  | 1d | 2026-09-15 A | 2026-09-15 A | A3210, A5867, STRUCTURE.4850 SS, DH1100.12118 | 100% | 2026-09-16 | 2026-09-16 |  | 1083 |  | DH1100 |  | MY | Y |
| DH1100.12118 |  | DH1100/Mechanical Yard- DH1100 - OFCI Chiller Ship Date (09/04/26) First Shipment | milestone | 0d | 2026-09-15 A | 2026-09-15 A | DH1100.12023 | 100% |  |  | finish on or after 2026-09-15 | 1083 |  | DH1100 |  |  | Y |

| ID | WBS | Activity | Duration | Start | Finish | Predecessors | Complete | Planned start | Planned finish | MSP Activity ID | QTS - AREA | 12 - SUFFOLK - Export_to_Procore | QTS - DASH |
| --- | --- | --- | --- | --- | --- | --- | --- | --- | --- | --- | --- | --- | --- |
|  | 2 | **B110** |  | 2026-08-20 | 2026-09-15 |  |  |  |  |  |  |  |  |
| DH1100.12026 |  | DH1100/Mechanical Yard-B110 // Install CHWP | 1d | 2026-08-20 A | 2026-08-20 A | DH1100.12023 SS | 100% | 2026-09-21 | 2026-09-21 | 1083 | DH1100 | Y | MY |
| DH1100.12027 |  | DH1100/Mechanical Yard-B110 // Install Mechanical Piping Mains (Building -to Line) | 1d | 2026-09-03 A | 2026-09-03 A | DH1100.12026 | 100% | 2026-09-22 | 2026-09-22 | 1083 | DH1100 |  | MY |
| DH1100.12004 |  | DH1100/Mechanical Yard-B110 // Set TES tank - TES-1CY40-B110 | 1d | 2026-09-08 A | 2026-09-08 A | DH1100.12002 SS, DH1100.12026 | 100% | 2026-09-18 | 2026-09-18 | 1083 | DH1100 | Y | MY |
| DH1100.12028 |  | DH1100/Mechanical Yard-B110 // Install Mechanical Chiller to Mains | 1d | 2026-09-09 A | 2026-09-09 A | DH1100.12027 | 100% | 2026-09-23 | 2026-09-23 | 1083 | DH1100 |  | MY |
| DH1100.12003 |  | DH1100/Mechanical Yard-B110 // Set Chiller - CHLR-1CY40-B110 | 1d | 2026-09-15 A | 2026-09-15 A | DH1100.12001 | 100% | 2026-09-17 | 2026-09-17 | 1083 | DH1100 | Y | MY |
|  | 3 | **C110** |  | 2026-08-20 | 2026-09-16 |  |  |  |  |  |  |  |  |
| DH1100.12029 |  | DH1100/Mechanical Yard-C110 // Install CHWP | 1d | 2026-08-20 A | 2026-08-20 A | DH1100.12026 SS | 100% | 2026-09-22 | 2026-09-22 | 1083 | DH1100 |  | MY |
| DH1100.12030 |  | DH1100/Mechanical Yard-C110 // Install Mechanical Piping Mains (Building -to Line) | 1d | 2026-09-03 A | 2026-09-03 A | DH1100.12029 | 100% | 2026-09-23 | 2026-09-23 | 1083 | DH1100 |  | MY |
| DH1100.12006 |  | DH1100/Mechanical Yardt-C110 // Set TES tank - TES-1CY40-C110 | 1d | 2026-09-08 A | 2026-09-08 A | DH1100.12004 SS, DH1100.12029 | 100% | 2026-09-21 | 2026-09-21 | 1083 | DH1100 | Y | MY |
| DH1100.12031 |  | DH1100/Mechanical Yard-C110 // Install Mechanical Chiller to Mains | 1d | 2026-09-09 A | 2026-09-09 A | DH1100.12030 | 100% | 2026-09-24 | 2026-09-24 | 1083 | DH1100 |  | MY |
| DH1100.12005 |  | DH1100/Mechanical Yard-C110 // Set Chiller - CHLR-1CY40-C110 | 1d | 2026-09-16 A | 2026-09-16 A | DH1100.12003 | 100% | 2026-09-18 | 2026-09-18 | 1083 | DH1100 | Y | MY |
|  | 4 | **D110** |  | 2026-08-21 | 2026-09-16 |  |  |  |  |  |  |  |  |
| DH1100.12032 |  | DH1100/Mechanical Yard-D110 // Install CHWP | 1d | 2026-08-21 A | 2026-08-21 A | DH1100.12029 | 100% | 2026-09-23 | 2026-09-23 | 1083 | DH1100 |  | MY |
| DH1100.12033 |  | DH1100/Mechanical Yard-D110 // Install Mechanical Piping Mains (Building -to Line) | 1d | 2026-09-03 A | 2026-09-03 A | DH1100.12032 | 100% | 2026-09-24 | 2026-09-24 | 1083 | DH1100 |  | MY |
| DH1100.12008 |  | DH1100/Mechanical Yard-D110 // Set TES tank - TES-1CY40-D110 | 1d | 2026-09-08 A | 2026-09-08 A | DH1100.12006 SS, DH1100.12032 | 100% | 2026-09-22 | 2026-09-22 | 1083 | DH1100 |  | MY |
| DH1100.12034 |  | DH1100/Mechanical Yard-D110 // Install Mechanical Chiller to Mains | 1d | 2026-09-09 A | 2026-09-09 A | DH1100.12033 | 100% | 2026-09-25 | 2026-09-25 | 1083 | DH1100 |  | MY |
| DH1100.12007 |  | DH1100/Mechanical Yard-D110 // Set Chiller - CHLR-1CY40-D110 | 1d | 2026-09-16 A | 2026-09-16 A | DH1100.12005 | 100% | 2026-09-21 | 2026-09-21 | 1083 | DH1100 | Y | MY |
|  | 5 | **E110** |  | 2026-08-21 | 2026-09-16 |  |  |  |  |  |  |  |  |
| DH1100.12035 |  | DH1100/Mechanical Yard-E110 // Install CHWP | 1d | 2026-08-21 A | 2026-08-21 A | DH1100.12032 SS | 100% | 2026-09-24 | 2026-09-24 | 1083 | DH1100 |  | MY |
| DH1100.12036 |  | DH1100/Mechanical Yardt-E110 // Install Mechanical Piping Mains (Building -to Line) | 1d | 2026-09-03 A | 2026-09-03 A | DH1100.12035 | 100% | 2026-09-25 | 2026-09-25 | 1083 | DH1100 |  | MY |
| DH1100.12010 |  | DH1100/Mechanical Yard-E110 // Set TES tank - TES-1CY40-E110 | 1d | 2026-09-08 A | 2026-09-08 A | DH1100.12008 SS, DH1100.12035 | 100% | 2026-09-23 | 2026-09-23 | 1083 | DH1100 |  | MY |
| DH1100.12037 |  | DH1100/Mechanical Yard-E110 // Install Mechanical Chiller to Mains | 1d | 2026-09-09 A | 2026-09-09 A | DH1100.12036 | 100% | 2026-09-28 | 2026-09-28 | 1083 | DH1100 |  | MY |
| DH1100.12009 |  | DH1100/Mechanical Yard-E110 // Set Chiller - CHLR-1CY40-E110 | 1d | 2026-09-16 A | 2026-09-16 A | DH1100.12007 | 100% | 2026-09-22 | 2026-09-22 | 1083 | DH1100 |  | MY |

| ID | WBS | Activity | Duration | Start | Finish | Predecessors | Complete | Planned start | Planned finish | MSP Activity ID | QTS - AREA | QTS - DASH |
| --- | --- | --- | --- | --- | --- | --- | --- | --- | --- | --- | --- | --- |
|  | 6 | **F110** |  | 2026-08-24 | 2026-09-16 |  |  |  |  |  |  |  |
| DH1100.12038 |  | DH1100/Mechanical Yard-F110 // Install CHWP | 1d | 2026-08-24 A | 2026-08-24 A | DH1100.12035 | 100% | 2026-09-25 | 2026-09-25 | 1083 | DH1100 | MY |
| DH1100.12039 |  | DH1100/Mechanical Yard-F110 // Install Mechanical Piping Mains (Building -to Line) | 1d | 2026-09-03 A | 2026-09-03 A | DH1100.12038 | 100% | 2026-09-28 | 2026-09-28 | 1083 | DH1100 | MY |
| DH1100.12012 |  | DH1100/Mechanical Yard-F110 // Set TES tank - TES-1CY40-F110 | 1d | 2026-09-08 A | 2026-09-08 A | DH1100.12010 SS, DH1100.12038 | 100% | 2026-09-24 | 2026-09-24 | 1083 | DH1100 | MY |
| DH1100.12040 |  | DH1100/Mechanical Yard-F110 // Install Mechanical Chiller to Mains | 1d | 2026-09-09 A | 2026-09-09 A | DH1100.12039 | 100% | 2026-09-29 | 2026-09-29 | 1083 | DH1100 | MY |
| DH1100.12011 |  | DH1100/Mechanical Yard-F110 // Set Chiller - CHLR-1CY40-F110 | 1d | 2026-09-16 A | 2026-09-16 A | DH1100.12038, DH1100.12009 | 100% | 2026-09-23 | 2026-09-23 | 1083 | DH1100 | MY |
|  | 7 | **G110** |  | 2026-08-24 | 2026-09-17 |  |  |  |  |  |  |  |
| DH1100.12041 |  | DH1100/Mechanical Yard-G110 // Install CHWP | 1d | 2026-08-24 A | 2026-08-24 A | DH1100.12038 SS | 100% | 2026-09-28 | 2026-09-28 | 1083 | DH1100 | MY |
| DH1100.12042 |  | DH1100/Mechanical Yard-G110 // Install Mechanical Piping Mains (Building -to Line) | 1d | 2026-09-04 A | 2026-09-04 A | DH1100.12041 | 100% | 2026-09-29 | 2026-09-29 | 1083 | DH1100 | MY |
| DH1100.12014 |  | DH1100/Mechanical Yard-G110 // Set TES tank - TES-1CY40-G110 | 1d | 2026-09-09 A | 2026-09-09 A | DH1100.12012, DH1100.12041 | 100% | 2026-09-25 | 2026-09-25 | 1083 | DH1100 | MY |
| DH1100.12043 |  | DH1100/Mechanical Yard-G110 // Install Mechanical Chiller to Mains | 1d | 2026-09-10 A | 2026-09-10 A | DH1100.12042 | 100% | 2026-09-30 | 2026-09-30 | 1083 | DH1100 | MY |
| DH1100.12013 |  | DH1100/Mechanical Yard-G110 // Set Chiller - CHLR-1CY40-G110 | 1d | 2026-09-17 A | 2026-09-17 A | DH1100.12011 | 100% | 2026-09-24 | 2026-09-24 | 1083 | DH1100 | MY |
|  | 8 | **H110** |  | 2026-08-24 | 2026-09-17 |  |  |  |  |  |  |  |
| DH1100.12044 |  | DH1100/Mechanical Yard-H110 // Install CHWP | 1d | 2026-08-24 A | 2026-08-24 A | DH1100.12041 SS | 100% | 2026-09-29 | 2026-09-29 | 1083 | DH1100 | MY |
| DH1100.12045 |  | DH1100/Mechanical Yard-H110 // Install Mechanical Piping Mains (Building -to Line) | 1d | 2026-09-04 A | 2026-09-04 A | DH1100.12044 | 100% | 2026-09-30 | 2026-09-30 | 1083 | DH1100 | MY |
| DH1100.12016 |  | DH1100/Mechanical Yard-H110 // Set TES tank - TES-1CY40-H110 | 1d | 2026-09-09 A | 2026-09-09 A | DH1100.12014, DH1100.12044 | 100% | 2026-09-28 | 2026-09-28 | 1083 | DH1100 | MY |
| DH1100.12046 |  | DH1100/Mechanical Yard-H110 // Install Mechanical Chiller to Mains | 1d | 2026-09-10 A | 2026-09-10 A | DH1100.12045 | 100% | 2026-10-01 | 2026-10-01 | 1083 | DH1100 | MY |
| DH1100.12015 |  | DH1100/Mechanical Yard-H110 // Set Chiller - CHLR-1CY40-H110 | 1d | 2026-09-17 A | 2026-09-17 A | DH1100.12013 | 100% | 2026-09-25 | 2026-09-25 | 1083 | DH1100 | MY |
|  | 9 | **J110** |  | 2026-08-25 | 2026-09-17 |  |  |  |  |  |  |  |
| DH1100.12047 |  | DH1100/Mechanical Yard-J110 // Install CHWP | 1d | 2026-08-25 A | 2026-08-25 A | DH1100.12044 | 100% | 2026-09-30 | 2026-09-30 | 1083 | DH1100 | MY |
| DH1100.12048 |  | DH1100/Mechanical Yard-J110 // Install Mechanical Piping Mains (Building -to Line) | 1d | 2026-09-04 A | 2026-09-04 A | DH1100.12047 | 100% | 2026-10-01 | 2026-10-01 | 1083 | DH1100 | MY |
| DH1100.12018 |  | DH1100/Mechanical Yard-J110 // Set TES tank - TES-1CY40-J110 | 1d | 2026-09-09 A | 2026-09-09 A | DH1100.12047, DH1100.12016 | 100% | 2026-09-29 | 2026-09-29 | 1083 | DH1100 | MY |
| DH1100.12049 |  | DH1100/Mechanical Yard-J110 // Install Mechanical Chiller to Mains | 1d | 2026-09-10 A | 2026-09-10 A | DH1100.12048 | 100% | 2026-10-02 | 2026-10-02 | 1083 | DH1100 | MY |
| DH1100.12017 |  | DH1100/Mechanical Yard-J110 // Set Chiller - CHLR-1CY40-J110 | 1d | 2026-09-17 A | 2026-09-17 A | DH1100.12015 | 100% | 2026-09-28 | 2026-09-28 | 1083 | DH1100 | MY |

| ID | WBS | Activity | Duration | Start | Finish | Predecessors | Complete | Remaining | Planned start | Planned finish | Total float | Free float | MSP Activity ID | QTS - AREA | QTS - DASH | QTS - Subcontractor | QTS - Resp | 12 - SUFFOLK - Export_to_Procore |
| --- | --- | --- | --- | --- | --- | --- | --- | --- | --- | --- | --- | --- | --- | --- | --- | --- | --- | --- |
|  | 10 | **K110** |  | 2026-08-25 | 2026-09-17 |  |  |  |  |  |  |  |  |  |  |  |  |  |
| DH1100.12050 |  | DH1100/Mechanical Yard-K110 // Install CHWP | 1d | 2026-08-25 A | 2026-08-25 A | DH1100.12047 | 100% |  | 2026-10-01 | 2026-10-01 |  |  | 1083 | DH1100 | MY |  |  |  |
| DH1100.12051 |  | DH1100/Mechanical Yard-K110 // Install Mechanical Piping Mains (Building -to Line) | 1d | 2026-09-04 A | 2026-09-04 A | DH1100.12050 | 100% |  | 2026-10-02 | 2026-10-02 |  |  | 1083 | DH1100 | MY |  |  |  |
| DH1100.12020 |  | DH1100/Mechanical Yard-K110 // Set TES tank - TES-1CY40-K110 | 1d | 2026-09-09 A | 2026-09-09 A | DH1100.12050, DH1100.12018 | 100% |  | 2026-09-30 | 2026-09-30 |  |  | 1083 | DH1100 | MY |  |  |  |
| DH1100.12052 |  | DH1100/Mechanical Yard-K110 // Install Mechanical Chiller to Mains | 1d | 2026-09-10 A | 2026-09-10 A | DH1100.12051 | 100% |  | 2026-10-05 | 2026-10-05 |  |  | 1083 | DH1100 | MY |  |  |  |
| DH1100.12019 |  | DH1100/Mechanical Yard-K110 // Set Chiller - CHLR-1CY40-K110 | 1d | 2026-09-17 A | 2026-09-17 A | DH1100.12017 | 100% |  | 2026-09-29 | 2026-09-29 |  |  | 1083 | DH1100 | MY |  |  |  |
|  | 11 | **R110** |  | 2026-08-25 | 2026-09-17 |  |  |  |  |  |  |  |  |  |  |  |  |  |
| DH1100.12053 |  | DH1100/Mechanical Yard-R110 // Install CHWP | 1d | 2026-08-25 A | 2026-08-25 A | DH1100.12050 SS | 100% |  | 2026-10-02 | 2026-10-02 |  |  | 1083 | DH1100 | MY |  |  |  |
| DH1100.12054 |  | DH1100/Mechanical Yard-R110 // Install Mechanical Piping Mains (Building -to Line) | 1d | 2026-09-04 A | 2026-09-04 A | DH1100.12053 | 100% |  | 2026-10-05 | 2026-10-05 |  |  | 1083 | DH1100 | MY |  |  |  |
| DH1100.12022 |  | DH1100/Mechanical Yard-R110 // Set TES tank - TES-1CY40-R110 | 1d | 2026-09-09 A | 2026-09-09 A | DH1100.12053, DH1100.12020 | 100% |  | 2026-10-01 | 2026-10-01 |  |  | 1083 | DH1100 | MY |  |  |  |
| DH1100.12055 |  | DH1100/Mechanical Yard-R110 // Install Mechanical Chiller to Mains | 1d | 2026-09-10 A | 2026-09-10 A | DH1100.12054 | 100% |  | 2026-10-06 | 2026-10-06 |  |  | 1083 | DH1100 | MY |  |  |  |
| DH1100.12021 |  | DH1100/Mechanical Yard-R110 // Set Chiller - CHLR-1CY40-R110 | 1d | 2026-09-17 A | 2026-09-17 A | DH1100.12019 | 100% |  | 2026-09-30 | 2026-09-30 |  |  | 1083 | DH1100 | MY |  |  |  |
|  | 12 | **Test & Flushing** |  | 2026-09-21 | 2026-11-06 |  |  |  |  |  |  |  |  |  |  |  |  |  |
| A5730 |  | DH1100/Mechanical Yard-Test & Flushing // Line Test & Checking | 5d | 2026-09-21 A | 2026-09-23 A | DH1100.12022, DH1100.12021, DH1100.12023, DH1100.12028, DH1100.12031, DH1100.12034, DH1100.12037, DH1100.12040, DH1100.12043, DH1100.12046, DH1100.12049, DH1100.12052, DH1100.12055 | 100% |  | 2026-10-07 | 2026-10-14 |  |  |  | DH1100 | MY |  |  |  |
| A5732 |  | DH1100/Mechanical Yard-Test & Flushing // Electrical & Controls Testing / Checking | 3d | 2026-10-14 | 2026-10-16 | A5730 |  |  |  |  | 36d | 0d |  | DH1100 | MY | HELIX | TBD |  |
| A5731 |  | DH1100/Mechanical Yard-Test & Flushing // Fill, Flush & Purge | 15d | 2026-10-19 | 2026-11-06 | A5732 |  |  |  |  | 36d | 50d |  | DH1100 | MY |  |  |  |
|  | 2 | **Electrical & Controls** |  | 2026-05-20 | 2026-11-04 |  |  |  |  |  |  |  |  |  |  |  |  |  |
| A3180 |  | DH1100/Electrical & Controls // Excavate Raceways from Building to Chiller Pad | 8d | 2026-05-20 A | 2026-06-01 A | A3210, FDN.1070 SS+4d | 100% |  |  |  |  |  | 1095 | DH1100 | MY | HELIX | PRICE |  |
| A3190 |  | DH1100/Electrical & Controls // Install Raceway from Building To Chiller Pad | 8d | 2026-06-02 A | 2026-06-19 A | A3180 | 100% |  | 2026-06-02 | 2026-06-11 |  |  | 1096 | DH1100 | MY | HELIX | PRICE | Y |
| A3200 |  | DH1100/Electrical & Controls // Backfill Chiller Raceways from Building to Chiller Pad | 8d | 2026-06-23 A | 2026-07-02 A | A3190 | 100% |  | 2026-07-24 | 2026-08-04 |  |  | 1075 | DH1100 | MY | HELIX | PRICE | Y |
| A3340 |  | DH1100/Electrical & Controls // Install Controls conduits and wire to Chiller units | 12d | 2026-07-02 A | 2026-07-20 A | A3190 SS | 100% |  | 2026-09-04 | 2026-09-22 |  |  | 1103 | DH1100 | MY | HELIX | PRICE |  |
| A5699 |  | DH1100/Electrical & Controls // Mechanical CWP Support Caisson Footings | 6d | 2026-07-06 A | 2026-07-13 A | A3200 | 100% |  | 2026-09-04 | 2026-09-14 |  |  | 1103 | DH1100 | MY | HELIX | PRICE |  |
| A3300 |  | DH1100/Electrical & Controls // Raceway connections to Chiller units | 6d | 2026-10-02 A | 2026-10-27 | DH1100.12001, DH1100.12003, DH1100.12005, DH1100.12007, DH1100.12009, DH1100.12011, DH1100.12013, DH1100.12015, DH1100.12017, DH1100.12019, DH1100.12021, A3320 FF, STRUCTURE.4850 SS |  | 6d | 2026-10-15 | 2026-10-22 | 72d | 0d | 1099 | DH1100 | MY | HELIX | PRICE | Y |
| A3380 |  | DH1100/Electrical & Controls // Chiller units Ready to Energize | 6d | 2026-10-06 A | 2026-10-21 | A3340 |  | 6d | 2026-10-07 | 2026-10-15 | 43d | 0d | 1112 | DH1100 | MY | HELIX | PRICE |  |
| A3320 |  | DH1100/Electrical & Controls // Install Panels and Raceways to CHWP | 10d | 2026-10-14 | 2026-10-27 | DH1100.12023, DH1100.12026, DH1100.12029, DH1100.12032, DH1100.12035, DH1100.12038, DH1100.12041, DH1100.12044, DH1100.12047, DH1100.12050, DH1100.12053, A3200 |  |  |  |  | 72d | 0d | 1101 | DH1100 | MY | HELIX | PRICE | Y |
| A5698 |  | DH1100/Electrical & Controls // Fine Grade Install Landscape Fabric & Install Rock | 5d | 2026-10-22 | 2026-10-28 | A3380, A5699 |  |  |  |  | 43d | 57d | 1103 | DH1100 | MY | HELIX | PRICE |  |
| A3360 |  | DH1100/Electrical & Controls // Pull and Terminate Feeders to Chiller units | 6d | 2026-10-28 | 2026-11-04 | A3300 |  |  |  |  | 72d | 2d | 1105 | DH1100 | MY | HELIX | PRICE | Y |

| ID | WBS | Activity | Duration | Start | Finish | Predecessors | Complete | Remaining | Planned start | Planned finish | Total float | Free float | MSP Activity ID | QTS - AREA | 05 -SUFFOLK - Building Phase | 12 - SUFFOLK - Export_to_Procore | QTS - Subcontractor | QTS - Resp | QTS - DASH |
| --- | --- | --- | --- | --- | --- | --- | --- | --- | --- | --- | --- | --- | --- | --- | --- | --- | --- | --- | --- |
|  | 2 | **Roof - RTUs** |  | 2026-07-08 | 2026-11-25 |  |  |  |  |  |  |  |  |  |  |  |  |  |  |
|  | 1 | **Column Lines 1.2 thru 2.0** |  | 2026-07-08 | 2026-11-25 |  |  |  |  |  |  |  |  |  |  |  |  |  |  |
| DH1100.12058 |  | DH1100/Roof - RTUs // - RTU-RT- 02 | 1d | 2026-07-08 A | 2026-07-09 A | DH1100.7840 | 100% |  |  |  |  |  | 1120 | DH1100 | 2 | Y |  |  |  |
| DH1100.12057 |  | DH1100/Roof - RTUs // - RTU-RT- 03 | 1d | 2026-07-10 A | 2026-07-13 A | DH1100.12058 SS+2d | 100% |  |  |  |  |  | 1119 | DH1100 | 2 | Y |  |  |  |
| DH1100.12064 |  | DH1100/Roof - RTUs // - RTU-RT- 04 | 1d | 2026-07-13 A | 2026-07-14 A | DH1100.12057 | 100% |  |  |  |  |  | 1119 | DH1100 | 2 | Y |  |  |  |
| DH1200.7841 |  | DH1100/Roof - RTUs // Install Electrical Conduit and Controls Piping | 15d | 2026-09-21 A | 2026-11-03 | DH1100.12059 FF, DH1100.12064 |  | 15d | 2026-10-07 | 2026-10-28 | -12d | 0d | 1118 | DH1100 | 2 |  | HELIX | JT |  |
| DH1100.12059 |  | DH1100/Roof - RTUs // Install Mechanical Piping | 15d | 2026-10-14 | 2026-11-03 | DH1100.12058, DH1100.12064 |  |  |  |  | -12d | 0d | 1117 | DH1100 | 2 | Y |  |  |  |
| DH1100.12056 |  | DH1100/Roof - RTUs // Install heat trace system | 15d | 2026-11-04 | 2026-11-25 | DH1100.12059 |  |  |  |  | 13d | 27d | 1116 | DH1100 | 2 |  | HELIX | JT |  |
|  | 1 | **Interior Build Out** |  | 2026-06-25 | 2027-02-12 |  |  |  |  |  |  |  |  |  |  |  |  |  |  |
|  | 9 | **Flex 1000A10** |  | 2026-06-25 | 2026-10-29 |  |  |  |  |  |  |  |  |  |  |  |  |  |  |
| F.1000A.1010 |  | DH1100/Flex 1000A10 // MEPF Layout of Overhead Supports | 2d | 2026-06-25 A | 2026-06-26 A | SOG.1442, STRUCTURE.7380 | 100% |  |  |  |  |  | 1153 | DH1100 |  | Y | HELIX | ALOO | OR |
| F.1000A.1020 |  | DH1100/Flex 1000A10 // MEPF Install High Overhead Systems | 6d | 2026-06-29 A | 2026-07-07 A | F.1000A.1010 | 100% |  | 2026-07-24 | 2026-07-31 |  |  | 1154 | DH1100 |  | Y | HELIX | ALOO | OR |
| F.1000A.1040 |  | DH1100/Flex 1000A10 // Frame Walls including Backing | 4d | 2026-06-29 A | 2026-07-02 A | SOG.1442, F.1000A.1010 | 100% |  | 2026-07-24 | 2026-07-29 |  |  | 1155 | DH1100 |  | Y |  |  | OR |
| F.1000A.1060 |  | DH1100/Flex 1000A10 // MEPF Install Rough Wall | 2d | 2026-07-06 A | 2026-08-04 A | F.1000A.1040 | 100% |  | 2026-07-30 | 2026-07-31 |  |  | 1156 | DH1100 |  | Y | HELIX | AC | OR |
| F.1000A.1050 |  | DH1100/Flex 1000A10 // Install Door Frames | 1d | 2026-07-29 A | 2026-07-29 A | F.1000A.1040 FF | 100% |  | 2026-09-04 | 2026-09-04 |  |  | 1161 | DH1100 |  |  |  |  | OR |
| F.1000A.1070 |  | DH1100/Flex 1000A10 // Install Top Down Sheet Rock | 5d | 2026-08-03 A | 2026-08-07 A | F.1000A.1040 SS+2d, F.1000A.1020 | 100% |  |  |  |  |  | 1157 | DH1100 |  | Y |  |  | OR |
| F.1000A.1080 |  | DH1100/Flex 1000A10 // Rough Wall Inspspection (Approval to Close up) | 1d | 2026-08-17 A | 2026-08-17 A | F.1000A.1060 | 100% |  | 2026-08-03 | 2026-08-03 |  |  | 1158 | DH1100 |  | Y |  |  | OR |
| F.1000A.1090 |  | DH1100/Flex 1000A10 // Install Balance of Sheetrock | 3d | 2026-08-18 A | 2026-08-20 A | F.1000A.1080, F.1000A.1070 | 100% |  | 2026-08-10 | 2026-08-12 |  |  | 1159 | DH1100 |  | Y |  |  | OR |
| F.1000A.1120 |  | DH1100/Flex 1000A10 // Install MEPF Overhead Ceiling Rough | 3d | 2026-08-20 A | 2026-08-31 A | F.1000A.1050 | 100% |  | 2026-08-25 | 2026-08-27 |  |  | 1163 | DH1100 |  |  | HELIX | AC | OR |
| F.1000A.1130 |  | DH1100/Flex 1000A10 // Install Lighting, Fire Alarm & Fire Protection | 2d | 2026-08-21 A | 2026-09-10 A | F.1000A.1120 SS | 100% |  | 2026-08-28 | 2026-08-31 |  |  | 1164 | DH1100 |  |  | HELIX | AC | OR |
| F.1000A.1163 |  | DH1100/Flex 1000A10 // Install Security Devices | 2d | 2026-08-24 A | 2026-08-25 A | F.1000A.1090 | 100% |  | 2026-08-10 | 2026-08-11 |  |  | 1156 | DH1100 |  | Y |  |  | OR |
| F.1000A.1161 |  | DH1100/Flex 1000A10 // Rough-In Security | 2d | 2026-09-09 A | 2026-09-10 A | F.1000A.1020 | 100% |  | 2026-08-03 | 2026-08-04 |  |  | 1156 | DH1100 |  | Y | HELIX | AC | OR |
| F.1000A.1325 |  | DH1100/Flex 1000A10 // BMS & EPMS Rough-In | 2d | 2026-09-09 A | 2026-09-10 A | F.1000A.1161 SS, F.1000A.1161 FF | 100% |  | 2026-09-30 | 2026-10-01 |  |  |  | DH1100 |  |  |  |  |  |
| F.1000A.1100 |  | DH1100/Flex 1000A10 // Tape and Finish Walls | 6d | 2026-09-17 A | 2026-09-28 A | F.1000A.1090 | 100% |  | 2026-08-13 | 2026-08-20 |  |  | 1160 | DH1100 |  | Y |  |  | OR |
| F.1000A.1110 |  | DH1100/Flex 1000A10 // Prime and First Coat of Paint | 2d | 2026-09-29 A | 2026-09-30 A | F.1000A.1100 | 100% |  | 2026-10-08 | 2026-10-09 |  |  | 1162 | DH1100 |  |  |  |  | OR |
| F.1000A.1000 |  | DH1100/Flex 1000A10 // Seal Concrete | 5d | 2026-09-30 A | 2026-10-06 A | F.1000A.1100, F.1000A.1110 | 100% |  | 2026-10-13 | 2026-10-19 |  |  | 66 | DH1100 |  |  |  |  | OR |
| F.1000A.1140 |  | DH1100/Flex 1000A10 // Wall Touch up Final Coat of Paint | 3d | 2026-10-01 A | 2026-10-05 A | F.1000A.1130 | 100% |  | 2026-09-30 | 2026-10-02 |  |  | 1165 | DH1100 |  |  |  |  | OR |
| F.1000A.1150 |  | DH1100/Flex 1000A10 // Install Wall Base, Trim, and Devices | 3d | 2026-10-14 | 2026-10-16 | F.1000A.1140 |  |  |  |  | 44d | 2d | 1166 | DH1100 |  |  |  |  | OR |
| F.1000A.1162 |  | DH1100/Flex 1000A10 // Pull & Test Security Cable | 3d | 2026-10-14 | 2026-10-16 | F.1000A.1161 |  |  |  |  | 44d | 2d | 1156 | DH1100 |  | Y |  |  | OR |
| F.1000A.1164 |  | DH1100/Flex 1000A10 // Mount & Terminate Security Devices | 5d | 2026-10-14 | 2026-10-20 | F.1000A.1163, F.1000A.1110 |  |  |  |  | 42d | 0d | 1156 | DH1100 |  |  |  |  | OR |
| F.1000A.1165 |  | DH1100/Flex 1000A10 // Test Security Devices | 2d | 2026-10-21 | 2026-10-22 | F.1000A.1164, F.1000A.1150, F.1000A.1162, F.1000A.1325 FF |  |  |  |  | 42d | 0d | 1156 | DH1100 |  |  |  |  | OR |
| F.1000A.1160 |  | DH1100/Flex 1000A10 // Suffolk Pre Punch | 5d | 2026-10-23 | 2026-10-29 | F.1000A.1150, F.1000A.1050, F.1000A.1165, F.1000A.1000 |  |  |  |  | 42d | 56d | 1167 | DH1100 |  |  |  |  | OR |

| ID | WBS | Activity | Type | Duration | Start | Finish | Predecessors | Complete | Planned start | Planned finish | Total float | Free float | Constraint | MSP Activity ID | QTS - Subcontractor | QTS - AREA | QTS - Resp | 12 - SUFFOLK - Export_to_Procore | QTS - DASH |
| --- | --- | --- | --- | --- | --- | --- | --- | --- | --- | --- | --- | --- | --- | --- | --- | --- | --- | --- | --- |
|  | 7 | **Electrical Room #5101** |  |  | 2026-06-29 | 2026-11-20 |  |  |  |  |  |  |  |  |  |  |  |  |  |
| ER.5101.1010 |  | DH100/Electrical Room #5101 // MEPF Layout of Overhead Supports |  | 2d | 2026-06-29 A | 2026-06-30 A | F.1000A.1010 | 100% | 2026-07-24 | 2026-07-27 |  |  |  | 1170 | HELIX | DH1100 | ALOO | Y | ER |
| ER.5101.1020 |  | DH100/Electrical Room #5101 // MEPF Install High Overhead Systems |  | 6d | 2026-07-06 A | 2026-07-13 A | ER.5101.1010 | 100% | 2026-07-28 | 2026-08-04 |  |  |  | 1171 | HELIX | DH1100 | ALOO | Y | ER |
| ER.5101.1040 |  | DH100/Electrical Room #5101 // Frame Walls including Backing |  | 4d | 2026-07-16 A | 2026-08-03 A | F.1000A.1010, ER.5101.1010 | 100% | 2026-07-28 | 2026-07-31 |  |  |  | 1172 |  | DH1100 |  | Y | ER |
| ER.5101.1060 |  | DH100/Electrical Room #5101 // MEPF Install Rough Wall |  | 2d | 2026-08-04 A | 2026-08-05 A | ER.5101.1040 | 100% | 2026-08-03 | 2026-08-04 |  |  |  | 1174 | HELIX | DH1100 | AC | Y | ER |
| ER.5101.1070 |  | DH100/Electrical Room #5101 // Install Top Down Sheet Rock |  | 5d | 2026-08-05 A | 2026-08-11 A | ER.5101.1060, ER.5101.1040 SS+2d | 100% |  |  |  |  |  | 1175 |  | DH1100 |  | Y | ER |
| ER.5101.1050 |  | DH100/Electrical Room #5101 // Install Door Frames |  | 1d | 2026-08-18 A | 2026-08-18 A | ER.5101.1040 FF | 100% | 2026-09-25 | 2026-09-25 |  |  |  | 1179 |  | DH1100 |  |  | ER |
| ER.5101.1080 |  | DH100/Electrical Room #5101 // Rough Wall Inspspection (Approval to Close up) |  | 1d | 2026-08-18 A | 2026-08-19 A | ER.5101.1040, ER.5101.1060 | 100% | 2026-08-05 | 2026-08-05 |  |  |  | 1176 |  | DH1100 |  | Y | ER |
| ER.5101.1090 |  | DH100/Electrical Room #5101 // Install Balance of Sheetrock |  | 3d | 2026-08-19 A | 2026-08-27 A | ER.5101.1070, ER.5101.1080 | 100% | 2026-08-12 | 2026-08-14 |  |  |  | 1177 |  | DH1100 |  | Y | ER |
| ER.5101.1120 |  | DH100/Electrical Room #5101 // Install MEPF Overhead Ceiling Rough |  | 3d | 2026-08-20 A | 2026-08-26 A | ER.5101.1020 | 100% | 2026-08-05 | 2026-08-07 |  |  |  | 1181 | HELIX | DH1100 | AC | Y | ER |
| ER.5101.1170 |  | DH100/Electrical Room #5101 // Install Overhead Buss duct |  | 2d | 2026-08-20 A | 2026-09-08 A | A2960, ER.5101.1070, ER.5101.1020 | 100% | 2026-08-12 | 2026-08-13 |  |  |  | 1188 | HELIX | DH1100 | AL |  | ER |
| B120001.3129 |  | DH100/Electrical Room #5101 // Install Overhead Cable Ladder / 36" Cable Tray - TFO |  | 5d | 2026-08-24 A | 2026-09-08 A | ER.5101.1020 | 100% | 2026-08-05 | 2026-08-11 |  |  |  | 1181 |  |  |  | Y | ER |
| ER.5101.1180 |  | DH100/Electrical Room #5101 // Install Cable Tray |  | 3d | 2026-08-24 A | 2026-08-27 A | ER.5101.1170 SS | 100% | 2026-08-12 | 2026-08-14 |  |  |  | 1182 | HELIX | DH1100 | OO |  | ER |
| ER.5101.1290 |  | DH100/Electrical Room #5101 // Pull Misc Feeder and Branch Circuits |  | 6d | 2026-08-24 A | 2026-09-16 A | ER.5101.1180 SS | 100% | 2026-09-01 | 2026-09-09 |  |  |  | 1198 | HELIX | DH1100 | AL |  | ER |
| ER.5101.1100 |  | DH100/Electrical Room #5101 // Tape and Finish Walls |  | 6d | 2026-08-25 A | 2026-09-01 A | ER.5101.1090, ER.5101.1150 SS | 100% | 2026-08-17 | 2026-08-24 |  |  |  | 1178 |  | DH1100 |  |  | ER |
| ER.5101.1150 |  | DH100/Electrical Room #5101 // Install Wall Base, Trim, and Devices |  | 3d | 2026-08-25 A | 2026-08-27 A | ER.5101.1020, ER.5101.1040, ER.5101.1050 | 100% | 2026-09-25 | 2026-09-29 |  |  |  | 1186 |  | DH1100 |  |  | ER |
| F.1000A.1166 |  | DH100/Electrical Room #5101 // Rough-In Security |  | 2d | 2026-08-26 A | 2026-08-28 A | ER.5101.1020 | 100% | 2026-08-19 | 2026-08-20 |  |  |  | 1156 | HELIX | DH1100 | ALOO |  | ER |
| F.1000A.1335 |  | DH100/Electrical Room #5101 // BMS & EPMS Rough-In |  | 2d | 2026-08-26 A | 2026-08-27 A | F.1000A.1166 SS, F.1000A.1166 FF | 100% | 2026-09-30 | 2026-10-01 |  |  |  |  |  |  |  |  |  |
| ER.5101.1110 |  | DH100/Electrical Room #5101 // Prime and First Coat of Paint |  | 2d | 2026-08-31 A | 2026-09-01 A | ER.5101.1100 FF | 100% | 2026-09-01 | 2026-09-02 |  |  |  | 1180 |  | DH1100 |  |  | ER |
| ER.5101.3107 |  | DH100/Electrical Room #5101 // Room Ready to Receive Equipment | milestone | 0d | 2026-09-01 A | 2026-09-01 A | ER.5101.1110 FF | 100% | 2026-09-02 | 2026-09-02 |  |  |  | 1180 | HELIX | DH1100 | TBD |  | ER |
| ER.5101.1250 |  | DH100/Electrical Room #5101 // Set CRAH-ER5101- 01 |  | 1d | 2026-09-02 A | 2026-09-02 A | ER.5101.3107 | 100% | 2026-09-04 | 2026-09-04 |  |  |  | 1194 |  | DH1100 |  |  | ER |
| ER.5101.3031 |  | DH100/Electrical Room #5101 // Set CRAH-ER5101- 02 |  | 1d | 2026-09-02 A | 2026-09-02 A | ER.5101.1250 | 100% | 2026-09-08 | 2026-09-08 |  |  |  | 1194 |  | DH1100 |  |  | ER |
| ER.5101.3032 |  | DH100/Electrical Room #5101 // Set CRAH-ER5101- 03 |  | 1d | 2026-09-03 A | 2026-09-03 A | ER.5101.3031 | 100% | 2026-09-09 | 2026-09-09 |  |  |  | 1194 |  | DH1100 |  |  | ER |
| ER.5101.3033 |  | DH100/Electrical Room #5101 // Set CRAH-ER5101- 04 |  | 1d | 2026-09-03 A | 2026-09-03 A | ER.5101.3032 | 100% | 2026-09-10 | 2026-09-10 |  |  |  | 1194 |  | DH1100 |  |  | ER |
| ER.5101.3034 |  | DH100/Electrical Room #5101 // Set CRAH-ER5101- 05 |  | 1d | 2026-09-03 A | 2026-09-03 A | ER.5101.3033 | 100% | 2026-09-11 | 2026-09-11 |  |  |  | 1194 |  | DH1100 |  |  | ER |
| ER.5101.3035 |  | DH100/Electrical Room #5101 // Set CRAH-ER5101- 06 |  | 1d | 2026-09-03 A | 2026-09-03 A | ER.5101.3034 | 100% | 2026-09-14 | 2026-09-14 |  |  |  | 1194 |  | DH1100 |  |  | ER |
| ER.5101.1320 |  | DH100/Electrical Room #5101 // Buss Duct Tie In to Elect Gear |  | 3d | 2026-09-17 A | 2026-09-21 A | ER.5101.1170 | 100% | 2026-08-14 | 2026-08-18 |  |  |  | 1200 | HELIX | DH1100 | TBD |  | ER |
| ER.5101.1200 |  | DH100/Electrical Room #5101 // Install Cable Buss From Exterior |  | 3d | 2026-09-24 A | 2026-09-28 A | ER.5101.1320 | 100% | 2026-08-19 | 2026-08-21 |  |  |  | 1189 | HELIX | DH1100 | TBD |  | ER |
| ER.5101.1260 |  | DH100/Electrical Room #5101 // Mechanical Connections to CRAHU |  | 5d | 2026-09-24 A | 2026-09-30 A | ER.5101.3095, ER.5101.3101, ER.5101.1250, ER.5101.3035 | 100% | 2026-10-01 | 2026-10-07 |  |  |  | 1195 |  | DH1100 |  |  | ER |
| ER.5101.3095 |  | DH100/Electrical Room #5101 // Set PDU - PDU-R110-01 |  | 1d | 2026-09-24 A | 2026-10-01 A | ER.5101.3035, ER.5101.1180 | 100% | 2026-09-15 | 2026-09-15 |  |  |  | 1107 | HELIX | DH1100 | TBD |  | ER |
| ER.5101.1190 |  | DH100/Electrical Room #5101 // Set Skid - SKID-A110 |  | 1d | 2026-09-29 A | 2026-09-29 A | ER.5101.3109, ER.5101.3107 | 100% | 2026-09-03 | 2026-09-03 |  |  |  | 1107 | HELIX | DH1100 | TBD |  | ER |
| ER.5101.3036 |  | DH100/Electrical Room #5101 // Set Skid - SKID-B110 |  | 1d | 2026-09-29 A | 2026-10-01 A | ER.5101.1190 SS | 100% | 2026-09-03 | 2026-09-03 |  |  |  | 1107 | HELIX | DH1100 | TBD |  | ER |
| ER.5101.3037 |  | DH100/Electrical Room #5101 // Set Skid - SKID-C110 |  | 1d | 2026-09-29 A | 2026-10-01 A | ER.5101.3036 SS | 100% | 2026-09-03 | 2026-09-03 |  |  |  | 1107 | HELIX | DH1100 | TBD |  | ER |
| ER.5101.3109 |  | DH100/Electrical Room #5101 // DH1100 - OFCI Skid Ship Date (08/31/26) First Shipment | milestone | 0d | 2026-09-29 A | 2026-09-29 A | ER.5101.3107 FF | 100% | 2026-09-02 | 2026-09-02 |  |  | finish on or after 2026-09-29 | 1180 |  |  |  |  | ER |
| ER.5101.3101 |  | DH100/Electrical Room #5101 // Set UPS - UPS-R110 |  | 1d | 2026-09-30 A | 2026-09-30 A | ER.5101.1180 | 100% | 2026-09-16 | 2026-09-16 |  |  |  | 1107 | HELIX | DH1100 | TBD |  | ER |
| ER.5101.3038 |  | DH100/Electrical Room #5101 // Set Skid - SKID-D110 |  | 1d | 2026-09-30 A | 2026-10-01 A | ER.5101.3037 SS | 100% | 2026-09-30 | 2026-09-30 |  |  |  | 1107 | HELIX | DH1100 | TBD |  | ER |
| ER.5101.3039 |  | DH100/Electrical Room #5101 // Set Skid - SKID-E110 |  | 1d | 2026-09-30 A | 2026-10-01 A | ER.5101.3038 SS | 100% | 2026-09-30 | 2026-09-30 |  |  |  | 1107 | HELIX | DH1100 | TBD |  | ER |
| ER.5101.1270 |  | DH100/Electrical Room #5101 // Install Condensate lines from CRAHU's |  | 2d | 2026-10-01 A | 2026-10-02 A | ER.5101.1260 | 100% | 2026-10-08 | 2026-10-09 |  |  |  | 1196 |  | DH1100 |  |  | ER |
| B120001.3130 |  | DH100/Electrical Room #5101 // Install Overhead HAC - TFO |  | 5d | 2026-10-14 | 2026-10-20 | B120001.3129 |  |  |  | 37d | 10d |  | 1181 |  |  |  | Y | ER |
| ER.5101.1210 |  | DH100/Electrical Room #5101 // Pull Cable Buss Feeders |  | 6d | 2026-10-14 | 2026-10-21 | ER.5101.1200 FF |  |  |  | -9d | 0d |  | 1190 | HELIX | DH1100 | TBD |  | ER |
| ER.5101.1220 |  | DH100/Electrical Room #5101 // Pull Cable Tray Feeders (CRAHU/CDU) |  | 6d | 2026-10-14 | 2026-10-21 | ER.5101.1180 |  |  |  | -11d | 0d |  | 1191 | HELIX | DH1100 | OO |  | ER |
| ER.5101.1240 |  | DH100/Electrical Room #5101 // Land and Terminate Cabel Tray Feeders In Gear |  | 10d | 2026-10-14 | 2026-10-27 | ER.5101.1210 SS |  |  |  | -9d | 2d |  | 1193 | HELIX | DH1100 | TBD |  | ER |
| ER.5101.1230 |  | DH100/Electrical Room #5101 // Terminate Cable Buss Feeders |  | 3d | 2026-10-22 | 2026-10-26 | ER.5101.1210 |  |  |  | -8d | 3d |  | 1192 | HELIX | DH1100 | TBD |  | ER |
| ER.5101.1300 |  | DH100/Electrical Room #5101 // Land and Terminate Misc Feeder and Branch Circuits |  | 6d | 2026-10-22 | 2026-10-29 | ER.5101.1290, ER.5101.1220 |  |  |  | -11d | 0d |  | 1184 | HELIX | DH1100 | TBD |  | ER |
| ER.5101.1280 |  | DH100/Electrical Room #5101 // Install Elec Feeders to CRAHU's |  | 3d | 2026-10-27 | 2026-10-29 | ER.5101.1300 FF, ER.5101.1180, ER.5101.1260 |  |  |  | -11d | 0d |  | 1197 | HELIX | DH1100 | OO |  | ER |
| ER.5101.1130 |  | DH100/Electrical Room #5101 // Install Lighting, Fire Alarm & Fire Protection |  | 2d | 2026-10-30 | 2026-11-02 | ER.5101.1300, ER.5101.1120 |  |  |  | 14d | 0d |  | 1183 | HELIX | DH1100 | WAC |  | ER |
| ER.5101.1310 |  | DH100/Electrical Room #5101 // Final FOD Check of all Panels |  | 2d | 2026-10-30 | 2026-11-02 | ER.5101.1280, ER.5101.1300, ER.5101.1320, ER.5101.1240, ER.5101.1230 |  |  |  | -11d | 3d |  | 1199 | HELIX | DH1100 | QC |  | ER |
| F.1000A.1167 |  | DH100/Electrical Room #5101 // Pull & Test Security Cable |  | 3d | 2026-10-30 | 2026-11-03 | ER.5101.1300, F.1000A.1166 |  |  |  | 27d | 0d |  | 1156 |  | DH1100 |  |  | ER |
| ER.5101.1140 |  | DH100/Electrical Room #5101 // Wall Touch up Final Coat of Paint |  | 3d | 2026-11-03 | 2026-11-05 | ER.5101.1130, ER.5101.1150, ER.5101.1100 |  |  |  | 14d | 0d |  | 1185 |  | DH1100 |  |  | ER |
| F.1000A.1168 |  | DH100/Electrical Room #5101 // Install Security Devices |  | 2d | 2026-11-04 | 2026-11-05 | F.1000A.1167, B120001.3130 |  |  |  | 27d | 0d |  | 1156 |  | DH1100 |  |  | ER |
| ER.5101.1330 |  | DH100/Electrical Room #5101 // Mechanical Equipment Pre-Start up |  | 2d | 2026-11-06 | 2026-11-09 | ER.5101.1050, ER.5101.1240, ER.5101.1260, ER.5101.1270, ER.5101.1280, A3170, ER.5101.1140 |  |  |  | 14d | 26d |  | 1201 |  | DH1100 |  |  | ER |
| F.1000A.1169 |  | DH100/Electrical Room #5101 // Mount & Terminate Security Devices |  | 5d | 2026-11-06 | 2026-11-13 | ER.5101.1130, F.1000A.1168 |  |  |  | 27d | 0d |  | 1156 |  | DH1100 |  |  | ER |
| ER.5101.1160 |  | DH100/Electrical Room #5101 // Suffolk Pre Punch |  | 5d | 2026-11-16 | 2026-11-20 | F.1000A.1170 SS, ER.5101.1150 SS |  |  |  | 27d | 41d |  | 1187 |  | DH1100 |  |  | ER |
| F.1000A.1170 |  | DH100/Electrical Room #5101 // Test Security Devices |  | 2d | 2026-11-16 | 2026-11-17 | ER.5101.1150, F.1000A.1169, F.1000A.1335 FF |  |  |  | 27d | 0d |  | 1156 |  | DH1100 |  |  | ER |

| ID | WBS | Activity | Type | Duration | Start | Finish | Predecessors | Complete | Remaining | Planned start | Planned finish | Total float | Free float | Constraint | MSP Activity ID | QTS - Subcontractor | QTS - AREA | QTS - Resp | 12 - SUFFOLK - Export_to_Procore | QTS - DASH |
| --- | --- | --- | --- | --- | --- | --- | --- | --- | --- | --- | --- | --- | --- | --- | --- | --- | --- | --- | --- | --- |
|  | 2 | **Electrcal Room #5104** |  |  | 2026-06-30 | 2026-11-17 |  |  |  |  |  |  |  |  |  |  |  |  |  |  |
| ER.5104.1010 |  | DH100/Electrcal Room #5104 // MEPF Layout of Overhead Supports |  | 2d | 2026-06-30 A | 2026-07-01 A | ER.5101.1010 | 100% |  | 2026-07-28 | 2026-07-29 |  |  |  | 1272 | HELIX | DH1100 | ALOO | Y | ER |
| ER.5104.1020 |  | DH100/Electrcal Room #5104 // MEPF Install High Overhead Systems |  | 6d | 2026-07-08 A | 2026-07-15 A | ER.5104.1010 | 100% |  | 2026-07-30 | 2026-08-06 |  |  |  | 1273 | HELIX | DH1100 | ALOO | Y | ER |
| ER.5104.1040 |  | DH100/Electrcal Room #5104 // Frame Walls including Backing |  | 4d | 2026-07-09 A | 2026-08-03 A | ER.5104.1010 | 100% |  | 2026-07-30 | 2026-08-04 |  |  |  | 1274 |  | DH1100 |  | Y | ER |
| ER.5104.1070 |  | DH100/Electrcal Room #5104 // Install Top Down Sheet Rock |  | 5d | 2026-08-03 A | 2026-08-07 A | ER.5104.1040 | 100% |  | 2026-08-05 | 2026-08-11 |  |  |  | 1277 |  | DH1100 |  | Y | ER |
| ER.5104.1060 |  | DH100/Electrcal Room #5104 // MEPF Install Rough Wall |  | 2d | 2026-08-04 A | 2026-08-05 A | ER.5104.1040 | 100% |  | 2026-08-05 | 2026-08-06 |  |  |  | 1276 | HELIX | DH1100 | AC | Y | ER |
| ER.5104.1090 |  | DH100/Electrical Room #5104 // Rough Wall Inspection (Approval to Close up) |  | 1d | 2026-08-10 A | 2026-08-10 A | ER.5104.1060 | 100% |  | 2026-08-14 | 2026-08-14 |  |  |  | 1278 |  | DH1100 |  |  | ER |
| ER.5104.1050 |  | DH100/Electrical Room #5104 // Install Door Frames |  | 1d | 2026-08-11 A | 2026-08-11 A | ER.5104.1040 FF | 100% |  | 2026-09-23 | 2026-09-23 |  |  |  | 1281 |  | DH1100 |  |  | ER |
| ER.5104.1100 |  | DH100/Electrical Room #5104 // Install Balance of Sheetrock |  | 3d | 2026-08-19 A | 2026-08-21 A | ER.5104.1090 | 100% |  | 2026-08-17 | 2026-08-19 |  |  |  | 1279 |  | DH1100 |  |  | ER |
| ER.5104.1140 |  | DH100/Electrical Room #5104 // Install Cable Tray |  | 3d | 2026-08-21 A | 2026-08-27 A | ER.5104.1070 | 100% |  | 2026-08-13 | 2026-08-17 |  |  |  | 1284 | HELIX | DH1100 | OO | Y | ER |
| ER.5104.1110 |  | DH100/Electrical Room #5104 // Tape and Finish Walls |  | 6d | 2026-08-24 A | 2026-08-31 A | ER.5104.1100 | 100% |  | 2026-08-20 | 2026-08-27 |  |  |  | 1280 |  | DH1100 |  |  | ER |
| ER.5104.1320 |  | DH100/Electrical Room #5104 // Install Wall Base, Trim, and Devices |  | 3d | 2026-08-24 A | 2026-08-26 A | ER.5104.1050 | 100% |  | 2026-09-23 | 2026-09-25 |  |  |  | 1288 |  | DH1100 |  |  | ER |
| F.1000A.1171 |  | DH100/Electrical Room #5104 // Rough-In Security |  | 2d | 2026-08-25 A | 2026-08-26 A | ER.5104.1020 | 100% |  | 2026-08-07 | 2026-08-10 |  |  |  | 1156 | HELIX | DH1100 | AC | Y | ER |
| F.1000A.1345 |  | DH100/Electrical Room #5104 // BMS & EPMS Rough-In |  | 2d | 2026-08-25 A | 2026-08-26 A | F.1000A.1171 SS, F.1000A.1171 FF | 100% |  | 2026-09-30 | 2026-10-01 |  |  |  |  |  |  |  |  |  |
| ER.5104.1120 |  | DH100/Electrical Room #5104 // Prime and First Coat of Paint |  | 2d | 2026-09-01 A | 2026-09-02 A | ER.5104.1140, ER.5104.1110 | 100% |  | 2026-09-04 | 2026-09-08 |  |  |  | 1282 |  | DH1100 |  |  | ER |
| B120001.3127 |  | DH100/Electrical Room #5104 // Install Overhead Cable Ladder / 36" Cable Tray - TFO |  | 5d | 2026-09-02 A | 2026-09-08 A | ER.5104.1020 | 100% |  | 2026-08-07 | 2026-08-13 |  |  |  | 1181 |  |  |  | Y | ER |
| ER.5104.1290 |  | DH100/Electrical Room #5104 // Install Lighting, Fire Alarm & Fire Protection |  | 2d | 2026-09-02 A | 2026-09-03 A | B120001.3127 SS | 100% |  | 2026-09-16 | 2026-09-17 |  |  |  | 1285 | HELIX | DH1100 | WAC |  | ER |
| ER.5104.3036 |  | DH100/Electrical Room #5104 // Room Ready to Receive Equipment | milestone | 0d | 2026-09-02 A | 2026-09-02 A | ER.5104.1120 FF | 100% |  | 2026-09-08 | 2026-09-08 |  |  |  | 1282 | HELIX | DH1100 | TBD |  | ER |
| ER.5104.1150 |  | DH100/Electrical Room #5104 // Set CRAH-ER5104- 01 |  | 1d | 2026-09-04 A | 2026-09-04 A | ER.5104.3036, ER.5104.1140 | 100% |  | 2026-09-15 | 2026-09-15 |  |  |  | 1296 |  | DH1100 |  |  | ER |
| ER.5104.3031 |  | DH100/Electrical Room #5104 // Set CRAH-ER5104- 02 |  | 1d | 2026-09-04 A | 2026-09-04 A | ER.5104.1150 | 100% |  | 2026-09-16 | 2026-09-16 |  |  |  | 1296 |  | DH1100 |  |  | ER |
| ER.5104.3032 |  | DH100/Electrical Room #5104 // Set CRAH-ER5104- 03 |  | 1d | 2026-09-04 A | 2026-09-04 A | ER.5104.3031 | 100% |  | 2026-09-17 | 2026-09-17 |  |  |  | 1296 |  | DH1100 |  |  | ER |
| ER.5104.3033 |  | DH100/Electrical Room #5104 // Set CRAH-ER5104- 04 |  | 1d | 2026-09-04 A | 2026-09-04 A | ER.5104.3032 | 100% |  | 2026-09-18 | 2026-09-18 |  |  |  | 1296 |  | DH1100 |  |  | ER |
| ER.5104.3034 |  | DH100/Electrical Room #5104 // Set CRAH-ER5104- 05 |  | 1d | 2026-09-04 A | 2026-09-04 A | ER.5104.3033 | 100% |  | 2026-09-21 | 2026-09-21 |  |  |  | 1296 |  | DH1100 |  |  | ER |
| ER.5104.3035 |  | DH100/Electrical Room #5104 // Set CRAH-ER5104- 06 |  | 1d | 2026-09-04 A | 2026-09-04 A | ER.5104.3034 | 100% |  | 2026-09-22 | 2026-09-22 |  |  |  | 1296 |  | DH1100 |  |  | ER |
| ER.5104.1130 |  | DH100/Electrical Room #5104 // Install MEPF Overhead Ceiling Rough |  | 3d | 2026-09-08 A | 2026-09-10 A | ER.5104.1140 SS | 100% |  | 2026-08-13 | 2026-08-17 |  |  |  | 1283 | HELIX | DH1100 | AL | Y | ER |
| ER.5104.1300 |  | DH100/Electrical Room #5104 // Wall Touch up Final Coat of Paint |  | 3d | 2026-09-09 A | 2026-09-11 A | ER.5104.1290 | 100% |  | 2026-09-18 | 2026-09-22 |  |  |  | 1287 |  | DH1100 |  |  | ER |
| ER.5104.1200 |  | DH100/Electrical Room #5104 // Pull Cable Tray Feeders (CRAHU/CDU) |  | 10d | 2026-09-22 A | 2026-10-06 A | ER.5104.1140 | 100% |  | 2026-08-18 | 2026-08-31 |  |  |  | 1293 | HELIX | DH1100 | OO |  | ER |
| ER.5104.1080 |  | DH100/Electrical Room #5104 // Install Overhead Buss duct |  | 2d | 2026-09-24 A | 2026-09-25 A | ER.5104.1070, ER.5104.1020 | 100% |  | 2026-08-12 | 2026-08-13 |  |  |  | 1290 | HELIX | DH1100 | AL | Y | ER |
| ER.5104.1190 |  | DH100/Electrical Room #5104 // Install Cable Buss From Exterior |  | 3d | 2026-09-24 A | 2026-09-28 A | ER.5104.1140 | 100% |  | 2026-08-18 | 2026-08-20 |  |  |  | 1291 | HELIX | DH1100 | TBD |  | ER |
| ER.5104.1160 |  | DH100/Electrical Room #5104 // Mechanical Connections to CRAHU |  | 5d | 2026-09-25 A | 2026-10-01 A | ER.5104.3035 FF | 100% |  | 2026-09-30 | 2026-10-06 |  |  |  | 1297 |  | DH1100 |  |  | ER |
| ER.5101.3111 |  | DH100/Electrical Room #5104 // DH1100 - OFCI Skid Ship Date (09/02/26) 2ND Shipment | milestone | 0d | 2026-09-30 A | 2026-09-30 A | ER.5104.3036 FF | 100% |  | 2026-09-08 | 2026-09-08 |  |  | finish on or after 2026-09-30 | 1180 |  |  |  |  | ER |
| ER.5101.3040 |  | DH100/Electrical Room #5104 // Set Skid - SKID-F110 |  | 1d | 2026-10-01 A | 2026-10-01 A | ER.5101.3111, ER.5101.3039, ER.5101.3041 SS | 100% |  |  |  |  |  |  | 1107 | HELIX | DH1100 | TBD |  | ER |
| ER.5101.3041 |  | DH100/Electrical Room #5104 // Set Skid - SKID-G110 |  | 1d | 2026-10-01 A | 2026-10-01 A | ER.5101.3042 | 100% |  |  |  |  |  |  | 1107 | HELIX | DH1100 | TBD |  | ER |
| F.1000A.1172 |  | DH100/Electrical Room #5104 // Pull & Test Security Cable |  | 3d | 2026-10-01 A | 2026-10-05 A | F.1000A.1171 | 100% |  | 2026-09-30 | 2026-10-02 |  |  |  | 1156 |  | DH1100 |  | Y | ER |
| ER.5104.1210 |  | DH100/Electrical Room #5104 // Install Condensate lines from CRAHU's |  | 2d | 2026-10-02 A | 2026-10-05 A | ER.5104.1160 | 100% |  | 2026-10-07 | 2026-10-08 |  |  |  | 1298 |  | DH1100 |  |  | ER |
| ER.5101.3042 |  | DH100/Electrical Room #5104 // Set Skid - SKID-H110 |  | 1d | 2026-10-02 A | 2026-10-05 A | ER.5101.3111 | 100% |  | 2026-10-02 | 2026-10-02 |  |  |  | 1107 | HELIX | DH1100 | TBD |  | ER |
| ER.5101.3043 |  | DH100/Electrical Room #5104 // Set Skid - SKID-J110 |  | 1d | 2026-10-02 A | 2026-10-05 A | ER.5101.3042 SS | 100% |  | 2026-10-02 | 2026-10-02 |  |  |  | 1107 | HELIX | DH1100 | TBD |  | ER |
| ER.5101.3044 |  | DH100/Electrical Room #5104 // Set Skid - SKID-K110 |  | 1d | 2026-10-02 A | 2026-10-05 A | ER.5101.3043 SS | 100% |  | 2026-10-02 | 2026-10-02 |  |  |  | 1107 | HELIX | DH1100 | TBD |  | ER |
| ER.5104.1180 |  | DH100/Electrical Room #5104 // Pull Misc Feeder and Branch Circuits |  | 10d | 2026-10-05 A | 2026-10-27 | ER.5104.1130 |  | 10d | 2026-09-30 | 2026-10-14 | -9d | 0d |  | 1300 | HELIX | DH1100 | AL |  | ER |
| B120001.3128 |  | DH100/Electrical Room #5104 // Install Overhead HAC - TFO |  | 5d | 2026-10-14 | 2026-10-20 | B120001.3127 |  |  |  |  | -4d | 5d |  | 1181 |  |  |  |  | ER |
| ER.5104.1220 |  | DH100/Electrical Room #5104 // Install Elec Feeders to CRAHU's |  | 3d | 2026-10-14 | 2026-10-16 | ER.5104.1140, ER.5104.1160 FF |  |  |  |  | -2d | 7d |  | 1299 | HELIX | DH1100 | OO |  | ER |
| ER.5104.1230 |  | DH100/Electrical Room #5104 // Buss Duct Tie In to Elect Gear |  | 3d | 2026-10-14 | 2026-10-16 | ER.5104.1140, ER.5104.1080 |  |  |  |  | -2d | 7d |  | 1302 | HELIX | DH1100 | TBD |  | ER |
| ER.5104.1240 |  | DH100/Electrical Room #5104 // Pull Cable Buss Feeders |  | 6d | 2026-10-14 | 2026-10-21 | ER.5104.1190, ER.5101.3044, ER.5101.3040, ER.5101.3041 |  |  |  |  | -8d | 0d |  | 1292 | HELIX | DH1100 | TBD |  | ER |
| ER.5104.1260 |  | DH100/Electrical Room #5104 // Land and Terminate Misc Feeder and Branch Circuits |  | 10d | 2026-10-14 | 2026-10-27 | ER.5104.1180 FF, B120001.3128 FF |  |  |  |  | -9d | 0d |  | 1286 | HELIX | DH1100 | TBD |  | ER |
| ER.5104.1280 |  | DH100/Electrical Room #5104 // Land and Terminate Cabel Tray Feeders In Gear |  | 10d | 2026-10-14 | 2026-10-27 | ER.5101.3044, ER.5104.1200 SS+5d, ER.5101.3040, ER.5101.3041 |  |  |  |  | -9d | 0d |  | 1295 | HELIX | DH1100 | TBD |  | ER |
| ER.5104.1270 |  | DH100/Electrical Room #5104 // Terminate Cable Buss Feeders |  | 3d | 2026-10-22 | 2026-10-26 | ER.5104.1240, EE..1372 |  |  |  |  | -8d | 1d |  | 1294 | HELIX | DH1100 | TBD |  | ER |
| ER.5104.1250 |  | DH100/Electrical Room #5104 // Mechanical Equipment Pre-Start up |  | 2d | 2026-10-28 | 2026-10-29 | ER.5104.1050, ER.5104.1280, ER.5104.1160, ER.5104.1210, ER.5104.1220 |  |  |  |  | 1d | 13d |  | 1303 |  | DH1100 |  |  | ER |
| ER.5104.1310 |  | DH100/Electrical Room #5104 // Final FOD Check of all Panels |  | 2d | 2026-10-28 | 2026-10-29 | ER.5104.1220, ER.5104.1260, ER.5104.1230, ER.5104.1280, ER.5104.1270 |  |  |  |  | -9d | 5d |  | 1301 | HELIX | DH1100 | QC |  | ER |
| F.1000A.1173 |  | DH100/Electrical Room #5104 // Install Security Devices |  | 2d | 2026-10-28 | 2026-10-29 | ER.5104.1260, F.1000A.1172 |  |  |  |  | 30d | 0d |  | 1156 | HELIX | DH1100 | AC |  | ER |
| F.1000A.1174 |  | DH100/Electrical Room #5104 // Mount & Terminate Security Devices |  | 5d | 2026-10-30 | 2026-11-05 | ER.5104.1290, F.1000A.1173 |  |  |  |  | 30d | 0d |  | 1156 |  | DH1100 |  |  | ER |
| F.1000A.1175 |  | DH100/Electrical Room #5104 // Test Security Devices |  | 2d | 2026-11-06 | 2026-11-09 | ER.5104.1320, F.1000A.1174, ER.5104.1300, F.1000A.1345 FF |  |  |  |  | 30d | 0d |  | 1156 |  | DH1100 |  |  | ER |
| ER.5104.1330 |  | DH100/Electrical Room #5104 // Suffolk Pre Punch |  | 5d | 2026-11-10 | 2026-11-17 | F.1000A.1175, ER.5104.1320 |  |  |  |  | 30d | 44d |  | 1289 |  | DH1100 |  |  | ER |

| ID | WBS | Activity | Type | Duration | Start | Finish | Predecessors | Complete | Remaining | Planned start | Planned finish | Total float | Free float | MSP Activity ID | QTS - Subcontractor | QTS - AREA | QTS - Resp | 05 -SUFFOLK - Building Phase | 12 - SUFFOLK - Export_to_Procore | QTS - DASH |
| --- | --- | --- | --- | --- | --- | --- | --- | --- | --- | --- | --- | --- | --- | --- | --- | --- | --- | --- | --- | --- |
|  | 3 | **Data Hall 1100** |  |  | 2026-07-02 | 2026-11-03 |  |  |  |  |  |  |  |  |  |  |  |  |  |  |
| DH1100.6270 |  | DH1100 // MEPF overhead layout |  | 3d | 2026-07-02 A | 2026-07-07 A | ER.5104.1010 | 100% |  | 2026-07-30 | 2026-08-03 |  |  | 1380 | HELIX | DH1100 | ACOO | 2 | Y | DH |
| DH1100.6290 |  | DH1100 // MEPF high overhead install |  | 10d | 2026-07-06 A | 2026-07-17 A | DH1100.6270 | 100% |  | 2026-08-04 | 2026-08-17 |  |  | 1382 | HELIX | DH1100 | ACOO | 2 | Y | DH |
| DH1100.6280 |  | DH1100 // Layout walls |  | 3d | 2026-07-07 A | 2026-07-09 A | A2850, DH1100.6270 SS+1d | 100% |  | 2026-07-31 | 2026-08-04 |  |  | 1381 |  | DH1100 |  | 2 | Y | DH |
| DH1100.6300 |  | DH1100 // Frame walls |  | 3d | 2026-07-29 A | 2026-08-03 A | DH1100.6280 | 100% |  | 2026-08-05 | 2026-08-07 |  |  | 1383 |  | DH1100 |  | 2 | Y | DH |
| DH1100.7800 |  | DH1100 // Install Ceiling supports (rods/wires) no grid |  | 5d | 2026-08-05 A | 2026-08-11 A | DH1100.6290, DH1100.6300 SS | 100% |  | 2026-08-18 | 2026-08-24 |  |  | 1375 |  | DH1100 |  | 2 |  | DH |
| DH1100.6320 |  | DH1100 // MEP rough in walls |  | 5d | 2026-08-18 A | 2026-08-24 A | DH1100.6300 | 100% |  | 2026-08-10 | 2026-08-14 |  |  | 1386 | HELIX | DH1100 | AC | 2 |  | DH |
| DH1100.6250 |  | DH1100 // Install overhead MEP and lighting |  | 5d | 2026-08-19 A | 2026-08-28 A | DH1100.6300 | 100% |  | 2026-09-04 | 2026-09-11 |  |  | 1377 | HELIX | DH1100 | AC | 2 |  | DH |
| B120001.3131 |  | DH1100 // Install Overhead Cable Ladder / 36" Cable Tray - TFO |  | 5d | 2026-08-20 A | 2026-09-04 A | DH1100.6290 | 100% |  | 2026-08-18 | 2026-08-24 |  |  | 1181 |  |  |  |  |  | DH |
| DH1100.12067 |  | DH1100 // Install 1-Side Sheet Rock (DH-Side) |  | 3d | 2026-08-27 A | 2026-09-04 A | DH1100.6320, DH1100.6300 | 100% |  | 2026-08-17 | 2026-08-19 |  |  | 1385 |  | DH1100 |  | 2 |  | DH |
| F.1000A.1355 |  | DH1100 // BMS & EPMS Rough-In |  | 2d | 2026-09-01 A | 2026-09-02 A | DH1100.6300 | 100% |  | 2026-10-07 | 2026-10-08 |  |  |  |  | DH1100 |  |  |  |  |
| DH1100.6360 |  | DH1100 // Tape and finish walls |  | 5d | 2026-09-09 A | 2026-09-15 A | DH1100.6300 SS, DH1100.12067, DH1100.6320 | 100% |  | 2026-08-20 | 2026-08-26 |  |  | 1390 |  | DH1100 |  | 2 |  | DH |
| DH1100.6220 |  | DH1100 // Install Ceiling Grid System |  | 8d | 2026-09-24 A | 2026-10-05 A | DH1100.7800 | 100% |  | 2026-08-25 | 2026-09-03 |  |  | 1374 |  | DH1100 |  | 2 |  | DH |
| DH1100.6310 |  | DH1100 // Install wall door frames |  | 3d | 2026-09-24 A | 2026-09-28 A | DH1100.6410, DH1100.6300 FF | 100% |  | 2026-09-03 | 2026-09-08 |  |  | 1385 |  | DH1100 |  | 2 |  | DH |
| DH1100.6410 |  | DH1100 // Prime and 1st coat of Paint |  | 5d | 2026-09-24 A | 2026-09-30 A | A2330, DH1100.6360 | 100% |  | 2026-08-27 | 2026-09-02 |  |  | 1391 |  | DH1100 |  | 2 |  | DH |
| F.1000A.1176 |  | DH1100 // Rough-In Security |  | 2d | 2026-09-24 A | 2026-09-25 A | DH1100.6290 | 100% |  | 2026-10-07 | 2026-10-08 |  |  | 1156 | HELIX | DH1100 | AC |  |  | DH |
| F.1000A.1177 |  | DH1100 // Pull & Test Security Cable |  | 3d | 2026-09-28 A | 2026-09-30 A | F.1000A.1176 | 100% |  | 2026-10-09 | 2026-10-14 |  |  | 1156 |  | DH1100 |  |  |  | DH |
| F.1000A.1178 |  | DH1100 // Install Security Devices |  | 2d | 2026-09-30 A | 2026-10-01 A | F.1000A.1177 | 100% |  | 2026-10-15 | 2026-10-16 |  |  | 1156 |  | DH1100 |  |  |  | DH |
| DH1100.12112 |  | DH1100 // Ready to Receive Equipment | milestone | 0d | 2026-10-01 A | 2026-10-01 A | DH1100.7810 SS | 100% |  | 2026-10-26 | 2026-10-26 |  |  | 1394 |  | DH1100 |  | 2 |  | DH |
| DH1100.7810 |  | DH1100 // Install MEPF Trim and Finishes |  | 5d | 2026-10-01 A | 2026-10-06 A | DH1100.6310, DH1100.7790 SS | 100% |  | 2026-10-20 | 2026-10-26 |  |  | 1394 | HELIX | DH1100 | AC | 2 |  | DH |
| F.1000A.1179 |  | DH1100 // Mount & Terminate Security Devices |  | 5d | 2026-10-01 A | 2026-10-06 A | DH1100.6410, F.1000A.1178 | 100% |  | 2026-10-19 | 2026-10-23 |  |  | 1156 |  | DH1100 |  |  |  | DH |
| DH1100.7790 |  | DH1100 // Final Paint & Touch up walls |  | 5d | 2026-10-06 A | 2026-10-23 | DH1100.6240 FF, DH1100.6220 FF, DH1100.6410, DH1100.6360 |  | 5d | 2026-10-13 | 2026-10-19 | 44d | 0d | 1392 |  | DH1100 |  | 2 |  | DH |
| B120001.3132 |  | DH1100 // Install Overhead HAC - TFO |  | 5d | 2026-10-14 | 2026-10-20 | B120001.3131 |  |  |  |  | 39d | 0d | 1181 |  |  |  |  |  | DH |
| DH1100.6240 |  | DH1100 // Install ceiling grid tiles |  | 3d | 2026-10-21 | 2026-10-23 | B120001.3132, DH1100.6250, DH1100.6220 SS+3d |  |  |  |  | 39d | 0d | 1376 |  | DH1100 |  | 2 |  | DH |
| F.1000A.1180 |  | DH1100 // Test Security Devices |  | 2d | 2026-10-26 | 2026-10-27 | DH1100.6240, DH1100.7810, F.1000A.1179, F.1000A.1355 FF |  |  |  |  | 39d | 0d | 1156 |  | DH1100 |  |  |  | DH |
| DH1100.7820 |  | DH1100 // Suffolk Pre Punch |  | 5d | 2026-10-28 | 2026-11-03 | F.1000A.1180, DH1100.12112 |  |  |  |  | 39d | 53d | 1395 |  | DH1100 |  | 2 |  | DH |

| ID | WBS | Activity | Type | Duration | Start | Finish | Predecessors | Complete | Remaining | Planned start | Planned finish | Total float | Free float | MSP Activity ID | QTS - Subcontractor | QTS - AREA | QTS - Resp | 05 -SUFFOLK - Building Phase | 12 - SUFFOLK - Export_to_Procore | QTS - DASH |
| --- | --- | --- | --- | --- | --- | --- | --- | --- | --- | --- | --- | --- | --- | --- | --- | --- | --- | --- | --- | --- |
|  | 15 | **PDU Gallery** |  |  | 2026-07-21 | 2026-09-11 |  |  |  |  |  |  |  |  |  |  |  |  |  |  |
| PDU.1100.1010 |  | DH1100/PDU Gallery // MEPF overhead layout |  | 5d | 2026-07-21 A | 2026-07-27 A | SOG.1442, STRUCTURE.7380 | 100% |  | 2026-07-24 | 2026-07-30 |  |  | 1398 | HELIX | DH1100 | ACOO | 2 | Y | GR |
| PDU.1100.1040 |  | DH1100/PDU Gallery // Frame walls |  | 5d | 2026-07-27 A | 2026-08-05 A | PDU.1100.1010 | 100% |  | 2026-07-31 | 2026-08-06 |  |  | 1401 |  | DH1100 |  | 2 | Y | GR |
| PDU.1100.1060 |  | DH1100/PDU Gallery // Install Sheetrock Top Down |  | 3d | 2026-08-07 A | 2026-08-11 A | PDU.1100.1040 SS | 100% |  | 2026-08-10 | 2026-08-12 |  |  | 1403 |  | DH1100 |  | 2 | Y | GR |
| PDU.1100.1030 |  | DH1100/PDU Gallery // MEPF high overhead install |  | 3d | 2026-08-11 A | 2026-08-13 A | PDU.1100.1010 SS, PDU.1100.1060 | 100% |  | 2026-08-13 | 2026-08-17 |  |  | 1400 | HELIX | DH1100 | ACOO | 2 | Y | GR |
| PDU.1100.1050 |  | DH1100/PDU Gallery // Install wall door frames |  | 1d | 2026-08-19 A | 2026-08-19 A | PDU.1100.1040 | 100% |  | 2026-08-07 | 2026-08-07 |  |  | 1402 |  | DH1100 |  | 2 | Y | GR |
| PDU.1100.1711 |  | DH1100/PDU Gallery // MEP rough in walls |  | 3d | 2026-08-19 A | 2026-08-21 A | PDU.1100.1060 | 100% |  | 2026-08-13 | 2026-08-17 |  |  | 1403 | HELIX | DH1100 | AC | 2 | Y | GR |
| PDU.1100.1070 |  | DH1100/PDU Gallery // In wall inspection |  | 1d | 2026-08-21 A | 2026-08-21 A | PDU.1100.1030, PDU.1100.1711 FF, PDU.1100.1060 | 100% |  | 2026-08-18 | 2026-08-18 |  |  | 1404 |  | DH1100 |  | 2 |  | GR |
| PDU.1100.1080 |  | DH1100/PDU Gallery // Install sheetrock on walls |  | 5d | 2026-08-24 A | 2026-08-27 A | PDU.1100.1050, PDU.1100.1070 | 100% |  | 2026-08-19 | 2026-08-25 |  |  | 1405 |  | DH1100 |  | 2 |  | GR |
| PDU.1100.1110 |  | DH1100/PDU Gallery // Install Cable Tray (From Elec Rm 5101 to CRAHU Gallery) |  | 6d | 2026-08-25 A | 2026-09-02 A | ER.5101.1180 SS | 100% |  | 2026-09-08 | 2026-09-15 |  |  | 1408 | HELIX | DH1100 | OO |  |  | GR |
| PDU.1100.1090 |  | DH1100/PDU Gallery // Tape and finish walls |  | 1d | 2026-08-28 A | 2026-08-28 A | PDU.1100.1080 | 100% |  | 2026-08-26 | 2026-08-26 |  |  | 1406 |  | DH1100 |  | 2 |  | GR |
| PDU.1100.1000 |  | DH1100/PDU Gallery // Seal concrete |  | 5d | 2026-08-31 A | 2026-09-03 A | PDU.1100.1090 | 100% |  | 2026-08-27 | 2026-09-02 |  |  | 1397 |  | DH1100 |  | 2 |  | GR |
| PDU.1100.1713 |  | DH1100/PDU Gallery // Install Cable Tray (From Elec Rm 5104 to CRAHU Gallery) |  | 6d | 2026-09-03 A | 2026-09-11 A | PDU.1100.1110 | 100% |  | 2026-07-24 | 2026-07-31 |  |  |  |  | DH1100 |  |  |  |  |
| PDU.1100.1100 |  | DH1100/PDU Gallery // Paint walls |  | 2d | 2026-09-09 A | 2026-09-10 A | PDU.1100.1090 | 100% |  | 2026-09-03 | 2026-09-04 |  |  | 1407 |  | DH1100 |  | 2 |  | GR |
| PDU.1100.1712 |  | DH1100/PDU Gallery // Room Ready to Receive Equipment | milestone | 0d | 2026-09-11 A | 2026-09-11 A | PDU.1100.1110 FF, PDU.1100.1713, PDU.1100.1000, PDU.1100.1100 | 100% |  | 2026-09-09 | 2026-09-09 |  |  | 1408 | HELIX | DH1100 | TBD |  |  | GR |
|  | 14 | **CRAH/CDU Galleries** |  |  | 2026-07-17 | 2026-11-23 |  |  |  |  |  |  |  |  |  |  |  |  |  |  |
|  | 2 | **Gallery 1102** |  |  | 2026-07-17 | 2026-11-23 |  |  |  |  |  |  |  |  |  |  |  |  |  |  |
|  | 4 | **Architectural** |  |  | 2026-07-17 | 2026-11-02 |  |  |  |  |  |  |  |  |  |  |  |  |  |  |
| G1102.4700 |  | DH 1100/Gallery 1102 // Frame walls |  | 4d | 2026-07-17 A | 2026-07-22 A | A2060, G1102.4670, SOG.1496 | 100% |  |  |  |  |  | 1415 |  | DH1100 |  | 2 | Y | GR |
| G1102.4670 |  | DH 1100/Gallery 1102 // MEPF overhead layout |  | 5d | 2026-07-20 A | 2026-07-24 A | STRUCTURE.7655, SOG.1442 | 100% |  |  |  |  |  | 1412 | HELIX | DH1100 | ACOO | 2 | Y | GR |
| B120001.3133 |  | DH 1100/Gallery 1102 // Install Overhead Cable Ladder / 36" Cable Tray - TFO |  | 3d | 2026-07-21 A | 2026-07-23 A | G1102.4670 | 100% |  |  |  |  |  | 1181 |  |  |  |  | Y | GR |
| B120001.3134 |  | DH 1100/Gallery 1102 // Install Overhead HAC - TFO |  | 3d | 2026-07-21 A | 2026-07-23 A | B120001.3133 | 100% |  |  |  |  |  | 1181 |  |  |  |  | Y | GR |
| G1102.4690 |  | DH 1100/Gallery 1102 // MEPF high overhead install |  | 10d | 2026-07-21 A | 2026-08-04 A | B120001.3134 SS, A2850, G1102.4670 SS | 100% |  | 2026-07-24 | 2026-08-06 |  |  | 1414 | HELIX | DH1100 | ACOO | 2 | Y | GR |
| G1102.4720 |  | DH 1100/Gallery 1102 // Install Sheetrock Top Down / Paint |  | 6d | 2026-07-24 A | 2026-07-31 A | G1102.4700 SS | 100% |  |  |  |  |  | 1420 |  | DH1100 |  |  | Y | GR |
| F.1000A.1181 |  | DH 1100/Gallery 1102 // Rough-In Security |  | 2d | 2026-08-12 A | 2026-08-13 A | G1102.4690 | 100% |  | 2026-08-07 | 2026-08-10 |  |  | 1156 | HELIX | DH1100 | AC |  |  | GR |
| F.1000A.1365 |  | DH 1100/Gallery 1102 // BMS & EPMS Rough-In |  | 2d | 2026-08-12 A | 2026-08-13 A | F.1000A.1181 SS, F.1000A.1181 FF | 100% |  | 2026-09-30 | 2026-10-01 |  |  |  |  | DH1100 |  |  |  |  |
| G1102.4730 |  | DH 1100/Gallery 1102 // MEP rough in walls |  | 4d | 2026-08-20 A | 2026-08-25 A | G1102.4720 | 100% |  | 2026-08-07 | 2026-08-12 |  |  | 1417 | HELIX | DH1100 | AC | 2 |  | GR |
| G1102.4750 |  | DH 1100/Gallery 1102 // Install Balance of Sheetrock on walls |  | 3d | 2026-08-26 A | 2026-08-28 A | G1102.4690 | 100% |  | 2026-08-07 | 2026-08-11 |  |  | 1419 |  | DH1100 |  | 2 |  | GR |
| G1102.4770 |  | DH 1100/Gallery 1102 // Tape and finish walls |  | 5d | 2026-08-26 A | 2026-08-28 A | G1102.4750 SS | 100% |  | 2026-08-12 | 2026-08-18 |  |  | 1421 |  | DH1100 |  | 2 |  | GR |
| G1102.4790 |  | DH 1100/Gallery 1102 // Prime and Paint walls |  | 4d | 2026-09-01 A | 2026-09-03 A | A2330, G1102.4770 FF | 100% |  | 2026-08-19 | 2026-08-24 |  |  | 1422 |  | DH1100 |  | 2 |  | GR |
| G1102.4660 |  | DH 1100/Gallery 1102 // Seal concrete |  | 2d | 2026-09-04 A | 2026-09-08 A | G1102.4770 | 100% |  | 2026-08-19 | 2026-08-20 |  |  | 1379 |  | DH1100 |  | 2 |  | GR |
| G1102.4740 |  | DH 1100/Gallery 1102 // In wall inspection |  | 1d | 2026-09-04 A | 2026-09-04 A | G1102.4730 | 100% |  | 2026-08-13 | 2026-08-13 |  |  | 1418 |  | DH1100 |  | 2 |  | GR |
| G1102.4800 |  | DH 1100/Gallery 1102 // Touch up Walls and Final Paint |  | 5d | 2026-09-04 A | 2026-09-08 A | G1102.4790 | 100% |  | 2026-08-25 | 2026-08-31 |  |  | 1423 |  | DH1100 |  | 2 |  | GR |
| G1102.4710 |  | DH 1100/Gallery 1102 // Install wall door frames |  | 1d | 2026-09-07 A | 2026-09-08 A | G1102.4700 FF, G1102.4770, G1102.4740 | 100% |  | 2026-08-19 | 2026-08-19 |  |  | 1416 |  | DH1100 |  | 2 |  | GR |
| G1102.4810 |  | DH 1100/Gallery 1102 // Install Trim and Devices |  | 2d | 2026-09-08 A | 2026-09-08 A | G1102.4710, G1102.4660, G1102.4800 | 100% |  | 2026-09-01 | 2026-09-02 |  |  | 1424 | HELIX | DH1100 | AC |  |  | GR |
| G1102.4821 |  | DH 1100/Gallery 1102 // Ready to Receive Equipment | milestone | 0d | 2026-09-08 A | 2026-09-08 A | G1102.4810 FF | 100% |  | 2026-09-02 | 2026-09-02 |  |  | 1424 | HELIX | DH1100 | TBD |  |  | GR |
| F.1000A.1182 |  | DH 1100/Gallery 1102 // Pull & Test Security Cable |  | 3d | 2026-09-09 A | 2026-10-14 | F.1000A.1181 | 67% | 1d | 2026-08-11 | 2026-08-13 | 40d | 0d | 1156 |  | DH1100 |  |  |  | GR |
| F.1000A.1183 |  | DH 1100/Gallery 1102 // Install Security Devices |  | 2d | 2026-09-21 A | 2026-10-15 | F.1000A.1182 SS |  | 2d | 2026-08-14 | 2026-08-17 | 40d | 0d | 1156 |  | DH1100 |  |  |  | GR |
| F.1000A.1184 |  | DH 1100/Gallery 1102 // Mount & Terminate Security Devices |  | 5d | 2026-10-16 | 2026-10-22 | G1102.4790, F.1000A.1183 |  |  |  |  | 40d | 0d | 1156 |  | DH1100 |  |  |  | GR |
| F.1000A.1185 |  | DH 1100/Gallery 1102 // Test Security Devices |  | 2d | 2026-10-23 | 2026-10-26 | G1102.4810, F.1000A.1184, F.1000A.1365 FF |  |  |  |  | 40d | 0d | 1156 |  | DH1100 |  |  |  | GR |
| G1102.4820 |  | DH 1100/Gallery 1102 // Suffolk Pre Punch |  | 5d | 2026-10-27 | 2026-11-02 | F.1000A.1185, G1102.4821 |  |  |  |  | 40d | 54d | 1425 |  | DH1100 |  |  |  | GR |

| ID | WBS | Activity | Duration | Start | Finish | Predecessors | Complete | Remaining | Planned start | Planned finish | Total float | Free float | MSP Activity ID | QTS - AREA | QTS - DASH | QTS - Subcontractor | QTS - Resp |
| --- | --- | --- | --- | --- | --- | --- | --- | --- | --- | --- | --- | --- | --- | --- | --- | --- | --- |
|  | 16 | **Raceway** |  |  |  |  |  |  |  |  |  |  |  |  |  |  |  |
|  | 3 | **Equipment Line-Ups** |  | 2026-09-09 | 2026-11-23 |  |  |  |  |  |  |  |  |  |  |  |  |
|  | 1 | **A110** |  | 2026-09-09 | 2026-11-18 |  |  |  |  |  |  |  |  |  |  |  |  |
| DH1100-A-EQP-1 |  | Gallery 1102 - A110/Line-Ups // Set CRAH-DH1100- 23 | 1d | 2026-09-09 A | 2026-09-09 A | G1102.4770, G1102.4821, DH1100.6360 | 100% |  | 2026-09-03 | 2026-09-03 |  |  | 1433 | DH1100 | GR |  |  |
| DH1100-A-EQP-3 |  | Gallery 1102 - A110/Line-Ups // Set CRAH-DH1100- 24 | 1d | 2026-09-09 A | 2026-09-09 A | DH1100-A-EQP-1 SS | 100% |  | 2026-09-03 | 2026-09-03 |  |  | 1434 | DH1100 | GR |  |  |
| DH1100-A-EQP-9 |  | Gallery 1102 - A110/Line-Ups // Pull Feeder from SWD to MOD | 1d | 2026-09-10 A | 2026-09-10 A | DH1100-A-EQP-6 | 100% |  | 2026-08-26 | 2026-08-26 |  |  | 1439 | DH1100 | GR | HELIX | OO |
| DH1100-A-EQP-5 |  | Gallery 1102 - A110/Line-Ups // Set MOD-A110-01 | 1d | 2026-09-11 A | 2026-09-11 A | G1102.4790 | 100% |  | 2026-08-25 | 2026-08-25 |  |  | 1437 | DH1100 | GR | HELIX | TBD |
| DH1100-A-EQP-6 |  | Gallery 1102 - A110/Line-Ups // Set MOD-A110-02 | 1d | 2026-09-11 A | 2026-09-11 A | DH1100-A-EQP-5 SS | 100% |  | 2026-08-25 | 2026-08-25 |  |  | 1437 | DH1100 | GR | HELIX | TBD |
| DH1100-A-EQP-10 |  | Gallery 1102 - A110/Line-Ups // Pull Cable Tray Feed from MOD to CRAHU's | 5d | 2026-09-14 A | 2026-10-16 | DH1100-A-EQP-6 | 40% | 3d | 2026-08-26 | 2026-09-01 | -4d | 0d | 1438 | DH1100 | GR | HELIX | OO |
| DH1100-A-EQP-12 |  | Gallery 1102 - A110/Line-Ups // Mount Electrial Gear for Chiller Controls | 10d | 2026-09-14 A | 2026-09-29 A | DH1100-A-EQP-6 | 100% |  | 2026-08-26 | 2026-09-09 |  |  | 1443 | DH1100 | GR | HELIX | TBD |
| DH1100-A-EQP-13 |  | Gallery 1102 - A110/Line-Ups // Pull Cable Tray Feed from MOD to CRAHU's | 5d | 2026-09-14 A | 2026-10-20 | DH1100-A-EQP-10 SS |  | 5d | 2026-10-05 | 2026-10-09 | -4d | 0d | 1441 | DH1100 | GR | HELIX | OO |
| DH1100-A-EQP-11 |  | Gallery 1102 - A110/Line-Ups // Mechanical Connections to CRAHU Units | 10d | 2026-09-17 A | 2026-10-26 | DH1100-A-EQP-3 | 10% | 9d | 2026-09-11 | 2026-09-24 | 1d | 13d | 1448 | DH1100 | GR |  |  |
| DH1100-A-EQP-4 |  | Gallery 1102 - A110/Line-Ups // Condensate connections to Floor Drains | 10d | 2026-09-21 A | 2026-10-08 A | DH1100-A-EQP-3, DH1100-A-EQP-7 FF, DH1100-A-EQP-8 FF | 100% |  | 2026-09-09 | 2026-09-22 |  |  | 1436 | DH1100 | GR |  |  |
| DH1100-A-EQP-7 |  | Gallery 1102 - A110/Line-Ups // Set CDU-DH1100- 21 | 1d | 2026-09-30 A | 2026-10-07 A | DH1100-A-EQP-1 | 100% |  | 2026-09-30 | 2026-09-30 |  |  | 1434 | DH1100 | GR |  |  |
| DH1100-A-EQP-8 |  | Gallery 1102 - A110/Line-Ups // Set CDU-DH1100- 22 | 1d | 2026-10-01 A | 2026-10-07 A | DH1100-A-EQP-7, DH1100-A-EQP-3 | 100% |  | 2026-10-01 | 2026-10-01 |  |  | 1434 | DH1100 | GR |  |  |
| DH1100-A-EQP-17 |  | Gallery 1102 - A110/Line-Ups // Pull Feeder and Branch circuits to MIsc equipment and Chiller controls | 10d | 2026-10-14 | 2026-10-27 | DH1100-A-EQP-12 SS+4d |  |  |  |  | 3d | 0d | 1444 | DH1100 | GR | HELIX | AC |
| DH1100-A-EQP-16 |  | Gallery 1102 - A110/Line-Ups // Terminate CRAHU Electrical Connections | 5d | 2026-10-19 | 2026-10-23 | DH1100-A-EQP-13 SS+2d, DH1100-A-EQP-10 |  |  |  |  | 9d | 6d | 1442 | DH1100 | GR | HELIX | OO |
| DH1100-A-EQP-19 |  | Gallery 1102 - A110/Line-Ups // Teminate all Misc Equipment and Chiller Controls | 10d | 2026-10-20 | 2026-11-02 | DH1100-A-EQP-17 SS+4d |  |  |  |  | 3d | 0d | 1445 | DH1100 | GR |  |  |
| DH1100-A-EQP-15 |  | Gallery 1102 - A110/Line-Ups // Terminate Mod Panels | 1d | 2026-10-21 | 2026-10-21 | DH1100-A-EQP-13, DH1100-A-EQP-10, DH1100-A-EQP-9 |  |  |  |  | -4d | 0d | 1440 | DH1100 | GR | HELIX | OO |
| DH1100-A-EQP-20 |  | Gallery 1102 - A110/Line-Ups // Electrical Gear FOD Inspection Pre-Start Up | 1d | 2026-11-03 | 2026-11-03 | DH1100-A-EQP-16, DH1100-A-EQP-19 |  |  |  |  | 3d | 0d | 1446 | DH1100 | GR | HELIX | QC |
| DH1100-A-EQP-14 |  | Gallery 1102 - A110/Line-Ups // Condensate connections to Floor Drains | 10d | 2026-11-04 | 2026-11-18 | DH1200.7841, DH1100-A-EQP-11 SS+5d, DH1100-A-EQP-4 SS+5d |  |  |  |  | -12d | 0d | 1449 | DH1100 | GR |  |  |
| DH1100-A-EQP-18 |  | Gallery 1102 - A110/Line-Ups // Mechanical Gear FOD Inspection Pre-Start Up | 3d | 2026-11-16 | 2026-11-18 | DH1100-A-EQP-3, DH1100-A-EQP-14 FF, DH1100-A-EQP-4, DH1100-A-EQP-11 |  |  |  |  | -12d | 0d | 1447 | DH1100 | GR |  |  |
|  | 2 | **B110** |  | 2026-09-09 | 2026-11-18 |  |  |  |  |  |  |  |  |  |  |  |  |
| DH1100-A-EQP-21 |  | Gallery 1102 - B110/Line-Ups // Set CRAH-DH1100- 25 | 1d | 2026-09-09 A | 2026-09-09 A | DH1100-A-EQP-3 SS | 100% |  | 2026-09-03 | 2026-09-03 |  |  | 1433 | DH1100 | GR |  |  |
| DH1100-A-EQP-23 |  | Gallery 1102 - B110/Line-Ups // Set CRAH-DH1100- 26 | 1d | 2026-09-09 A | 2026-09-09 A | DH1100-A-EQP-21 SS | 100% |  | 2026-09-03 | 2026-09-03 |  |  | 1434 | DH1100 | GR |  |  |
| DH1100-A-EQP-25 |  | Gallery 1102 - B110/Line-Ups // Set MOD-B110-01 | 1d | 2026-09-11 A | 2026-09-11 A | DH1100-A-EQP-6 FF | 100% |  | 2026-08-26 | 2026-08-26 |  |  | 1437 | DH1100 | GR | HELIX | TBD |
| DH1100-A-EQP-26 |  | Gallery 1102 - B110/Line-Ups // Set MOD-B110-02 | 1d | 2026-09-11 A | 2026-09-11 A | DH1100-A-EQP-25 SS | 100% |  | 2026-08-26 | 2026-08-26 |  |  | 1437 | DH1100 | GR | HELIX | TBD |
| DH1100-A-EQP-30 |  | Gallery 1102 - B110/Line-Ups // Pull Cable Tray Feed from MOD to CRAHU's | 5d | 2026-09-14 A | 2026-09-28 A | DH1100-A-EQP-26 | 100% |  | 2026-08-27 | 2026-09-02 |  |  | 1438 | DH1100 | GR | HELIX | OO |
| DH1100-A-EQP-32 |  | Gallery 1102 - B110/Line-Ups // Mount Electrial Gear for Chiller Controls | 10d | 2026-09-14 A | 2026-09-29 A | DH1100-A-EQP-26 | 100% |  | 2026-08-27 | 2026-09-10 |  |  | 1443 | DH1100 | GR | HELIX | TBD |
| DH1100-A-EQP-31 |  | Gallery 1102 - B110/Line-Ups // Mechanical Connections to CRAHU Units | 10d | 2026-09-17 A | 2026-10-26 | DH1100-A-EQP-23 | 10% | 9d | 2026-09-11 | 2026-09-24 | 0d |  | 1448 | DH1100 | GR |  |  |
| DH1100-A-EQP-24 |  | Gallery 1102 - B110/Line-Ups // Condensate connections to Floor Drains | 10d | 2026-09-21 A | 2026-10-08 A | DH1100-A-EQP-23, DH1100-A-EQP-27 FF, DH1100-A-EQP-28 FF | 100% |  | 2026-09-09 | 2026-09-22 |  |  | 1436 | DH1100 | GR |  |  |
| DH1100-A-EQP-27 |  | Gallery 1102 - B110/Line-Ups // Set CDU-DH1100- 23 | 1d | 2026-09-30 A | 2026-10-07 A | DH1100-A-EQP-21 | 100% |  | 2026-09-30 | 2026-09-30 |  |  | 1434 | DH1100 | GR |  |  |
| DH1100-A-EQP-28 |  | Gallery 1102 - B110/Line-Ups // Set CDU-DH1100- 24 | 1d | 2026-10-01 A | 2026-10-07 A | DH1100-A-EQP-27, DH1100-A-EQP-23 | 100% |  | 2026-10-01 | 2026-10-01 |  |  | 1434 | DH1100 | GR |  |  |
| DH1100-A-EQP-29 |  | Gallery 1102 - B110/Line-Ups // Pull Feeder from SWD to MOD | 1d | 2026-10-14 | 2026-10-14 | DH1100-A-EQP-26 |  |  |  |  | 1d | 5d | 1439 | DH1100 | GR | HELIX | OO |
| DH1100-A-EQP-33 |  | Gallery 1102 - B110/Line-Ups // Pull Cable Tray Feed from MOD to CRAHU's | 5d | 2026-10-14 | 2026-10-20 | DH1100-A-EQP-30 |  |  |  |  | -3d | 0d | 1441 | DH1100 | GR | HELIX | OO |
| DH1100-A-EQP-34 |  | Gallery 1102 - B110/Line-Ups // Condensate connections to Floor Drains | 10d | 2026-10-14 | 2026-10-27 | DH1100-A-EQP-31 SS+5d, DH1100-A-EQP-24 SS+5d |  |  |  |  | 0d | 12d | 1449 | DH1100 | GR |  |  |
| DH1100-A-EQP-37 |  | Gallery 1102 - B110/Line-Ups // Pull Feeder and Branch circuits to MIsc equipment and Chiller controls | 10d | 2026-10-14 | 2026-10-27 | DH1100-A-EQP-32 SS+4d |  |  |  |  | 3d | 0d | 1444 | DH1100 | GR | HELIX | AC |
| DH1100-A-EQP-36 |  | Gallery 1102 - B110/Line-Ups // Terminate CRAHU Electrical Connections | 5d | 2026-10-16 | 2026-10-22 | DH1100-A-EQP-33 SS+2d, DH1100-A-EQP-30 |  |  |  |  | 10d | 7d | 1442 | DH1100 | GR | HELIX | OO |
| DH1100-A-EQP-39 |  | Gallery 1102 - B110/Line-Ups // Teminate all Misc Equipment and Chiller Controls | 10d | 2026-10-20 | 2026-11-02 | DH1100-A-EQP-37 SS+4d |  |  |  |  | 3d | 0d | 1445 | DH1100 | GR |  |  |
| DH1100-A-EQP-35 |  | Gallery 1102 - B110/Line-Ups // Terminate Mod Panels | 1d | 2026-10-22 | 2026-10-22 | DH1100-A-EQP-15, DH1100-A-EQP-33, DH1100-A-EQP-30, DH1100-A-EQP-29 |  |  |  |  | -4d | 0d | 1440 | DH1100 | GR | HELIX | OO |
| DH1100-A-EQP-40 |  | Gallery 1102 - B110/Line-Ups // Electrical Gear FOD Inspection Pre-Start Up | 1d | 2026-11-03 | 2026-11-03 | DH1100-A-EQP-20 FF, DH1100-A-EQP-36, DH1100-A-EQP-39 |  |  |  |  | 3d | 0d | 1446 | DH1100 | GR | HELIX | QC |
| DH1100-A-EQP-38 |  | Gallery 1102 - B110/Line-Ups // Mechanical Gear FOD Inspection Pre-Start Up | 3d | 2026-11-16 | 2026-11-18 | DH1100-A-EQP-18 FF, DH1100-A-EQP-23, DH1100-A-EQP-34, DH1100-A-EQP-24, DH1100-A-EQP-31 |  |  |  |  | -12d | 0d | 1447 | DH1100 | GR |  |  |

| ID | WBS | Activity | Duration | Start | Finish | Predecessors | Complete | Remaining | Planned start | Planned finish | Total float | Free float | MSP Activity ID | QTS - Subcontractor | QTS - AREA | QTS - Resp | QTS - DASH |
| --- | --- | --- | --- | --- | --- | --- | --- | --- | --- | --- | --- | --- | --- | --- | --- | --- | --- |
|  | 3 | **C110** |  | 2026-09-11 | 2026-11-18 |  |  |  |  |  |  |  |  |  |  |  |  |
| DH1100-A-EQP-45 |  | Gallery 1102 - C110/Line-Ups // Set MOD-C110-01 | 1d | 2026-09-11 A | 2026-09-11 A | DH1100-A-EQP-26 FF | 100% |  | 2026-08-27 | 2026-08-27 |  |  | 1437 | HELIX | DH1100 | TBD | GR |
| DH1100-A-EQP-46 |  | Gallery 1102 - C110/Line-Ups // Set MOD-C110-02 | 1d | 2026-09-11 A | 2026-09-11 A | DH1100-A-EQP-45 SS | 100% |  | 2026-08-27 | 2026-08-27 |  |  | 1437 | HELIX | DH1100 | TBD | GR |
| DH1100-A-EQP-50 |  | Gallery 1102 - C110/Line-Ups // Pull Cable Tray Feed from MOD to CRAHU's | 5d | 2026-09-14 A | 2026-09-28 A | DH1100-A-EQP-46 | 100% |  | 2026-08-28 | 2026-09-03 |  |  | 1438 | HELIX | DH1100 | OO | GR |
| DH1100-A-EQP-52 |  | Gallery 1102 - C110/Line-Ups // Mount Electrial Gear for Chiller Controls | 10d | 2026-09-14 A | 2026-09-29 A | DH1100-A-EQP-46 | 100% |  | 2026-08-28 | 2026-09-11 |  |  | 1443 | HELIX | DH1100 | TBD | GR |
| DH1100-A-EQP-41 |  | Gallery 1102 - C110/Line-Ups // Set CRAH-DH1100- 27 | 1d | 2026-09-21 A | 2026-09-21 A | DH1100-A-EQP-23 SS | 100% |  | 2026-09-03 | 2026-09-03 |  |  | 1433 |  | DH1100 |  | GR |
| DH1100-A-EQP-43 |  | Gallery 1102 - C110/Line-Ups // Set CRAH-DH1100- 28 | 1d | 2026-09-21 A | 2026-09-21 A | DH1100-A-EQP-41 SS | 100% |  | 2026-09-03 | 2026-09-03 |  |  | 1434 |  | DH1100 |  | GR |
| DH1100-A-EQP-49 |  | Gallery 1102 - C110/Line-Ups // Pull Feeder from SWD to MOD | 1d | 2026-09-24 A | 2026-10-14 | DH1100-A-EQP-46 |  | 1d | 2026-08-28 | 2026-08-28 | 1d | 5d | 1439 | HELIX | DH1100 | OO | GR |
| DH1100-A-EQP-47 |  | Gallery 1102 - C110/Line-Ups // Set CDU-DH1100- 25 | 1d | 2026-09-30 A | 2026-10-01 A | DH1100-A-EQP-41 | 100% |  | 2026-09-30 | 2026-09-30 |  |  | 1434 |  | DH1100 |  | GR |
| DH1100-A-EQP-48 |  | Gallery 1102 - C110/Line-Ups // Set CDU-DH1100- 26 | 1d | 2026-10-01 A | 2026-10-02 A | DH1100-A-EQP-47, DH1100-A-EQP-43 | 100% |  | 2026-10-01 | 2026-10-01 |  |  | 1434 |  | DH1100 |  | GR |
| DH1100-A-EQP-44 |  | Gallery 1102 - C110/Line-Ups // Condensate connections to Floor Drains | 1d | 2026-10-08 A | 2026-10-08 A | DH1100-A-EQP-43, DH1100-A-EQP-47, DH1100-A-EQP-48 | 100% |  | 2026-10-02 | 2026-10-02 |  |  | 1436 |  | DH1100 |  | GR |
| DH1100-A-EQP-51 |  | Gallery 1102 - C110/Line-Ups // Mechanical Connections to CRAHU Units | 10d | 2026-10-14 | 2026-10-27 | DH1100-A-EQP-43 SS+5d |  |  |  |  | -5d | 0d | 1448 |  | DH1100 |  | GR |
| DH1100-A-EQP-53 |  | Gallery 1102 - C110/Line-Ups // Pull Cable Tray Feed from MOD to CRAHU's | 5d | 2026-10-14 | 2026-10-20 | DH1100-A-EQP-50 |  |  |  |  | -3d | 0d | 1441 | HELIX | DH1100 | OO | GR |
| DH1100-A-EQP-57 |  | Gallery 1102 - C110/Line-Ups // Pull Feeder and Branch circuits to MIsc equipment and Chiller controls | 10d | 2026-10-14 | 2026-10-27 | DH1100-A-EQP-52 SS+4d |  |  |  |  | 3d | 0d | 1444 | HELIX | DH1100 | AC | GR |
| DH1100-A-EQP-56 |  | Gallery 1102 - C110/Line-Ups // Terminate CRAHU Electrical Connections | 5d | 2026-10-16 | 2026-10-22 | DH1100-A-EQP-53 SS+2d, DH1100-A-EQP-50 |  |  |  |  | 10d | 7d | 1442 | HELIX | DH1100 | OO | GR |
| DH1100-A-EQP-59 |  | Gallery 1102 - C110/Line-Ups // Teminate all Misc Equipment and Chiller Controls | 10d | 2026-10-20 | 2026-11-02 | DH1100-A-EQP-57 SS+4d |  |  |  |  | 3d | 0d | 1445 |  | DH1100 |  | GR |
| DH1100-A-EQP-54 |  | Gallery 1102 - C110/Line-Ups // Condensate connections to Floor Drains | 10d | 2026-10-21 | 2026-11-03 | DH1100-A-EQP-51 SS+5d, DH1100-A-EQP-44 SS+5d |  |  |  |  | -5d | 7d | 1449 |  | DH1100 |  | GR |
| DH1100-A-EQP-55 |  | Gallery 1102 - C110/Line-Ups // Terminate Mod Panels | 1d | 2026-10-22 | 2026-10-22 | DH1100-A-EQP-35 FF, DH1100-A-EQP-53, DH1100-A-EQP-50, DH1100-A-EQP-49 |  |  |  |  | -4d | 0d | 1440 | HELIX | DH1100 | OO | GR |
| DH1100-A-EQP-60 |  | Gallery 1102 - C110/Line-Ups // Electrical Gear FOD Inspection Pre-Start Up | 1d | 2026-11-03 | 2026-11-03 | DH1100-A-EQP-40 FF, DH1100-A-EQP-56, DH1100-A-EQP-59 |  |  |  |  | 3d | 0d | 1446 | HELIX | DH1100 | QC | GR |
| DH1100-A-EQP-58 |  | Gallery 1102 - C110/Line-Ups // Mechanical Gear FOD Inspection Pre-Start Up | 3d | 2026-11-16 | 2026-11-18 | DH1100-A-EQP-38 FF, DH1100-A-EQP-43, DH1100-A-EQP-54, DH1100-A-EQP-44, DH1100-A-EQP-51 |  |  |  |  | -12d | 0d | 1447 |  | DH1100 |  | GR |
|  | 4 | **D110** |  | 2026-09-11 | 2026-11-18 |  |  |  |  |  |  |  |  |  |  |  |  |
| DH1100-A-EQP-65 |  | Gallery 1102 - D110/Line-Ups // Set MOD-D110-01 | 1d | 2026-09-11 A | 2026-09-11 A | DH1100-A-EQP-46 FF | 100% |  | 2026-08-28 | 2026-08-28 |  |  | 1437 | HELIX | DH1100 | TBD | GR |
| DH1100-A-EQP-66 |  | Gallery 1102 - D110/Line-Ups // Set MOD-D110-02 | 1d | 2026-09-11 A | 2026-09-11 A | DH1100-A-EQP-65 SS | 100% |  | 2026-08-28 | 2026-08-28 |  |  | 1437 | HELIX | DH1100 | TBD | GR |
| DH1100-A-EQP-61 |  | Gallery 1102 - D110/Line-Ups // Set CRAH-DH1100- 29 | 1d | 2026-09-21 A | 2026-09-21 A | DH1100-A-EQP-43 | 100% |  | 2026-09-04 | 2026-09-04 |  |  | 1433 |  | DH1100 |  | GR |
| DH1100-A-EQP-63 |  | Gallery 1102 - D110/Line-Ups // Set CRAH-DH1100- 30 | 1d | 2026-09-21 A | 2026-09-21 A | DH1100-A-EQP-61 SS | 100% |  | 2026-09-04 | 2026-09-04 |  |  | 1434 |  | DH1100 |  | GR |
| DH1100-A-EQP-70 |  | Gallery 1102 - D110/Line-Ups // Pull Cable Tray Feed from MOD to CRAHU's | 5d | 2026-09-24 A | 2026-09-29 A | DH1100-A-EQP-66 | 100% |  | 2026-08-31 | 2026-09-04 |  |  | 1438 | HELIX | DH1100 | OO | GR |
| DH1100-A-EQP-72 |  | Gallery 1102 - D110/Line-Ups // Mount Electrial Gear for Chiller Controls | 10d | 2026-09-24 A | 2026-10-27 | DH1100-A-EQP-66 |  | 10d | 2026-08-31 | 2026-09-14 | 3d | 0d | 1443 | HELIX | DH1100 | TBD | GR |
| DH1100-A-EQP-67 |  | Gallery 1102 - D110/Line-Ups // Set CDU-DH1100- 27 | 1d | 2026-09-30 A | 2026-10-01 A | DH1100-A-EQP-61 | 100% |  | 2026-09-30 | 2026-09-30 |  |  | 1434 |  | DH1100 |  | GR |
| DH1100-A-EQP-68 |  | Gallery 1102 - D110/Line-Ups // Set CDU-DH1100- 28 | 1d | 2026-10-01 A | 2026-10-02 A | DH1100-A-EQP-67, DH1100-A-EQP-63 | 100% |  | 2026-10-01 | 2026-10-01 |  |  | 1434 |  | DH1100 |  | GR |
| DH1100-A-EQP-64 |  | Gallery 1102 - D110/Line-Ups // Condensate connections to Floor Drains | 1d | 2026-10-08 A | 2026-10-08 A | DH1100-A-EQP-63, DH1100-A-EQP-67, DH1100-A-EQP-68 | 100% |  | 2026-10-02 | 2026-10-02 |  |  | 1436 |  | DH1100 |  | GR |
| DH1100-A-EQP-69 |  | Gallery 1102 - D110/Line-Ups // Pull Feeder from SWD to MOD | 1d | 2026-10-14 | 2026-10-14 | DH1100-A-EQP-66 |  |  |  |  | 1d | 5d | 1439 | HELIX | DH1100 | OO | GR |
| DH1100-A-EQP-71 |  | Gallery 1102 - D110/Line-Ups // Mechanical Connections to CRAHU Units | 10d | 2026-10-14 | 2026-10-27 | DH1100-A-EQP-63 SS+5d |  |  |  |  | -5d | 0d | 1448 |  | DH1100 |  | GR |
| DH1100-A-EQP-73 |  | Gallery 1102 - D110/Line-Ups // Pull Cable Tray Feed from MOD to CRAHU's | 5d | 2026-10-14 | 2026-10-20 | DH1100-A-EQP-70 |  |  |  |  | -3d | 0d | 1441 | HELIX | DH1100 | OO | GR |
| DH1100-A-EQP-77 |  | Gallery 1102 - D110/Line-Ups // Pull Feeder and Branch circuits to MIsc equipment and Chiller controls | 10d | 2026-10-14 | 2026-10-27 | DH1100-A-EQP-72 SS+4d |  |  |  |  | 3d | 0d | 1444 | HELIX | DH1100 | AC | GR |
| DH1100-A-EQP-76 |  | Gallery 1102 - D110/Line-Ups // Terminate CRAHU Electrical Connections | 5d | 2026-10-16 | 2026-10-22 | DH1100-A-EQP-73 SS+2d, DH1100-A-EQP-70 |  |  |  |  | 10d | 7d | 1442 | HELIX | DH1100 | OO | GR |
| DH1100-A-EQP-79 |  | Gallery 1102 - D110/Line-Ups // Teminate all Misc Equipment and Chiller Controls | 10d | 2026-10-20 | 2026-11-02 | DH1100-A-EQP-77 SS+4d |  |  |  |  | 3d | 0d | 1445 |  | DH1100 |  | GR |
| DH1100-A-EQP-74 |  | Gallery 1102 - D110/Line-Ups // Condensate connections to Floor Drains | 10d | 2026-10-21 | 2026-11-03 | DH1100-A-EQP-71 SS+5d, DH1100-A-EQP-64 SS+5d |  |  |  |  | -5d | 7d | 1449 |  | DH1100 |  | GR |
| DH1100-A-EQP-75 |  | Gallery 1102 - D110/Line-Ups // Terminate Mod Panels | 1d | 2026-10-22 | 2026-10-22 | DH1100-A-EQP-55 FF, DH1100-A-EQP-73, DH1100-A-EQP-70, DH1100-A-EQP-69 |  |  |  |  | -4d | 0d | 1440 | HELIX | DH1100 | OO | GR |
| DH1100-A-EQP-80 |  | Gallery 1102 - D110/Line-Ups // Electrical Gear FOD Inspection Pre-Start Up | 1d | 2026-11-03 | 2026-11-03 | DH1100-A-EQP-60 FF, DH1100-A-EQP-76, DH1100-A-EQP-79 |  |  |  |  | 3d | 0d | 1446 | HELIX | DH1100 | QC | GR |
| DH1100-A-EQP-78 |  | Gallery 1102 - D110/Line-Ups // Mechanical Gear FOD Inspection Pre-Start Up | 3d | 2026-11-16 | 2026-11-18 | DH1100-A-EQP-58 FF, DH1100-A-EQP-63, DH1100-A-EQP-74, DH1100-A-EQP-64, DH1100-A-EQP-71 |  |  |  |  | -12d | 0d | 1447 |  | DH1100 |  | GR |

| ID | WBS | Activity | Duration | Start | Finish | Predecessors | Complete | Remaining | Planned start | Planned finish | Total float | Free float | MSP Activity ID | QTS - Subcontractor | QTS - AREA | QTS - Resp | QTS - DASH |
| --- | --- | --- | --- | --- | --- | --- | --- | --- | --- | --- | --- | --- | --- | --- | --- | --- | --- |
|  | 5 | **E110** |  | 2026-09-11 | 2026-11-18 |  |  |  |  |  |  |  |  |  |  |  |  |
| DH1100-A-EQP-85 |  | Gallery 1102 - E110/Line-Ups // Set MOD-E110-01 | 1d | 2026-09-11 A | 2026-09-11 A | DH1100-A-EQP-66 | 100% |  | 2026-08-31 | 2026-08-31 |  |  | 1437 | HELIX | DH1100 | TBD | GR |
| DH1100-A-EQP-86 |  | Gallery 1102 - E110/Line-Ups // Set MOD-E110-02 | 1d | 2026-09-11 A | 2026-09-11 A | DH1100-A-EQP-85 SS | 100% |  | 2026-08-31 | 2026-08-31 |  |  | 1437 | HELIX | DH1100 | TBD | GR |
| DH1100-A-EQP-81 |  | Gallery 1102 - E110/Line-Ups // Set CRAH-DH1100- 31 | 1d | 2026-09-22 A | 2026-09-22 A | DH1100-A-EQP-63 SS | 100% |  | 2026-09-04 | 2026-09-04 |  |  | 1433 |  | DH1100 |  | GR |
| DH1100-A-EQP-83 |  | Gallery 1102 - E110/Line-Ups // Set CRAH-DH1100- 32 | 1d | 2026-09-22 A | 2026-09-22 A | DH1100-A-EQP-81 SS | 100% |  | 2026-09-04 | 2026-09-04 |  |  | 1434 |  | DH1100 |  | GR |
| DH1100-A-EQP-90 |  | Gallery 1102 - E110/Line-Ups // Pull Cable Tray Feed from MOD to CRAHU's | 5d | 2026-09-24 A | 2026-09-29 A | DH1100-A-EQP-86 | 100% |  | 2026-09-01 | 2026-09-08 |  |  | 1438 | HELIX | DH1100 | OO | GR |
| DH1100-A-EQP-92 |  | Gallery 1102 - E110/Line-Ups // Mount Electrial Gear for Chiller Controls | 10d | 2026-09-24 A | 2026-10-27 | DH1100-A-EQP-86 |  | 10d | 2026-09-01 | 2026-09-15 | 3d | 0d | 1443 | HELIX | DH1100 | TBD | GR |
| DH1100-A-EQP-87 |  | Gallery 1102 - E110/Line-Ups // Set CDU-DH1100- 29 | 1d | 2026-09-30 A | 2026-10-01 A | DH1100-A-EQP-81 | 100% |  | 2026-09-30 | 2026-09-30 |  |  | 1434 |  | DH1100 |  | GR |
| DH1100-A-EQP-88 |  | Gallery 1102 - E110/Line-Ups // Set CDU-DH1100- 30 | 1d | 2026-10-01 A | 2026-10-02 A | DH1100-A-EQP-87, DH1100-A-EQP-83 | 100% |  | 2026-10-01 | 2026-10-01 |  |  | 1434 |  | DH1100 |  | GR |
| DH1100-A-EQP-84 |  | Gallery 1102 - E110/Line-Ups // Condensate connections to Floor Drains | 1d | 2026-10-08 A | 2026-10-08 A | DH1100-A-EQP-83, DH1100-A-EQP-87, DH1100-A-EQP-88 | 100% |  | 2026-10-02 | 2026-10-02 |  |  | 1436 |  | DH1100 |  | GR |
| DH1100-A-EQP-89 |  | Gallery 1102 - E110/Line-Ups // Pull Feeder from SWD to MOD | 1d | 2026-10-14 | 2026-10-14 | DH1100-A-EQP-86 |  |  |  |  | -3d | 1d | 1439 | HELIX | DH1100 | OO | GR |
| DH1100-A-EQP-91 |  | Gallery 1102 - E110/Line-Ups // Mechanical Connections to CRAHU Units | 10d | 2026-10-14 | 2026-10-27 | DH1100-A-EQP-83 SS+5d |  |  |  |  | -5d | 0d | 1448 |  | DH1100 |  | GR |
| DH1100-A-EQP-96 |  | Gallery 1102 - E110/Line-Ups // Terminate CRAHU Electrical Connections | 5d | 2026-10-14 | 2026-10-20 | DH1100-A-EQP-90 |  |  |  |  | 12d | 9d | 1442 | HELIX | DH1100 | OO | GR |
| DH1100-A-EQP-97 |  | Gallery 1102 - E110/Line-Ups // Pull Feeder and Branch circuits to MIsc equipment and Chiller controls | 10d | 2026-10-14 | 2026-10-27 | DH1100-A-EQP-92 SS+4d |  |  |  |  | 3d | 0d | 1444 | HELIX | DH1100 | AC | GR |
| DH1100-A-EQP-95 |  | Gallery 1102 - E110/Line-Ups // Terminate Mod Panels | 5d | 2026-10-16 | 2026-10-22 | DH1100-A-EQP-75 FF, DH1100-A-EQP-90, DH1100-A-EQP-89 |  |  |  |  | -4d | 0d | 1440 | HELIX | DH1100 | OO | GR |
| DH1100-A-EQP-99 |  | Gallery 1102 - E110/Line-Ups // Teminate all Misc Equipment and Chiller Controls | 10d | 2026-10-20 | 2026-11-02 | DH1100-A-EQP-97 SS+4d |  |  |  |  | 3d | 0d | 1445 |  | DH1100 |  | GR |
| DH1100-A-EQP-94 |  | Gallery 1102 - E110/Line-Ups // Condensate connections to Floor Drains | 10d | 2026-10-21 | 2026-11-03 | DH1100-A-EQP-91 SS+5d, DH1100-A-EQP-84 SS+5d |  |  |  |  | -5d | 7d | 1449 |  | DH1100 |  | GR |
| DH1100-A-EQP-100 |  | Gallery 1102 - E110/Line-Ups // Electrical Gear FOD Inspection Pre-Start Up | 1d | 2026-11-03 | 2026-11-03 | DH1100-A-EQP-80 FF, DH1100-A-EQP-96, DH1100-A-EQP-99 |  |  |  |  | 3d | 0d | 1446 | HELIX | DH1100 | QC | GR |
| DH1100-A-EQP-98 |  | Gallery 1102 - E110/Line-Ups // Mechanical Gear FOD Inspection Pre-Start Up | 3d | 2026-11-16 | 2026-11-18 | DH1100-A-EQP-78 FF, DH1100-A-EQP-83, DH1100-A-EQP-94, DH1100-A-EQP-84, DH1100-A-EQP-91 |  |  |  |  | -12d | 0d | 1447 |  | DH1100 |  | GR |
|  | 6 | **F110** |  | 2026-09-11 | 2026-11-23 |  |  |  |  |  |  |  |  |  |  |  |  |
| DH1100-A-EQP-105 |  | Gallery 1102 - F110/Line-Ups // Set MOD-F110-01 | 1d | 2026-09-11 A | 2026-09-11 A | DH1100-A-EQP-86 | 100% |  | 2026-09-01 | 2026-09-01 |  |  | 1437 | HELIX | DH1100 | TBD | GR |
| DH1100-A-EQP-106 |  | Gallery 1102 - F110/Line-Ups // Set MOD-F110-02 | 1d | 2026-09-11 A | 2026-09-11 A | DH1100-A-EQP-105 SS | 100% |  | 2026-09-01 | 2026-09-01 |  |  | 1437 | HELIX | DH1100 | TBD | GR |
| DH1100-A-EQP-101 |  | Gallery 1102 - F110/Line-Ups // Set CRAH-DH1100- 33 | 1d | 2026-09-22 A | 2026-09-22 A | DH1100-A-EQP-83 SS | 100% |  | 2026-09-04 | 2026-09-04 |  |  | 1433 |  | DH1100 |  | GR |
| DH1100-A-EQP-103 |  | Gallery 1102 - F110/Line-Ups // Set CRAH-DH1100- 34 | 1d | 2026-09-22 A | 2026-09-22 A | DH1100-A-EQP-101 SS | 100% |  | 2026-09-04 | 2026-09-04 |  |  | 1434 |  | DH1100 |  | GR |
| DH1100-A-EQP-110 |  | Gallery 1102 - F110/Line-Ups // Pull Cable Tray Feed from MOD to CRAHU's | 5d | 2026-09-24 A | 2026-09-29 A | DH1100-A-EQP-106 | 100% |  | 2026-09-02 | 2026-09-09 |  |  | 1438 | HELIX | DH1100 | OO | GR |
| DH1100-A-EQP-112 |  | Gallery 1102 - F110/Line-Ups // Mount Electrial Gear for Chiller Controls | 10d | 2026-09-24 A | 2026-10-27 | DH1100-A-EQP-106 |  | 10d | 2026-09-02 | 2026-09-16 | 3d | 0d | 1443 | HELIX | DH1100 | TBD | GR |
| DH1100-A-EQP-107 |  | Gallery 1102 - F110/Line-Ups // Set CDU-DH1100- 31 | 1d | 2026-09-30 A | 2026-10-01 A | DH1100-A-EQP-101 | 100% |  | 2026-09-30 | 2026-09-30 |  |  | 1434 |  | DH1100 |  | GR |
| DH1100-A-EQP-108 |  | Gallery 1102 - F110/Line-Ups // Set CDU-DH1100- 32 | 1d | 2026-10-01 A | 2026-10-02 A | DH1100-A-EQP-107, DH1100-A-EQP-103 | 100% |  | 2026-10-01 | 2026-10-01 |  |  | 1434 |  | DH1100 |  | GR |
| DH1100-A-EQP-104 |  | Gallery 1102 - F110/Line-Ups // Condensate connections to Floor Drains | 1d | 2026-10-14 | 2026-10-14 | DH1100-A-EQP-103, DH1100-A-EQP-107, DH1100-A-EQP-108 |  |  |  |  | -2d | 0d | 1436 |  | DH1100 |  | GR |
| DH1100-A-EQP-109 |  | Gallery 1102 - F110/Line-Ups // Pull Feeder from SWD to MOD | 1d | 2026-10-14 | 2026-10-14 | DH1100-A-EQP-106 |  |  |  |  | 1d | 5d | 1439 | HELIX | DH1100 | OO | GR |
| DH1100-A-EQP-111 |  | Gallery 1102 - F110/Line-Ups // Mechanical Connections to CRAHU Units | 10d | 2026-10-14 | 2026-10-27 | DH1100-A-EQP-103 SS+5d |  |  |  |  | -2d | 0d | 1448 |  | DH1100 |  | GR |
| DH1100-A-EQP-113 |  | Gallery 1102 - F110/Line-Ups // Pull Cable Tray Feed from MOD to CRAHU's | 5d | 2026-10-14 | 2026-10-20 | DH1100-A-EQP-110 |  |  |  |  | -3d | 0d | 1441 | HELIX | DH1100 | OO | GR |
| DH1100-A-EQP-117 |  | Gallery 1102 - F110/Line-Ups // Pull Feeder and Branch circuits to MIsc equipment and Chiller controls | 10d | 2026-10-14 | 2026-10-27 | DH1100-A-EQP-112 SS+4d |  |  |  |  | 3d | 0d | 1444 | HELIX | DH1100 | AC | GR |
| DH1100-A-EQP-116 |  | Gallery 1102 - F110/Line-Ups // Terminate CRAHU Electrical Connections | 5d | 2026-10-16 | 2026-10-22 | DH1100-A-EQP-113 SS+2d, DH1100-A-EQP-110 |  |  |  |  | 10d | 7d | 1442 | HELIX | DH1100 | OO | GR |
| DH1100-A-EQP-119 |  | Gallery 1102 - F110/Line-Ups // Teminate all Misc Equipment and Chiller Controls | 10d | 2026-10-20 | 2026-11-02 | DH1100-A-EQP-117 SS+4d |  |  |  |  | 3d | 0d | 1445 |  | DH1100 |  | GR |
| DH1100-A-EQP-114 |  | Gallery 1102 - F110/Line-Ups // Condensate connections to Floor Drains | 10d | 2026-10-21 | 2026-11-03 | DH1100-A-EQP-111 SS+5d, DH1100-A-EQP-104 SS+5d |  |  |  |  | -2d | 10d | 1449 |  | DH1100 |  | GR |
| DH1100-A-EQP-115 |  | Gallery 1102 - F110/Line-Ups // Terminate Mod Panels | 1d | 2026-10-22 | 2026-10-22 | DH1100-A-EQP-95 FF, DH1100-A-EQP-113, DH1100-A-EQP-110, DH1100-A-EQP-109 |  |  |  |  | -4d | 4d | 1440 | HELIX | DH1100 | OO | GR |
| DH1100-A-EQP-120 |  | Gallery 1102 - F110/Line-Ups // Electrical Gear FOD Inspection Pre-Start Up | 1d | 2026-11-03 | 2026-11-03 | DH1100-A-EQP-100 FF, DH1100-A-EQP-116, DH1100-A-EQP-119 |  |  |  |  | 3d | 0d | 1446 | HELIX | DH1100 | QC | GR |
| DH1100-A-EQP-118 |  | Gallery 1102 - F110/Line-Ups // Mechanical Gear FOD Inspection Pre-Start Up | 3d | 2026-11-19 | 2026-11-23 | DH1100-A-EQP-98, DH1100-A-EQP-103 FF, DH1100-A-EQP-114, DH1100-A-EQP-104, DH1100-A-EQP-111 |  |  |  |  | -12d | 0d | 1447 |  | DH1100 |  | GR |

| ID | WBS | Activity | Duration | Start | Finish | Predecessors | Complete | Remaining | Planned start | Planned finish | Total float | Free float | MSP Activity ID | QTS - Subcontractor | QTS - AREA | QTS - Resp | QTS - DASH |
| --- | --- | --- | --- | --- | --- | --- | --- | --- | --- | --- | --- | --- | --- | --- | --- | --- | --- |
|  | 7 | **G110** |  | 2026-09-11 | 2026-11-23 |  |  |  |  |  |  |  |  |  |  |  |  |
| DH1100-A-EQP-125 |  | Gallery 1102 - G110/Line-Ups // Set MOD-G110-01 | 1d | 2026-09-11 A | 2026-09-11 A | DH1100-A-EQP-106 | 100% |  | 2026-09-02 | 2026-09-02 |  |  | 1437 | HELIX | DH1100 | TBD | GR |
| DH1100-A-EQP-126 |  | Gallery 1102 - G110/Line-Ups // Set MOD-G110-02 | 1d | 2026-09-11 A | 2026-09-11 A | DH1100-A-EQP-125 SS | 100% |  | 2026-09-02 | 2026-09-02 |  |  | 1437 | HELIX | DH1100 | TBD | GR |
| DH1100-A-EQP-121 |  | Gallery 1102 - G110/Line-Ups // Set CRAH-DH1100- 35 | 1d | 2026-09-23 A | 2026-09-23 A | DH1100-A-EQP-103 | 100% |  | 2026-09-08 | 2026-09-08 |  |  | 1433 |  | DH1100 |  | GR |
| DH1100-A-EQP-123 |  | Gallery 1102 - G110/Line-Ups // Set CRAH-DH1100- 36 | 1d | 2026-09-23 A | 2026-09-23 A | DH1100-A-EQP-121 SS | 100% |  | 2026-09-08 | 2026-09-08 |  |  | 1434 |  | DH1100 |  | GR |
| DH1100-A-EQP-129 |  | Gallery 1102 - G110/Line-Ups // Pull Feeder from SWD to MOD | 1d | 2026-09-24 A | 2026-10-14 | DH1100-A-EQP-126 |  | 1d | 2026-09-03 | 2026-09-03 | 1d | 9d | 1439 | HELIX | DH1100 | OO | GR |
| DH1100-A-EQP-130 |  | Gallery 1102 - G110/Line-Ups // Pull Cable Tray Feed from MOD to CRAHU's | 5d | 2026-09-24 A | 2026-10-20 | DH1100-A-EQP-126 |  | 5d | 2026-09-03 | 2026-09-10 | -8d | 0d | 1438 | HELIX | DH1100 | OO | GR |
| DH1100-A-EQP-132 |  | Gallery 1102 - G110/Line-Ups // Mount Electrial Gear for Chiller Controls | 10d | 2026-09-24 A | 2026-10-27 | DH1100-A-EQP-126 |  | 10d | 2026-09-03 | 2026-09-17 | 13d | 0d | 1443 | HELIX | DH1100 | TBD | GR |
| DH1100-A-EQP-127 |  | Gallery 1102 - G110/Line-Ups // Set CDU-DH1100- 33 | 1d | 2026-09-30 A | 2026-10-01 A | DH1100-A-EQP-121 | 100% |  | 2026-09-30 | 2026-09-30 |  |  | 1434 |  | DH1100 |  | GR |
| DH1100-A-EQP-128 |  | Gallery 1102 - G110/Line-Ups // Set CDU-DH1100- 34 | 1d | 2026-10-01 A | 2026-10-02 A | DH1100-A-EQP-127, DH1100-A-EQP-123 | 100% |  | 2026-10-01 | 2026-10-01 |  |  | 1434 |  | DH1100 |  | GR |
| DH1100-A-EQP-124 |  | Gallery 1102 - G110/Line-Ups // Condensate connections to Floor Drains | 1d | 2026-10-14 | 2026-10-14 | DH1100-A-EQP-123, DH1100-A-EQP-127, DH1100-A-EQP-128 |  |  |  |  | -2d | 0d | 1436 |  | DH1100 |  | GR |
| DH1100-A-EQP-131 |  | Gallery 1102 - G110/Line-Ups // Mechanical Connections to CRAHU Units | 10d | 2026-10-14 | 2026-10-27 | DH1100-A-EQP-123 SS+5d |  |  |  |  | -2d | 0d | 1448 |  | DH1100 |  | GR |
| DH1100-A-EQP-137 |  | Gallery 1102 - G110/Line-Ups // Pull Feeder and Branch circuits to MIsc equipment and Chiller controls | 10d | 2026-10-14 | 2026-10-27 | DH1100-A-EQP-132 SS+4d |  |  |  |  | 13d | 0d | 1444 | HELIX | DH1100 | AC | GR |
| DH1100-A-EQP-139 |  | Gallery 1102 - G110/Line-Ups // Teminate all Misc Equipment and Chiller Controls | 10d | 2026-10-20 | 2026-11-02 | DH1100-A-EQP-137 SS+4d |  |  |  |  | 13d | 10d | 1445 |  | DH1100 |  | GR |
| DH1100-A-EQP-133 |  | Gallery 1102 - G110/Line-Ups // Pull Cable Tray Feed from MOD to CRAHU's | 5d | 2026-10-21 | 2026-10-27 | DH1100-A-EQP-130 |  |  |  |  | -8d | 0d | 1441 | HELIX | DH1100 | OO | GR |
| DH1100-A-EQP-134 |  | Gallery 1102 - G110/Line-Ups // Condensate connections to Floor Drains | 10d | 2026-10-21 | 2026-11-03 | DH1100-A-EQP-131 SS+5d, DH1100-A-EQP-124 SS+5d |  |  |  |  | -2d | 10d | 1449 |  | DH1100 |  | GR |
| DH1100-A-EQP-136 |  | Gallery 1102 - G110/Line-Ups // Terminate CRAHU Electrical Connections | 5d | 2026-10-23 | 2026-10-29 | DH1100-A-EQP-133 SS+2d, DH1100-A-EQP-130 |  |  |  |  | 5d | 2d | 1442 | HELIX | DH1100 | OO | GR |
| DH1100-A-EQP-135 |  | Gallery 1102 - G110/Line-Ups // Terminate Mod Panels | 1d | 2026-10-28 | 2026-10-28 | DH1100-A-EQP-115 FF, DH1100-A-EQP-133, DH1100-A-EQP-130, DH1100-A-EQP-129 |  |  |  |  | -8d | 0d | 1440 | HELIX | DH1100 | OO | GR |
| DH1100-A-EQP-140 |  | Gallery 1102 - G110/Line-Ups // Electrical Gear FOD Inspection Pre-Start Up | 1d | 2026-11-03 | 2026-11-03 | DH1100-A-EQP-120 FF, DH1100-A-EQP-136, DH1100-A-EQP-139 SS |  |  |  |  | 3d | 0d | 1446 | HELIX | DH1100 | QC | GR |
| DH1100-A-EQP-138 |  | Gallery 1102 - G110/Line-Ups // Mechanical Gear FOD Inspection Pre-Start Up | 3d | 2026-11-19 | 2026-11-23 | DH1100-A-EQP-118 FF, DH1100-A-EQP-123, DH1100-A-EQP-134, DH1100-A-EQP-124, DH1100-A-EQP-131 |  |  |  |  | -12d | 0d | 1447 |  | DH1100 |  | GR |
|  | 8 | **H110** |  | 2026-09-11 | 2026-11-23 |  |  |  |  |  |  |  |  |  |  |  |  |
| DH1100-A-EQP-145 |  | Gallery 1102 - H110/Line-Ups // Set MOD-H110-01 | 1d | 2026-09-11 A | 2026-09-11 A | DH1100-A-EQP-126 FF | 100% |  | 2026-09-03 | 2026-09-03 |  |  | 1437 | HELIX | DH1100 | TBD | GR |
| DH1100-A-EQP-146 |  | Gallery 1102 - H110/Line-Ups // Set MOD-H110-02 | 1d | 2026-09-11 A | 2026-09-11 A | DH1100-A-EQP-145 SS | 100% |  | 2026-09-03 | 2026-09-03 |  |  | 1437 | HELIX | DH1100 | TBD | GR |
| DH1100-A-EQP-141 |  | Gallery 1102 - H110/Line-Ups // Set CRAH-DH1100- 37 | 1d | 2026-09-23 A | 2026-09-23 A | DH1100-A-EQP-123 SS | 100% |  | 2026-09-08 | 2026-09-08 |  |  | 1433 |  | DH1100 |  | GR |
| DH1100-A-EQP-143 |  | Gallery 1102 - H110/Line-Ups // Set CRAH-DH1100- 38 | 1d | 2026-09-23 A | 2026-09-23 A | DH1100-A-EQP-141 SS | 100% |  | 2026-09-08 | 2026-09-08 |  |  | 1434 |  | DH1100 |  | GR |
| DH1100-A-EQP-149 |  | Gallery 1102 - H110/Line-Ups // Pull Feeder from SWD to MOD | 1d | 2026-09-24 A | 2026-10-14 | DH1100-A-EQP-146 |  | 1d | 2026-09-04 | 2026-09-04 | 1d | 9d | 1439 | HELIX | DH1100 | OO | GR |
| DH1100-A-EQP-150 |  | Gallery 1102 - H110/Line-Ups // Pull Cable Tray Feed from MOD to CRAHU's | 5d | 2026-09-24 A | 2026-10-20 | DH1100-A-EQP-146 |  | 5d | 2026-09-04 | 2026-09-11 | -8d | 0d | 1438 | HELIX | DH1100 | OO | GR |
| DH1100-A-EQP-152 |  | Gallery 1102 - H110/Line-Ups // Mount Electrial Gear for Chiller Controls | 10d | 2026-09-24 A | 2026-10-27 | DH1100-A-EQP-146 |  | 10d | 2026-09-04 | 2026-09-18 | 3d | 0d | 1443 | HELIX | DH1100 | TBD | GR |
| DH1100-A-EQP-147 |  | Gallery 1102 - H110/Line-Ups // Set CDU-DH1100- 35 | 1d | 2026-09-30 A | 2026-10-01 A | DH1100-A-EQP-141 | 100% |  | 2026-09-30 | 2026-09-30 |  |  | 1434 |  | DH1100 |  | GR |
| DH1100-A-EQP-148 |  | Gallery 1102 - H110/Line-Ups // Set CDU-DH1100- 36 | 1d | 2026-10-01 A | 2026-10-02 A | DH1100-A-EQP-147, DH1100-A-EQP-143 | 100% |  | 2026-10-01 | 2026-10-01 |  |  | 1434 |  | DH1100 |  | GR |
| DH1100-A-EQP-144 |  | Gallery 1102 - H110/Line-Ups // Condensate connections to Floor Drains | 1d | 2026-10-08 A | 2026-10-08 A | DH1100-A-EQP-143, DH1100-A-EQP-147, DH1100-A-EQP-148 | 100% |  | 2026-10-02 | 2026-10-02 |  |  | 1436 |  | DH1100 |  | GR |
| DH1100-A-EQP-151 |  | Gallery 1102 - H110/Line-Ups // Mechanical Connections to CRAHU Units | 10d | 2026-10-14 | 2026-10-27 | DH1100-A-EQP-143 SS+5d |  |  |  |  | -2d | 0d | 1448 |  | DH1100 |  | GR |
| DH1100-A-EQP-157 |  | Gallery 1102 - H110/Line-Ups // Pull Feeder and Branch circuits to MIsc equipment and Chiller controls | 10d | 2026-10-14 | 2026-10-27 | DH1100-A-EQP-152 SS+4d |  |  |  |  | 3d | 0d | 1444 | HELIX | DH1100 | AC | GR |
| DH1100-A-EQP-159 |  | Gallery 1102 - H110/Line-Ups // Teminate all Misc Equipment and Chiller Controls | 10d | 2026-10-20 | 2026-11-02 | DH1100-A-EQP-157 SS+4d |  |  |  |  | 3d | 0d | 1445 |  | DH1100 |  | GR |
| DH1100-A-EQP-153 |  | Gallery 1102 - H110/Line-Ups // Pull Cable Tray Feed from MOD to CRAHU's | 5d | 2026-10-21 | 2026-10-27 | DH1100-A-EQP-150 |  |  |  |  | -8d | 0d | 1441 | HELIX | DH1100 | OO | GR |
| DH1100-A-EQP-154 |  | Gallery 1102 - H110/Line-Ups // Condensate connections to Floor Drains | 10d | 2026-10-21 | 2026-11-03 | DH1100-A-EQP-151 SS+5d, DH1100-A-EQP-144 SS+5d |  |  |  |  | -2d | 10d | 1449 |  | DH1100 |  | GR |
| DH1100-A-EQP-156 |  | Gallery 1102 - H110/Line-Ups // Terminate CRAHU Electrical Connections | 5d | 2026-10-23 | 2026-10-29 | DH1100-A-EQP-153 SS+2d, DH1100-A-EQP-150 |  |  |  |  | 5d | 2d | 1442 | HELIX | DH1100 | OO | GR |
| DH1100-A-EQP-155 |  | Gallery 1102 - H110/Line-Ups // Terminate Mod Panels | 1d | 2026-10-28 | 2026-10-28 | DH1100-A-EQP-135 FF, DH1100-A-EQP-153, DH1100-A-EQP-150, DH1100-A-EQP-149 |  |  |  |  | -8d | 0d | 1440 | HELIX | DH1100 | OO | GR |
| DH1100-A-EQP-160 |  | Gallery 1102 - H110/Line-Ups // Electrical Gear FOD Inspection Pre-Start Up | 1d | 2026-11-03 | 2026-11-03 | DH1100-A-EQP-140 SS, DH1100-A-EQP-156, DH1100-A-EQP-159 |  |  |  |  | 3d | 4d | 1446 | HELIX | DH1100 | QC | GR |
| DH1100-A-EQP-158 |  | Gallery 1102 - H110/Line-Ups // Mechanical Gear FOD Inspection Pre-Start Up | 3d | 2026-11-19 | 2026-11-23 | DH1100-A-EQP-138 FF, DH1100-A-EQP-143, DH1100-A-EQP-154, DH1100-A-EQP-144, DH1100-A-EQP-151 |  |  |  |  | -12d | 0d | 1447 |  | DH1100 |  | GR |

| ID | WBS | Activity | Duration | Start | Finish | Predecessors | Complete | Remaining | Planned start | Planned finish | Total float | Free float | MSP Activity ID | QTS - Subcontractor | QTS - AREA | QTS - Resp | QTS - DASH |
| --- | --- | --- | --- | --- | --- | --- | --- | --- | --- | --- | --- | --- | --- | --- | --- | --- | --- |
|  | 9 | **J110** |  | 2026-09-11 | 2026-11-23 |  |  |  |  |  |  |  |  |  |  |  |  |
| DH1100-A-EQP-165 |  | Gallery 1102 - J110/Line-Ups // Set MOD-J110-01 | 1d | 2026-09-11 A | 2026-09-11 A | DH1100-A-EQP-146 FF | 100% |  | 2026-09-04 | 2026-09-04 |  |  | 1437 | HELIX | DH1100 | TBD | GR |
| DH1100-A-EQP-166 |  | Gallery 1102 - J110/Line-Ups // Set MOD-J110-02 | 1d | 2026-09-11 A | 2026-09-11 A | DH1100-A-EQP-165 SS | 100% |  | 2026-09-04 | 2026-09-04 |  |  | 1437 | HELIX | DH1100 | TBD | GR |
| DH1100-A-EQP-161 |  | Gallery 1102 - J110/Line-Ups // Set CRAH-DH1100- 39 | 1d | 2026-09-23 A | 2026-09-23 A | DH1100-A-EQP-143 SS | 100% |  | 2026-09-08 | 2026-09-08 |  |  | 1433 |  | DH1100 |  | GR |
| DH1100-A-EQP-163 |  | Gallery 1102 - J110/Line-Ups // Set CRAH-DH1100- 40 | 1d | 2026-09-23 A | 2026-09-23 A | DH1100-A-EQP-161 SS | 100% |  | 2026-09-08 | 2026-09-08 |  |  | 1434 |  | DH1100 |  | GR |
| DH1100-A-EQP-170 |  | Gallery 1102 - J110/Line-Ups // Pull Cable Tray Feed from MOD to CRAHU's | 5d | 2026-09-24 A | 2026-10-20 | DH1100-A-EQP-166 |  | 5d | 2026-09-08 | 2026-09-14 | -8d | 0d | 1438 | HELIX | DH1100 | OO | GR |
| DH1100-A-EQP-168 |  | Gallery 1102 - J110/Line-Ups // Set CDU-DH1100- 38 | 1d | 2026-10-01 A | 2026-10-02 A | DH1100-A-EQP-163 | 100% |  | 2026-10-01 | 2026-10-01 |  |  | 1434 |  | DH1100 |  | GR |
| DH1100-A-EQP-167 |  | Gallery 1102 - J110/Line-Ups // Set CDU-DH1100- 37 | 1d | 2026-10-14 | 2026-10-14 | DH1100-A-EQP-161, DH1100-A-EQP-168 |  |  |  |  | -3d | 0d | 1434 |  | DH1100 |  | GR |
| DH1100-A-EQP-169 |  | Gallery 1102 - J110/Line-Ups // Pull Feeder from SWD to MOD | 1d | 2026-10-14 | 2026-10-14 | DH1100-A-EQP-166 |  |  |  |  | 1d | 9d | 1439 | HELIX | DH1100 | OO | GR |
| DH1100-A-EQP-171 |  | Gallery 1102 - J110/Line-Ups // Mechanical Connections to CRAHU Units | 10d | 2026-10-14 | 2026-10-27 | DH1100-A-EQP-163 SS+5d |  |  |  |  | -2d | 1d | 1448 |  | DH1100 |  | GR |
| DH1100-A-EQP-172 |  | Gallery 1102 - J110/Line-Ups // Mount Electrial Gear for Chiller Controls | 10d | 2026-10-14 | 2026-10-27 | DH1100-A-EQP-166 |  |  |  |  | -1d | 0d | 1443 | HELIX | DH1100 | TBD | GR |
| DH1100-A-EQP-164 |  | Gallery 1102 - J110/Line-Ups // Condensate connections to Floor Drains | 10d | 2026-10-15 | 2026-10-28 | DH1100-A-EQP-163, DH1100-A-EQP-167, DH1100-A-EQP-168 |  |  |  |  | -3d | 0d | 1436 |  | DH1100 |  | GR |
| DH1100-A-EQP-177 |  | Gallery 1102 - J110/Line-Ups // Pull Feeder and Branch circuits to MIsc equipment and Chiller controls | 10d | 2026-10-20 | 2026-11-02 | DH1100-A-EQP-172 SS+4d |  |  |  |  | -1d | 0d | 1444 | HELIX | DH1100 | AC | GR |
| DH1100-A-EQP-173 |  | Gallery 1102 - J110/Line-Ups // Pull Cable Tray Feed from MOD to CRAHU's | 5d | 2026-10-21 | 2026-10-27 | DH1100-A-EQP-170 |  |  |  |  | -8d | 0d | 1441 | HELIX | DH1100 | OO | GR |
| DH1100-A-EQP-174 |  | Gallery 1102 - J110/Line-Ups // Condensate connections to Floor Drains | 10d | 2026-10-22 | 2026-11-04 | DH1100-A-EQP-171 SS+5d, DH1100-A-EQP-164 SS+5d |  |  |  |  | -3d | 9d | 1449 |  | DH1100 |  | GR |
| DH1100-A-EQP-176 |  | Gallery 1102 - J110/Line-Ups // Terminate CRAHU Electrical Connections | 5d | 2026-10-23 | 2026-10-29 | DH1100-A-EQP-173 SS+2d, DH1100-A-EQP-170 |  |  |  |  | 5d | 6d | 1442 | HELIX | DH1100 | OO | GR |
| DH1100-A-EQP-179 |  | Gallery 1102 - J110/Line-Ups // Teminate all Misc Equipment and Chiller Controls | 10d | 2026-10-26 | 2026-11-06 | DH1100-A-EQP-177 SS+4d |  |  |  |  | -1d | 0d | 1445 |  | DH1100 |  | GR |
| DH1100-A-EQP-175 |  | Gallery 1102 - J110/Line-Ups // Terminate Mod Panels | 1d | 2026-10-28 | 2026-10-28 | DH1100-A-EQP-155 FF, DH1100-A-EQP-173, DH1100-A-EQP-170, DH1100-A-EQP-169 |  |  |  |  | -8d | 0d | 1440 | HELIX | DH1100 | OO | GR |
| DH1100-A-EQP-180 |  | Gallery 1102 - J110/Line-Ups // Electrical Gear FOD Inspection Pre-Start Up | 1d | 2026-11-09 | 2026-11-09 | DH1100-A-EQP-160 FF, DH1100-A-EQP-176, DH1100-A-EQP-179 |  |  |  |  | -1d | 0d | 1446 | HELIX | DH1100 | QC | GR |
| DH1100-A-EQP-178 |  | Gallery 1102 - J110/Line-Ups // Mechanical Gear FOD Inspection Pre-Start Up | 3d | 2026-11-19 | 2026-11-23 | DH1100-A-EQP-158 FF, DH1100-A-EQP-163, DH1100-A-EQP-174, DH1100-A-EQP-164, DH1100-A-EQP-171 |  |  |  |  | -12d | 0d | 1447 |  | DH1100 |  | GR |
|  | 10 | **K110** |  | 2026-09-11 | 2026-11-23 |  |  |  |  |  |  |  |  |  |  |  |  |
| DH1100-A-EQP-185 |  | Gallery 1102 - K110/Line-Ups // Set MOD-K110-01 | 1d | 2026-09-11 A | 2026-09-11 A | DH1100-A-EQP-166 FF | 100% |  | 2026-09-08 | 2026-09-08 |  |  | 1437 | HELIX | DH1100 | TBD | GR |
| DH1100-A-EQP-186 |  | Gallery 1102 - K110/Line-Ups // Set MOD-K110-02 | 1d | 2026-09-11 A | 2026-09-11 A | DH1100-A-EQP-185 SS | 100% |  | 2026-09-08 | 2026-09-08 |  |  | 1437 | HELIX | DH1100 | TBD | GR |
| DH1100-A-EQP-181 |  | Gallery 1102 - K110/Line-Ups // Set CRAH-DH1100- 41 | 1d | 2026-09-24 A | 2026-09-24 A | DH1100-A-EQP-163 SS | 100% |  | 2026-09-09 | 2026-09-09 |  |  | 1433 |  | DH1100 |  | GR |
| DH1100-A-EQP-183 |  | Gallery 1102 - K110/Line-Ups // Set CRAH-DH1100- 42 | 1d | 2026-09-24 A | 2026-09-24 A | DH1100-A-EQP-181 SS | 100% |  | 2026-09-09 | 2026-09-09 |  |  | 1434 |  | DH1100 |  | GR |
| DH1100-A-EQP-190 |  | Gallery 1102 - K110/Line-Ups // Pull Cable Tray Feed from MOD to CRAHU's | 5d | 2026-09-24 A | 2026-09-30 A | DH1100-A-EQP-186 | 100% |  | 2026-09-09 | 2026-09-15 |  |  | 1438 | HELIX | DH1100 | OO | GR |
| DH1100-A-EQP-197 |  | Gallery 1102 - K110/Line-Ups // Pull Feeder and Branch circuits to MIsc equipment and Chiller controls | 10d | 2026-09-29 A | 2026-10-27 | DH1100-A-EQP-186 |  | 10d | 2026-09-15 | 2026-09-28 | 7d | 5d | 1444 | HELIX | DH1100 | AC | GR |
| DH1100-A-EQP-187 |  | Gallery 1102 - K110/Line-Ups // Set CDU-DH1100- 39 | 1d | 2026-09-30 A | 2026-10-01 A | DH1100-A-EQP-181 | 100% |  | 2026-09-30 | 2026-09-30 |  |  | 1434 |  | DH1100 |  | GR |
| DH1100-A-EQP-188 |  | Gallery 1102 - K110/Line-Ups // Set CDU-DH1100- 40 | 1d | 2026-10-01 A | 2026-10-02 A | DH1100-A-EQP-187, DH1100-A-EQP-183 | 100% |  | 2026-10-01 | 2026-10-01 |  |  | 1434 |  | DH1100 |  | GR |
| DH1100-A-EQP-184 |  | Gallery 1102 - K110/Line-Ups // Condensate connections to Floor Drains | 10d | 2026-10-14 | 2026-10-27 | DH1100-A-EQP-183, DH1100-A-EQP-187, DH1100-A-EQP-188 |  |  |  |  | -2d | 0d | 1436 |  | DH1100 |  | GR |
| DH1100-A-EQP-189 |  | Gallery 1102 - K110/Line-Ups // Pull Feeder from SWD to MOD | 1d | 2026-10-14 | 2026-10-14 | DH1100-A-EQP-186 |  |  |  |  | 1d | 9d | 1439 | HELIX | DH1100 | OO | GR |
| DH1100-A-EQP-191 |  | Gallery 1102 - K110/Line-Ups // Mechanical Connections to CRAHU Units | 10d | 2026-10-14 | 2026-10-27 | DH1100-A-EQP-183 SS+5d |  |  |  |  | -2d | 0d | 1448 |  | DH1100 |  | GR |
| DH1100-A-EQP-192 |  | Gallery 1102 - K110/Line-Ups // Mount Electrial Gear for Chiller Controls | 8d | 2026-10-14 | 2026-10-23 | DH1100-A-EQP-186 |  |  |  |  | 2d | 0d | 1443 | HELIX | DH1100 | TBD | GR |
| DH1100-A-EQP-193 |  | Gallery 1102 - K110/Line-Ups // Pull Cable Tray Feed from MOD to CRAHU's | 5d | 2026-10-14 | 2026-10-20 | DH1100-A-EQP-190 |  |  |  |  | -3d | 0d | 1441 | HELIX | DH1100 | OO | GR |
| DH1100-A-EQP-196 |  | Gallery 1102 - K110/Line-Ups // Terminate CRAHU Electrical Connections | 5d | 2026-10-16 | 2026-10-22 | DH1100-A-EQP-193 SS+2d, DH1100-A-EQP-190 |  |  |  |  | 10d | 11d | 1442 | HELIX | DH1100 | OO | GR |
| DH1100-A-EQP-194 |  | Gallery 1102 - K110/Line-Ups // Condensate connections to Floor Drains | 10d | 2026-10-21 | 2026-11-03 | DH1100-A-EQP-191 SS+5d, DH1100-A-EQP-184 SS+5d |  |  |  |  | -2d | 10d | 1449 |  | DH1100 |  | GR |
| DH1100-A-EQP-199 |  | Gallery 1102 - K110/Line-Ups // Teminate all Misc Equipment and Chiller Controls | 10d | 2026-10-21 | 2026-11-03 | DH1100-A-EQP-192 SS+5d, DH1100-A-EQP-197 SS+4d |  |  |  |  | 2d | 3d | 1445 |  | DH1100 |  | GR |
| DH1100-A-EQP-195 |  | Gallery 1102 - K110/Line-Ups // Terminate Mod Panels | 1d | 2026-10-28 | 2026-10-28 | DH1100-A-EQP-175 FF, DH1100-A-EQP-193, DH1100-A-EQP-190, DH1100-A-EQP-189 |  |  |  |  | -8d | 0d | 1440 | HELIX | DH1100 | OO | GR |
| DH1100-A-EQP-200 |  | Gallery 1102 - K110/Line-Ups // Electrical Gear FOD Inspection Pre-Start Up | 1d | 2026-11-09 | 2026-11-09 | DH1100-A-EQP-180 FF, DH1100-A-EQP-196, DH1100-A-EQP-199 |  |  |  |  | -1d | 0d | 1446 | HELIX | DH1100 | QC | GR |
| DH1100-A-EQP-198 |  | Gallery 1102 - K110/Line-Ups // Mechanical Gear FOD Inspection Pre-Start Up | 3d | 2026-11-19 | 2026-11-23 | DH1100-A-EQP-178 FF, DH1100-A-EQP-183, DH1100-A-EQP-194, DH1100-A-EQP-184, DH1100-A-EQP-191 |  |  |  |  | -12d | 0d | 1447 |  | DH1100 |  | GR |

| ID | WBS | Activity | Duration | Start | Finish | Predecessors | Complete | Planned start | Planned finish | Total float | Free float | MSP Activity ID | QTS - Subcontractor | QTS - AREA | QTS - Resp | QTS - DASH | MBTA: Work Type |
| --- | --- | --- | --- | --- | --- | --- | --- | --- | --- | --- | --- | --- | --- | --- | --- | --- | --- |
|  | 11 | **R110** |  | 2026-09-11 | 2026-11-23 |  |  |  |  |  |  |  |  |  |  |  |  |
| DH1100-A-EQP-205 |  | Gallery 1102 - R110/Line-Ups // Set MOD-R110-01 | 1d | 2026-09-11 A | 2026-09-11 A | DH1100-A-EQP-186, G1102.4790 | 100% | 2026-09-09 | 2026-09-09 |  |  | 1437 | HELIX | DH1100 | TBD | GR |  |
| DH1100-A-EQP-206 |  | Gallery 1102 - R110/Line-Ups // Set MOD-R110-02 | 1d | 2026-09-11 A | 2026-09-11 A | G1102.4790, DH1100-A-EQP-205 SS | 100% | 2026-09-09 | 2026-09-09 |  |  | 1437 | HELIX | DH1100 | TBD | GR |  |
| DH1100-A-EQP-210 |  | Gallery 1102 - R110/Line-Ups // Pull Cable Tray Feed from MOD to CRAHU's | 5d | 2026-09-16 A | 2026-09-22 A | DH1100-A-EQP-206 | 100% | 2026-09-10 | 2026-09-16 |  |  | 1438 | HELIX | DH1100 | OO | GR |  |
| DH1100-A-EQP-201 |  | Gallery 1102 - R110/Line-Ups // Set CRAH-DH1100- 43 | 1d | 2026-09-24 A | 2026-09-24 A | DH1100-A-EQP-183 SS | 100% | 2026-09-09 | 2026-09-09 |  |  | 1433 |  | DH1100 |  | GR |  |
| DH1100-A-EQP-203 |  | Gallery 1102 - R110/Line-Ups // Set CRAH-DH1100- 44 | 1d | 2026-09-24 A | 2026-09-24 A | DH1100-A-EQP-201 SS | 100% | 2026-09-09 | 2026-09-09 |  |  | 1434 |  | DH1100 |  | GR |  |
| DH1100-A-EQP-207 |  | Gallery 1102 - R110/Line-Ups // Set CDU-DH1100- 41 | 1d | 2026-09-30 A | 2026-10-07 A | DH1100-A-EQP-201 SS | 100% | 2026-09-30 | 2026-09-30 |  |  | 1434 |  | DH1100 |  | GR |  |
| DH1100-A-EQP-208 |  | Gallery 1102 - R110/Line-Ups // Set CDU-DH1100- 42 | 1d | 2026-09-30 A | 2026-10-07 A | DH1100-A-EQP-207 SS, DH1100-A-EQP-203 SS | 100% | 2026-09-30 | 2026-09-30 |  |  | 1434 |  | DH1100 |  | GR |  |
| DH1100-A-EQP-204 |  | Gallery 1102 - R110/Line-Ups // Condensate connections to Floor Drains | 1d | 2026-10-08 A | 2026-10-08 A | DH1100-A-EQP-203, DH1100-A-EQP-207, DH1100-A-EQP-208 | 100% | 2026-10-01 | 2026-10-01 |  |  | 1436 |  | DH1100 |  | GR |  |
| DH1100-A-EQP-214 |  | Gallery 1102 - R110/Line-Ups // Condensate connections to Floor Drains | 1d | 2026-10-08 A | 2026-10-08 A | DH1100-A-EQP-204 SS | 100% | 2026-10-01 | 2026-10-01 |  |  | 1449 |  | DH1100 |  | GR |  |
| DH1100-A-EQP-211 |  | Gallery 1102 - R110/Line-Ups // Mechanical Connections to CRAHU Units | 10d | 2026-10-14 | 2026-10-27 | DH1100-A-EQP-203 SS+1d |  |  |  | 3d | 15d | 1448 |  | DH1100 |  | GR |  |
| DH1100-A-EQP-212 |  | Gallery 1102 - R110/Line-Ups // Mount Electrial Gear for Chiller Controls | 5d | 2026-10-14 | 2026-10-20 | DH1100-A-EQP-210 SS+2d, DH1100-A-EQP-206 |  |  |  | 4d | 0d | 1443 | HELIX | DH1100 | TBD | GR |  |
| DH1100-A-EQP-213 |  | Gallery 1102 - R110/Line-Ups // Pull Cable Tray Feed from MOD to CRAHU's | 5d | 2026-10-14 | 2026-10-20 | DH1100-A-EQP-210 |  |  |  | -12d | 0d | 1441 | HELIX | DH1100 | OO | GR |  |
| DH1100-A-EQP-221 |  | Gallery 1102 - R110/Line-Ups // Set SWD-R110 | 1d | 2026-10-14 | 2026-10-14 | DH1100-A-EQP-208 |  |  |  | -1d | 0d | 1437 | HELIX | DH1100 | TBD | GR |  |
| DH1100-A-EQP-222 |  | Gallery 1102 - R110/Line-Ups // Set SWD-TIE-R110 | 1d | 2026-10-15 | 2026-10-15 | DH1100-A-EQP-221 |  |  |  | -1d | 0d | 1437 | HELIX | DH1100 | TBD | GR |  |
| DH1100-A-EQP-209 |  | Gallery 1102 - R110/Line-Ups // Pull Feeder from SWD to MOD | 1d | 2026-10-16 | 2026-10-16 | DH1100-A-EQP-222, DH1100-A-EQP-206 |  |  |  | -1d | 7d | 1439 | HELIX | DH1100 | OO | GR |  |
| DH1100-A-EQP-216 |  | Gallery 1102 - R110/Line-Ups // Terminate CRAHU Electrical Connections | 5d | 2026-10-16 | 2026-10-22 | DH1100-A-EQP-213 SS+2d, DH1100-A-EQP-210 |  |  |  | -12d | 0d | 1442 | HELIX | DH1100 | OO | GR |  |
| DH1100-A-EQP-217 |  | Gallery 1102 - R110/Line-Ups // Pull Feeder and Branch circuits to MIsc equipment and Chiller controls | 10d | 2026-10-20 | 2026-11-02 | DH1100-A-EQP-212 SS+4d |  |  |  | 4d | 0d | 1444 | HELIX | DH1100 | AC | GR |  |
| DH1100-A-EQP-219 |  | Gallery 1102 - R110/Line-Ups // Teminate all Misc Equipment and Chiller Controls | 5d | 2026-10-26 | 2026-10-30 | DH1100-A-EQP-217 SS+4d |  |  |  | 4d | 5d | 1445 |  | DH1100 |  | GR |  |
| DH1100-A-EQP-215 |  | Gallery 1102 - R110/Line-Ups // Terminate Mod Panels | 1d | 2026-10-28 | 2026-10-28 | DH1100-A-EQP-195 FF, DH1100-A-EQP-213, DH1100-A-EQP-210, DH1100-A-EQP-209 |  |  |  | -8d | 6d | 1440 | HELIX | DH1100 | OO | GR |  |
| DH1100-A-EQP-220 |  | Gallery 1102 - R110/Line-Ups // Electrical Gear FOD Inspection Pre-Start Up | 1d | 2026-11-09 | 2026-11-09 | DH1100-A-EQP-200 SS, DH1100-A-EQP-216, DH1100-A-EQP-219 |  |  |  | -1d | 3d | 1446 | HELIX | DH1100 | QC | GR |  |
| DH1100-A-EQP-218 |  | Gallery 1102 - R110/Line-Ups // Mechanical Gear FOD Inspection Pre-Start Up | 3d | 2026-11-19 | 2026-11-23 | DH1100-A-EQP-198 FF, DH1100-A-EQP-203, DH1100-A-EQP-214, DH1100-A-EQP-204, DH1100-A-EQP-211 |  |  |  | -12d | 0d | 1447 |  | DH1100 |  | GR |  |
|  | 12 | **Equipment Connections** |  | 2026-10-14 | 2026-11-03 |  |  |  |  |  |  |  |  |  |  |  |  |
|  | 1 | **CRAH** |  | 2026-10-23 | 2026-11-03 |  |  |  |  |  |  |  |  |  |  |  |  |
| DH1100.MG.A110.8678 |  | Gallery 1102 // DH 1100 / Elec Room // CRAH Duct Work Termination | 2d | 2026-10-23 | 2026-10-26 | DH1100-A-EQP-216 |  |  |  | -12d | 0d | 7037 |  | DH1100 |  | GR | Con/Install |
| DH1100.MG.A110.8677 |  | Gallery 1102 // DH 1100 / Elec Room // CRAH Chilled Water | 2d | 2026-10-27 | 2026-10-28 | DH1100.MG.A110.8678 |  |  |  | -12d | 0d | 7035 |  | DH1100 |  | GR | Con/Install |
| DH1100.MG.A110.8675 |  | Gallery 1102 // DH 1100 / Elec Room // CRAH Power Connections | 2d | 2026-10-29 | 2026-10-30 | DH1100.MG.A110.8677 |  |  |  | -12d | 0d | 7034 | HELIX | DH1100 | OO | GR | Con/Install |
| DH1100.MG.A110.8676 |  | Gallery 1102 // DH 1100 / Elec Room // CRAH LV Connections | 2d | 2026-11-02 | 2026-11-03 | DH1100.MG.A110.8675 |  |  |  | -12d | 2d | 7036 |  | DH1100 |  | GR | Con/Install |

| ID | WBS | Activity | Type | Duration | Start | Finish | Predecessors | Complete | Planned start | Planned finish | Total float | Free float | MSP Activity ID | QTS - AREA | MBTA: Work Type | QTS - DASH | QTS - Subcontractor | QTS - Resp | 05 -SUFFOLK - Building Phase | 12 - SUFFOLK - Export_to_Procore |
| --- | --- | --- | --- | --- | --- | --- | --- | --- | --- | --- | --- | --- | --- | --- | --- | --- | --- | --- | --- | --- |
|  | 2 | **CDU** |  |  | 2026-10-14 | 2026-10-21 |  |  |  |  |  |  |  |  |  |  |  |  |  |  |
| DH1100.MG.A110.8681 |  | Gallery 1102 // DH 1100 / Elec Room // CDU Chilled Water Connections |  | 2d | 2026-10-14 | 2026-10-15 | DH1100-A-EQP-214 FF |  |  |  | -3d | 0d | 7040 | DH1100 | Con/Install | GR |  |  |  |  |
| DH1100.MG.A110.8679 |  | Gallery 1102 // DH 1100 /Elec Room // CDU Power Connections |  | 2d | 2026-10-16 | 2026-10-19 | DH1100.MG.A110.8681 |  |  |  | -3d | 0d | 7039 | DH1100 | Con/Install | GR | HELIX | OO |  |  |
| DH1100.MG.A110.8680 |  | Gallery 1102 // DH 1100 / Elec Room // CDU Controls Connections |  | 2d | 2026-10-20 | 2026-10-21 | DH1100.MG.A110.8679 |  |  |  | -3d | 11d | 7041 | DH1100 | Con/Install | GR |  |  |  |  |
|  | 3 | **MOD** |  |  | 2026-10-21 | 2026-10-22 |  |  |  |  |  |  |  |  |  |  |  |  |  |  |
| DH1100.MG.A110.8682 |  | Gallery 1102 // DH 1100 / Elec Room // MOD Power Connections |  | 2d | 2026-10-21 | 2026-10-22 | DH1100-A-EQP-213 |  |  |  | -4d | 0d | 7043 | DH1100 | Con/Install | GR | HELIX | OO |  |  |
| DH1100.MG.A110.8683 |  | Gallery 1102 // DH 1100 / Elec Room // MOD LV Connections |  | 2d | 2026-10-21 | 2026-10-22 | DH1100.MG.A110.8682 FF |  |  |  | -4d | 10d | 7044 | DH1100 | Con/Install | GR | HELIX | AC |  |  |
|  | 4 | **Gallery 1103** |  |  | 2026-07-17 | 2026-11-16 |  |  |  |  |  |  |  |  |  |  |  |  |  |  |
|  | 1 | **Architectural** |  |  | 2026-07-17 | 2026-11-05 |  |  |  |  |  |  |  |  |  |  |  |  |  |  |
| G.1103.1040 |  | DH 1100/Gallery 1103 // Frame walls |  | 6d | 2026-07-17 A | 2026-07-24 A | STRUCTURE.7430, A2060, G1102.4700 SS | 100% |  |  |  |  | 1456 | DH1100 |  | GR |  |  | 2 | Y |
| G.1103.1050 |  | DH 1100/Gallery 1103 // Install Sheetrock Top Down |  | 6d | 2026-07-17 A | 2026-07-24 A | G.1103.1040 SS | 100% |  |  |  |  | 1461 | DH1100 |  | GR |  |  |  | Y |
| B120001.3135 |  | DH 1100/Gallery 1103 // Install Overhead Cable Ladder / 36" Cable Tray - TFO |  | 5d | 2026-07-20 A | 2026-07-24 A | G.1103.1010 | 100% |  |  |  |  | 1181 |  |  | GR |  |  |  | Y |
| B120001.3136 |  | DH 1100/Gallery 1103 // Install Overhead HAC - TFO |  | 5d | 2026-07-20 A | 2026-07-24 A | B120001.3135 | 100% |  |  |  |  | 1181 |  |  | GR |  |  |  | Y |
| G.1103.1010 |  | DH 1100/Gallery 1103 // MEPF overhead layout |  | 5d | 2026-07-20 A | 2026-07-24 A | SOG.1442, STRUCTURE.7380 | 100% |  |  |  |  | 1453 | DH1100 |  | GR | HELIX | ACOO | 2 | Y |
| G.1103.1030 |  | DH 1100/Gallery 1103 // MEPF high overhead install |  | 10d | 2026-07-27 A | 2026-08-07 A | B120001.3136, G.1103.1010 SS, G.1103.1050 | 100% | 2026-07-24 | 2026-08-06 |  |  | 1455 | DH1100 |  | GR | HELIX | ACOO | 2 | Y |
| G.1103.1070 |  | DH 1100/Gallery 1103 // MEP rough in walls |  | 4d | 2026-07-27 A | 2026-07-30 A | G.1103.1040, G.1103.1050 | 100% | 2026-08-07 | 2026-08-12 |  |  | 1458 | DH1100 |  | GR | HELIX | AC | 2 |  |
| G.1103.1080 |  | DH 1100/Gallery 1103 // In wall inspection |  | 1d | 2026-08-10 A | 2026-08-10 A | G.1103.1070 | 100% | 2026-08-13 | 2026-08-13 |  |  | 1459 | DH1100 |  | GR |  |  | 2 |  |
| F.1000A.1186 |  | DH 1100/Gallery 1103 // Rough-In Security |  | 2d | 2026-08-11 A | 2026-08-12 A | G.1103.1030 | 100% | 2026-08-07 | 2026-08-10 |  |  | 1156 | DH1100 |  | GR | HELIX | AC |  |  |
| F.1000A.1375 |  | DH 1100/Gallery 1103 // BMS & EPMS Rough-In |  | 2d | 2026-08-11 A | 2026-08-12 A | F.1000A.1186 SS, F.1000A.1186 FF | 100% | 2026-09-30 | 2026-10-01 |  |  |  | DH1100 |  |  |  |  |  |  |
| G.1103.1090 |  | DH 1100/Gallery 1103 // Install Balance of Sheetrock on walls |  | 2d | 2026-08-17 A | 2026-08-20 A | G.1103.1030 | 100% | 2026-08-07 | 2026-08-10 |  |  | 1460 | DH1100 |  | GR |  |  | 2 |  |
| G.1103.1100 |  | DH 1100/Gallery 1103 // Tape and finish walls |  | 5d | 2026-08-21 A | 2026-08-27 A | G.1103.1090 SS, G.1103.1080 | 100% | 2026-08-17 | 2026-08-21 |  |  | 1462 | DH1100 |  | GR |  |  | 2 |  |
| G.1103.1000 |  | DH 1100/Gallery 1103 // Seal concrete |  | 5d | 2026-08-28 A | 2026-09-02 A | G.1103.1100 | 100% | 2026-08-27 | 2026-09-02 |  |  | 1452 | DH1100 |  | GR |  |  | 2 |  |
| G.1103.1060 |  | DH 1100/Gallery 1103 // Install wall door frames |  | 2d | 2026-08-31 A | 2026-09-01 A | G.1103.1100 | 100% | 2026-08-27 | 2026-08-28 |  |  | 1457 | DH1100 |  | GR |  |  | 2 |  |
| G.1103.1110 |  | DH 1100/Gallery 1103 // Prime and Paint walls |  | 4d | 2026-09-02 A | 2026-09-16 A | G.1103.1100 FS+2d | 100% | 2026-08-21 | 2026-08-26 |  |  | 1463 | DH1100 |  | GR |  |  | 2 |  |
| G.1103.1120 |  | DH 1100/Gallery 1103 // Touch up Walls and Final Paint |  | 5d | 2026-09-14 A | 2026-09-16 A | G.1103.1110 SS+3d, G.1103.1060 | 100% | 2026-08-31 | 2026-09-04 |  |  | 1464 | DH1100 |  | GR |  |  | 2 |  |
| G.1103.1141 |  | DH 1100/Gallery 1103 // Ready to Receive Equipment | milestone | 0d | 2026-09-16 A | 2026-09-16 A | G.1103.1120 | 100% | 2026-09-09 | 2026-09-09 |  |  | 1465 | DH1100 |  | GR | HELIX | TBD |  |  |
| G.1103.1130 |  | DH 1100/Gallery 1103 // Install Trim and Devices |  | 2d | 2026-09-17 A | 2026-09-18 A | G.1103.1120 FF, G.1103.1000 | 100% | 2026-09-08 | 2026-09-09 |  |  | 1465 | DH1100 |  | GR | HELIX | AC |  |  |
| F.1000A.1187 |  | DH 1100/Gallery 1103 // Pull & Test Security Cable |  | 3d | 2026-10-14 | 2026-10-16 | F.1000A.1186 |  |  |  | 37d | 0d | 1156 | DH1100 |  | GR |  |  |  |  |
| F.1000A.1188 |  | DH 1100/Gallery 1103 // Install Security Devices |  | 2d | 2026-10-19 | 2026-10-20 | F.1000A.1187 |  |  |  | 37d | 0d | 1156 | DH1100 |  | GR |  |  |  |  |
| F.1000A.1189 |  | DH 1100/Gallery 1103 // Mount & Terminate Security Devices |  | 5d | 2026-10-21 | 2026-10-27 | G.1103.1110, F.1000A.1188 |  |  |  | 37d | 0d | 1156 | DH1100 |  | GR |  |  |  |  |
| F.1000A.1190 |  | DH 1100/Gallery 1103 // Test Security Devices |  | 2d | 2026-10-28 | 2026-10-29 | G.1103.1130, F.1000A.1189, F.1000A.1375 FF |  |  |  | 37d | 0d | 1156 | DH1100 |  | GR |  |  |  |  |
| G.1103.1140 |  | DH 1100/Gallery 1103 // Suffolk Pre Punch |  | 5d | 2026-10-30 | 2026-11-05 | F.1000A.1190, G.1103.1141 |  |  |  | 37d | 51d | 1466 | DH1100 |  | GR |  |  |  |  |

| ID | WBS | Activity | Duration | Start | Finish | Predecessors | Complete | Planned start | Planned finish | Total float | Free float | MSP Activity ID | QTS - AREA | QTS - DASH | QTS - Subcontractor | QTS - Resp |
| --- | --- | --- | --- | --- | --- | --- | --- | --- | --- | --- | --- | --- | --- | --- | --- | --- |
|  | 16 | **Raceway** |  |  |  |  |  |  |  |  |  |  |  |  |  |  |
|  | 3 | **Equipment Line-Ups** |  | 2026-09-15 | 2026-11-16 |  |  |  |  |  |  |  |  |  |  |  |
|  | 1 | **A110** |  | 2026-09-15 | 2026-11-10 |  |  |  |  |  |  |  |  |  |  |  |
| DH1100-B-EQP-1 |  | Gallery 1103 - A110/Line-Ups // Set CRAH-DH1100- 01 | 1d | 2026-09-15 A | 2026-09-15 A | G.1103.1141, DH1100.6360 | 100% | 2026-09-10 | 2026-09-10 |  |  | 1474 | DH1100 | GR |  |  |
| DH1100-B-EQP-4 |  | Gallery 1103 - A110/Line-Ups // Set CRAH-DH1100- 02 | 1d | 2026-09-15 A | 2026-09-15 A | DH1100-B-EQP-1 SS, DH1100-B-EQP-1 FF | 100% | 2026-09-10 | 2026-09-10 |  |  | 1475 | DH1100 | GR |  |  |
| DH1100-B-EQP-199 |  | Gallery 1103 - A110/Line-Ups // Set CDU-DH1100-01 | 1d | 2026-09-30 A | 2026-10-07 A | DH1100-B-EQP-4 | 100% | 2026-09-30 | 2026-09-30 |  |  | 1478 | DH1100 | GR |  |  |
| DH1100-B-EQP-200 |  | Gallery 1103 - A110/Line-Ups // Set CDU-DH1100-02 | 1d | 2026-10-01 A | 2026-10-02 A | DH1100-B-EQP-4 | 100% | 2026-10-01 | 2026-10-01 |  |  | 1478 | DH1100 | GR |  |  |
| DH1100-B-EQP-10 |  | Gallery 1103 - A110/Line-Ups // Mount Electrial Gear for Chiller Controls | 10d | 2026-10-14 | 2026-10-27 | DH1100-B-EQP-4 |  |  |  | -2d | 0d | 1484 | DH1100 | GR | HELIX | TBD |
| DH1100-B-EQP-14 |  | Gallery 1103 - A110/Line-Ups // Terminate Electrical Connections - CRAHU | 3d | 2026-10-14 | 2026-10-16 | DH1100-B-EQP-1 |  |  |  | 13d | 15d | 1483 | DH1100 | GR | HELIX | OO |
| DH1100-B-EQP-3 |  | Gallery 1103 - A110/Line-Ups // Condensate connections to Floor Drains | 10d | 2026-10-14 | 2026-10-27 | DH1100-B-EQP-1 SS, DH1100-B-EQP-4 |  |  |  | -5d | 0d | 1477 | DH1100 | GR |  |  |
| DH1100-B-EQP-9 |  | Gallery 1103 - A110/Line-Ups // Mechanical Connections to CRAHU Units | 5d | 2026-10-14 | 2026-10-20 | DH1100-B-EQP-4 SS+5d |  |  |  | -5d | 0d | 1489 | DH1100 | GR |  |  |
| DH1100-B-EQP-15 |  | Gallery 1103 - A110/Line-Ups // Pull Feeder and Branch circuits to MIsc equipment and Chiller controls | 10d | 2026-10-20 | 2026-11-02 | DH1100-B-EQP-10 SS+4d, DH1100-B-EQP-199, DH1100-B-EQP-200 |  |  |  | -2d | 0d | 1485 | DH1100 | GR | HELIX | AC |
| DH1100-B-EQP-12 |  | Gallery 1103 - A110/Line-Ups // Condensate connections to Floor Drains | 10d | 2026-10-21 | 2026-11-03 | DH1100-B-EQP-9 SS+5d, DH1100-B-EQP-3 SS+5d |  |  |  | -5d | 0d | 1490 | DH1100 | GR |  |  |
| DH1100-B-EQP-17 |  | Gallery 1103 - A110/Line-Ups // Teminate all Misc Equipment and Chiller Controls | 10d | 2026-10-26 | 2026-11-06 | DH1100-B-EQP-15 SS+4d |  |  |  | -2d | 0d | 1486 | DH1100 | GR |  |  |
| DH1100-B-EQP-16 |  | Gallery 1103 - A110/Line-Ups // Mechanical Gear FOD Inspection Pre-Start Up | 3d | 2026-11-04 | 2026-11-06 | DH1100-B-EQP-12, DH1100-B-EQP-3, DH1100-B-EQP-9, DH1100-B-EQP-1 SS, DH1100-B-EQP-4 |  |  |  | -5d | 7d | 1488 | DH1100 | GR |  |  |
| DH1100-B-EQP-18 |  | Gallery 1103 - A110/Line-Ups // Electrical Gear FOD Inspection Pre-Start Up | 2d | 2026-11-09 | 2026-11-10 | DH1100-B-EQP-14, DH1100-B-EQP-17 |  |  |  | -2d | 2d | 1487 | DH1100 | GR | HELIX | QC |
|  | 2 | **B110** |  | 2026-09-15 | 2026-11-16 |  |  |  |  |  |  |  |  |  |  |  |
| DH1100-B-EQP-19 |  | Gallery 1103 - B110/Line-Ups // Set CRAH-DH1100- 03 | 1d | 2026-09-15 A | 2026-09-15 A | DH1100-B-EQP-4 SS | 100% | 2026-09-10 | 2026-09-10 |  |  | 1474 | DH1100 | GR |  |  |
| DH1100-B-EQP-22 |  | Gallery 1103 - B110/Line-Ups // Set CRAH-DH1100- 04 | 1d | 2026-09-15 A | 2026-09-15 A | DH1100-B-EQP-19 SS, DH1100-B-EQP-19 FF | 100% | 2026-09-10 | 2026-09-10 |  |  | 1475 | DH1100 | GR |  |  |
| DH1100-B-EQP-201 |  | Gallery 1103 - B110/Line-Ups // Set CDU-DH1100-03 | 1d | 2026-09-24 A | 2026-10-07 A | DH1100-B-EQP-22 | 100% | 2026-09-11 | 2026-09-11 |  |  | 1478 | DH1100 | GR |  |  |
| DH1100-B-EQP-202 |  | Gallery 1103 - B110/Line-Ups // Set CDU-DH1100-04 | 1d | 2026-09-25 A | 2026-10-07 A | DH1100-B-EQP-22 | 100% | 2026-09-14 | 2026-09-14 |  |  | 1478 | DH1100 | GR |  |  |
| DH1100-B-EQP-20 |  | Gallery 1103 - B110/Line-Ups // Connect CRAH units | 10d | 2026-10-14 | 2026-10-27 | DH1100-B-EQP-19 SS+5d, DH1100-B-EQP-22 |  |  |  | -10d | 0d | 1476 | DH1100 | GR | HELIX | OO |
| DH1100-B-EQP-27 |  | Gallery 1103 - B110/Line-Ups // Mechanical Connections to CRAHU Units | 10d | 2026-10-14 | 2026-10-27 | DH1100-B-EQP-22 SS+5d |  |  |  | -5d | 5d | 1489 | DH1100 | GR |  |  |
| DH1100-B-EQP-28 |  | Gallery 1103 - B110/Line-Ups // Mount Electrial Gear for Chiller Controls | 10d | 2026-10-14 | 2026-10-27 | DH1100-B-EQP-19 |  |  |  | -2d | 0d | 1484 | DH1100 | GR | HELIX | AC |
| DH1100-B-EQP-32 |  | Gallery 1103 - B110/Line-Ups // Terminate CRAHU Electrical Connections | 5d | 2026-10-14 | 2026-10-20 | DH1100-B-EQP-19 |  |  |  | 11d | 13d | 1483 | DH1100 | GR | HELIX | OO |
| DH1100-B-EQP-33 |  | Gallery 1103 - B110/Line-Ups // Pull Feeder and Branch circuits to MIsc equipment and Chiller controls | 10d | 2026-10-20 | 2026-11-02 | DH1100-B-EQP-202, DH1100-B-EQP-201, DH1100-B-EQP-28 SS+4d |  |  |  | -2d | 0d | 1485 | DH1100 | GR | HELIX | AC |
| DH1100-B-EQP-21 |  | Gallery 1103 - B110/Line-Ups // Condensate connections to Floor Drains | 10d | 2026-10-21 | 2026-11-03 | DH1100-B-EQP-20 SS+5d |  |  |  | -10d | 0d | 1477 | DH1100 | GR |  |  |
| DH1100-B-EQP-35 |  | Gallery 1103 - B110/Line-Ups // Teminate all Misc Equipment and Chiller Controls | 10d | 2026-10-26 | 2026-11-06 | DH1100-B-EQP-33 SS+4d |  |  |  | -2d | 0d | 1486 | DH1100 | GR |  |  |
| DH1100-B-EQP-30 |  | Gallery 1103 - B110/Line-Ups // Condensate connections to Floor Drains | 10d | 2026-10-28 | 2026-11-10 | DH1100-B-EQP-27 SS+5d, DH1100-B-EQP-21 SS+5d |  |  |  | -10d | 0d | 1490 | DH1100 | GR |  |  |
| DH1100-B-EQP-36 |  | Gallery 1103 - B110/Line-Ups // Electrical Gear FOD Inspection Pre-Start Up | 2d | 2026-11-09 | 2026-11-10 | DH1100-B-EQP-32, DH1100-B-EQP-35 |  |  |  | -2d | 2d | 1487 | DH1100 | GR | HELIX | QC |
| DH1100-B-EQP-34 |  | Gallery 1103 - B110/Line-Ups // Mechanical Gear FOD Inspection Pre-Start Up | 3d | 2026-11-12 | 2026-11-16 | DH1100-B-EQP-30, DH1100-B-EQP-21, DH1100-B-EQP-27, DH1100-B-EQP-20 |  |  |  | -10d | 2d | 1488 | DH1100 | GR |  |  |

| ID | WBS | Activity | Duration | Start | Finish | Predecessors | Complete | Remaining | Planned start | Planned finish | Total float | Free float | MSP Activity ID | QTS - AREA | QTS - DASH | QTS - Subcontractor | QTS - Resp |
| --- | --- | --- | --- | --- | --- | --- | --- | --- | --- | --- | --- | --- | --- | --- | --- | --- | --- |
|  | 3 | **C110** |  | 2026-09-16 | 2026-11-16 |  |  |  |  |  |  |  |  |  |  |  |  |
| DH1100-B-EQP-37 |  | Gallery 1103 - C110/Line-Ups // Set CRAH-DH1100- 05 | 1d | 2026-09-16 A | 2026-09-16 A | DH1100-B-EQP-22 SS | 100% |  | 2026-09-10 | 2026-09-10 |  |  | 1474 | DH1100 | GR |  |  |
| DH1100-B-EQP-40 |  | Gallery 1103 - C110/Line-Ups // Set CRAH-DH1100- 06 | 1d | 2026-09-16 A | 2026-09-16 A | DH1100-B-EQP-37 SS, DH1100-B-EQP-37 FF | 100% |  | 2026-09-10 | 2026-09-10 |  |  | 1475 | DH1100 | GR |  |  |
| DH1100-B-EQP-46 |  | Gallery 1103 - C110/Line-Ups // Mount Electrial Gear for Chiller Controls | 10d | 2026-09-24 A | 2026-10-27 | DH1100-B-EQP-37, DH1100-B-EQP-40 |  | 10d | 2026-09-11 | 2026-09-24 | 2d | 0d | 1484 | DH1100 | GR | HELIX | AC |
| DH1100-B-EQP-203 |  | Gallery 1103 - C110/Line-Ups // Set CDU-DH1100-05 | 1d | 2026-09-30 A | 2026-10-07 A | DH1100-B-EQP-40 | 100% |  | 2026-09-30 | 2026-09-30 |  |  | 1478 | DH1100 | GR |  |  |
| DH1100-B-EQP-204 |  | Gallery 1103 - C110/Line-Ups // Set CDU-DH1100-06 | 1d | 2026-10-01 A | 2026-10-07 A | DH1100-B-EQP-40 | 100% |  | 2026-10-01 | 2026-10-01 |  |  | 1478 | DH1100 | GR |  |  |
| DH1100-B-EQP-38 |  | Gallery 1103 - C110/Line-Ups // Connect CRAH units | 10d | 2026-10-14 | 2026-10-27 | DH1100-B-EQP-37 SS+5d, DH1100-B-EQP-40 |  |  |  |  | -10d | 0d | 1476 | DH1100 | GR | HELIX | OO |
| DH1100-B-EQP-45 |  | Gallery 1103 - C110/Line-Ups // Mechanical Connections to CRAHU Units | 10d | 2026-10-14 | 2026-10-27 | DH1100-B-EQP-40 SS+5d |  |  |  |  | -5d | 5d | 1489 | DH1100 | GR |  |  |
| DH1100-B-EQP-50 |  | Gallery 1103 - C110/Line-Ups // Terminate CRAHU Electrical Connections | 5d | 2026-10-14 | 2026-10-20 | DH1100-B-EQP-40, DH1100-B-EQP-37 |  |  |  |  | 11d | 9d | 1483 | DH1100 | GR | HELIX | OO |
| DH1100-B-EQP-51 |  | Gallery 1103 - C110/Line-Ups // Pull Feeder and Branch circuits to MIsc equipment and Chiller controls | 10d | 2026-10-14 | 2026-10-27 | DH1100-B-EQP-204, DH1100-B-EQP-203, DH1100-B-EQP-46 SS+4d |  |  |  |  | 2d | 0d | 1485 | DH1100 | GR | HELIX | AC |
| DH1100-B-EQP-53 |  | Gallery 1103 - C110/Line-Ups // Teminate all Misc Equipment and Chiller Controls | 10d | 2026-10-20 | 2026-11-02 | DH1100-B-EQP-51 SS+4d |  |  |  |  | 2d | 0d | 1486 | DH1100 | GR |  |  |
| DH1100-B-EQP-39 |  | Gallery 1103 - C110/Line-Ups // Condensate connections to Floor Drains | 10d | 2026-10-21 | 2026-11-03 | DH1100-B-EQP-38 SS+5d |  |  |  |  | -10d | 0d | 1477 | DH1100 | GR |  |  |
| DH1100-B-EQP-48 |  | Gallery 1103 - C110/Line-Ups // Condensate connections to Floor Drains | 10d | 2026-10-28 | 2026-11-10 | DH1100-B-EQP-45 SS+5d, DH1100-B-EQP-39 SS+5d |  |  |  |  | -10d | 0d | 1490 | DH1100 | GR |  |  |
| DH1100-B-EQP-54 |  | Gallery 1103 - C110/Line-Ups // Electrical Gear FOD Inspection Pre-Start Up | 2d | 2026-11-03 | 2026-11-04 | DH1100-B-EQP-50, DH1100-B-EQP-53 |  |  |  |  | 2d | 6d | 1487 | DH1100 | GR | HELIX | QC |
| DH1100-B-EQP-52 |  | Gallery 1103 - C110/Line-Ups // Mechanical Gear FOD Inspection Pre-Start Up | 3d | 2026-11-12 | 2026-11-16 | DH1100-B-EQP-48, DH1100-B-EQP-39, DH1100-B-EQP-45, DH1100-B-EQP-38 |  |  |  |  | -10d | 2d | 1488 | DH1100 | GR |  |  |
|  | 4 | **D110** |  | 2026-09-16 | 2026-11-06 |  |  |  |  |  |  |  |  |  |  |  |  |
| DH1100-B-EQP-55 |  | Gallery 1103 - D110/Line-Ups // Set CRAH-DH1100- 07 | 1d | 2026-09-16 A | 2026-09-16 A | DH1100-B-EQP-40 | 100% |  | 2026-09-11 | 2026-09-11 |  |  | 1474 | DH1100 | GR |  |  |
| DH1100-B-EQP-58 |  | Gallery 1103 - D110/Line-Ups // Set CRAH-DH1100-08 | 1d | 2026-09-16 A | 2026-09-16 A | DH1100-B-EQP-55 SS, DH1100-B-EQP-55 FF | 100% |  | 2026-09-11 | 2026-09-11 |  |  | 1475 | DH1100 | GR |  |  |
| DH1100-B-EQP-205 |  | Gallery 1103 - D110/Line-Ups // Set CDU-DH1100-07 | 1d | 2026-09-24 A | 2026-10-07 A | DH1100-B-EQP-58 | 100% |  | 2026-09-14 | 2026-09-14 |  |  | 1478 | DH1100 | GR |  |  |
| DH1100-B-EQP-56 |  | Gallery 1103 - D110/Line-Ups // Connect CRAH units | 10d | 2026-09-24 A | 2026-10-27 | DH1100-B-EQP-55 SS+5d, DH1100-B-EQP-58 |  | 10d | 2026-09-18 | 2026-10-01 | -5d | 0d | 1476 | DH1100 | GR | HELIX | OO |
| DH1100-B-EQP-63 |  | Gallery 1103 - D110/Line-Ups // Mechanical Connections to CRAHU Units | 10d | 2026-09-24 A | 2026-10-27 | DH1100-B-EQP-58 SS+5d |  | 10d | 2026-09-18 | 2026-10-01 | 0d | 5d | 1489 | DH1100 | GR |  |  |
| DH1100-B-EQP-64 |  | Gallery 1103 - D110/Line-Ups // Mount Electrial Gear for Chiller Controls | 10d | 2026-09-24 A | 2026-10-27 | DH1100-B-EQP-58, DH1100-B-EQP-55 |  | 10d | 2026-09-14 | 2026-09-25 | 2d | 0d | 1484 | DH1100 | GR | HELIX | AC |
| DH1100-B-EQP-206 |  | Gallery 1103 - D110/Line-Ups // Set CDU-DH1100-08 | 1d | 2026-09-25 A | 2026-10-07 A | DH1100-B-EQP-58 | 100% |  | 2026-09-15 | 2026-09-15 |  |  | 1478 | DH1100 | GR |  |  |
| DH1100-B-EQP-57 |  | Gallery 1103 - D110/Line-Ups // Condensate connections to Floor Drains | 10d | 2026-10-14 | 2026-10-27 | DH1100-B-EQP-56 SS+5d |  |  |  |  | -5d | 0d | 1477 | DH1100 | GR |  |  |
| DH1100-B-EQP-68 |  | Gallery 1103 - D110/Line-Ups // Terminate CRAHU Electrical Connections | 5d | 2026-10-14 | 2026-10-20 | DH1100-B-EQP-58, DH1100-B-EQP-55 |  |  |  |  | 11d | 9d | 1483 | DH1100 | GR | HELIX | OO |
| DH1100-B-EQP-69 |  | Gallery 1103 - D110/Line-Ups // Pull Feeder and Branch circuits to MIsc equipment and Chiller controls | 10d | 2026-10-14 | 2026-10-27 | DH1100-B-EQP-206, DH1100-B-EQP-205, DH1100-B-EQP-64 SS+4d |  |  |  |  | 2d | 0d | 1485 | DH1100 | GR | HELIX | AC |
| DH1100-B-EQP-71 |  | Gallery 1103 - D110/Line-Ups // Teminate all Misc Equipment and Chiller Controls | 10d | 2026-10-20 | 2026-11-02 | DH1100-B-EQP-69 SS+4d |  |  |  |  | 2d | 0d | 1486 | DH1100 | GR |  |  |
| DH1100-B-EQP-66 |  | Gallery 1103 - D110/Line-Ups // Condensate connections to Floor Drains | 10d | 2026-10-21 | 2026-11-03 | DH1100-B-EQP-63 SS+5d, DH1100-B-EQP-57 SS+5d |  |  |  |  | -5d | 0d | 1490 | DH1100 | GR |  |  |
| DH1100-B-EQP-72 |  | Gallery 1103 - D110/Line-Ups // Electrical Gear FOD Inspection Pre-Start Up | 2d | 2026-11-03 | 2026-11-04 | DH1100-B-EQP-68, DH1100-B-EQP-71 |  |  |  |  | 2d | 6d | 1487 | DH1100 | GR | HELIX | QC |
| DH1100-B-EQP-70 |  | Gallery 1103 - D110/Line-Ups // Mechanical Gear FOD Inspection Pre-Start Up | 3d | 2026-11-04 | 2026-11-06 | DH1100-B-EQP-66, DH1100-B-EQP-57, DH1100-B-EQP-63, DH1100-B-EQP-56 |  |  |  |  | -5d | 7d | 1488 | DH1100 | GR |  |  |

| ID | WBS | Activity | Duration | Start | Finish | Predecessors | Complete | Planned start | Planned finish | Total float | Free float | MSP Activity ID | QTS - AREA | QTS - DASH | QTS - Subcontractor | QTS - Resp |
| --- | --- | --- | --- | --- | --- | --- | --- | --- | --- | --- | --- | --- | --- | --- | --- | --- |
|  | 5 | **E110** |  | 2026-09-17 | 2026-11-16 |  |  |  |  |  |  |  |  |  |  |  |
| DH1100-B-EQP-73 |  | Gallery 1103 - E110/Line-Ups // Set CRAH-DH1100- 09 | 1d | 2026-09-17 A | 2026-09-17 A | DH1100-B-EQP-58 SS | 100% | 2026-09-11 | 2026-09-11 |  |  | 1474 | DH1100 | GR |  |  |
| DH1100-B-EQP-76 |  | Gallery 1103 - E110/Line-Ups // Set CRAH-DH1100-10 | 1d | 2026-09-17 A | 2026-09-17 A | DH1100-B-EQP-73 SS, DH1100-B-EQP-73 FF | 100% | 2026-09-11 | 2026-09-11 |  |  | 1475 | DH1100 | GR |  |  |
| DH1100-B-EQP-207 |  | Gallery 1103 - E110/Line-Ups // Set CDU-DH1100-09 | 1d | 2026-09-30 A | 2026-10-01 A | DH1100-B-EQP-76 | 100% | 2026-09-30 | 2026-09-30 |  |  | 1478 | DH1100 | GR |  |  |
| DH1100-B-EQP-208 |  | Gallery 1103 - E110/Line-Ups // Set CDU-DH1100-10 | 1d | 2026-10-01 A | 2026-10-02 A | DH1100-B-EQP-76 | 100% | 2026-10-01 | 2026-10-01 |  |  | 1478 | DH1100 | GR |  |  |
| DH1100-B-EQP-74 |  | Gallery 1103 - E110/Line-Ups // Connect CRAH units | 10d | 2026-10-14 | 2026-10-27 | DH1100-B-EQP-73 SS+5d, DH1100-B-EQP-76 |  |  |  | -10d | 0d | 1476 | DH1100 | GR | HELIX | OO |
| DH1100-B-EQP-81 |  | Gallery 1103 - E110/Line-Ups // Mechanical Connections to CRAHU Units | 10d | 2026-10-14 | 2026-10-27 | DH1100-B-EQP-76 SS+5d |  |  |  | -5d | 5d | 1489 | DH1100 | GR |  |  |
| DH1100-B-EQP-82 |  | Gallery 1103 - E110/Line-Ups // Mount Electrial Gear for Chiller Controls | 10d | 2026-10-14 | 2026-10-27 | DH1100-B-EQP-73, DH1100-B-EQP-76 |  |  |  | -2d | 0d | 1484 | DH1100 | GR | HELIX | AC |
| DH1100-B-EQP-86 |  | Gallery 1103 - E110/Line-Ups // Terminate CRAHU Electrical Connections | 5d | 2026-10-14 | 2026-10-20 | DH1100-B-EQP-76, DH1100-B-EQP-73 |  |  |  | 11d | 13d | 1483 | DH1100 | GR | HELIX | OO |
| DH1100-B-EQP-87 |  | Gallery 1103 - E110/Line-Ups // Pull Feeder and Branch circuits to MIsc equipment and Chiller controls | 10d | 2026-10-20 | 2026-11-02 | DH1100-B-EQP-208, DH1100-B-EQP-207, DH1100-B-EQP-82 SS+4d |  |  |  | -2d | 0d | 1485 | DH1100 | GR | HELIX | AC |
| DH1100-B-EQP-75 |  | Gallery 1103 - E110/Line-Ups // Condensate connections to Floor Drains | 10d | 2026-10-21 | 2026-11-03 | DH1100-B-EQP-74 SS+5d |  |  |  | -10d | 0d | 1477 | DH1100 | GR |  |  |
| DH1100-B-EQP-89 |  | Gallery 1103 - E110/Line-Ups // Teminate all Misc Equipment and Chiller Controls | 10d | 2026-10-26 | 2026-11-06 | DH1100-B-EQP-87 SS+4d |  |  |  | -2d | 0d | 1486 | DH1100 | GR |  |  |
| DH1100-B-EQP-84 |  | Gallery 1103 - E110/Line-Ups // Condensate connections to Floor Drains | 10d | 2026-10-28 | 2026-11-10 | DH1100-B-EQP-81 SS+5d, DH1100-B-EQP-75 SS+5d |  |  |  | -10d | 0d | 1490 | DH1100 | GR |  |  |
| DH1100-B-EQP-90 |  | Gallery 1103 - E110/Line-Ups // Electrical Gear FOD Inspection Pre-Start Up | 2d | 2026-11-09 | 2026-11-10 | DH1100-B-EQP-86, DH1100-B-EQP-89 |  |  |  | -2d | 2d | 1487 | DH1100 | GR | HELIX | QC |
| DH1100-B-EQP-88 |  | Gallery 1103 - E110/Line-Ups // Mechanical Gear FOD Inspection Pre-Start Up | 3d | 2026-11-12 | 2026-11-16 | DH1100-B-EQP-84, DH1100-B-EQP-75, DH1100-B-EQP-81, DH1100-B-EQP-74 |  |  |  | -10d | 2d | 1488 | DH1100 | GR |  |  |
|  | 6 | **F110** |  | 2026-09-17 | 2026-11-16 |  |  |  |  |  |  |  |  |  |  |  |
| DH1100-B-EQP-91 |  | Gallery 1103 - F110/Line-Ups // Set CRAH-DH1100-11 | 1d | 2026-09-17 A | 2026-09-17 A | DH1100-B-EQP-76 SS | 100% | 2026-09-11 | 2026-09-11 |  |  | 1474 | DH1100 | GR |  |  |
| DH1100-B-EQP-94 |  | Gallery 1103 - F110/Line-Ups // Set CRAH-DH1100-12 | 1d | 2026-09-17 A | 2026-09-17 A | DH1100-B-EQP-91 SS, DH1100-B-EQP-91 FF | 100% | 2026-09-11 | 2026-09-11 |  |  | 1475 | DH1100 | GR |  |  |
| DH1100-B-EQP-209 |  | Gallery 1103 - F110/Line-Ups // Set CDU-DH1100-11 | 1d | 2026-09-30 A | 2026-10-07 A | DH1100-B-EQP-94 | 100% | 2026-09-30 | 2026-09-30 |  |  | 1478 | DH1100 | GR |  |  |
| DH1100-B-EQP-210 |  | Gallery 1103 - F110/Line-Ups // Set CDU-DH1100-12 | 1d | 2026-10-01 A | 2026-10-07 A | DH1100-B-EQP-94 | 100% | 2026-10-01 | 2026-10-01 |  |  | 1478 | DH1100 | GR |  |  |
| DH1100-B-EQP-100 |  | Gallery 1103 - F110/Line-Ups // Mount Electrial Gear for Chiller Controls | 10d | 2026-10-14 | 2026-10-27 | DH1100-B-EQP-91, DH1100-B-EQP-94 |  |  |  | -2d | 0d | 1484 | DH1100 | GR | HELIX | AC |
| DH1100-B-EQP-104 |  | Gallery 1103 - F110/Line-Ups // Terminate CRAHU Electrical Connections | 5d | 2026-10-14 | 2026-10-20 | DH1100-B-EQP-94, DH1100-B-EQP-91 |  |  |  | 11d | 13d | 1483 | DH1100 | GR | HELIX | OO |
| DH1100-B-EQP-92 |  | Gallery 1103 - F110/Line-Ups // Connect CRAH units | 10d | 2026-10-14 | 2026-10-27 | DH1100-B-EQP-91 SS+5d, DH1100-B-EQP-94 |  |  |  | -10d | 0d | 1476 | DH1100 | GR | HELIX | OO |
| DH1100-B-EQP-99 |  | Gallery 1103 - F110/Line-Ups // Mechanical Connections to CRAHU Units | 10d | 2026-10-14 | 2026-10-27 | DH1100-B-EQP-94 SS+5d |  |  |  | -5d | 5d | 1489 | DH1100 | GR |  |  |
| DH1100-B-EQP-105 |  | Gallery 1103 - F110/Line-Ups // Pull Feeder and Branch circuits to MIsc equipment and Chiller controls | 10d | 2026-10-20 | 2026-11-02 | DH1100-B-EQP-210, DH1100-B-EQP-209, DH1100-B-EQP-100 SS+4d |  |  |  | -2d | 0d | 1485 | DH1100 | GR | HELIX | AC |
| DH1100-B-EQP-93 |  | Gallery 1103 - F110/Line-Ups // Condensate connections to Floor Drains | 10d | 2026-10-21 | 2026-11-03 | DH1100-B-EQP-92 SS+5d |  |  |  | -10d | 0d | 1477 | DH1100 | GR |  |  |
| DH1100-B-EQP-107 |  | Gallery 1103 - F110/Line-Ups // Teminate all Misc Equipment and Chiller Controls | 10d | 2026-10-26 | 2026-11-06 | DH1100-B-EQP-105 SS+4d |  |  |  | -2d | 0d | 1486 | DH1100 | GR |  |  |
| DH1100-B-EQP-102 |  | Gallery 1103 - F110/Line-Ups // Condensate connections to Floor Drains | 10d | 2026-10-28 | 2026-11-10 | DH1100-B-EQP-99 SS+5d, DH1100-B-EQP-93 SS+5d |  |  |  | -10d | 0d | 1490 | DH1100 | GR |  |  |
| DH1100-B-EQP-108 |  | Gallery 1103 - F110/Line-Ups // Electrical Gear FOD Inspection Pre-Start Up | 2d | 2026-11-09 | 2026-11-10 | DH1100-B-EQP-104, DH1100-B-EQP-107 |  |  |  | -2d | 2d | 1487 | DH1100 | GR | HELIX | QC |
| DH1100-B-EQP-106 |  | Gallery 1103 - F110/Line-Ups // Mechanical Gear FOD Inspection Pre-Start Up | 3d | 2026-11-12 | 2026-11-16 | DH1100-B-EQP-102, DH1100-B-EQP-93, DH1100-B-EQP-99, DH1100-B-EQP-92 |  |  |  | -10d | 2d | 1488 | DH1100 | GR |  |  |

| ID | WBS | Activity | Duration | Start | Finish | Predecessors | Complete | Planned start | Planned finish | Total float | Free float | MSP Activity ID | QTS - AREA | QTS - DASH | QTS - Subcontractor | QTS - Resp |
| --- | --- | --- | --- | --- | --- | --- | --- | --- | --- | --- | --- | --- | --- | --- | --- | --- |
|  | 7 | **G110** |  | 2026-09-17 | 2026-11-16 |  |  |  |  |  |  |  |  |  |  |  |
| DH1100-B-EQP-109 |  | Gallery 1103 - G110/Line-Ups // Set CRAH-DH1100-13 | 1d | 2026-09-17 A | 2026-09-17 A | DH1100-B-EQP-94 | 100% | 2026-09-14 | 2026-09-14 |  |  | 1474 | DH1100 | GR |  |  |
| DH1100-B-EQP-112 |  | Gallery 1103 - G110/Line-Ups // Set CRAH-DH1100-14 | 1d | 2026-09-17 A | 2026-09-17 A | DH1100-B-EQP-109 SS, DH1100-B-EQP-109 FF | 100% | 2026-09-14 | 2026-09-14 |  |  | 1475 | DH1100 | GR |  |  |
| DH1100-B-EQP-211 |  | Gallery 1103 - G110/Line-Ups // Set CDU-DH1100-13 | 1d | 2026-09-30 A | 2026-10-07 A | DH1100-B-EQP-112 | 100% | 2026-09-30 | 2026-09-30 |  |  | 1478 | DH1100 | GR |  |  |
| DH1100-B-EQP-212 |  | Gallery 1103 - G110/Line-Ups // Set CDU-DH1100-14 | 1d | 2026-10-01 A | 2026-10-07 A | DH1100-B-EQP-112 | 100% | 2026-10-01 | 2026-10-01 |  |  | 1478 | DH1100 | GR |  |  |
| DH1100-B-EQP-110 |  | Gallery 1103 - G110/Line-Ups // Connect CRAH units | 10d | 2026-10-14 | 2026-10-27 | DH1100-B-EQP-109 SS+5d, DH1100-B-EQP-112 |  |  |  | -10d | 0d | 1476 | DH1100 | GR | HELIX | OO |
| DH1100-B-EQP-117 |  | Gallery 1103 - G110/Line-Ups // Mechanical Connections to CRAHU Units | 10d | 2026-10-14 | 2026-10-27 | DH1100-B-EQP-112 SS+5d |  |  |  | -5d | 5d | 1489 | DH1100 | GR |  |  |
| DH1100-B-EQP-118 |  | Gallery 1103 - G110/Line-Ups // Mount Electrial Gear for Chiller Controls | 10d | 2026-10-14 | 2026-10-27 | DH1100-B-EQP-112 |  |  |  | -2d | 0d | 1484 | DH1100 | GR | HELIX | AC |
| DH1100-B-EQP-122 |  | Gallery 1103 - G110/Line-Ups // Terminate CRAHU Electrical Connections | 5d | 2026-10-14 | 2026-10-20 | DH1100-B-EQP-112, DH1100-B-EQP-109 |  |  |  | 11d | 13d | 1483 | DH1100 | GR | HELIX | OO |
| DH1100-B-EQP-123 |  | Gallery 1103 - G110/Line-Ups // Pull Feeder and Branch circuits to MIsc equipment and Chiller controls | 10d | 2026-10-20 | 2026-11-02 | DH1100-B-EQP-212, DH1100-B-EQP-211, DH1100-B-EQP-118 SS+4d |  |  |  | -2d | 0d | 1485 | DH1100 | GR | HELIX | AC |
| DH1100-B-EQP-111 |  | Gallery 1103 - G110/Line-Ups // Condensate connections to Floor Drains | 10d | 2026-10-21 | 2026-11-03 | DH1100-B-EQP-110 SS+5d |  |  |  | -10d | 0d | 1477 | DH1100 | GR |  |  |
| DH1100-B-EQP-125 |  | Gallery 1103 - G110/Line-Ups // Teminate all Misc Equipment and Chiller Controls | 10d | 2026-10-26 | 2026-11-06 | DH1100-B-EQP-123 SS+4d |  |  |  | -2d | 0d | 1486 | DH1100 | GR |  |  |
| DH1100-B-EQP-120 |  | Gallery 1103 - G110/Line-Ups // Condensate connections to Floor Drains | 10d | 2026-10-28 | 2026-11-10 | DH1100-B-EQP-117 SS+5d, DH1100-B-EQP-111 SS+5d |  |  |  | -10d | 0d | 1490 | DH1100 | GR |  |  |
| DH1100-B-EQP-126 |  | Gallery 1103 - G110/Line-Ups // Electrical Gear FOD Inspection Pre-Start Up | 2d | 2026-11-09 | 2026-11-10 | DH1100-B-EQP-122, DH1100-B-EQP-125 |  |  |  | -2d | 2d | 1487 | DH1100 | GR | HELIX | QC |
| DH1100-B-EQP-124 |  | Gallery 1103 - G110/Line-Ups // Mechanical Gear FOD Inspection Pre-Start Up | 3d | 2026-11-12 | 2026-11-16 | DH1100-B-EQP-120, DH1100-B-EQP-111, DH1100-B-EQP-117, DH1100-B-EQP-110 |  |  |  | -10d | 2d | 1488 | DH1100 | GR |  |  |
|  | 8 | **H110** |  | 2026-09-18 | 2026-11-16 |  |  |  |  |  |  |  |  |  |  |  |
| DH1100-B-EQP-127 |  | Gallery 1103 - H110/Line-Ups // Set CRAH-DH1100-15 | 1d | 2026-09-18 A | 2026-09-18 A | DH1100-B-EQP-112 SS | 100% | 2026-09-14 | 2026-09-14 |  |  | 1474 | DH1100 | GR |  |  |
| DH1100-B-EQP-130 |  | Gallery 1103 - H110/Line-Ups // Set CRAH-DH1100-16 | 1d | 2026-09-18 A | 2026-09-18 A | DH1100-B-EQP-127 SS, DH1100-B-EQP-127 FF | 100% | 2026-09-14 | 2026-09-14 |  |  | 1475 | DH1100 | GR |  |  |
| DH1100-B-EQP-213 |  | Gallery 1103 - H110/Line-Ups // Set CDU-DH1100-15 | 1d | 2026-09-30 A | 2026-10-01 A | DH1100-B-EQP-130 | 100% | 2026-09-30 | 2026-09-30 |  |  | 1478 | DH1100 | GR |  |  |
| DH1100-B-EQP-214 |  | Gallery 1103 - H110/Line-Ups // Set CDU-DH1100-16 | 1d | 2026-10-01 A | 2026-10-02 A | DH1100-B-EQP-130 | 100% | 2026-10-01 | 2026-10-01 |  |  | 1478 | DH1100 | GR |  |  |
| DH1100-B-EQP-128 |  | Gallery 1103 - H110/Line-Ups // Connect CRAH units | 10d | 2026-10-14 | 2026-10-27 | DH1100-B-EQP-127 SS+5d, DH1100-B-EQP-130 |  |  |  | -10d | 0d | 1476 | DH1100 | GR | HELIX | OO |
| DH1100-B-EQP-135 |  | Gallery 1103 - H110/Line-Ups // Mechanical Connections to CRAHU Units | 10d | 2026-10-14 | 2026-10-27 | DH1100-B-EQP-130 SS+5d |  |  |  | -5d | 5d | 1489 | DH1100 | GR |  |  |
| DH1100-B-EQP-136 |  | Gallery 1103 - H110/Line-Ups // Mount Electrial Gear for Chiller Controls | 10d | 2026-10-14 | 2026-10-27 | DH1100-B-EQP-130 |  |  |  | -2d | 0d | 1484 | DH1100 | GR | HELIX | AC |
| DH1100-B-EQP-140 |  | Gallery 1103 - H110/Line-Ups // Terminate CRAHU Electrical Connections | 5d | 2026-10-14 | 2026-10-20 | DH1100-B-EQP-127 |  |  |  | 11d | 13d | 1483 | DH1100 | GR | HELIX | OO |
| DH1100-B-EQP-141 |  | Gallery 1103 - H110/Line-Ups // Pull Feeder and Branch circuits to MIsc equipment and Chiller controls | 10d | 2026-10-20 | 2026-11-02 | DH1100-B-EQP-214, DH1100-B-EQP-213, DH1100-B-EQP-136 SS+4d |  |  |  | -2d | 0d | 1485 | DH1100 | GR | HELIX | AC |
| DH1100-B-EQP-129 |  | Gallery 1103 - H110/Line-Ups // Condensate connections to Floor Drains | 10d | 2026-10-21 | 2026-11-03 | DH1100-B-EQP-128 SS+5d |  |  |  | -10d | 0d | 1477 | DH1100 | GR |  |  |
| DH1100-B-EQP-143 |  | Gallery 1103 - H110/Line-Ups // Teminate all Misc Equipment and Chiller Controls | 10d | 2026-10-26 | 2026-11-06 | DH1100-B-EQP-141 SS+4d |  |  |  | -2d | 0d | 1486 | DH1100 | GR |  |  |
| DH1100-B-EQP-138 |  | Gallery 1103 - H110/Line-Ups // Condensate connections to Floor Drains | 10d | 2026-10-28 | 2026-11-10 | DH1100-B-EQP-135 SS+5d, DH1100-B-EQP-129 SS+5d |  |  |  | -10d | 0d | 1490 | DH1100 | GR |  |  |
| DH1100-B-EQP-144 |  | Gallery 1103 - H110/Line-Ups // Electrical Gear FOD Inspection Pre-Start Up | 2d | 2026-11-09 | 2026-11-10 | DH1100-B-EQP-140, DH1100-B-EQP-143 |  |  |  | -2d | 2d | 1487 | DH1100 | GR | HELIX | QC |
| DH1100-B-EQP-142 |  | Gallery 1103 - H110/Line-Ups // Mechanical Gear FOD Inspection Pre-Start Up | 3d | 2026-11-12 | 2026-11-16 | DH1100-B-EQP-138, DH1100-B-EQP-129, DH1100-B-EQP-135, DH1100-B-EQP-128 |  |  |  | -10d | 2d | 1488 | DH1100 | GR |  |  |

| ID | WBS | Activity | Duration | Start | Finish | Predecessors | Complete | Remaining | Planned start | Planned finish | Total float | Free float | MSP Activity ID | QTS - AREA | QTS - DASH | QTS - Subcontractor | QTS - Resp |
| --- | --- | --- | --- | --- | --- | --- | --- | --- | --- | --- | --- | --- | --- | --- | --- | --- | --- |
|  | 9 | **J110** |  | 2026-09-18 | 2026-11-16 |  |  |  |  |  |  |  |  |  |  |  |  |
| DH1100-B-EQP-145 |  | Gallery 1103 - J110/Line-Ups // Set CRAH-DH1100-17 | 1d | 2026-09-18 A | 2026-09-18 A | DH1100-B-EQP-130 SS | 100% |  | 2026-09-14 | 2026-09-14 |  |  | 1474 | DH1100 | GR |  |  |
| DH1100-B-EQP-148 |  | Gallery 1103 - J110/Line-Ups // Set CRAH-DH1100-18 | 1d | 2026-09-18 A | 2026-09-18 A | DH1100-B-EQP-145 SS, DH1100-B-EQP-145 FF | 100% |  | 2026-09-14 | 2026-09-14 |  |  | 1475 | DH1100 | GR |  |  |
| DH1100-B-EQP-154 |  | Gallery 1103 - J110/Line-Ups // Mount Electrial Gear for Chiller Controls | 10d | 2026-09-24 A | 2026-10-27 | DH1100-B-EQP-148 |  | 10d | 2026-09-15 | 2026-09-28 | 2d | 0d | 1484 | DH1100 | GR | HELIX | AC |
| DH1100-B-EQP-215 |  | Gallery 1103 - J110/Line-Ups // Set CDU-DH1100-17 | 1d | 2026-09-30 A | 2026-10-01 A | DH1100-B-EQP-148 | 100% |  | 2026-09-30 | 2026-09-30 |  |  | 1478 | DH1100 | GR |  |  |
| DH1100-B-EQP-216 |  | Gallery 1103 - J110/Line-Ups // Set CDU-DH1100-18 | 1d | 2026-10-01 A | 2026-10-02 A | DH1100-B-EQP-148 | 100% |  | 2026-10-01 | 2026-10-01 |  |  | 1478 | DH1100 | GR |  |  |
| DH1100-B-EQP-146 |  | Gallery 1103 - J110/Line-Ups // Connect CRAH units | 10d | 2026-10-14 | 2026-10-27 | DH1100-B-EQP-145 SS+5d, DH1100-B-EQP-148 |  |  |  |  | -10d | 0d | 1476 | DH1100 | GR | HELIX | OO |
| DH1100-B-EQP-153 |  | Gallery 1103 - J110/Line-Ups // Mechanical Connections to CRAHU Units | 10d | 2026-10-14 | 2026-10-27 | DH1100-B-EQP-148 SS+5d |  |  |  |  | -5d | 5d | 1489 | DH1100 | GR |  |  |
| DH1100-B-EQP-158 |  | Gallery 1103 - J110/Line-Ups // Terminate CRAHU Electrical Connections | 5d | 2026-10-14 | 2026-10-20 | DH1100-B-EQP-145 |  |  |  |  | 11d | 9d | 1483 | DH1100 | GR | HELIX | OO |
| DH1100-B-EQP-159 |  | Gallery 1103 - J110/Line-Ups // Pull Feeder and Branch circuits to MIsc equipment and Chiller controls | 10d | 2026-10-14 | 2026-10-27 | DH1100-B-EQP-216, DH1100-B-EQP-215, DH1100-B-EQP-154 SS+4d |  |  |  |  | 2d | 0d | 1485 | DH1100 | GR | HELIX | AC |
| DH1100-B-EQP-161 |  | Gallery 1103 - J110/Line-Ups // Teminate all Misc Equipment and Chiller Controls | 10d | 2026-10-20 | 2026-11-02 | DH1100-B-EQP-159 SS+4d |  |  |  |  | 2d | 0d | 1486 | DH1100 | GR |  |  |
| DH1100-B-EQP-147 |  | Gallery 1103 - J110/Line-Ups // Condensate connections to Floor Drains | 10d | 2026-10-21 | 2026-11-03 | DH1100-B-EQP-146 SS+5d |  |  |  |  | -10d | 0d | 1477 | DH1100 | GR |  |  |
| DH1100-B-EQP-156 |  | Gallery 1103 - J110/Line-Ups // Condensate connections to Floor Drains | 10d | 2026-10-28 | 2026-11-10 | DH1100-B-EQP-153 SS+5d, DH1100-B-EQP-147 SS+5d |  |  |  |  | -10d | 0d | 1490 | DH1100 | GR |  |  |
| DH1100-B-EQP-162 |  | Gallery 1103 - J110/Line-Ups // Electrical Gear FOD Inspection Pre-Start Up | 2d | 2026-11-03 | 2026-11-04 | DH1100-B-EQP-158, DH1100-B-EQP-161 |  |  |  |  | 2d | 6d | 1487 | DH1100 | GR | HELIX | QC |
| DH1100-B-EQP-160 |  | Gallery 1103 - J110/Line-Ups // Mechanical Gear FOD Inspection Pre-Start Up | 3d | 2026-11-12 | 2026-11-16 | DH1100-B-EQP-156, DH1100-B-EQP-147, DH1100-B-EQP-153, DH1100-B-EQP-146 |  |  |  |  | -10d | 2d | 1488 | DH1100 | GR |  |  |
|  | 10 | **K110** |  | 2026-09-18 | 2026-11-16 |  |  |  |  |  |  |  |  |  |  |  |  |
| DH1100-B-EQP-163 |  | Gallery 1103 - K110/Line-Ups // Set CRAH-DH1100-19 | 1d | 2026-09-18 A | 2026-09-18 A | DH1100-B-EQP-148 | 100% |  | 2026-09-15 | 2026-09-15 |  |  | 1474 | DH1100 | GR |  |  |
| DH1100-B-EQP-166 |  | Gallery 1103 - K110/Line-Ups // Set CRAH-DH1100-20 | 1d | 2026-09-18 A | 2026-09-18 A | DH1100-B-EQP-163 SS, DH1100-B-EQP-163 FF | 100% |  | 2026-09-15 | 2026-09-15 |  |  | 1475 | DH1100 | GR |  |  |
| DH1100-B-EQP-172 |  | Gallery 1103 - K110/Line-Ups // Mount Electrial Gear for Chiller Controls | 10d | 2026-09-24 A | 2026-10-27 | DH1100-B-EQP-166 |  | 10d | 2026-09-16 | 2026-09-29 | 2d | 0d | 1484 | DH1100 | GR | HELIX | AC |
| DH1100-B-EQP-164 |  | Gallery 1103 - K110/Line-Ups // Connect CRAH units | 10d | 2026-10-14 | 2026-10-27 | DH1100-B-EQP-163 SS+5d, DH1100-B-EQP-166 |  |  |  |  | -10d | 0d | 1476 | DH1100 | GR |  |  |
| DH1100-B-EQP-171 |  | Gallery 1103 - K110/Line-Ups // Mechanical Connections to CRAHU Units | 10d | 2026-10-14 | 2026-10-27 | DH1100-B-EQP-166 SS+5d |  |  |  |  | -5d | 5d | 1489 | DH1100 | GR |  |  |
| DH1100-B-EQP-176 |  | Gallery 1103 - K110/Line-Ups // Terminate CRAHU Electrical Connections | 5d | 2026-10-14 | 2026-10-20 | DH1100-B-EQP-163 |  |  |  |  | 11d | 9d | 1483 | DH1100 | GR | HELIX | OO |
| DH1100-B-EQP-177 |  | Gallery 1103 - K110/Line-Ups // Pull Feeder and Branch circuits to MIsc equipment and Chiller controls | 10d | 2026-10-14 | 2026-10-27 | DH1100-B-EQP-172 SS+4d |  |  |  |  | 2d | 0d | 1485 | DH1100 | GR | HELIX | AC |
| DH1100-B-EQP-179 |  | Gallery 1103 - K110/Line-Ups // Teminate all Misc Equipment and Chiller Controls | 10d | 2026-10-20 | 2026-11-02 | DH1100-B-EQP-177 SS+4d |  |  |  |  | 2d | 0d | 1486 | DH1100 | GR |  |  |
| DH1100-B-EQP-165 |  | Gallery 1103 - K110/Line-Ups // Condensate connections to Floor Drains | 10d | 2026-10-21 | 2026-11-03 | DH1100-B-EQP-164 SS+5d |  |  |  |  | -10d | 0d | 1477 | DH1100 | GR |  |  |
| DH1100-B-EQP-174 |  | Gallery 1103 - K110/Line-Ups // Condensate connections to Floor Drains | 10d | 2026-10-28 | 2026-11-10 | DH1100-B-EQP-171 SS+5d, DH1100-B-EQP-165 SS+5d |  |  |  |  | -10d | 0d | 1490 | DH1100 | GR |  |  |
| DH1100-B-EQP-180 |  | Gallery 1103 - K110/Line-Ups // Electrical Gear FOD Inspection Pre-Start Up | 2d | 2026-11-03 | 2026-11-04 | DH1100-B-EQP-176, DH1100-B-EQP-179 |  |  |  |  | 2d | 6d | 1487 | DH1100 | GR | HELIX | QC |
| DH1100-B-EQP-178 |  | Gallery 1103 - K110/Line-Ups // Mechanical Gear FOD Inspection Pre-Start Up | 3d | 2026-11-12 | 2026-11-16 | DH1100-B-EQP-174, DH1100-B-EQP-165, DH1100-B-EQP-171, DH1100-B-EQP-164 |  |  |  |  | -10d | 2d | 1488 | DH1100 | GR |  |  |

| ID | WBS | Activity | Duration | Start | Finish | Predecessors | Complete | Planned start | Planned finish | Total float | Free float | MSP Activity ID | QTS - AREA | QTS - DASH | QTS - Subcontractor | QTS - Resp | MBTA: Work Type |
| --- | --- | --- | --- | --- | --- | --- | --- | --- | --- | --- | --- | --- | --- | --- | --- | --- | --- |
|  | 11 | **R110** |  | 2026-09-18 | 2026-11-05 |  |  |  |  |  |  |  |  |  |  |  |  |
| DH1100-B-EQP-181 |  | Gallery 1103 - R110/Line-Ups // Set CRAH-DH1100-21 | 1d | 2026-09-18 A | 2026-09-18 A | DH1100-B-EQP-166 SS | 100% | 2026-09-15 | 2026-09-15 |  |  | 1474 | DH1100 | GR |  |  |  |
| DH1100-B-EQP-184 |  | Gallery 1103 - R110/Line-Ups // Set CRAH-DH1100-22 | 1d | 2026-09-18 A | 2026-09-18 A | DH1100-B-EQP-181 SS, DH1100-B-EQP-181 FF | 100% | 2026-09-15 | 2026-09-15 |  |  | 1475 | DH1100 | GR |  |  |  |
| DH1100-B-EQP-182 |  | Gallery 1103 - R110/Line-Ups // Connect CRAH units | 10d | 2026-10-14 | 2026-10-27 | DH1100-B-EQP-181 SS+5d, DH1100-B-EQP-184 |  |  |  | -10d | 0d | 1476 | DH1100 | GR |  |  |  |
| DH1100-B-EQP-189 |  | Gallery 1103 - R110/Line-Ups // Mechanical Connections to CRAHU Units | 10d | 2026-10-14 | 2026-10-27 | DH1100-B-EQP-184 SS+3d |  |  |  | -11d | 0d | 1489 | DH1100 | GR | HELIX | OO |  |
| DH1100-B-EQP-190 |  | Gallery 1103 - R110/Line-Ups // Mount Electrial Gear for Chiller Controls | 10d | 2026-10-14 | 2026-10-27 | DH1100-B-EQP-184 |  |  |  | -14d | 0d | 1484 | DH1100 | GR | HELIX | AC |  |
| DH1100-B-EQP-195 |  | Gallery 1103 - R110/Line-Ups // Pull Feeder and Branch circuits to MIsc equipment and Chiller controls | 10d | 2026-10-14 | 2026-10-27 | DH1100-B-EQP-190 SS |  |  |  | -9d | 0d | 1485 | DH1100 | GR | HELIX | AC |  |
| DH1100-B-EQP-197 |  | Gallery 1103 - R110/Line-Ups // Teminate all Misc Equipment and Chiller Controls | 10d | 2026-10-14 | 2026-10-27 | DH1100-B-EQP-195 SS |  |  |  | -9d | 5d | 1486 | DH1100 | GR |  |  |  |
| DH1100-B-EQP-183 |  | Gallery 1103 - R110/Line-Ups // Condensate connections to Floor Drains | 5d | 2026-10-19 | 2026-10-23 | DH1100-B-EQP-182 SS+3d |  |  |  | -10d | 0d | 1477 | DH1100 | GR |  |  |  |
| DH1100-B-EQP-192 |  | Gallery 1103 - R110/Line-Ups // Condensate connections to Floor Drains | 5d | 2026-10-21 | 2026-10-27 | DH1100-B-EQP-189 SS+2d, DH1100-B-EQP-183 SS+2d |  |  |  | -10d | 0d | 1490 | DH1100 | GR |  |  |  |
| DH1100-B-EQP-194 |  | Gallery 1103 - R110/Line-Ups // Terminate CRAHU Electrical Connections | 5d | 2026-10-28 | 2026-11-03 | DH1100-B-EQP-190 |  |  |  | -14d | 0d | 1483 | DH1100 | GR | HELIX | OO |  |
| DH1100-B-EQP-196 |  | Gallery 1103 - R110/Line-Ups // Mechanical Gear FOD Inspection Pre-Start Up | 3d | 2026-10-28 | 2026-10-30 | DH1100-B-EQP-192, DH1100-B-EQP-183, DH1100-B-EQP-189, DH1100-B-EQP-182 |  |  |  | -10d | 4d | 1488 | DH1100 | GR |  |  |  |
| DH1100-B-EQP-198 |  | Gallery 1103 - R110/Line-Ups // Electrical Gear FOD Inspection Pre-Start Up | 2d | 2026-11-04 | 2026-11-05 | DH1100-B-EQP-194, DH1100-B-EQP-197 |  |  |  | -14d | 0d | 1487 | DH1100 | GR | HELIX | QC |  |
|  | 12 | **Equipment Connections** |  | 2026-10-14 | 2026-11-02 |  |  |  |  |  |  |  |  |  |  |  |  |
|  | 1 | **CRAH** |  | 2026-10-14 | 2026-10-23 |  |  |  |  |  |  |  |  |  |  |  |  |
| DH1100.MG.A110.8687 |  | Gallery 1103 // DH 1100 / Elec Room // CRAH Duct Work Termination | 2d | 2026-10-14 | 2026-10-15 | DH1100-B-EQP-184, DH1100-B-EQP-181 |  |  |  | -5d | 0d | 7037 | DH1100 | GR |  |  | Con/Install |
| DH1100.MG.A110.8686 |  | Gallery 1103 // DH 1100 / Elec Room // CRAH Chilled Water | 2d | 2026-10-16 | 2026-10-19 | DH1100.MG.A110.8687 |  |  |  | -5d | 0d | 7035 | DH1100 | GR |  |  | Con/Install |
| DH1100.MG.A110.8684 |  | Gallery 1103 // DH 1100 / Elec Room // CRAH Power Connections | 2d | 2026-10-20 | 2026-10-21 | DH1100.MG.A110.8686 |  |  |  | -5d | 0d | 7034 | DH1100 | GR | HELIX | OO | Con/Install |
| DH1100.MG.A110.8685 |  | Gallery 1103 // DH 1100 / Elec Room // CRAH LV Connections | 2d | 2026-10-22 | 2026-10-23 | DH1100.MG.A110.8684 |  |  |  | -5d | 9d | 7036 | DH1100 | GR |  |  | Con/Install |
|  | 2 | **CDU** |  | 2026-10-26 | 2026-11-02 |  |  |  |  |  |  |  |  |  |  |  |  |
| DH1100.MG.A110.8690 |  | Gallery 1103 // DH 1100 / Elec Room // CDU Chilled Water Connections | 2d | 2026-10-26 | 2026-10-27 | DH1100-B-EQP-189 FF |  |  |  | -11d | 0d | 7040 | DH1100 | GR |  |  | Con/Install |
| DH1100.MG.A110.8688 |  | Gallery 1103 // DH 1100 /Elec Room // CDU Power Connections | 2d | 2026-10-28 | 2026-10-29 | DH1100.MG.A110.8690 |  |  |  | -11d | 0d | 7039 | DH1100 | GR | HELIX | OO | Con/Install |
| DH1100.MG.A110.8689 |  | Gallery 1103 // DH 1100 / Elec Room // CDU Controls Connections | 2d | 2026-10-30 | 2026-11-02 | DH1100.MG.A110.8688 |  |  |  | -11d | 3d | 7041 | DH1100 | GR |  |  | Con/Install |
|  | 3 | **MOD** |  | 2026-10-26 | 2026-10-29 |  |  |  |  |  |  |  |  |  |  |  |  |
| DH1100.MG.A110.8691 |  | Gallery 1103 // DH 1100 / Elec Room // MOD Power Connections | 2d | 2026-10-26 | 2026-10-27 | DH1100-B-EQP-195 FF |  |  |  | -9d | 0d | 7043 | DH1100 | GR | HELIX | OO | Con/Install |
| DH1100.MG.A110.8692 |  | Gallery 1103 // DH 1100 / Elec Room // MOD LV Connections | 2d | 2026-10-28 | 2026-10-29 | DH1100.MG.A110.8691 |  |  |  | -9d | 5d | 7044 | DH1100 | GR | HELIX | OO | Con/Install |

| ID | WBS | Activity | Type | Duration | Start | Finish | Predecessors | Complete | Planned start | Planned finish | Total float | Free float | MSP Activity ID | QTS - AREA | 05 -SUFFOLK - Building Phase | 12 - SUFFOLK - Export_to_Procore | QTS - DASH | QTS - Subcontractor | QTS - Resp |
| --- | --- | --- | --- | --- | --- | --- | --- | --- | --- | --- | --- | --- | --- | --- | --- | --- | --- | --- | --- |
|  | 6 | **Corridors** |  |  | 2026-07-20 | 2026-10-22 |  |  |  |  |  |  |  |  |  |  |  |  |  |
|  | 1 | **Corridor 1000A** |  |  | 2026-07-20 | 2026-10-22 |  |  |  |  |  |  |  |  |  |  |  |  |  |
| DH1100.6430 |  | DH 1100/Corridor 1000A // Seal concrete |  | 1d | 2026-07-20 A | 2026-07-20 A | SOG.1442 | 100% |  |  |  |  | 1494 | DH1100 | 2 | Y | COR |  |  |
| DH1100.6440 |  | DH 1100/Corridor 1000A // MEPF Overhead Hangers |  | 5d | 2026-08-03 A | 2026-08-07 A | SOG.1442, STRUCTURE.7380 FS+1d | 100% | 2026-07-24 | 2026-07-30 |  |  | 1495 | DH1100 | 2 | Y | COR | HELIX | ALOO |
| DH1100.6470 |  | DH 1100/Corridor 1000A // Frame walls |  | 3d | 2026-08-03 A | 2026-08-05 A | DH1100.6430, STRUCTURE.7430, A2060, A2850 | 100% | 2026-07-24 | 2026-07-28 |  |  | 1499 | DH1100 | 2 | Y | COR |  |  |
| DH1100.6490 |  | DH 1100/Corridor 1000A // MEP rough in walls |  | 3d | 2026-08-07 A | 2026-08-11 A | DH1100.6440 | 100% | 2026-08-19 | 2026-08-21 |  |  | 1501 | DH1100 | 2 |  | COR | HELIX | AC |
| DH1100.6460 |  | DH 1100/Corridor 1000A // MEPF high overhead install |  | 3d | 2026-08-10 A | 2026-08-12 A | DH1100.6440 | 100% | 2026-08-14 | 2026-08-18 |  |  | 1497 | DH1100 | 2 | Y | COR | HELIX | ALOO |
| DH1100.6480 |  | DH 1100/Corridor 1000A // Install wall door frames |  | 3d | 2026-08-10 A | 2026-08-12 A | DH1100.6470 SS+1d | 100% | 2026-09-14 | 2026-09-16 |  |  | 1500 | DH1100 | 2 |  | COR |  |  |
| DH1100.6550 |  | DH 1100/Corridor 1000A // Install Top Down Sheetrock |  | 4d | 2026-08-10 A | 2026-08-13 A | DH1100.6500 | 100% | 2026-08-25 | 2026-08-28 |  |  | 1498 | DH1100 |  |  | COR |  |  |
| DH1100.6500 |  | DH 1100/Corridor 1000A // In wall inspection |  | 1d | 2026-08-12 A | 2026-08-12 A | DH1100.6490 | 100% | 2026-08-24 | 2026-08-24 |  |  | 1502 | DH1100 | 2 |  | COR |  |  |
| DH1100.6510 |  | DH 1100/Corridor 1000A // Install Balance of Sheetrock on Walls |  | 5d | 2026-08-17 A | 2026-08-20 A | DH1100.6460, DH1100.6550 SS, DH1100.6500 | 100% | 2026-08-25 | 2026-08-31 |  |  | 1503 | DH1100 | 2 |  | COR |  |  |
| DH1100.6520 |  | DH 1100/Corridor 1000A // Tape and finish walls |  | 8d | 2026-08-19 A | 2026-08-24 A | DH1100.6510 SS | 100% | 2026-09-01 | 2026-09-11 |  |  | 1504 | DH1100 | 2 |  | COR |  |  |
| DH1100.6530 |  | DH 1100/Corridor 1000A // Prime and Paint first coat walls |  | 3d | 2026-08-25 A | 2026-09-01 A | DH1100.6520 | 100% | 2026-09-14 | 2026-09-16 |  |  | 1493 | DH1100 | 2 |  | COR |  |  |
| DH1100.12119 |  | DH 1100/Corridor 1000A // Electrical Equipment Install |  | 7d | 2026-09-28 A | 2026-10-06 A | DH1100.6530 | 100% | 2026-09-30 | 2026-10-08 |  |  |  | DH1100 |  |  |  |  |  |
| B120001.3137 |  | DH 1100/Corridor 1000A // Install Overhead Cable Ladder / 36" Cable Tray - TFO |  | 5d | 2026-10-01 A | 2026-10-07 A | DH1100.6440 | 100% | 2026-09-30 | 2026-10-06 |  |  | 1181 |  |  | Y | COR |  |  |
| DH1100.12113 |  | DH 1100/Corridor 1000A // Ready to Receive Equipment | milestone | 0d | 2026-10-01 A | 2026-10-01 A | DH1100.6530 FF | 100% | 2026-10-06 | 2026-10-06 |  |  | 1505 | DH1100 | 2 |  | COR | HELIX | TBD |
| DH1100.6590 |  | DH 1100/Corridor 1000A // Install lights and exit signs |  | 3d | 2026-10-01 A | 2026-10-05 A | DH1100.6530, DH1100.6480 | 100% | 2026-09-30 | 2026-10-02 |  |  | 1492 | DH1100 | 2 |  | COR | HELIX | AC |
| DH1100.8080 |  | DH 1100/Corridor 1000A // Final Coat Paint & Touchup Walls |  | 4d | 2026-10-07 A | 2026-10-13 A | DH1100.6590 | 100% | 2026-10-05 | 2026-10-08 |  |  | 1506 | DH1100 | 2 |  | COR |  |  |
| B120001.3138 |  | DH 1100/Corridor 1000A // Install Overhead HAC - TFO |  | 5d | 2026-10-14 | 2026-10-20 | B120001.3137 |  |  |  | -4d | 0d | 1181 |  |  | Y | COR |  |  |
| DH1100.6540 |  | DH 1100/Corridor 1000A // Install MEP Devices and Trim |  | 2d | 2026-10-21 | 2026-10-22 | B120001.3138, DH1100.8080, DH1100.12119 |  |  |  | -4d | 10d | 1505 | DH1100 | 2 |  | COR | HELIX | AC |
|  | 3 | **Corridor 1000** |  |  | 2026-07-20 | 2026-10-20 |  |  |  |  |  |  |  |  |  |  |  |  |  |
| DH1100.12078 |  | DH 1100/Corridor 1000 // Seal concrete |  | 1d | 2026-07-20 A | 2026-07-20 A | DH1100.6430 | 100% |  |  |  |  | 1494 | DH1100 | 2 | Y | COR |  |  |
| DH1100.12068 |  | DH 1100/Corridor 1000 // MEPF Overhead Hangers |  | 5d | 2026-08-03 A | 2026-08-07 A | DH1100.6440 SS | 100% | 2026-07-24 | 2026-07-30 |  |  | 1495 | DH1100 | 2 | Y | COR | HELIX | ALOO |
| DH1100.12069 |  | DH 1100/Corridor 1000 // Frame walls |  | 3d | 2026-08-06 A | 2026-08-10 A | DH1100.12078, DH1100.6470 | 100% | 2026-07-29 | 2026-07-31 |  |  | 1499 | DH1100 | 2 | Y | COR |  |  |
| DH1100.12070 |  | DH 1100/Corridor 1000 // Install Top Down Sheetrock |  | 3d | 2026-08-11 A | 2026-08-13 A | DH1100.12069 SS+3d | 100% | 2026-08-03 | 2026-08-05 |  |  | 1498 | DH1100 |  | Y | COR |  |  |
| DH1100.12072 |  | DH 1100/Corridor 1000 // MEP rough in walls |  | 3d | 2026-08-11 A | 2026-08-13 A | DH1100.12070 FF | 100% | 2026-08-19 | 2026-08-21 |  |  | 1501 | DH1100 | 2 |  | COR | HELIX | AC |
| DH1100.12071 |  | DH 1100/Corridor 1000 // MEPF high overhead install |  | 3d | 2026-08-14 A | 2026-08-18 A | DH1100.12070 | 100% |  |  |  |  | 1497 | DH1100 | 2 |  | COR | HELIX | ALOO |
| DH1100.12073 |  | DH 1100/Corridor 1000 // In wall inspection |  | 1d | 2026-08-14 A | 2026-08-14 A | DH1100.12072 | 100% | 2026-08-24 | 2026-08-24 |  |  | 1502 | DH1100 | 2 |  | COR |  |  |
| DH1100.12074 |  | DH 1100/Corridor 1000 // Install Balance of Sheetrock on Walls |  | 5d | 2026-08-20 A | 2026-08-25 A | DH1100.12071, DH1100.12070 SS, DH1100.12073 | 100% | 2026-08-25 | 2026-08-31 |  |  | 1503 | DH1100 | 2 |  | COR |  |  |
| DH1100.12075 |  | DH 1100/Corridor 1000 // Tape and finish walls |  | 8d | 2026-09-04 A | 2026-09-15 A | DH1100.12074 | 100% | 2026-09-01 | 2026-09-11 |  |  | 1504 | DH1100 | 2 |  | COR |  |  |
| DH1100.12076 |  | DH 1100/Corridor 1000 // Install wall door frames |  | 3d | 2026-09-08 A | 2026-09-08 A | DH1100.12069 SS+1d, DH1100.12075 SS | 100% | 2026-09-14 | 2026-09-16 |  |  | 1500 | DH1100 | 2 |  | COR |  |  |
| DH1100.12077 |  | DH 1100/Corridor 1000 // Prime and Paint first coat walls |  | 3d | 2026-09-16 A | 2026-10-02 A | DH1100.12075 | 100% | 2026-09-14 | 2026-09-16 |  |  | 1493 | DH1100 | 2 |  | COR |  |  |
| B120001.3139 |  | DH 1100/Corridor 1000 // Install Overhead Cable Ladder / 36" Cable Tray - TFO |  | 5d | 2026-09-24 A | 2026-09-29 A | DH1100.12068 | 100% | 2026-07-31 | 2026-08-06 |  |  | 1181 |  |  | Y | COR |  |  |
| DH1100.12079 |  | DH 1100/Corridor 1000 // Install lights and exit signs |  | 3d | 2026-10-02 A | 2026-10-06 A | DH1100.12077, DH1100.12076 | 100% | 2026-10-05 | 2026-10-07 |  |  | 1492 | DH1100 | 2 |  | COR | HELIX | AC |
| DH1100.12120 |  | DH 1100/Corridor 1000 // Electrical Equipment Install |  | 7d | 2026-10-02 A | 2026-10-13 A | DH1100.12080 FF | 100% | 2026-10-05 | 2026-10-14 |  |  |  | DH1100 |  |  |  |  |  |
| DH1100.12080 |  | DH 1100/Corridor 1000 // Final Coat Paint & Touchup Walls |  | 4d | 2026-10-07 A | 2026-10-13 A | DH1100.12079 SS | 100% | 2026-10-08 | 2026-10-14 |  |  | 1506 | DH1100 | 2 |  | COR |  |  |
| B120001.3140 |  | DH 1100/Corridor 1000 // Install Overhead HAC - TFO |  | 5d | 2026-10-14 | 2026-10-20 | B120001.3139 FF |  |  |  | 49d | 0d | 1181 |  |  | Y | COR |  |  |
| DH1100.12081 |  | DH 1100/Corridor 1000 // Install MEP Devices and Trim |  | 2d | 2026-10-14 | 2026-10-15 | DH1100.12080, DH1100.12120 |  |  |  | 1d | 15d | 1505 | DH1100 | 2 |  | COR | HELIX | AC |
| DH1100.12114 |  | DH 1100/Corridor 1000 // Ready to Receive Equipment | milestone | 0d | 2026-10-20 | 2026-10-20 | DH1100.12077 FF, B120001.3140 |  |  |  | 49d | 63d | 1505 | DH1100 | 2 |  | COR | HELIX | TBD |

| ID | WBS | Activity | Type | Duration | Start | Finish | Predecessors | Complete | Remaining | Planned start | Planned finish | Total float | Free float | MSP Activity ID | QTS - AREA | 05 -SUFFOLK - Building Phase | 12 - SUFFOLK - Export_to_Procore | QTS - DASH | QTS - Subcontractor | QTS - Resp |
| --- | --- | --- | --- | --- | --- | --- | --- | --- | --- | --- | --- | --- | --- | --- | --- | --- | --- | --- | --- | --- |
|  | 2 | **Corridor 1000B** |  |  | 2026-07-20 | 2026-10-22 |  |  |  |  |  |  |  |  |  |  |  |  |  |  |
| DH1100.12092 |  | DH 1100/Corridor 1000B // Seal concrete |  | 1d | 2026-07-20 A | 2026-07-20 A | DH1100.12078 | 100% |  |  |  |  |  | 1494 | DH1100 | 2 | Y | COR |  |  |
| DH1100.12082 |  | DH 1100/Corridor 1000B // MEPF Overhead Hangers |  | 5d | 2026-08-03 A | 2026-08-07 A | DH1100.12068 SS | 100% |  | 2026-07-24 | 2026-07-30 |  |  | 1495 | DH1100 | 2 | Y | COR | HELIX | ALOO |
| DH1100.12083 |  | DH 1100/Corridor 1000B // Frame walls |  | 3d | 2026-08-11 A | 2026-08-13 A | DH1100.12092, DH1100.12069 | 100% |  | 2026-08-03 | 2026-08-05 |  |  | 1499 | DH1100 | 2 | Y | COR |  |  |
| DH1100.12084 |  | DH 1100/Corridor 1000B // Install Top Down Sheetrock |  | 3d | 2026-08-11 A | 2026-08-13 A | DH1100.12083 SS | 100% |  | 2026-08-06 | 2026-08-10 |  |  | 1498 | DH1100 |  | Y | COR |  |  |
| DH1100.12086 |  | DH 1100/Corridor 1000B // MEP rough in walls |  | 3d | 2026-08-11 A | 2026-08-13 A | DH1100.12084 FF | 100% |  | 2026-08-14 | 2026-08-18 |  |  | 1501 | DH1100 | 2 |  | COR | HELIX | AC |
| DH1100.12087 |  | DH 1100/Corridor 1000B // In wall inspection |  | 1d | 2026-08-14 A | 2026-08-14 A | DH1100.12086 | 100% |  | 2026-08-19 | 2026-08-19 |  |  | 1502 | DH1100 | 2 |  | COR |  |  |
| DH1100.12085 |  | DH 1100/Corridor 1000B // MEPF high overhead install |  | 3d | 2026-08-17 A | 2026-08-19 A | DH1100.12084 | 100% |  | 2026-08-11 | 2026-08-13 |  |  | 1497 | DH1100 | 2 |  | COR | HELIX | ALOO |
| DH1100.12088 |  | DH 1100/Corridor 1000B // Install Balance of Sheetrock on Walls |  | 5d | 2026-08-20 A | 2026-08-25 A | DH1100.12085, DH1100.12084 SS, DH1100.12087 | 100% |  | 2026-08-20 | 2026-08-26 |  |  | 1503 | DH1100 | 2 |  | COR |  |  |
| DH1100.12090 |  | DH 1100/Corridor 1000B // Install wall door frames |  | 3d | 2026-08-26 A | 2026-09-01 A | DH1100.12083, DH1100.12088 | 100% |  | 2026-09-09 | 2026-09-11 |  |  | 1500 | DH1100 | 2 |  | COR |  |  |
| DH1100.12095 |  | DH 1100/Corridor 1000B // Install MEP Devices and Trim |  | 2d | 2026-08-26 A | 2026-10-15 | DH1100.12088 |  | 2d | 2026-09-23 | 2026-09-24 | 1d | 15d | 1505 | DH1100 | 2 |  | COR | HELIX | AC |
| DH1100.12089 |  | DH 1100/Corridor 1000B // Tape and finish walls |  | 8d | 2026-09-09 A | 2026-10-08 A | DH1100.12088 FF | 100% |  | 2026-08-27 | 2026-09-08 |  |  | 1504 | DH1100 | 2 |  | COR |  |  |
| DH1100.12091 |  | DH 1100/Corridor 1000B // Prime and Paint first coat walls |  | 3d | 2026-09-29 A | 2026-10-16 | DH1100.12089 SS+6d |  | 3d | 2026-09-09 | 2026-09-11 | -4d | 0d | 1493 | DH1100 | 2 |  | COR |  |  |
| DH1100.12093 |  | DH 1100/Corridor 1000B // Install lights and exit signs |  | 3d | 2026-10-06 A | 2026-10-16 | DH1100.12091 SS, DH1100.12090 |  | 3d | 2026-10-05 | 2026-10-07 | -4d | 0d | 1492 | DH1100 | 2 |  | COR | HELIX | AC |
| B120001.3141 |  | DH 1100/Corridor 1000B // Install Overhead Cable Ladder / 36" Cable Tray - TFO |  | 5d | 2026-10-14 | 2026-10-20 | DH1100.12082, DH1100.12092 |  |  |  |  | 49d | 0d | 1181 |  |  | Y | COR |  |  |
| B120001.3142 |  | DH 1100/Corridor 1000B // Install Overhead HAC - TFO |  | 5d | 2026-10-14 | 2026-10-20 | B120001.3141 FF |  |  |  |  | 49d | 0d | 1181 |  |  |  | COR |  |  |
| DH1100.12121 |  | DH 1100/Corridor 1000B // Electrical Equipment Install |  | 7d | 2026-10-14 | 2026-10-22 | DH1100.12094 FF |  |  |  |  | -4d | 10d |  | DH1100 |  |  |  |  |  |
| DH1100.12094 |  | DH 1100/Corridor 1000B // Final Coat Paint & Touchup Walls |  | 4d | 2026-10-19 | 2026-10-22 | DH1100.12093 |  |  |  |  | -4d | 0d | 1506 | DH1100 | 2 |  | COR |  |  |
| DH1100.12115 |  | DH 1100/Corridor 1000B // Ready to Receive Equipment | milestone | 0d | 2026-10-20 | 2026-10-20 | DH1100.12091 FF, B120001.3142 |  |  |  |  | 49d | 63d | 1505 | DH1100 | 2 |  | COR | HELIX | TBD |
|  | 10 | **Flex 1000B1** |  |  | 2026-07-20 | 2026-10-29 |  |  |  |  |  |  |  |  |  |  |  |  |  |  |
| F.1000B..1000 |  | DH 1100/Flex 1000B1 // Seal Concrete |  | 5d | 2026-07-20 A | 2026-07-24 A | DH1100.12092, STRUCTURE.7430, A2060 | 100% |  |  |  |  |  | 1508 | DH1100 |  | Y | OR |  |  |
| F.1000B..1010 |  | DH 1100/Flex 1000B1 // MEPF Layout of Overhead Supports |  | 2d | 2026-08-10 A | 2026-08-11 A | F.1000B..1000, DH1100.12082 | 100% |  | 2026-07-31 | 2026-08-03 |  |  | 1509 | DH1100 |  | Y | OR | HELIX | AC |
| F.1000B..1020 |  | DH 1100/Flex 1000B1 // MEPF Install High Overhead Systems |  | 6d | 2026-08-11 A | 2026-08-18 A | F.1000B..1010 | 100% |  | 2026-08-04 | 2026-08-11 |  |  | 1510 | DH1100 |  |  | OR | HELIX | AC |
| F.1000B..1040 |  | DH 1100/Flex 1000B1 // Frame Walls including Backing |  | 4d | 2026-08-11 A | 2026-08-14 A | F.1000B..1010 | 100% |  | 2026-08-04 | 2026-08-07 |  |  | 1511 | DH1100 |  |  | OR |  |  |
| F.1000B..1060 |  | DH 1100/Flex 1000B1 // MEPF Install Rough Wall |  | 2d | 2026-08-19 A | 2026-08-20 A | F.1000B..1020, F.1000B..1040 | 100% |  | 2026-08-12 | 2026-08-13 |  |  | 1513 | DH1100 |  |  | OR | HELIX | AC |
| F.1000B..1080 |  | DH 1100/Flex 1000B1 // Rough Wall Inspspection (Approval to Close up) |  | 1d | 2026-08-20 A | 2026-08-20 A | F.1000B..1060 | 100% |  | 2026-08-14 | 2026-08-14 |  |  | 1515 | DH1100 |  |  | OR |  |  |
| F.1000B..1090 |  | DH 1100/Flex 1000B1 // Install Balance of Sheetrock |  | 3d | 2026-09-09 A | 2026-09-11 A | F.1000B..1080 | 100% |  | 2026-08-17 | 2026-08-19 |  |  | 1516 | DH1100 |  |  | OR |  |  |
| F.1000B..1100 |  | DH 1100/Flex 1000B1 // Tape and Finish Walls |  | 6d | 2026-09-14 A | 2026-09-18 A | F.1000B..1090 | 100% |  | 2026-08-20 | 2026-08-27 |  |  | 1517 | DH1100 |  |  | OR |  |  |
| F.1000B..1120 |  | DH 1100/Flex 1000B1 // Install MEPF Overhead Ceiling Rough |  | 3d | 2026-09-28 A | 2026-10-16 | F.1000B..1100 |  | 3d | 2026-09-01 | 2026-09-03 | -9d | 0d | 1520 | DH1100 |  |  | OR | HELIX | AC |
| F.1000B..1140 |  | DH 1100/Flex 1000B1 // Wall Touch up Final Coat of Paint |  | 3d | 2026-10-05 A | 2026-10-19 | F.1000B..1130 SS |  | 3d | 2026-10-07 | 2026-10-09 | -9d | 0d | 1522 | DH1100 |  |  | OR |  |  |
| F.1000B..1130 |  | DH 1100/Flex 1000B1 // Install Lighting, Fire Alarm & Fire Protection |  | 2d | 2026-10-06 A | 2026-10-16 | F.1000B..1120 FF |  | 2d | 2026-10-05 | 2026-10-06 | -9d | 0d | 1521 | DH1100 |  |  | OR | HELIX | AC |
| F.1000B..1110 |  | DH 1100/Flex 1000B1 // Prime and First Coat of Paint |  | 2d | 2026-10-14 | 2026-10-15 | F.1000B..1100 |  |  |  |  | -8d | 1d | 1519 | DH1100 |  |  | OR |  |  |
| F.1000B..1050 |  | DH 1100/Flex 1000B1 // Install Door Frames |  | 1d | 2026-10-19 | 2026-10-19 | F.1000B..1110, F.1000B..1120, F.1000B..1040 FF |  |  |  |  | -9d | 0d | 1518 | DH1100 |  |  | OR |  |  |
| F.1000B..1150 |  | DH 1100/Flex 1000B1 // Install Wall Base, Trim, and Devices |  | 3d | 2026-10-20 | 2026-10-22 | F.1000B..1050, F.1000B..1140 |  |  |  |  | -9d | 0d | 1523 | DH1100 |  |  | OR |  |  |
| F.1000B..1161 |  | DH 1100/Flex 1000B1 // Ready to Receive Equipment | milestone | 0d | 2026-10-22 | 2026-10-22 | F.1000B..1150 FF |  |  |  |  | -9d | 0d | 1523 | DH1100 |  |  | OR | HELIX | TBD |
| F.1000B..1160 |  | DH 1100/Flex 1000B1 // Suffolk Pre Punch |  | 5d | 2026-10-23 | 2026-10-29 | F.1000B..1161 |  |  |  |  | -9d | 5d | 1524 | DH1100 |  |  | OR |  |  |

| ID | WBS | Activity | Type | Duration | Start | Finish | Predecessors | Complete | Remaining | Planned start | Planned finish | Total float | Free float | MSP Activity ID | QTS - AREA | 05 -SUFFOLK - Building Phase | 12 - SUFFOLK - Export_to_Procore | QTS - DASH | QTS - Subcontractor | QTS - Resp |
| --- | --- | --- | --- | --- | --- | --- | --- | --- | --- | --- | --- | --- | --- | --- | --- | --- | --- | --- | --- | --- |
|  | 11 | **IDF 1000C2** |  |  | 2026-07-20 | 2026-10-29 |  |  |  |  |  |  |  |  |  |  |  |  |  |  |
| IDF.C2.1000 |  | DH 1100/IDF 1000B2 // Seal concrete |  | 5d | 2026-07-20 A | 2026-07-24 A | F.1000B..1000, STRUCTURE.7430, A2060 | 100% |  |  |  |  |  | 1528 | DH1100 | 2 | Y | OR |  |  |
| IDF.C2.1010 |  | DH 1100/IDF 1000B2 // MEPF overhead layout |  | 5d | 2026-08-07 A | 2026-08-07 A | IDF.C2.1000, F.1000B..1010 | 100% |  | 2026-08-04 | 2026-08-10 |  |  | 1529 | DH1100 | 2 |  | OR | HELIX | AC |
| IDF.C2.1030 |  | DH 1100/IDF 1000B2 // Frame walls |  | 2d | 2026-08-10 A | 2026-08-11 A | IDF.C2.1010 | 100% |  | 2026-08-11 | 2026-08-12 |  |  | 1533 | DH1100 | 2 |  | OR |  |  |
| IDF.C2.1050 |  | DH 1100/IDF 1000B2 // Install Top Down Sheetrock |  | 2d | 2026-08-12 A | 2026-08-13 A | IDF.C2.1030 SS+3d | 100% |  | 2026-08-14 | 2026-08-17 |  |  | 1532 | DH1100 |  |  | OR |  |  |
| IDF.C2.1060 |  | DH 1100/IDF 1000B2 // MEP rough in walls |  | 3d | 2026-08-17 A | 2026-08-19 A | IDF.C2.1030 | 100% |  |  |  |  |  | 1535 | DH1100 | 2 |  | OR | HELIX | AC |
| IDF.C2.1070 |  | DH 1100/IDF 1000B2 // In wall inspection |  | 1d | 2026-08-19 A | 2026-08-19 A | IDF.C2.1060 | 100% |  | 2026-08-20 | 2026-08-20 |  |  | 1536 | DH1100 | 2 |  | OR |  |  |
| IDF.C2.1080 |  | DH 1100/IDF 1000B2 // MEPF high overhead install |  | 3d | 2026-08-20 A | 2026-09-02 A | IDF.C2.1050 | 100% |  | 2026-08-18 | 2026-08-20 |  |  | 1531 | DH1100 | 2 |  | OR | HELIX | AC |
| IDF.C2.1090 |  | DH 1100/IDF 1000B2 // Install Balance of Sheetrock on Walls |  | 3d | 2026-08-20 A | 2026-08-24 A | IDF.C2.1050 SS, IDF.C2.1070 | 100% |  | 2026-08-21 | 2026-08-25 |  |  | 1537 | DH1100 | 2 |  | OR |  |  |
| IDF.C2.1040 |  | DH 1100/IDF 1000B2 // Install wall door frames |  | 3d | 2026-08-27 A | 2026-09-01 A | IDF.C2.1030 SS+1d | 100% |  | 2026-08-12 | 2026-08-14 |  |  | 1534 | DH1100 | 2 |  | OR |  |  |
| IDF.C2.1100 |  | DH 1100/IDF 1000B2 // Tape and finish walls |  | 5d | 2026-09-24 A | 2026-10-20 | IDF.C2.1080, IDF.C2.1090, IDF.C2.1040 |  | 5d | 2026-08-26 | 2026-09-01 | -9d | 0d | 1538 | DH1100 | 2 |  | OR |  |  |
| IDF.C2.1110 |  | DH 1100/IDF 1000B2 // Prime and Paint first coat walls |  | 3d | 2026-09-29 A | 2026-10-16 | IDF.C2.1100 SS+4d |  | 3d | 2026-09-02 | 2026-09-04 | -9d | 0d | 1527 | DH1100 | 2 |  | OR |  |  |
| IDF.C2.1120 |  | DH 1100/IDF 1000B2 // Install lights and exit signs |  | 3d | 2026-10-19 | 2026-10-21 | IDF.C2.1110 |  |  |  |  | -9d | 0d | 1526 | DH1100 | 2 |  | OR | HELIX | AC |
| IDF.C2.1130 |  | DH 1100/IDF 1000B2 // Final Coat Paint & Touchup Walls |  | 4d | 2026-10-22 | 2026-10-27 | IDF.C2.1120 |  |  |  |  | -9d | 0d | 1540 | DH1100 | 2 |  | OR |  |  |
| IDF.C2.1140 |  | DH 1100/IDF 1000B2 // Install MEP Devices and Trim |  | 2d | 2026-10-28 | 2026-10-29 | IDF.C2.1130 |  |  |  |  | -9d | 0d | 1539 | DH1100 | 2 |  | OR | HELIX | AC |
| IDF.C2.1141 |  | DH 1100/IDF 1000B2 // Ready to Receive Equipment | milestone | 0d | 2026-10-29 | 2026-10-29 | IDF.C2.1140 FF |  |  |  |  | -9d | 5d | 1539 | DH1100 | 2 |  | OR | HELIX | TBD |
|  | 12 | **Preaction 1000B3** |  |  | 2026-07-20 | 2026-10-29 |  |  |  |  |  |  |  |  |  |  |  |  |  |  |
| PRE.C3.1000 |  | DH 1100/Preaction 1000B3 // Seal concrete |  | 5d | 2026-07-20 A | 2026-07-24 A | IDF.C2.1000 | 100% |  |  |  |  |  | 1544 | DH1100 | 2 | Y | OR |  |  |
| PRE.C3.1010 |  | DH 1100/Preaction 1000B3 // MEPF overhead layout |  | 5d | 2026-08-10 A | 2026-08-14 A | PRE.C3.1000, IDF.C2.1010 | 100% |  | 2026-08-11 | 2026-08-17 |  |  | 1545 | DH1100 | 2 |  | OR | HELIX | AC |
| PRE.C3.1030 |  | DH 1100/Preaction 1000B3 // Frame walls |  | 5d | 2026-08-10 A | 2026-08-14 A | PRE.C3.1010 FF | 100% |  | 2026-08-18 | 2026-08-24 |  |  | 1549 | DH1100 | 2 |  | OR |  |  |
| PRE.C3.1050 |  | DH 1100/Preaction 1000B3 // Install Top Down Sheetrock |  | 2d | 2026-08-12 A | 2026-08-14 A | PRE.C3.1030 SS+3d | 100% |  | 2026-08-21 | 2026-08-24 |  |  | 1548 | DH1100 |  |  | OR |  |  |
| PRE.C3.1040 |  | DH 1100/Preaction 1000B3 // Install wall door frames |  | 3d | 2026-08-17 A | 2026-08-19 A | PRE.C3.1030 SS+1d | 100% |  | 2026-08-19 | 2026-08-21 |  |  | 1550 | DH1100 | 2 |  | OR |  |  |
| PRE.C3.1080 |  | DH 1100/Preaction 1000B3 // MEPF high overhead install |  | 3d | 2026-08-17 A | 2026-08-19 A | PRE.C3.1050 | 100% |  | 2026-08-25 | 2026-08-27 |  |  | 1547 | DH1100 | 2 |  | OR | HELIX | AC |
| PRE.C3.1060 |  | DH 1100/Preaction 1000B3 // MEP rough in walls |  | 3d | 2026-08-20 A | 2026-08-24 A | PRE.C3.1040 | 100% |  | 2026-08-24 | 2026-08-26 |  |  | 1551 | DH1100 | 2 |  | OR | HELIX | AC |
| PRE.C3.1070 |  | DH 1100/Preaction 1000B3 // In wall inspection |  | 1d | 2026-08-24 A | 2026-08-24 A | PRE.C3.1060 | 100% |  | 2026-08-27 | 2026-08-27 |  |  | 1552 | DH1100 | 2 |  | OR |  |  |
| PRE.C3.1090 |  | DH 1100/Preaction 1000B3 // Install Balance of Sheetrock on Walls |  | 3d | 2026-08-24 A | 2026-08-26 A | PRE.C3.1080, PRE.C3.1050 SS, PRE.C3.1070 | 100% |  | 2026-08-28 | 2026-09-01 |  |  | 1553 | DH1100 | 2 |  | OR |  |  |
| PRE.C3.1100 |  | DH 1100/Preaction 1000B3 // Tape and finish walls |  | 5d | 2026-09-24 A | 2026-10-13 A | PRE.C3.1090 | 100% |  | 2026-09-02 | 2026-09-09 |  |  | 1554 | DH1100 | 2 |  | OR |  |  |
| PRE.C3.1110 |  | DH 1100/Preaction 1000B3 // Prime and Paint first coat walls |  | 3d | 2026-09-29 A | 2026-10-16 | PRE.C3.1100 SS+3d |  | 3d | 2026-09-10 | 2026-09-14 | -9d | 0d | 1543 | DH1100 | 2 |  | OR |  |  |
| PRE.C3.1120 |  | DH 1100/Preaction 1000B3 // Install lights and exit signs |  | 3d | 2026-10-19 | 2026-10-21 | PRE.C3.1110 |  |  |  |  | -9d | 0d | 1542 | DH1100 | 2 |  | OR | HELIX | AC |
| PRE.C3.1130 |  | DH 1100/Preaction 1000B3 // Final Coat Paint & Touchup Walls |  | 4d | 2026-10-22 | 2026-10-27 | PRE.C3.1120 |  |  |  |  | -9d | 0d | 1556 | DH1100 | 2 |  | OR |  |  |
| PRE.C3.1140 |  | DH 1100/Preaction 1000B3 // Install MEP Devices and Trim |  | 2d | 2026-10-28 | 2026-10-29 | PRE.C3.1130 |  |  |  |  | -9d | 0d | 1555 | DH1100 | 2 |  | OR | HELIX | AC |
| PRE.C3.1155 |  | DH 1100/Preaction 1000B3 // Ready to Receive Equipment | milestone | 0d | 2026-10-29 | 2026-10-29 | PRE.C3.1140 FF |  |  |  |  | -9d | 5d | 1555 | DH1100 | 2 |  | OR | HELIX | TBD |

| ID | WBS | Activity | Duration | Start | Finish | Predecessors | Complete | Remaining | Planned start | Planned finish | Total float | Free float | MSP Activity ID | QTS - AREA | 05 -SUFFOLK - Building Phase | QTS - DASH | QTS - Subcontractor | QTS - Resp | 12 - SUFFOLK - Export_to_Procore |
| --- | --- | --- | --- | --- | --- | --- | --- | --- | --- | --- | --- | --- | --- | --- | --- | --- | --- | --- | --- |
|  | 13 | **Restroom-Dock & Janitor** |  | 2026-07-20 | 2026-10-29 |  |  |  |  |  |  |  |  |  |  |  |  |  |  |
| RR.DJ.1000 |  | DH 1100 // RR-Doc-Jan Seal concrete | 5d | 2026-07-20 A | 2026-07-24 A | PRE.C3.1000 | 100% |  |  |  |  |  | 1560 | DH1100 | 2 | OR |  |  |  |
| RR.DJ.1010 |  | DH 1100 // RR-Doc-Jan MEPF overhead layout | 5d | 2026-08-03 A | 2026-08-03 A | PDU.1100.1010 | 100% |  | 2026-07-31 | 2026-08-06 |  |  | 1561 | DH1100 | 2 | OR | HELIX | AC | Y |
| RR.DJ.1020 |  | DH 1100 // RR-Doc-Jan Layout walls | 5d | 2026-08-04 A | 2026-08-04 A | RR.DJ.1000, RR.DJ.1010 | 100% |  | 2026-08-07 | 2026-08-13 |  |  | 1562 | DH1100 | 2 | OR |  |  |  |
| RR.DJ.1030 |  | DH 1100 // RR-Doc-Jan Frame walls | 5d | 2026-08-05 A | 2026-08-11 A | RR.DJ.1020 | 100% |  | 2026-08-14 | 2026-08-20 |  |  | 1565 | DH1100 | 2 | OR |  |  |  |
| RR.DJ.1050 |  | DH 1100 // RR-Doc-Jan Install Top Down Sheetrock | 5d | 2026-08-07 A | 2026-08-13 A | RR.DJ.1030 SS+3d | 100% |  | 2026-08-19 | 2026-08-25 |  |  | 1564 | DH1100 |  | OR |  |  |  |
| RR.DJ.1060 |  | DH 1100 // RR-Doc-Jan MEP rough in walls | 3d | 2026-08-12 A | 2026-08-14 A | RR.DJ.1030 | 100% |  | 2026-08-20 | 2026-08-24 |  |  | 1567 | DH1100 | 2 | OR | HELIX | AC |  |
| RR.DJ.1070 |  | DH 1100 // RR-Doc-Jan In wall inspection | 1d | 2026-08-17 A | 2026-08-17 A | RR.DJ.1060 | 100% |  | 2026-08-25 | 2026-08-25 |  |  | 1568 | DH1100 | 2 | OR |  |  |  |
| RR.DJ.1080 |  | DH 1100 // RR-Doc-Jan MEPF high overhead install | 3d | 2026-08-20 A | 2026-08-27 A | RR.DJ.1050 | 100% |  | 2026-08-26 | 2026-08-28 |  |  | 1563 | DH1100 | 2 | OR | HELIX | AC |  |
| RR.DJ.1040 |  | DH 1100 // RR-Doc-Jan Install wall door frames | 3d | 2026-09-08 A | 2026-09-10 A | RR.DJ.1030 FF | 100% |  | 2026-08-17 | 2026-08-19 |  |  | 1566 | DH1100 | 2 | OR |  |  |  |
| RR.DJ.1090 |  | DH 1100 // RR-Doc-Jan Install Balance of Sheetrock on Walls | 5d | 2026-09-14 A | 2026-09-18 A | RR.DJ.1080, RR.DJ.1050, RR.DJ.1070, RR.DJ.1040 SS | 100% |  | 2026-08-31 | 2026-09-04 |  |  | 1569 | DH1100 | 2 | OR |  |  |  |
| RR.DJ.1100 |  | DH 1100 // RR-Doc-Jan Tape and finish walls | 5d | 2026-09-24 A | 2026-10-20 | RR.DJ.1090 SS |  | 5d | 2026-09-08 | 2026-09-14 | -9d | 0d | 1570 | DH1100 | 2 | OR |  |  |  |
| RR.DJ.1110 |  | DH 1100 // RR-Doc-Jan Prime and Paint first coat walls | 3d | 2026-09-29 A | 2026-10-16 | RR.DJ.1100 SS+4d |  | 3d | 2026-09-18 | 2026-09-22 | -9d | 0d | 1559 | DH1100 | 2 | OR |  |  |  |
| RR.DJ.1120 |  | DH 1100 // RR-Doc-Jan Install lights and exit signs | 3d | 2026-10-19 | 2026-10-21 | RR.DJ.1110 |  |  |  |  | -9d | 0d | 1558 | DH1100 | 2 | OR | HELIX | AC |  |
| RR.DJ.1130 |  | DH 1100 // RR-Doc-Jan Final Coat Paint & Touchup Walls | 4d | 2026-10-22 | 2026-10-27 | RR.DJ.1120 |  |  |  |  | -9d | 0d | 1572 | DH1100 | 2 | OR |  |  |  |
| RR.DJ.1140 |  | DH 1100 // RR-Doc-Jan Install MEP Devices and Trim | 2d | 2026-10-28 | 2026-10-29 | RR.DJ.1130 |  |  |  |  | -9d | 5d | 1571 | DH1100 | 2 | OR | HELIX | AC |  |
|  | 1 | **1100 Energization, Start-up & Commissioning** |  | 2026-11-06 | 2027-02-12 |  |  |  |  |  |  |  |  |  |  |  |  |  |  |
|  | 1 | **Energization & L3 Prefunctional Testing** |  | 2026-11-06 | 2027-01-07 |  |  |  |  |  |  |  |  |  |  |  |  |  |  |
| DH1100.L3CX.000 |  | DH1100 L3 Start | 0d | 2026-11-06 | 2026-11-06 | RR.DJ.1140, PRE.C3.1155, F.1000B..1160, IDF.C2.1141, DH1100.12095, DH1100.12081, DH1100.6540, DH1100.MG.A110.8692, DH1100.MG.A110.8689, DH1100.MG.A110.8685, DH1100-B-EQP-198, DH1100-B-EQP-196, DH1100.MG.A110.8683, DH1100.MG.A110.8680, DH1100.MG.A110.8676, PDU.1100.1712, ER.5104.1310, ER.5104.1260, ER.5104.1140, ER.5101.1310, DH1100-A-EQP-215, ER.5104.1280, ER.5101.1300, DH1100.12121 |  |  |  |  | -14d | 0d |  | DH1100 |  |  | HELIX |  |  |
| DH1100.L3CX.BMS.001 |  | DH1100 L3 PTPs & SOOs – BMS | 40d | 2026-11-06 | 2027-01-06 | DH1100.L3CX.ELEC.01 SS |  |  |  |  | -14d | 0d |  | DH1100 |  |  |  |  |  |
| DH1100.L3CX.ELEC.01 |  | DH1100 L3 FTEs | 5d | 2026-11-06 | 2026-11-13 | DH1100.L3CX.000 SS |  |  |  |  | -14d | 0d |  | DH1100 |  |  |  |  |  |
| DH1100.L3CX.ELEC.002 |  | DH1100 L3 Startup / Pre-Functional – ELECTRICAL | 15d | 2026-11-16 | 2026-12-07 | DH1100-A-EQP-220, ER.5104.1310, DH1100.L3CX.ELEC.01, DH1100-B-EQP-198, DH1100-B-EQP-180, DH1100-B-EQP-162, DH1100-B-EQP-144, DH1100-B-EQP-126, DH1100-B-EQP-108, DH1100-B-EQP-90, DH1100-B-EQP-72, DH1100-B-EQP-54, DH1100-B-EQP-36, DH1100-B-EQP-18, DH1200.7790 |  |  |  |  | -4d | 10d |  | DH1100 |  |  |  |  |  |
| DH1100.L3CX.MECH.001 |  | DH1100 L3 Startup / Pre-Functional – MECHANICAL | 20d | 2026-11-19 | 2026-12-17 | DH1100-A-EQP-218 SS, ER.5104.1140, DH1100.L3CX.ELEC.01 SS+3d, DH1100-B-EQP-196, DH1100-B-EQP-178, DH1100-B-EQP-160, DH1100-B-EQP-142, DH1100-B-EQP-124, DH1100-B-EQP-106, DH1100-B-EQP-88, DH1100-B-EQP-70, DH1100-B-EQP-52, DH1100-B-EQP-34, DH1100-B-EQP-16, ER.5101.1330 FF, ER.5104.1250 |  |  |  |  | -12d | 2d |  | DH1100 |  |  |  |  |  |
| DH1100.L3CX.MECH.002 |  | DH1100 L3 TAB (Air, Water and Reports) – MECHANICAL | 10d | 2026-12-22 | 2027-01-06 | DH1100.L3CX.MECH.001, DH1100.L3CX.BMS.001 FF |  |  |  |  | -14d | 0d |  | DH1100 |  |  |  |  |  |
| DH1100.L3CX.MECH.003 |  | DH1100 L3 FLS – MECHANICAL | 10d | 2026-12-22 | 2027-01-06 | DH1100.L3CX.MECH.002 FF, DH1100.L3CX.MECH.001, DH1100.L3CX.ELEC.002 |  |  |  |  | -14d | 0d |  | DH1100 |  |  |  |  |  |
| DH1100.L3CX.009 |  | DH1100 L3 Cx Complete | 0d | 2027-01-07 | 2027-01-07 | DH1100.L3CX.MECH.002 FF, DH1100.L3CX.MECH.003 FF, DH1100.7870 FF, DH1100.12056 FF |  |  |  |  | -14d | 0d |  | DH1100 |  |  |  |  |  |

| ID | WBS | Activity | Duration | Start | Finish | Predecessors | Complete | Planned start | Planned finish | Total float | Free float | QTS - AREA | QTS - DASH | MSP Activity ID | 12 - SUFFOLK - Export_to_Procore | QTS - Subcontractor | QTS - Resp |
| --- | --- | --- | --- | --- | --- | --- | --- | --- | --- | --- | --- | --- | --- | --- | --- | --- | --- |
|  | 2 | **L4 Function Testing** |  | 2026-12-09 | 2027-01-14 |  |  |  |  |  |  |  |  |  |  |  |  |
| DH1100.L4CX.COMM.120 |  | DH1100 L4 Cx | 25d | 2026-12-09 | 2027-01-14 | DH1100.L3CX.009 FF+6d |  |  |  | -14d | 0d | DH1100 |  |  |  |  |  |
|  | 3 | **L5 Integrated System Testing (IST)** |  | 2026-12-23 | 2027-02-12 |  |  |  |  |  |  |  |  |  |  |  |  |
| DH1100.L5CX.COMM.170 |  | DH1100 L5 Integrated Systems Testing - IST | 20d | 2026-12-23 | 2027-01-22 | DH1100.L4CX.COMM.120 FF+5d |  |  |  | -14d | 0d | DH1100 |  |  |  |  |  |
| DH1100.A2110.CO |  | L5 Integrated System Testing (IST) // DH1100– Phase Closeout Period O&M / TRAINING/ CLOSEOUT DOCS | 15d | 2027-01-25 | 2027-02-12 | DH1100.L5CX.COMM.190 |  |  |  | 77d | 0d | DH1100 | Cx |  |  |  |  |
| DH1100.L5CX.COMM.190 |  | DH1100 – IST / L5 Cx Complete | 0d | 2027-01-25 | 2027-01-25 | DH1100.L5CX.COMM.170 |  |  |  | -14d | 0d | DH1100 |  |  |  |  |  |
|  | 1 | **Data Hall 1300** |  | 2026-05-05 | 2027-03-19 |  |  |  |  |  |  |  |  |  |  |  |  |
|  | 10 | **Exterior Build Out** |  | 2026-05-05 | 2027-01-12 |  |  |  |  |  |  |  |  |  |  |  |  |
|  | 9 | **Electrical Yard** |  | 2026-07-23 | 2026-09-18 |  |  |  |  |  |  |  |  |  |  |  |  |
|  | 3 | **Electrical** |  | 2026-07-23 | 2026-09-18 |  |  |  |  |  |  |  |  |  |  |  |  |
|  | 1 | **Underground** |  | 2026-07-23 | 2026-08-27 |  |  |  |  |  |  |  |  |  |  |  |  |
|  | 1 | **Column Line 3.0 - 3.9** |  | 2026-07-23 | 2026-08-27 |  |  |  |  |  |  |  |  |  |  |  |  |
| DH.1300 |  | DH1300/Electrical Yard-Underground // Excavate From MVG to Transformers | 10d | 2026-07-23 A | 2026-08-05 A | B1200 SS+5d, FDN.1240 | 100% | 2026-08-07 | 2026-08-20 |  |  | DH1300 | EY | 1048 | Y |  |  |
| B1200376 |  | DH1300/Electrical Yard-Underground // Install Raceway from MVG to Transformers | 10d | 2026-08-06 A | 2026-08-19 A | DH.1300 | 100% | 2026-08-21 | 2026-09-03 |  |  | DH1300 | EY | 1050 | Y | HELIX | D18A |
| B1200377 |  | DH1300/Electrical Yard-Underground // Backfill Raceways from MVG to Transformers | 6d | 2026-08-20 A | 2026-08-27 A | B1200376 FF, B1200376 | 100% | 2026-09-04 | 2026-09-14 |  |  | DH1300 | EY | 1051 | Y | HELIX | D18A |
|  | 2 | **Column - Line 3.0 - 3.9** |  |  |  |  |  |  |  |  |  |  |  |  |  |  |  |
|  | 2 | **Pads** |  | 2026-08-28 | 2026-09-08 |  |  |  |  |  |  |  |  |  |  |  |  |
| B1200384 |  | DH1300/Electrical Yard-Pads // Excavate / Form / Rebar /pour-Finish Pads (House Gen & (9) Xfmr) 0.1 to 1.4 Line | 6d | 2026-08-28 A | 2026-09-02 A | B1200377, DH.1300 | 100% | 2026-09-15 | 2026-09-22 |  |  | DH1300 | EY | 1065 | Y |  |  |
| B1200385 |  | DH1300/Electrical Yard-Pads // Pad Strip and Cure (House Gen & (9) Xfmr) 0.1 to 1.4 Line | 1d | 2026-09-03 A | 2026-09-03 A | B1200384 | 100% | 2026-09-23 | 2026-09-23 |  |  | DH1300 | EY | 1067 | Y |  |  |
| B1200386 |  | DH1300/Electrical Yard-Pads // Excavate / Form / Rebar /pour-Finish Pads (16 Xfmrs) 1.4 to 1.8 Line | 6d | 2026-09-03 A | 2026-09-08 A | B1200384 | 100% | 2026-09-23 | 2026-09-30 |  |  | DH1300 | EY | 1066 | Y |  |  |
| B1200387 |  | DH1300/Electrical Yard-Pads // Pad Strip and Cure (16 Xfmrs) 1.4 to 1.8 Line | 1d | 2026-09-04 A | 2026-09-04 A | B1200385, B1200386 | 100% | 2026-10-01 | 2026-10-01 |  |  | DH1300 | EY | 1068 | Y |  |  |
|  | 3 | **Equipment** |  | 2026-09-17 | 2026-09-18 |  |  |  |  |  |  |  |  |  |  |  |  |
|  | 1 | **A130** |  | 2026-09-17 | 2026-09-17 |  |  |  |  |  |  |  |  |  |  |  |  |
| DH.13001 |  | DH1300/Electrical Yard // Set XFMR - XFMR-A130a | 1d | 2026-09-17 A | 2026-09-17 A | B1200387, B1200377, STRUCTURE.6900 | 100% | 2026-10-02 | 2026-10-02 |  |  | DH1300 | EY | 537 | Y | HELIX | D18A |
| DH.13002 |  | DH1300/Electrical Yard // Set XFMR - XFMR-A130p | 1d | 2026-09-17 A | 2026-09-17 A | DH.13001 SS | 100% | 2026-10-05 | 2026-10-05 |  |  | DH1300 | EY | 537 | Y | HELIX | D18A |

| ID | WBS | Activity | Duration | Start | Finish | Predecessors | Complete | Planned start | Planned finish | MSP Activity ID | QTS - Subcontractor | QTS - AREA | QTS - Resp | 12 - SUFFOLK - Export_to_Procore | QTS - DASH |
| --- | --- | --- | --- | --- | --- | --- | --- | --- | --- | --- | --- | --- | --- | --- | --- |
|  | 2 | **B130** |  | 2026-09-17 | 2026-09-17 |  |  |  |  |  |  |  |  |  |  |
| DH.13003 |  | DH1300/Electrical Yard // Set XFMR - XFMR-B130a | 1d | 2026-09-17 A | 2026-09-17 A | DH.13002 SS | 100% | 2026-10-06 | 2026-10-06 | 537 | HELIX | DH1300 | D18A | Y | EY |
| DH.13004 |  | DH1300/Electrical Yard // Set XFMR - XFMR-B130p | 1d | 2026-09-17 A | 2026-09-17 A | DH.13003 SS | 100% | 2026-10-07 | 2026-10-07 | 537 | HELIX | DH1300 | D18A | Y | EY |
|  | 3 | **C130** |  | 2026-09-17 | 2026-09-17 |  |  |  |  |  |  |  |  |  |  |
| DH.13005 |  | DH1300/Electrical Yard // Set XFMR - XFMR-C130a | 1d | 2026-09-17 A | 2026-09-17 A | DH.13004 SS | 100% | 2026-10-08 | 2026-10-08 | 537 | HELIX | DH1300 | D18A | Y | EY |
| DH.13006 |  | DH1300/Electrical Yard // Set XFMR - XFMR-C130p | 1d | 2026-09-17 A | 2026-09-17 A | DH.13005 SS | 100% | 2026-10-09 | 2026-10-09 | 537 | HELIX | DH1300 | D18A | Y | EY |
|  | 4 | **D130** |  | 2026-09-17 | 2026-09-17 |  |  |  |  |  |  |  |  |  |  |
| DH.13007 |  | DH1300/Electrical Yard // Set XFMR - XFMR-D130a | 1d | 2026-09-17 A | 2026-09-17 A | DH.13006 SS | 100% | 2026-10-13 | 2026-10-13 | 537 | HELIX | DH1300 | D18A | Y | EY |
| DH.13008 |  | DH1300/Electrical Yard // Set XFMR - XFMR-D130p | 1d | 2026-09-17 A | 2026-09-17 A | DH.13007 SS | 100% | 2026-10-14 | 2026-10-14 | 537 | HELIX | DH1300 | D18A | Y | EY |
|  | 5 | **E130** |  | 2026-09-17 | 2026-09-17 |  |  |  |  |  |  |  |  |  |  |
| DH.13000 |  | DH1300/Electrical Yard // Set XFMR - XFMR-E130p | 1d | 2026-09-17 A | 2026-09-17 A | DH.13009 SS | 100% | 2026-10-16 | 2026-10-16 | 537 | HELIX | DH1300 | D18A | Y | EY |
| DH.13009 |  | DH1300/Electrical Yard // Set XFMR - XFMR-E130a | 1d | 2026-09-17 A | 2026-09-17 A | DH.13008 SS | 100% | 2026-10-15 | 2026-10-15 | 537 | HELIX | DH1300 | D18A | Y | EY |
|  | 6 | **F130** |  | 2026-09-17 | 2026-09-17 |  |  |  |  |  |  |  |  |  |  |
| DH.160012096 |  | DH1300/Electrical Yard // Set XFMR - XFMR-F130a | 1d | 2026-09-17 A | 2026-09-17 A | DH.13000 SS | 100% | 2026-10-19 | 2026-10-19 | 537 | HELIX | DH1300 | D18A | Y | EY |
| DH.160012097 |  | DH1300/Electrical Yard // Set XFMR - XFMR-F130p | 1d | 2026-09-17 A | 2026-09-17 A | DH.160012096 SS | 100% | 2026-10-20 | 2026-10-20 | 537 | HELIX | DH1300 | D18A | Y | EY |
|  | 7 | **G130** |  | 2026-09-18 | 2026-09-18 |  |  |  |  |  |  |  |  |  |  |
| DH.160012098 |  | DH1300/Electrical Yard // Set XFMR - XFMR-G130a | 1d | 2026-09-18 A | 2026-09-18 A | DH.160012097 SS | 100% | 2026-10-21 | 2026-10-21 | 537 | HELIX | DH1300 | D18A | Y | EY |
| DH.160012099 |  | DH1300/Electrical Yard // Set XFMR - XFMR-G130p | 1d | 2026-09-18 A | 2026-09-18 A | DH.160012098 | 100% | 2026-10-22 | 2026-10-22 | 537 | HELIX | DH1300 | D18A | Y | EY |
|  | 8 | **H130** |  | 2026-09-18 | 2026-09-18 |  |  |  |  |  |  |  |  |  |  |
| DH.160012100 |  | DH1300/Electrical Yard // Set XFMR - XFMR-H130a | 1d | 2026-09-18 A | 2026-09-18 A | DH.160012099 SS | 100% | 2026-10-23 | 2026-10-23 | 537 | HELIX | DH1300 | D18A |  | EY |
| DH.160012101 |  | DH1300/Electrical Yard // Set XFMR - XFMR-H130p | 1d | 2026-09-18 A | 2026-09-18 A | DH.160012100 SS | 100% | 2026-10-26 | 2026-10-26 | 537 | HELIX | DH1300 | D18A |  | EY |
|  | 9 | **J130** |  | 2026-09-18 | 2026-09-18 |  |  |  |  |  |  |  |  |  |  |
| DH.160012102 |  | DH1300/Electrical Yard // Set XFMR - XFMR-J130a | 1d | 2026-09-18 A | 2026-09-18 A | DH.160012101 SS | 100% | 2026-10-27 | 2026-10-27 | 537 | HELIX | DH1300 | D18A |  | EY |
| DH.160012103 |  | DH1300/Electrical Yard // Set XFMR - XFMR-J130p | 1d | 2026-09-18 A | 2026-09-18 A | DH.160012102 SS | 100% | 2026-10-28 | 2026-10-28 | 537 | HELIX | DH1300 | D18A |  | EY |

| ID | WBS | Activity | Duration | Start | Finish | Predecessors | Complete | Planned start | Planned finish | Total float | Free float | Constraint | MSP Activity ID | QTS - Subcontractor | QTS - AREA | QTS - Resp | QTS - DASH | 12 - SUFFOLK - Export_to_Procore |
| --- | --- | --- | --- | --- | --- | --- | --- | --- | --- | --- | --- | --- | --- | --- | --- | --- | --- | --- |
|  | 10 | **K130** |  | 2026-09-18 | 2026-09-18 |  |  |  |  |  |  |  |  |  |  |  |  |  |
| DH.160012104 |  | DH1300/Electrical Yard // Set XFMR - XFMR-K130a | 1d | 2026-09-18 A | 2026-09-18 A | DH.160012103 SS | 100% | 2026-10-29 | 2026-10-29 |  |  |  | 537 | HELIX | DH1300 | D18A | EY |  |
| DH.160012105 |  | DH1300/Electrical Yard // Set XFMR - XFMR-K130p | 1d | 2026-09-18 A | 2026-09-18 A | DH.160012104 SS | 100% | 2026-10-30 | 2026-10-30 |  |  |  | 537 | HELIX | DH1300 | D18A | EY |  |
|  | 11 | **R130** |  | 2026-09-18 | 2026-09-18 |  |  |  |  |  |  |  |  |  |  |  |  |  |
| DH.160012106 |  | DH1300/Electrical Yard // Set XFMR - XFMR-R130a | 1d | 2026-09-18 A | 2026-09-18 A | DH.160012105 SS | 100% | 2026-11-02 | 2026-11-02 |  |  |  | 537 | HELIX | DH1300 | D18A | EY |  |
| DH.160012107 |  | DH1300/Electrical Yard // Set XFMR - XFMR-R130p | 1d | 2026-09-18 A | 2026-09-18 A | DH.160012106 SS | 100% | 2026-11-03 | 2026-11-03 |  |  |  | 537 | HELIX | DH1300 | D18A | EY |  |
|  | 1 | **Mechanical Yard** |  | 2026-05-05 | 2027-01-12 |  |  |  |  |  |  |  |  |  |  |  |  |  |
|  | 1 | **Pads** |  | 2026-05-05 | 2026-09-01 |  |  |  |  |  |  |  |  |  |  |  |  |  |
| A5748 |  | DH1300/Mechanical Yard-Pads // Excavate / Form / Rebar / Pour Chiller Pads | 15d | 2026-05-05 A | 2026-05-26 A | A5700 SS, A5702 | 100% |  |  |  |  |  | 1074 |  | DH1300 |  | MY | Y |
| A5750 |  | DH1300/Mechanical Yard-Pads // Excavate / Form / Rebar / Pour Support and TES Pads | 8d | 2026-07-08 A | 2026-07-17 A | A5748 | 100% | 2026-08-14 | 2026-08-25 |  |  |  | 1079 |  | DH1300 |  | MY | Y |
| A5752 |  | DH1300/Mechanical Yard-Pads // Excavate / Form / Rebar / Pour Support and TES Pads (Column Lines 1.3 to 1.6) | 5d | 2026-08-03 A | 2026-08-07 A | A5750, A5748 SS | 100% | 2026-08-26 | 2026-09-01 |  |  |  | 1080 |  | DH1300 |  | MY | Y |
| A5753 |  | DH1300/Mechanical Yard-Pads // Excavate / Form / Rebar / Pour Support and TES Pads (Column Lines 1.6 to 1.9) | 5d | 2026-08-27 A | 2026-09-01 A | A5752 | 100% | 2026-09-02 | 2026-09-09 |  |  |  | 1081 |  | DH1300 |  | MY | Y |
|  | 5 | **Equipment** |  | 2026-09-02 | 2026-12-08 |  |  |  |  |  |  |  |  |  |  |  |  |  |
| A5890 |  | DH1300/Mechanical Yard - OFCI Chiller Delivery Date (12/07/26 through 12/08/26) | 0d | 2026-12-07 | 2026-12-07 | A5748 FF |  |  |  | 13d | 0d | finish on or after 2026-12-07 |  |  |  |  |  |  |
|  | 1 | **A130** |  | 2026-09-02 | 2026-12-07 |  |  |  |  |  |  |  |  |  |  |  |  |  |
| DH.130012023 |  | DH1300/Mechanical Yard-A130 // Install CHWP | 1d | 2026-09-02 A | 2026-09-02 A | A5753 | 100% | 2026-08-28 | 2026-08-28 |  |  |  | 1083 |  | DH1300 |  | MY | Y |
| DH.130012024 |  | DH1300/Mechanical Yard-A130 // Install Mechanical Piping Mains (Building -to Line) | 1d | 2026-09-16 A | 2026-09-16 A | DH.130012023 | 100% | 2026-08-31 | 2026-08-31 |  |  |  | 1083 |  | DH1300 |  | MY | Y |
| DH.130012002 |  | DH1300/Mechanical Yard-A130 // Set TES tank - TES-1CY40-A130 | 1d | 2026-10-01 A | 2026-10-12 A | A5750 | 100% | 2026-10-01 | 2026-10-01 |  |  |  | 1083 |  | DH1300 |  | MY | Y |
| DH.130012025 |  | DH1300/Mechanical Yard-A130 // Install Mechanical Chiller to Mains | 1d | 2026-10-14 | 2026-10-14 | DH.130012002, DH.130012024 |  |  |  | 63d | 1d |  | 1083 |  | DH1300 |  | MY | Y |
| DH.130012001 |  | DH1300/Mechanical Yard-A130 // Set Chiller - CHLR-1CY40-A130 | 1d | 2026-12-07 | 2026-12-07 | A5890, A5750, STRUCTURE.6900 |  |  |  | 13d | 0d |  | 1083 |  | DH1300 |  | MY | Y |
|  | 2 | **B130** |  | 2026-09-02 | 2026-12-07 |  |  |  |  |  |  |  |  |  |  |  |  |  |
| DH.130012026 |  | DH1300/Mechanical Yard-B130 // Install CHWP | 1d | 2026-09-02 A | 2026-09-02 A | DH.130012023 | 100% | 2026-08-31 | 2026-08-31 |  |  |  | 1083 |  | DH1300 |  | MY | Y |
| DH.130012027 |  | DH1300/Mechanical Yard-B130 // Install Mechanical Piping Mains (Building -to Line) | 1d | 2026-09-16 A | 2026-09-16 A | DH.130012026 | 100% | 2026-09-01 | 2026-09-01 |  |  |  | 1083 |  | DH1300 |  | MY | Y |
| DH.130012004 |  | DH1300/Mechanical Yard-B130 // Set TES tank - TES-1CY40-B130 | 1d | 2026-10-02 A | 2026-10-12 A | A5750 | 100% | 2026-10-02 | 2026-10-02 |  |  |  | 1083 |  | DH1300 |  | MY | Y |
| DH.130012028 |  | DH1300/Mechanical Yard-B130 // Install Mechanical Chiller to Mains | 1d | 2026-10-14 | 2026-10-14 | DH.130012004, DH.130012027 |  |  |  | 63d | 1d |  | 1083 |  | DH1300 |  | MY | Y |
| DH.130012003 |  | DH1300/Mechanical Yard-B130 // Set Chiller - CHLR-1CY40-B130 | 1d | 2026-12-07 | 2026-12-07 | A5890, DH.130012001 SS |  |  |  | 13d | 0d |  | 1083 |  | DH1300 |  | MY | Y |

| ID | WBS | Activity | Duration | Start | Finish | Predecessors | Complete | Planned start | Planned finish | Total float | Free float | MSP Activity ID | QTS - AREA | 12 - SUFFOLK - Export_to_Procore | QTS - DASH |
| --- | --- | --- | --- | --- | --- | --- | --- | --- | --- | --- | --- | --- | --- | --- | --- |
|  | 3 | **C130** |  | 2026-09-02 | 2026-12-07 |  |  |  |  |  |  |  |  |  |  |
| DH.130012029 |  | DH1300/Mechanical Yard-C130 // Install CHWP | 1d | 2026-09-02 A | 2026-09-02 A | DH.130012026 SS | 100% | 2026-09-01 | 2026-09-01 |  |  | 1083 | DH1300 | Y | MY |
| DH.130012030 |  | DH1300/Mechanical Yard-C130 // Install Mechanical Piping Mains (Building -to Line) | 1d | 2026-09-16 A | 2026-09-16 A | DH.130012029 | 100% | 2026-09-02 | 2026-09-02 |  |  | 1083 | DH1300 | Y | MY |
| DH.130012006 |  | DH1300/Mechanical Yard-C130 // Set TES tank - TES-1CY40-C130 | 1d | 2026-10-05 A | 2026-10-12 A | A5750 | 100% | 2026-10-05 | 2026-10-05 |  |  | 1083 | DH1300 | Y | MY |
| DH.130012031 |  | DH1300/Mechanical Yard-C130 // Install Mechanical Chiller to Mains | 1d | 2026-10-14 | 2026-10-14 | DH.130012006, DH.130012030 |  |  |  | 63d | 1d | 1083 | DH1300 | Y | MY |
| DH.130012005 |  | DH1300/Mechanical Yard-C130 // Set Chiller - CHLR-1CY40-C130 | 1d | 2026-12-07 | 2026-12-07 | A5890, DH.130012003 SS |  |  |  | 13d | 0d | 1083 | DH1300 | Y | MY |
|  | 4 | **D130** |  | 2026-09-02 | 2026-12-07 |  |  |  |  |  |  |  |  |  |  |
| DH.130012032 |  | DH1300/Mechanical Yard-D130 // Install CHWP | 1d | 2026-09-02 A | 2026-09-02 A | DH.130012029 SS | 100% |  |  |  |  | 1083 | DH1300 | Y | MY |
| DH.130012033 |  | DH1300/Mechanical Yard-D130 // Install Mechanical Piping Mains (Building -to Line) | 1d | 2026-09-17 A | 2026-09-17 A | DH.130012032 | 100% | 2026-09-03 | 2026-09-03 |  |  | 1083 | DH1300 | Y | MY |
| DH.130012008 |  | DH1300/Mechanical Yard-D130 // Set TES tank - TES-1CY40-D130 | 1d | 2026-10-06 A | 2026-10-12 A | A5752 | 100% | 2026-10-06 | 2026-10-06 |  |  | 1083 | DH1300 | Y | MY |
| DH.130012034 |  | DH1300/Mechanical Yard-D130 // Install Mechanical Chiller to Mains | 1d | 2026-10-14 | 2026-10-14 | DH.130012008, DH.130012033 |  |  |  | 63d | 1d | 1083 | DH1300 | Y | MY |
| DH.130012007 |  | DH1300/Mechanical Yard-D130 // Set Chiller - CHLR-1CY40-D130 | 1d | 2026-12-07 | 2026-12-07 | A5890, DH.130012005 SS |  |  |  | 13d | 0d | 1083 | DH1300 | Y | MY |
|  | 5 | **E130** |  | 2026-09-02 | 2026-12-07 |  |  |  |  |  |  |  |  |  |  |
| DH.130012035 |  | DH1300/Mechanical Yard-E130 // Install CHWP | 1d | 2026-09-02 A | 2026-09-02 A | DH.130012032 SS | 100% | 2026-09-03 | 2026-09-03 |  |  | 1083 | DH1300 | Y | MY |
| DH.130012036 |  | DH1300/Mechanical Yard-E130 // Install Mechanical Piping Mains (Building -to Line) | 1d | 2026-09-17 A | 2026-09-17 A | DH.130012035 | 100% | 2026-09-04 | 2026-09-04 |  |  | 1083 | DH1300 | Y | MY |
| DH.130012010 |  | DH1300/Mechanical Yard-E130 // Set TES tank - TES-1CY40-E130 | 1d | 2026-10-07 A | 2026-10-12 A | A5752 | 100% | 2026-10-07 | 2026-10-07 |  |  | 1083 | DH1300 | Y | MY |
| DH.130012037 |  | DH1300/Mechanical Yard-E130 // Install Mechanical Chiller to Mains | 1d | 2026-10-14 | 2026-10-14 | DH.130012010, DH.130012036 |  |  |  | 63d | 1d | 1083 | DH1300 | Y | MY |
| DH.130012009 |  | DH1300/Mechanical Yard-E130 // Set Chiller - CHLR-1CY40-E130 | 1d | 2026-12-07 | 2026-12-07 | A5890, DH.130012007 SS |  |  |  | 13d | 0d | 1083 | DH1300 | Y | MY |
|  | 6 | **F130** |  | 2026-09-09 | 2026-12-07 |  |  |  |  |  |  |  |  |  |  |
| DH.130012038 |  | DH1300/Mechanical Yard-F130 // Install CHWP | 1d | 2026-09-09 A | 2026-09-09 A | DH.130012035 | 100% | 2026-09-04 | 2026-09-04 |  |  | 1083 | DH1300 | Y | MY |
| DH.130012039 |  | DH1300/Mechanical Yard-F130 // Install Mechanical Piping Mains (Building -to Line) | 1d | 2026-09-17 A | 2026-09-17 A | DH.130012038 | 100% | 2026-09-08 | 2026-09-08 |  |  | 1083 | DH1300 | Y | MY |
| DH.130012012 |  | DH1300/Mechanical Yard-F130 // Set TES tank - TES-1CY40-F130 | 1d | 2026-10-08 A | 2026-10-12 A | A5752 | 100% | 2026-10-08 | 2026-10-08 |  |  | 1083 | DH1300 | Y | MY |
| DH.130012040 |  | DH1300/Mechanical Yard-F130 // Install Mechanical Chiller to Mains | 1d | 2026-10-14 | 2026-10-14 | DH.130012012, DH.130012039 |  |  |  | 63d | 1d | 1083 | DH1300 | Y | MY |
| DH.130012011 |  | DH1300/Mechanical Yard-F130 // Set Chiller - CHLR-1CY40-F130 | 1d | 2026-12-07 | 2026-12-07 | A5890, DH.130012009 SS |  |  |  | 13d | 0d | 1083 | DH1300 | Y | MY |

| ID | WBS | Activity | Duration | Start | Finish | Predecessors | Complete | Planned start | Planned finish | Total float | Free float | MSP Activity ID | QTS - AREA | 12 - SUFFOLK - Export_to_Procore | QTS - DASH |
| --- | --- | --- | --- | --- | --- | --- | --- | --- | --- | --- | --- | --- | --- | --- | --- |
|  | 7 | **G130** |  | 2026-09-09 | 2026-12-08 |  |  |  |  |  |  |  |  |  |  |
| DH.130012041 |  | DH1300/Mechanical Yard-G130 // Install CHWP | 1d | 2026-09-09 A | 2026-09-09 A | DH.130012038 SS | 100% | 2026-09-08 | 2026-09-08 |  |  | 1083 | DH1300 | Y | MY |
| DH.130012042 |  | DH1300/Mechanical Yard-G130 // Install Mechanical Piping Mains (Building -to Line) | 1d | 2026-09-18 A | 2026-09-18 A | DH.130012041 | 100% | 2026-09-09 | 2026-09-09 |  |  | 1083 | DH1300 | Y | MY |
| DH.130012014 |  | DH1300/Mechanical Yard-G130 // Set TES tank - TES-1CY40-G130 | 1d | 2026-10-09 A | 2026-10-13 A | A5752 | 100% | 2026-10-09 | 2026-10-09 |  |  | 1083 | DH1300 | Y | MY |
| DH.130012043 |  | DH1300/Mechanical Yard-G130 // Install Mechanical Chiller to Mains | 1d | 2026-10-14 | 2026-10-14 | DH.130012014, DH.130012042 |  |  |  | 63d | 1d | 1083 | DH1300 | Y | MY |
| DH.130012013 |  | DH1300/Mechanical Yard-G130 // Set Chiller - CHLR-1CY40-G130 | 1d | 2026-12-08 | 2026-12-08 | DH.130012011 |  |  |  | 13d | 0d | 1083 | DH1300 | Y | MY |
|  | 8 | **H130** |  | 2026-09-09 | 2026-12-08 |  |  |  |  |  |  |  |  |  |  |
| DH.130012044 |  | DH1300/Mechanical Yard-H130 // Install CHWP | 1d | 2026-09-09 A | 2026-09-09 A | DH.130012041 SS | 100% |  |  |  |  | 1083 | DH1300 | Y | MY |
| DH.130012045 |  | DH1300/Mechanical Yard-H130 // Install Mechanical Piping Mains (Building -to Line) | 1d | 2026-09-18 A | 2026-09-18 A | DH.130012044 | 100% | 2026-09-10 | 2026-09-10 |  |  | 1083 | DH1300 | Y | MY |
| DH.130012016 |  | DH1300/Mechanical Yard-H130 // Set TES tank - TES-1CY40-H130 | 1d | 2026-10-13 A | 2026-10-13 A | A5753 | 100% |  |  |  |  | 1083 | DH1300 | Y | MY |
| DH.130012046 |  | DH1300/Mechanical Yard-H130 // Install Mechanical Chiller to Mains | 1d | 2026-10-14 | 2026-10-14 | DH.130012016, DH.130012045 |  |  |  | 63d | 1d | 1083 | DH1300 | Y | MY |
| DH.130012015 |  | DH1300/Mechanical Yard-H130 // Set Chiller - CHLR-1CY40-H130 | 1d | 2026-12-08 | 2026-12-08 | DH.130012013 SS |  |  |  | 13d | 0d | 1083 | DH1300 | Y | MY |
|  | 9 | **J130** |  | 2026-09-10 | 2026-12-08 |  |  |  |  |  |  |  |  |  |  |
| DH.130012047 |  | DH1300/Mechanical Yard-J130 // Install CHWP | 1d | 2026-09-10 A | 2026-09-10 A | DH.130012044 SS | 100% |  |  |  |  | 1083 | DH1300 | Y | MY |
| DH.130012048 |  | DH1300/Mechanical Yard-J130 // Install Mechanical Piping Mains (Building -to Line) | 1d | 2026-09-18 A | 2026-09-18 A | DH.130012047 | 100% | 2026-09-11 | 2026-09-11 |  |  | 1083 | DH1300 | Y | MY |
| DH.130012018 |  | DH1300/Mechanical Yard-J130 // Set TES tank - TES-1CY40-J130 | 1d | 2026-10-13 A | 2026-10-13 A | A5753 | 100% | 2026-10-14 | 2026-10-14 |  |  | 1083 | DH1300 | Y | MY |
| DH.130012049 |  | DH1300/Mechanical Yard-J130 // Install Mechanical Chiller to Mains | 1d | 2026-10-14 | 2026-10-14 | DH.130012018, DH.130012048 |  |  |  | 63d | 1d | 1083 | DH1300 | Y | MY |
| DH.130012017 |  | DH1300/Mechanical Yard-J130 // Set Chiller - CHLR-1CY40-J130 | 1d | 2026-12-08 | 2026-12-08 | DH.130012015 SS |  |  |  | 13d | 0d | 1083 | DH1300 | Y | MY |
|  | 10 | **K130** |  | 2026-09-10 | 2026-12-08 |  |  |  |  |  |  |  |  |  |  |
| DH.130012050 |  | DH1300/Mechanical Yard-K130 // Install CHWP | 1d | 2026-09-10 A | 2026-09-10 A | DH.130012047 SS | 100% | 2026-09-11 | 2026-09-11 |  |  | 1083 | DH1300 | Y | MY |
| DH.130012051 |  | DH1300/Mechanical Yard-K130 // Install Mechanical Piping Mains (Building -to Line) | 1d | 2026-09-18 A | 2026-09-18 A | DH.130012050 | 100% | 2026-09-14 | 2026-09-14 |  |  | 1083 | DH1300 | Y | MY |
| DH.130012020 |  | DH1300/Mechanical Yard-K130 // Set TES tank - TES-1CY40-K130 | 1d | 2026-10-13 A | 2026-10-13 A | A5753 | 100% | 2026-10-15 | 2026-10-15 |  |  | 1083 | DH1300 | Y | MY |
| DH.130012052 |  | DH1300/Mechanical Yard-K130 // Install Mechanical Chiller to Mains | 1d | 2026-10-14 | 2026-10-14 | DH.130012020, DH.130012051 |  |  |  | 63d | 1d | 1083 | DH1300 | Y | MY |
| DH.130012019 |  | DH1300/Mechanical Yard-K130 // Set Chiller - CHLR-1CY40-K130 | 1d | 2026-12-08 | 2026-12-08 | DH.130012017 SS |  |  |  | 13d | 0d | 1083 | DH1300 | Y | MY |

| ID | WBS | Activity | Duration | Start | Finish | Predecessors | Complete | Planned start | Planned finish | Total float | Free float | MSP Activity ID | QTS - AREA | 12 - SUFFOLK - Export_to_Procore | QTS - DASH | QTS - Subcontractor | QTS - Resp | 05 -SUFFOLK - Building Phase |
| --- | --- | --- | --- | --- | --- | --- | --- | --- | --- | --- | --- | --- | --- | --- | --- | --- | --- | --- |
|  | 11 | **R130** |  | 2026-09-10 | 2026-12-08 |  |  |  |  |  |  |  |  |  |  |  |  |  |
| DH.130012053 |  | DH1300/Mechanical Yard-R130 // Install CHWP | 1d | 2026-09-10 A | 2026-09-10 A | DH.130012050 SS | 100% | 2026-09-14 | 2026-09-14 |  |  | 1083 | DH1300 | Y | MY |  |  |  |
| DH.130012054 |  | DH1300/Mechanical Yard-R130 // Install Mechanical Piping Mains (Building -to Line) | 1d | 2026-09-18 A | 2026-09-18 A | DH.130012053 | 100% | 2026-09-15 | 2026-09-15 |  |  | 1083 | DH1300 | Y | MY |  |  |  |
| DH.130012022 |  | DH1300/Mechanical Yard-R130 // Set TES tank - TES-1CY40-R130 | 1d | 2026-10-14 | 2026-10-14 | A5753 |  |  |  | 62d | 0d | 1083 | DH1300 | Y | MY |  |  |  |
| DH.130012055 |  | DH1300/Mechanical Yard-R130 // Install Mechanical Chiller to Mains | 1d | 2026-10-15 | 2026-10-15 | DH.130012022, DH.130012054 |  |  |  | 62d | 0d | 1083 | DH1300 |  | MY |  |  |  |
| DH.130012021 |  | DH1300/Mechanical Yard-R130 // Set Chiller - CHLR-1CY40-R130 | 1d | 2026-12-08 | 2026-12-08 | DH.130012019 SS |  |  |  | 13d | 0d | 1083 | DH1300 | Y | MY |  |  |  |
|  | 12 | **Test & Flushing** |  | 2026-10-16 | 2026-10-29 |  |  |  |  |  |  |  |  |  |  |  |  |  |
| A5736 |  | DH1300/Mechanical Yard-Test & Flushing // Line Test & Checking | 2d | 2026-10-16 | 2026-10-19 | DH.130012055, DH.130012052, DH.130012049, DH.130012046, DH.130012043, DH.130012040, DH.130012037, DH.130012034, DH.130012031, DH.130012028, DH.130012025 |  |  |  | 62d | 0d |  | DH1300 |  | MY |  |  |  |
| A5738 |  | DH1300/Mechanical Yard-Test & Flushing // Electrical & Controls Testing / Checking | 3d | 2026-10-20 | 2026-10-22 | A5736 |  |  |  | 62d | 0d |  | DH1300 |  | MY | HELIX | TBD |  |
| A5737 |  | DH1300/Mechanical Yard-Test & Flushing // Fill, Flush & Purge | 5d | 2026-10-23 | 2026-10-29 | A5738 |  |  |  | 62d | 71d |  | DH1300 |  | MY |  |  |  |
|  | 2 | **Electrical & Controls** |  | 2026-05-27 | 2027-01-12 |  |  |  |  |  |  |  |  |  |  |  |  |  |
| A5754 |  | DH1300/Electrical & Controls // Excavate Raceways from Building to Chiller Pad | 8d | 2026-05-27 A | 2026-06-05 A | A5748 SS, A5750, A5753, DH.13002 | 100% | 2026-10-06 | 2026-10-16 |  |  | 1095 | DH1300 | Y | MY | HELIX | PRICE |  |
| A5755 |  | DH1300/Electrical & Controls // Install Raceway from Building To Chiller Pad | 8d | 2026-07-22 A | 2026-07-31 A | A5754 SS+4d | 100% | 2026-10-13 | 2026-10-22 |  |  | 1096 | DH1300 | Y | MY | HELIX | PRICE |  |
| A5756 |  | DH1300/Electrical & Controls // Backfill Chiller Raceways from Building to Chiller Pad | 8d | 2026-08-03 A | 2026-08-12 A | A5755, A5754 | 100% | 2026-10-19 | 2026-10-28 |  |  | 1075 | DH1300 |  | MY | HELIX | PRICE |  |
| A5767 |  | DH1300/Electrical & Controls // Mechanical CWP Support Caisson Footings | 10d | 2026-08-13 A | 2026-08-26 A | A5756 | 100% | 2026-11-10 | 2026-11-24 |  |  | 1103 | DH1300 |  | MY | HELIX | PRICE |  |
| A5759 |  | DH1300/Electrical & Controls // Raceway connections to Chiller units | 6d | 2026-12-09 | 2026-12-16 | DH.130012001, DH.130012003, DH.130012005, DH.130012007, DH.130012009, DH.130012011, DH.130012013, DH.130012015, DH.130012017, DH.130012019, DH.130012021 |  |  |  | 13d | 0d | 1099 | DH1300 |  | MY | HELIX | PRICE |  |
| A5761 |  | DH1300/Electrical & Controls // Install Panels and Raceways to CHWP | 10d | 2026-12-09 | 2026-12-22 | A5759 SS |  |  |  | 13d | 0d | 1101 | DH1300 |  | MY | HELIX | PRICE |  |
| A5762 |  | DH1300/Electrical & Controls // Install Controls conduits and wire to Chiller units | 12d | 2026-12-09 | 2026-12-24 | A5761 SS |  |  |  | 13d | 0d | 1103 | DH1300 |  | MY | HELIX | PRICE |  |
| A5765 |  | DH1300/Electrical & Controls // Pull and Terminate Feeders to Chiller units | 6d | 2026-12-17 | 2026-12-24 | A5756 SS, A5759 |  |  |  | 13d | 0d | 1105 | DH1300 |  | MY | HELIX | PRICE |  |
| A5768 |  | DH1300/Electrical & Controls // Chiller units Ready to Energize | 6d | 2026-12-28 | 2027-01-05 | A5756 SS, A5761, A5762, A5765 |  |  |  | 13d | 0d | 1112 | DH1300 |  | MY | HELIX | PRICE |  |
| A5769 |  | DH1300/Electrical & Controls // Fine Grade Install Landscape Fabric & Install Rock | 5d | 2027-01-06 | 2027-01-12 | A5768, A5762, A5767 |  |  |  | 13d | 22d | 1103 | DH1300 |  | MY | HELIX | PRICE |  |
|  | 2 | **Roof - RTUs** |  | 2026-08-07 | 2026-11-03 |  |  |  |  |  |  |  |  |  |  |  |  |  |
|  | 1 | **Column Lines 1.2 thru 2.0** |  | 2026-08-07 | 2026-11-03 |  |  |  |  |  |  |  |  |  |  |  |  |  |
| DH.130012058 |  | DH1300/Roof - RTUs // - RTU-RT- 08 | 1d | 2026-08-07 A | 2026-08-07 A | B12000.12064 | 100% | 2026-08-04 | 2026-08-04 |  |  | 1120 | DH1300 | Y |  |  |  | 2 |
| DH.130012057 |  | DH1300/Roof - RTUs // - RTU-RT- 09 | 1d | 2026-08-11 A | 2026-08-11 A | DH.130012058 SS+2d | 100% | 2026-08-06 | 2026-08-06 |  |  | 1119 | DH1300 | Y |  |  |  | 2 |
| DH.130012064 |  | DH1300/Roof - RTUs // - RTU-RT- 010 | 1d | 2026-08-12 A | 2026-08-12 A | DH.130012057 | 100% | 2026-08-07 | 2026-08-07 |  |  | 1119 | DH1300 | Y |  |  |  | 2 |
| DH.130012059 |  | DH1300/Roof - RTUs // Install Mechanical Piping | 15d | 2026-08-19 A | 2026-09-09 A | DH.130012058, DH.130012064 | 100% | 2026-08-10 | 2026-08-28 |  |  | 1117 | DH1300 | Y |  |  |  | 2 |
| DH.130012056 |  | DH1300/Roof - RTUs // Install heat trace system | 15d | 2026-10-14 | 2026-11-03 | DH.130012059 |  |  |  | 59d | 68d | 1116 | DH1300 |  |  | HELIX | JT | 2 |
| DH.13007841 |  | DH1300/Roof - RTUs // Install Electrical Conduit and Controls Piping | 15d | 2026-10-14 | 2026-11-03 | DH.130012059, DH.130012064 |  |  |  | 46d | 10d | 1118 | DH1300 |  |  | HELIX | JT | 2 |

| ID | WBS | Activity | Type | Duration | Start | Finish | Predecessors | Complete | Remaining | Planned start | Planned finish | Total float | Free float | Constraint | MSP Activity ID | QTS - Subcontractor | QTS - AREA | QTS - Resp | 12 - SUFFOLK - Export_to_Procore | QTS - DASH |
| --- | --- | --- | --- | --- | --- | --- | --- | --- | --- | --- | --- | --- | --- | --- | --- | --- | --- | --- | --- | --- |
|  | 1 | **Interior Build Out** |  |  | 2026-08-04 | 2027-03-19 |  |  |  |  |  |  |  |  |  |  |  |  |  |  |
|  | 9 | **Flex 1000C10** |  |  | 2026-08-05 | 2026-11-17 |  |  |  |  |  |  |  |  |  |  |  |  |  |  |
| DH.1300.1010 |  | DH1300/Flex 1000C10 // MEPF Layout of Overhead Supports |  | 2d | 2026-08-05 A | 2026-08-06 A | SOG.1454, STRUCTURE.7450 | 100% |  | 2026-08-03 | 2026-08-04 |  |  |  | 1153 | HELIX | DH1300 | ALOO | Y | OR |
| DH.1300.1040 |  | DH1300/Flex 1000C10 // Frame Walls including Backing |  | 4d | 2026-08-31 A | 2026-09-03 A | DH.1300.1010 | 100% |  | 2026-08-05 | 2026-08-10 |  |  |  | 1155 |  | DH1300 |  | Y | OR |
| DH.1300.1070 |  | DH1300/Flex 1000C10 // Install Top Down Sheet Rock |  | 5d | 2026-09-08 A | 2026-10-14 | DH.1300.1040 | 100% | 0d | 2026-08-13 | 2026-08-19 | 18d | 0d |  | 1157 |  | DH1300 |  | Y | OR |
| DH.1300.1060 |  | DH1300/Flex 1000C10 // MEPF Install Rough Wall |  | 2d | 2026-09-09 A | 2026-10-08 A | DH.1300.1040 | 100% |  | 2026-08-11 | 2026-08-12 |  |  |  | 1156 | HELIX | DH1300 | AC | Y | OR |
| DH.1300.1020 |  | DH1300/Flex 1000C10 // MEPF Install High Overhead Systems |  | 6d | 2026-10-01 A | 2026-10-21 | DH.1300.1010 |  | 6d | 2026-09-30 | 2026-10-07 | 22d | 0d |  | 1154 | HELIX | DH1300 | ALOO | Y | OR |
| DH.1300.1120 |  | DH1300/Flex 1000C10 // Install MEPF Overhead Ceiling Rough |  | 3d | 2026-10-01 A | 2026-10-21 | DH.1300.1020 FF, DH.1300.1020 SS |  | 3d | 2026-10-08 | 2026-10-13 | 22d | 0d |  | 1163 | HELIX | DH1300 | AC |  | OR |
| DH.1300.1080 |  | DH1300/Flex 1000C10 // Rough Wall Inspspection (Approval to Close up) |  | 1d | 2026-10-01 A | 2026-10-08 A | DH.1300.1060 | 100% |  | 2026-10-01 | 2026-10-01 |  |  |  | 1158 |  | DH1300 |  | Y | OR |
| DH.1300.1050 |  | DH1300/Flex 1000C10 // Install Door Frames |  | 1d | 2026-10-05 A | 2026-10-21 | DH.1300.1100 FF, DH.1300.1040 |  | 1d | 2026-10-16 | 2026-10-16 | 22d | 7d |  | 1161 |  | DH1300 |  |  | OR |
| DH.1300.1100 |  | DH1300/Flex 1000C10 // Tape and Finish Walls |  | 6d | 2026-10-05 A | 2026-10-21 | DH.1300.1090 FF |  | 6d | 2026-10-07 | 2026-10-15 | 15d | 0d |  | 1160 |  | DH1300 |  |  | OR |
| DH.1300.1130 |  | DH1300/Flex 1000C10 // Install Lighting, Fire Alarm & Fire Protection |  | 2d | 2026-10-06 A | 2026-10-21 | DH.1300.1120 FF |  | 2d | 2026-10-14 | 2026-10-15 | 22d | 7d |  | 1164 | HELIX | DH1300 | AC |  | OR |
| DH.1300.1090 |  | DH1300/Flex 1000C10 // Install Balance of Sheetrock |  | 3d | 2026-10-14 | 2026-10-16 | DH.1300.1070, DH.1300.1080 |  |  |  |  | 18d | 3d |  | 1159 |  | DH1300 |  |  | OR |
| DH.1300.1000 |  | DH1300/Flex 1000C10 // Seal Concrete |  | 5d | 2026-10-22 | 2026-10-28 | DH.1300.1100 |  |  |  |  | 15d | 0d |  | 66 |  | DH1300 |  |  | OR |
| DH.1300.1110 |  | DH1300/Flex 1000C10 // Prime and First Coat of Paint |  | 2d | 2026-10-29 | 2026-10-30 | DH.1300.1100, DH.1300.1000 |  |  |  |  | 15d | 0d |  | 1162 |  | DH1300 |  |  | OR |
| DH.1300.1140 |  | DH1300/Flex 1000C10 // Wall Touch up Final Coat of Paint |  | 3d | 2026-11-02 | 2026-11-04 | DH.1300.1050, DH.1300.1130, DH.1300.1110 |  |  |  |  | 15d | 0d |  | 1165 |  | DH1300 |  |  | OR |
| DH.1300.1150 |  | DH1300/Flex 1000C10 // Install Wall Base, Trim, and Devices |  | 3d | 2026-11-05 | 2026-11-09 | DH.1300.1140 |  |  |  |  | 15d | 0d |  | 1166 |  | DH1300 |  |  | OR |
| DH.1300.3067 |  | DH1300/Flex 1000C10 // Ready to Receive Equipment | milestone | 0d | 2026-11-09 | 2026-11-09 | DH.1300.1150 FF |  |  |  |  | 15d | 0d |  | 1166 | HELIX | DH1300 | TBD |  | OR |
| DH.1300.1160 |  | DH1300/Flex 1000C10 // Suffolk Pre Punch |  | 5d | 2026-11-10 | 2026-11-17 | DH.1300.3067 |  |  |  |  | 50d | 59d |  | 1167 |  | DH1300 |  |  | OR |
|  | 7 | **Electrical Room #5301** |  |  | 2026-08-04 | 2026-12-15 |  |  |  |  |  |  |  |  |  |  |  |  |  |  |
| B120001.3046 |  | DH1300/Electrical Room #5301 // Seal Concrete |  | 2d | 2026-08-04 A | 2026-08-05 A | SOG.1454 | 100% |  | 2026-08-03 | 2026-08-04 |  |  |  | 1169 |  | DH1300 |  | Y | ER |
| B120001.3036 |  | DH1300/Electrical Room #5301 // MEPF Layout of Overhead Supports |  | 2d | 2026-08-05 A | 2026-08-06 A | B120001.3046 | 100% |  |  |  |  |  |  | 1170 | HELIX | DH1300 | ALOO | Y | ER |
| B120001.3038 |  | DH1300/Electrical Room #5301 // Frame Walls including Backing |  | 4d | 2026-09-14 A | 2026-09-25 A | B120001.3036 | 100% |  | 2026-08-07 | 2026-08-12 |  |  |  | 1172 |  | DH1300 |  | Y | ER |
| F.1000A.1435 |  | DH1300/Electrical Room #5301 // BMS & EPMS Rough-In |  | 2d | 2026-09-24 A | 2026-09-25 A | B120001.3038 | 100% |  | 2026-10-08 | 2026-10-09 |  |  |  |  |  | DH1300 |  |  |  |
| B120001.3041 |  | DH1300/Electrical Room #5301 // Install Top Down Sheet Rock |  | 5d | 2026-09-28 A | 2026-09-29 A | B120001.3038 SS+2d | 100% |  | 2026-08-11 | 2026-08-17 |  |  |  | 1175 |  | DH1300 |  | Y | ER |
| B120001.3040 |  | DH1300/Electrical Room #5301 // MEPF Install Rough Wall |  | 2d | 2026-09-29 A | 2026-10-02 A | B120001.3038 | 100% |  | 2026-08-13 | 2026-08-14 |  |  |  | 1174 | HELIX | DH1300 | AC | Y | ER |
| B120001.3042 |  | DH1300/Electrical Room #5301 // Rough Wall Inspspection (Approval to Close up) |  | 1d | 2026-09-30 A | 2026-09-30 A | B120001.3040 | 100% |  | 2026-10-02 | 2026-10-02 |  |  |  | 1176 |  | DH1300 |  | Y | ER |
| B120001.3044 |  | DH1300/Electrical Room #5301 // Install Balance of Sheetrock |  | 3d | 2026-09-30 A | 2026-10-08 A | B120001.3041 FF, B120001.3042 | 100% |  | 2026-10-05 | 2026-10-07 |  |  |  | 1177 |  | DH1300 |  | Y | ER |
| B120001.3037 |  | DH1300/Electrical Room #5301 // MEPF Install High Overhead Systems |  | 6d | 2026-10-01 A | 2026-10-21 | B120001.3036 |  | 6d | 2026-09-30 | 2026-10-07 | 12d | 0d |  | 1171 | HELIX | DH1300 | ALOO |  | ER |
| B120001.3045 |  | DH1300/Electrical Room #5301 // Tape and Finish Walls |  | 6d | 2026-10-05 A | 2026-10-09 A | B120001.3044 FF | 100% |  | 2026-10-08 | 2026-10-16 |  |  |  | 1178 |  | DH1300 |  |  | ER |
| B120001.3047 |  | DH1300/Electrical Room #5301 // Prime and First Coat of Paint |  | 2d | 2026-10-12 A | 2026-10-15 | B120001.3045 |  | 2d | 2026-10-19 | 2026-10-20 | 4d | 0d |  | 1180 |  | DH1300 |  |  | ER |
| B120001.3143 |  | DH1300/Electrical Room #5301 // Install Overhead Cable Ladder / 36" Cable Tray - TFO |  | 5d | 2026-10-14 | 2026-10-20 | A5669, B120001.3036 |  |  |  |  | -3d | 0d |  | 1181 |  | DH1300 |  | Y | ER |
| B120001.3108 |  | DH1300/Electrical Room #5301 // Room Ready to Receive Equipment | milestone | 0d | 2026-10-15 | 2026-10-15 | B120001.3047 FF |  |  |  |  | 4d | 3d |  | 1180 | HELIX | DH1300 | TBD |  | ER |
| DH.1300.1220 |  | DH1300/Electrical Room #5301 // Pull Cable Tray Feeders (CRAHU/CDU) |  | 10d | 2026-10-21 | 2026-11-03 | B120001.3143 |  |  |  |  | -3d | 6d |  | 1191 | HELIX | DH1300 | OO |  | ER |
| DH.1300.1250 |  | DH1300/Electrical Room #5301 // Set CRAH-ER5301- 01 |  | 1d | 2026-10-21 | 2026-10-21 | DH.1300.3102 |  |  |  |  | 2d | 0d |  | 1194 |  | DH1300 |  |  | ER |
| DH.1300.3031 |  | DH1300/Electrical Room #5301 // Set CRAH-ER5301- 02 |  | 1d | 2026-10-21 | 2026-10-21 | DH.1300.3102, DH.1300.1250 SS |  |  |  |  | 2d | 0d |  | 1194 |  | DH1300 |  |  | ER |
| DH.1300.3032 |  | DH1300/Electrical Room #5301 // Set CRAH-ER5301- 03 |  | 1d | 2026-10-21 | 2026-10-21 | DH.1300.3102, DH.1300.3031 SS |  |  |  |  | 2d | 0d |  | 1194 |  | DH1300 |  |  | ER |
| DH.1300.3033 |  | DH1300/Electrical Room #5301 // Set CRAH-ER5301- 04 |  | 1d | 2026-10-21 | 2026-10-21 | DH.1300.3102, DH.1300.3032 SS |  |  |  |  | 2d | 0d |  | 1194 |  | DH1300 |  |  | ER |
| DH.1300.3034 |  | DH1300/Electrical Room #5301 // Set CRAH-ER5301- 05 |  | 1d | 2026-10-21 | 2026-10-21 | DH.1300.3102, DH.1300.3033 SS |  |  |  |  | 2d | 0d |  | 1194 |  | DH1300 |  |  | ER |
| DH.1300.3102 |  | DH1300/Electrical Room #5301 // DH1300 - OFCI CRAH-125 Delivery Date (10/21/2026) First Shipment |  | 0d | 2026-10-21 | 2026-10-21 | B120001.3108 |  |  |  |  | 2d | 0d | finish on or after 2026-10-21 |  |  |  |  |  |  |
| B120001.3043 |  | DH1300/Electrical Room #5301 // Install Overhead Buss duct |  | 2d | 2026-10-22 | 2026-10-23 | B120001.3041, B120001.3037 |  |  |  |  | 21d | 3d |  | 1188 | HELIX | DH1300 | AL |  | ER |
| B120001.3144 |  | DH1300/Electrical Room #5301 // Install Overhead HAC - TFO |  | 5d | 2026-10-22 | 2026-10-28 | B120001.3037, B120001.3143 FF |  |  |  |  | 18d | 0d |  | 1181 |  | DH1300 |  | Y | ER |
| DH.1300.1180 |  | DH1300/Electrical Room #5301 // Install Cable Tray |  | 3d | 2026-10-22 | 2026-10-26 | B120001.3037 |  |  |  |  | 20d | 3d |  | 1182 | HELIX | DH1300 | OO |  | ER |
| DH.1300.3035 |  | DH1300/Electrical Room #5301 // Set CRAH-ER5301- 06 |  | 1d | 2026-10-22 | 2026-10-22 | DH.1300.3102, DH.1300.3034 |  |  |  |  | 2d | 0d |  | 1194 |  | DH1300 |  |  | ER |
| F.1000A.1216 |  | DH1300/Electrical Room #5301 // Rough-In Security |  | 2d | 2026-10-22 | 2026-10-23 | B120001.3037 |  |  |  |  | 12d | 0d |  | 1156 | HELIX | DH1300 | AC |  | ER |
| DH.1300.1260 |  | DH1300/Electrical Room #5301 // Mechanical Connections to CRAHU |  | 5d | 2026-10-23 | 2026-10-29 | DH.1300.3035 |  |  |  |  | 2d | 0d |  | 1195 |  | DH1300 |  |  | ER |
| F.1000A.1217 |  | DH1300/Electrical Room #5301 // Pull & Test Security Cable |  | 3d | 2026-10-26 | 2026-10-28 | F.1000A.1216 |  |  |  |  | 12d | 0d |  | 1156 |  | DH1300 |  |  | ER |
| DH.1300.1320 |  | DH1300/Electrical Room #5301 // Buss Duct Tie In to Elect Gear |  | 3d | 2026-10-29 | 2026-11-02 | B120001.3144, B120001.3043 |  |  |  |  | 18d | 27d |  | 1200 | HELIX | DH1300 | TBD |  | ER |
| F.1000A.1218 |  | DH1300/Electrical Room #5301 // Install Security Devices |  | 2d | 2026-10-29 | 2026-10-30 | F.1000A.1217 |  |  |  |  | 12d | 0d |  | 1156 |  | DH1300 |  |  | ER |
| DH.1300.1270 |  | DH1300/Electrical Room #5301 // Install Condensate lines from CRAHU's |  | 2d | 2026-10-30 | 2026-11-02 | DH.1300.1260 |  |  |  |  | 2d | 0d |  | 1196 |  | DH1300 |  |  | ER |
| DH.1300.1280 |  | DH1300/Electrical Room #5301 // Install Elec Feeders to CRAHU's |  | 3d | 2026-10-30 | 2026-11-03 | DH.1300.1180, DH.1300.1260 |  |  |  |  | 17d | 16d |  | 1197 | HELIX | DH1300 | OO |  | ER |
| DH.1300.3069 |  | DH1300/Electrical Room #5301 // DH1300 - OFCI Skid Ship Date (11/2/2026) First Shipment | milestone | 0d | 2026-11-02 | 2026-11-02 | B120001.3108 FF |  |  |  |  | -7d | 0d | finish on or after 2026-11-02 | 1191 |  | DH1300 |  |  | ER |
| ER.5101.3055 |  | DH1300/Electrical Room #5301 // Set Skid - SKID-A130 |  | 1d | 2026-11-02 | 2026-11-02 | DH.1300.3069, B120001.3108 |  |  |  |  | -7d | 0d |  | 1107 | HELIX | DH1300 | TBD |  | ER |
| ER.5101.3056 |  | DH1300/Electrical Room #5301 // Set Skid - SKID-B130 |  | 1d | 2026-11-02 | 2026-11-02 | DH.1300.3069, ER.5101.3055 SS |  |  |  |  | -7d | 0d |  | 1107 | HELIX | DH1300 | TBD |  | ER |
| ER.5101.3057 |  | DH1300/Electrical Room #5301 // Set Skid - SKID-C130 |  | 1d | 2026-11-02 | 2026-11-02 | DH.1300.3069, ER.5101.3056 SS |  |  |  |  | -7d | 2d |  | 1107 | HELIX | DH1300 | TBD |  | ER |
| F.1000A.1219 |  | DH1300/Electrical Room #5301 // Mount & Terminate Security Devices |  | 5d | 2026-11-02 | 2026-11-06 | B120001.3047, F.1000A.1218 |  |  |  |  | 12d | 0d |  | 1156 |  | DH1300 |  |  | ER |
| B120001.3039 |  | DH1300/Electrical Room #5301 // Install Door Frames |  | 1d | 2026-11-03 | 2026-11-03 | DH.1300.1270, B120001.3038 FF |  |  |  |  | 2d | 3d |  | 1179 |  | DH1300 |  |  | ER |
| DH.1300.1210 |  | DH1300/Electrical Room #5301 // Pull Cable Buss Feeders |  | 6d | 2026-11-03 | 2026-11-10 | DH.1300.1200 FF |  |  |  |  | -9d | 0d |  | 1190 | HELIX | DH1300 | TBD |  | ER |
| DH.1300.3082 |  | DH1300/Electrical Room #5301 // DH1300 - OFCI Skid Delivery Date (02/18/2027) 2nd Shipment |  | 0d | 2026-11-05 | 2026-11-05 | B120001.3108 FF |  |  |  |  | -9d | 0d | finish on or after 2026-11-05 |  |  |  |  |  |  |
| ER.5101.3058 |  | DH1300/Electrical Room #5301 // Set Skid - SKID-D130 |  | 1d | 2026-11-05 | 2026-11-05 | DH.1300.3082, ER.5101.3057 |  |  |  |  | -9d | 0d |  | 1107 | HELIX | DH1300 | TBD |  | ER |
| ER.5101.3059 |  | DH1300/Electrical Room #5301 // Set Skid - SKID-E130 |  | 1d | 2026-11-05 | 2026-11-05 | DH.1300.3082, ER.5101.3058 SS |  |  |  |  | -9d | 0d |  | 1107 | HELIX | DH1300 | TBD |  | ER |
| DH.1300.1200 |  | DH1300/Electrical Room #5301 // Install Cable Buss From Exterior |  | 3d | 2026-11-06 | 2026-11-10 | ER.5101.3059 |  |  |  |  | -9d | 0d |  | 1189 | HELIX | DH1300 | TBD |  | ER |
| F.1000A.1220 |  | DH1300/Electrical Room #5301 // Test Security Devices |  | 2d | 2026-11-09 | 2026-11-10 | B120001.3039, F.1000A.1219, F.1000A.1435 FF |  |  |  |  | 12d | 0d |  | 1156 |  | DH1300 |  |  | ER |
| DH.1300.1230 |  | DH1300/Electrical Room #5301 // Terminate Cable Buss Feeders |  | 3d | 2026-11-12 | 2026-11-16 | DH.1300.1210 |  |  |  |  | 9d | 18d |  | 1192 | HELIX | DH1300 | TBD |  | ER |
| ER.5101.3097 |  | DH1300/Electrical Room #5301 // Set PDU - PDU-R130-01 |  | 1d | 2026-11-12 | 2026-11-12 | DH.1300.3034, DH.1300.1210 |  |  |  |  | -9d | 0d |  | 1107 | HELIX | DH1300 | TBD |  | ER |
| ER.5101.3103 |  | DH1300/Electrical Room #5301 // Set UPS - UPS-R130 |  | 1d | 2026-11-12 | 2026-11-12 | ER.5101.3097 SS |  |  |  |  | -9d | 0d |  | 1107 | HELIX | DH1300 | TBD |  | ER |
| DH.1300.1240 |  | DH1300/Electrical Room #5301 // Land and Terminate Cabel Tray Feeders In Gear |  | 10d | 2026-11-13 | 2026-11-27 | ER.5101.3103, DH.1300.1220 |  |  |  |  | -9d | 0d |  | 1193 | HELIX | DH1300 | TBD |  | ER |
| DH.1300.1290 |  | DH1300/Electrical Room #5301 // Pull Misc Feeder and Branch Circuits |  | 10d | 2026-11-20 | 2026-12-04 | B120001.3039, DH.1300.1240 SS+5d |  |  |  |  | -9d | 0d |  | 1198 | HELIX | DH1300 | AL |  | ER |
| DH.1300.1300 |  | DH1300/Electrical Room #5301 // Land and Terminate Misc Feeder and Branch Circuits |  | 10d | 2026-11-30 | 2026-12-11 | DH.1300.1290 SS+5d |  |  |  |  | -9d | 0d |  | 1184 | HELIX | DH1300 | TBD |  | ER |
| DH.1300.1330 |  | DH1300/Electrical Room #5301 // Mechanical Equipment Pre-Start up |  | 2d | 2026-11-30 | 2026-12-01 | DH.1300.1240, DH.1300.1260, DH.1300.1270, DH.1300.1280 |  |  |  |  | 1d | 10d |  | 1201 |  | DH1300 |  |  | ER |

| ID | WBS | Activity | Type | Duration | Start | Finish | Predecessors | Complete | Remaining | Planned start | Planned finish | Total float | Free float | Constraint | MSP Activity ID | QTS - Subcontractor | QTS - AREA | QTS - Resp | QTS - DASH | 12 - SUFFOLK - Export_to_Procore |
| --- | --- | --- | --- | --- | --- | --- | --- | --- | --- | --- | --- | --- | --- | --- | --- | --- | --- | --- | --- | --- |
| DH.1300.1310 |  | DH1300/Electrical Room #5301 // Final FOD Check of all Panels |  | 2d | 2026-12-14 | 2026-12-15 | F.1000A.1220, DH.1300.1300, DH.1300.1320, DH.1300.1240, DH.1300.1230 |  |  |  |  | -9d | 0d |  | 1199 | HELIX | DH1300 | QC | ER |  |
|  | 2 | **Electrcal Room #5304** |  |  | 2026-08-06 | 2026-12-14 |  |  |  |  |  |  |  |  |  |  |  |  |  |  |
| B120001.3081 |  | DH1300/Electrical Room #5304 // Seal Concrete |  | 2d | 2026-08-06 A | 2026-08-07 A | B120001.3046 | 100% |  | 2026-08-05 | 2026-08-06 |  |  |  | 1169 |  | DH1300 |  | ER | Y |
| B120001.3072 |  | DH1300/Electrical Room #5304 // MEPF Layout of Overhead Supports |  | 2d | 2026-08-07 A | 2026-08-10 A | B120001.3081 | 100% |  |  |  |  |  |  | 1170 | HELIX | DH1300 | ALOO | ER | Y |
| B120001.3073 |  | DH1300/Electrical Room #5304 // Frame Walls including Backing |  | 4d | 2026-09-17 A | 2026-09-25 A | B120001.3072 | 100% |  | 2026-08-11 | 2026-08-14 |  |  |  | 1172 |  | DH1300 |  | ER | Y |
| F.1000A.1445 |  | DH1300/Electrical Room #5304 // BMS & EPMS Rough-In |  | 2d | 2026-09-24 A | 2026-09-25 A | B120001.3073 | 100% |  | 2026-10-15 | 2026-10-16 |  |  |  |  |  | DH1300 |  |  |  |
| B120001.3083 |  | DH1300/Electrical Room #5304 // Install Door Frames |  | 1d | 2026-09-25 A | 2026-09-25 A | B120001.3073 FF | 100% |  | 2026-11-27 | 2026-11-27 |  |  |  | 1179 |  | DH1300 |  | ER |  |
| B120001.3075 |  | DH1300/Electrical Room #5304 // MEPF Install Rough Wall |  | 2d | 2026-09-28 A | 2026-09-29 A | B120001.3073 | 100% |  | 2026-08-17 | 2026-08-18 |  |  |  | 1174 | HELIX | DH1300 | AC | ER | Y |
| B120001.3076 |  | DH1300/Electrical Room #5304 // Install Top Down Sheet Rock |  | 5d | 2026-09-28 A | 2026-10-08 A | B120001.3073 SS+2d | 100% |  | 2026-08-13 | 2026-08-19 |  |  |  | 1175 |  | DH1300 |  | ER | Y |
| B120001.3077 |  | DH1300/Electrical Room #5304 // Rough Wall Inspection (Approval to Close up) |  | 1d | 2026-09-30 A | 2026-09-30 A | B120001.3075 | 100% |  |  |  |  |  |  | 1176 |  | DH1300 |  | ER | Y |
| B120001.3079 |  | DH1300/Electrical Room #5304 // Install Balance of Sheetrock |  | 3d | 2026-09-30 A | 2026-10-14 | B120001.3076 FF, B120001.3077 | 100% | 0d | 2026-10-02 | 2026-10-06 | 8d | 1d |  | 1177 |  | DH1300 |  | ER |  |
| B120001.3080 |  | DH1300/Electrical Room #5304 // Tape and Finish Walls |  | 6d | 2026-09-30 A | 2026-10-14 | B120001.3079 FF | 83% | 1d | 2026-10-07 | 2026-10-15 | 7d | 0d |  | 1178 |  | DH1300 |  | ER |  |
| B120001.3074 |  | DH1300/Electrical Room #5304 // MEPF Install High Overhead Systems |  | 6d | 2026-10-01 A | 2026-10-21 | B120001.3072 |  | 6d | 2026-09-30 | 2026-10-07 | 2d | 0d |  | 1171 | HELIX | DH1300 | ALOO | ER | Y |
| B120001.3082 |  | DH1300/Electrical Room #5304 // Prime and First Coat of Paint |  | 2d | 2026-10-13 A | 2026-10-16 | B120001.3080 FF+2d | 50% | 1d | 2026-10-16 | 2026-10-19 | 7d | 0d |  | 1180 |  | DH1300 |  | ER |  |
| B120001.3145 |  | DH1300/Electrical Room #5304 // Install Overhead Cable Ladder / 36" Cable Tray - TFO |  | 5d | 2026-10-14 | 2026-10-20 | B120001.3072 |  |  |  |  | 8d | 0d |  | 1181 |  | DH1300 |  | ER | Y |
| B120001.3109 |  | DH1300/Electrical Room #5304 // Room Ready to Receive Equipment | milestone | 0d | 2026-10-16 | 2026-10-16 | B120001.3082 FF |  |  |  |  | 7d | 15d |  | 1180 | HELIX | DH1300 | TBD | ER |  |
| B120001.3146 |  | DH1300/Electrical Room #5304 // Install Overhead HAC - TFO |  | 5d | 2026-10-21 | 2026-10-27 | B120001.3145 |  |  |  |  | 8d | 0d |  | 1181 |  | DH1300 |  | ER | Y |
| B120001.3078 |  | DH1300/Electrical Room #5304 // Install Overhead Buss duct |  | 2d | 2026-10-22 | 2026-10-23 | B120001.3076, B120001.3074 |  |  |  |  | 3d | 11d |  | 1188 | HELIX | DH1300 | AL | ER |  |
| DH.1300.3042 |  | DH1300/Electrical Room #5304 // Install Cable Tray |  | 3d | 2026-10-22 | 2026-10-26 | B120001.3074 |  |  |  |  | 2d | 4d |  | 1182 | HELIX | DH1300 | OO | ER | Y |
| DH.1300.3048 |  | DH1300/Electrical Room #5304 // Set CRAH-ER5304- 01 |  | 1d | 2026-10-22 | 2026-10-22 | DH.1300.3102 FS+1d, B120001.3082 |  |  |  |  | 16d | 0d |  | 1194 |  | DH1300 |  | ER |  |
| DH.1300.3049 |  | DH1300/Electrical Room #5304 // Set CRAH-ER5304- 02 |  | 1d | 2026-10-22 | 2026-10-22 | DH.1300.3102 FS+1d, DH.1300.3048 SS |  |  |  |  | 16d | 0d |  | 1194 |  | DH1300 |  | ER |  |
| DH.1300.3050 |  | DH1300/Electrical Room #5304 // Set CRAH-ER5304- 03 |  | 1d | 2026-10-22 | 2026-10-22 | DH.1300.3102 FS+1d, DH.1300.3049 SS |  |  |  |  | 16d | 0d |  | 1194 |  | DH1300 |  | ER |  |
| DH.1300.3051 |  | DH1300/Electrical Room #5304 // Set CRAH-ER5304- 04 |  | 1d | 2026-10-23 | 2026-10-23 | DH.1300.3102 FS+1d, DH.1300.3050 |  |  |  |  | 16d | 0d |  | 1194 |  | DH1300 |  | ER |  |
| DH.1300.3052 |  | DH1300/Electrical Room #5304 // Set CRAH-ER5304- 05 |  | 1d | 2026-10-23 | 2026-10-23 | DH.1300.3102 FS+1d, DH.1300.3051 SS |  |  |  |  | 16d | 0d |  | 1194 |  | DH1300 |  | ER |  |
| DH.1300.3053 |  | DH1300/Electrical Room #5304 // Set CRAH-ER5304- 06 |  | 1d | 2026-10-23 | 2026-10-23 | DH.1300.3102 FS+1d, DH.1300.3052 SS |  |  |  |  | 16d | 0d |  | 1194 |  | DH1300 |  | ER |  |
| DH.1300.3055 |  | DH1300/Electrical Room #5304 // Mechanical Connections to CRAHU |  | 5d | 2026-10-26 | 2026-10-30 | DH.1300.3053 |  |  |  |  | 16d | 0d |  | 1195 |  | DH1300 |  | ER |  |
| F.1000A.1221 |  | DH1300/Electrical Room #5304 // Rough-In Security |  | 2d | 2026-10-28 | 2026-10-29 | B120001.3146, B120001.3072 |  |  |  |  | 8d | 0d |  | 1156 | HELIX | DH1300 | AC | ER |  |
| F.1000A.1222 |  | DH1300/Electrical Room #5304 // Pull & Test Security Cable |  | 3d | 2026-10-30 | 2026-11-03 | F.1000A.1221 |  |  |  |  | 8d | 0d |  | 1156 |  | DH1300 |  | ER |  |
| DH.1300.3057 |  | DH1300/Electrical Room #5304 // Install Condensate lines from CRAHU's |  | 3d | 2026-11-02 | 2026-11-04 | DH.1300.3055 |  |  |  |  | 16d | 13d |  | 1196 |  | DH1300 |  | ER |  |
| DH.1300.3058 |  | DH1300/Electrical Room #5304 // Install Elec Feeders to CRAHU's |  | 3d | 2026-11-02 | 2026-11-04 | DH.1300.3042, DH.1300.3055 |  |  |  |  | 16d | 13d |  | 1197 | HELIX | DH1300 | OO | ER |  |
| F.1000A.1223 |  | DH1300/Electrical Room #5304 // Install Security Devices |  | 2d | 2026-11-04 | 2026-11-05 | F.1000A.1222 |  |  |  |  | 8d | 0d |  | 1156 |  | DH1300 |  | ER |  |
| ER.5101.3060 |  | DH1300/Electrical Room #5304 // Set Skid - SKID-F130 |  | 1d | 2026-11-05 | 2026-11-05 | DH.1300.3082, ER.5101.3059 SS |  |  |  |  | -7d | 0d |  | 1107 | HELIX | DH1300 | TBD | ER |  |
| ER.5101.3061 |  | DH1300/Electrical Room #5304 // Set Skid - SKID-G130 |  | 1d | 2026-11-05 | 2026-11-05 | DH.1300.3082, ER.5101.3060 SS |  |  |  |  | -7d | 1d |  | 1107 | HELIX | DH1300 | TBD | ER |  |
| F.1000A.1224 |  | DH1300/Electrical Room #5304 // Mount & Terminate Security Devices |  | 5d | 2026-11-06 | 2026-11-13 | B120001.3082, F.1000A.1223 |  |  |  |  | 8d | 0d |  | 1156 |  | DH1300 |  | ER |  |
| DH.1300.3071 |  | DH1300/Electrical Room #5304 // DH1300 - OFCI Skid Ship Date (11/7/2026) 2ND Shipment | milestone | 0d | 2026-11-09 | 2026-11-09 | B120001.3109 FF |  |  |  |  | -8d | 0d | finish on or after 2026-11-07 | 1191 |  | DH1300 |  | ER |  |
| ER.5101.3062 |  | DH1300/Electrical Room #5304 // Set Skid - SKID-H130 |  | 1d | 2026-11-09 | 2026-11-09 | DH.1300.3071, ER.5101.3061 |  |  |  |  | -8d | 0d |  | 1107 | HELIX | DH1300 | TBD | ER |  |
| ER.5101.3063 |  | DH1300/Electrical Room #5304 // Set Skid - SKID-J130 |  | 1d | 2026-11-09 | 2026-11-09 | DH.1300.3071, ER.5101.3062 SS |  |  |  |  | -8d | 0d |  | 1107 | HELIX | DH1300 | TBD | ER |  |
| ER.5101.3064 |  | DH1300/Electrical Room #5304 // Set Skid - SKID-K130 |  | 1d | 2026-11-09 | 2026-11-09 | DH.1300.3071, ER.5101.3063 SS |  |  |  |  | -8d | 0d |  | 1107 | HELIX | DH1300 | TBD | ER |  |
| DH.1300.3044 |  | DH1300/Electrical Room #5304 // Install Cable Buss From Exterior |  | 3d | 2026-11-10 | 2026-11-13 | DH.1300.3042, ER.5101.3064 |  |  |  |  | -8d | 0d |  | 1189 | HELIX | DH1300 | TBD | ER |  |
| DH.1300.3045 |  | DH1300/Electrical Room #5304 // Buss Duct Tie In to Elect Gear |  | 3d | 2026-11-10 | 2026-11-13 | B120001.3078, DH.1300.3042, ER.5101.3064 |  |  |  |  | -8d | 0d |  | 1200 | HELIX | DH1300 | TBD | ER |  |
| DH.1300.3047 |  | DH1300/Electrical Room #5304 // Pull Cable Tray Feeders (CRAHU/CDU) |  | 10d | 2026-11-10 | 2026-11-24 | DH.1300.3042, ER.5101.3064 |  |  |  |  | -5d | 0d |  | 1191 | HELIX | DH1300 | OO | ER |  |
| DH.1300.3054 |  | DH1300/Electrical Room #5304 // Land and Terminate Cabel Tray Feeders In Gear |  | 10d | 2026-11-10 | 2026-11-24 | DH.1300.3047 FF |  |  |  |  | -5d | 0d |  | 1193 | HELIX | DH1300 | TBD | ER |  |
| DH.1300.3046 |  | DH1300/Electrical Room #5304 // Pull Cable Buss Feeders |  | 6d | 2026-11-16 | 2026-11-23 | DH.1300.3045, DH.1300.3044 |  |  |  |  | -8d | 0d |  | 1190 | HELIX | DH1300 | TBD | ER |  |
| F.1000A.1225 |  | DH1300/Electrical Room #5304 // Test Security Devices |  | 2d | 2026-11-16 | 2026-11-17 | B120001.3083, F.1000A.1224, F.1000A.1445 FF |  |  |  |  | 8d | 16d |  | 1156 |  | DH1300 |  | ER |  |
| DH.1300.3060 |  | DH1300/Electrical Room #5304 // Pull Misc Feeder and Branch Circuits |  | 10d | 2026-11-23 | 2026-12-07 | DH.1300.3046 SS+5d, B120001.3083, DH.1300.3054 SS+5d |  |  |  |  | -8d | 0d |  | 1198 | HELIX | DH1300 | AL | ER |  |
| DH.1300.3056 |  | DH1300/Electrical Room #5304 // Terminate Cable Buss Feeders |  | 3d | 2026-11-24 | 2026-11-27 | ER.5101.3064, DH.1300.3046 |  |  |  |  | 1d | 9d |  | 1192 | HELIX | DH1300 | TBD | ER |  |
| DH.1300.3059 |  | DH1300/Electrical Room #5304 // Mechanical Equipment Pre-Start up |  | 2d | 2026-11-25 | 2026-11-27 | DH.1300.3054, DH.1300.3055, DH.1300.3057, DH.1300.3058 |  |  |  |  | 3d | 12d |  | 1201 |  | DH1300 |  | ER |  |
| DH.1300.3061 |  | DH1300/Electrical Room #5304 // Land and Terminate Misc Feeder and Branch Circuits |  | 10d | 2026-11-27 | 2026-12-10 | DH.1300.3060 SS+3d |  |  |  |  | -8d | 0d |  | 1184 | HELIX | DH1300 | TBD | ER |  |
| DH.1300.3062 |  | DH1300/Electrical Room #5304 // Final FOD Check of all Panels |  | 2d | 2026-12-11 | 2026-12-14 | F.1000A.1225, DH.1300.3061, DH.1300.3045, DH.1300.3054, DH.1300.3056 |  |  |  |  | -8d | 1d |  | 1199 | HELIX | DH1300 | QC | ER |  |

| ID | WBS | Activity | Type | Duration | Start | Finish | Predecessors | Complete | Remaining | Planned start | Planned finish | Total float | Free float | MSP Activity ID | QTS - Subcontractor | QTS - AREA | QTS - Resp | 05 -SUFFOLK - Building Phase | 12 - SUFFOLK - Export_to_Procore | QTS - DASH |
| --- | --- | --- | --- | --- | --- | --- | --- | --- | --- | --- | --- | --- | --- | --- | --- | --- | --- | --- | --- | --- |
|  | 3 | **Data Hall 1300** |  |  | 2026-08-07 | 2026-12-22 |  |  |  |  |  |  |  |  |  |  |  |  |  |  |
| DH.13006270 |  | DH 1300 // MEPF overhead layout |  | 3d | 2026-08-07 A | 2026-08-11 A | B120001.3036 | 100% |  |  |  |  |  | 1380 | HELIX | DH1300 | ACOO | 2 | Y | DH |
| DH.13006280 |  | DH 1300 // Layout walls |  | 3d | 2026-08-10 A | 2026-08-12 A | DH.13006270 SS+1d | 100% |  |  |  |  |  | 1381 |  | DH1300 |  | 2 | Y | DH |
| DH.13006300 |  | DH 1300 // Frame walls |  | 10d | 2026-09-17 A | 2026-09-29 A | DH.13006280 | 100% |  | 2026-08-13 | 2026-08-26 |  |  | 1383 |  | DH1300 |  | 2 | Y | DH |
| F.1000A.1455 |  | DH 1300 // BMS & EPMS Rough-In |  | 2d | 2026-09-24 A | 2026-09-25 A | DH.13006300 | 100% |  | 2026-10-29 | 2026-10-30 |  |  |  |  | DH1300 |  |  |  |  |
| DH.130012067 |  | DH 1300 // Install 1-Side Sheet Rock (DH-Side) |  | 3d | 2026-09-30 A | 2026-10-02 A | DH.13006300 | 100% |  | 2026-10-09 | 2026-10-14 |  |  | 1385 |  | DH1300 |  | 2 |  | DH |
| DH.13006290 |  | DH 1300 // MEPF high overhead install |  | 10d | 2026-10-01 A | 2026-10-27 | DH.13006270 |  | 10d | 2026-09-30 | 2026-10-14 | -7d | 0d | 1382 | HELIX | DH1300 | ACOO | 2 | Y | DH |
| DH.13006320 |  | DH 1300 // MEP rough in walls |  | 5d | 2026-10-05 A | 2026-10-09 A | DH.13006300 | 100% |  | 2026-10-09 | 2026-10-16 |  |  | 1386 | HELIX | DH1300 | AC | 2 |  | DH |
| B120001.3147 |  | DH 1300 // Install Overhead Cable Ladder / 36" Cable Tray - TFO |  | 5d | 2026-10-06 A | 2026-10-20 | DH.13006290 SS+3d, DH.13006270 |  | 5d | 2026-10-15 | 2026-10-21 | 63d | 0d | 1181 |  |  |  |  |  | DH |
| DH.13006360 |  | DH 1300 // Tape and finish walls |  | 15d | 2026-10-06 A | 2026-11-03 | DH.13006300 SS, DH.130012067, DH.13006320 FF+2d |  | 15d | 2026-10-19 | 2026-11-06 | -5d | 0d | 1390 |  | DH1300 |  | 2 |  | DH |
| B120001.3148 |  | DH 1300 // Install Overhead HAC - TFO |  | 5d | 2026-10-21 | 2026-10-27 | B120001.3147 |  |  |  |  | 63d | 0d | 1181 |  |  |  |  |  | DH |
| DH.13007800 |  | DH 1300 // Install Ceiling supports (rods/wires) no grid |  | 5d | 2026-10-28 | 2026-11-03 | DH.13006290, DH.13006300 SS |  |  |  |  | -7d | 0d | 1375 |  | DH1300 |  | 2 |  | DH |
| F.1000A.1226 |  | DH 1300 // Rough-In Security |  | 2d | 2026-10-28 | 2026-10-29 | B120001.3148, DH.13006290 |  |  |  |  | 63d | 0d | 1156 | HELIX | DH1300 | AC |  |  | DH |
| F.1000A.1227 |  | DH 1300 // Pull & Test Security Cable |  | 3d | 2026-10-30 | 2026-11-03 | F.1000A.1226 |  |  |  |  | 63d | 0d | 1156 |  | DH1300 |  |  |  | DH |
| DH.13006220 |  | DH 1300 // Install ceiling grid system |  | 8d | 2026-11-04 | 2026-11-16 | DH.13007800 |  |  |  |  | -7d | 0d | 1374 |  | DH1300 |  | 2 |  | DH |
| DH.13006260 |  | DH 1300 // Polish concrete |  | 2d | 2026-11-04 | 2026-11-05 | DH.13006360 |  |  |  |  | 7d | 14d | 1378 |  | DH1300 |  | 2 |  | DH |
| DH.13006310 |  | DH 1300 // Install wall door frames |  | 3d | 2026-11-04 | 2026-11-06 | DH.13006360, DH.13006300 FF |  |  |  |  | 11d | 18d | 1385 |  | DH1300 |  | 2 |  | DH |
| DH.13006410 |  | DH 1300 // Prime and 1st coat of Paint |  | 5d | 2026-11-04 | 2026-11-10 | DH.13006360 |  |  |  |  | 4d | 0d | 1391 |  | DH1300 |  | 2 |  | DH |
| F.1000A.1228 |  | DH 1300 // Install Security Devices |  | 2d | 2026-11-04 | 2026-11-05 | F.1000A.1227 |  |  |  |  | 63d | 3d | 1156 |  | DH1300 |  |  |  | DH |
| F.1000A.1229 |  | DH 1300 // Mount & Terminate Security Devices |  | 5d | 2026-11-12 | 2026-11-18 | DH.13006410, F.1000A.1228 |  |  |  |  | 60d | 16d | 1156 |  | DH1300 |  |  |  | DH |
| DH.13006250 |  | DH 1300 // Install overhead MEP and lighting |  | 5d | 2026-11-17 | 2026-11-23 | DH.13006220 |  |  |  |  | -7d | 0d | 1377 | HELIX | DH1300 | AC | 2 |  | DH |
| DH.13006240 |  | DH 1300 // Install ceiling grid tiles |  | 3d | 2026-11-24 | 2026-11-27 | DH.13006250, DH.13006220 SS+3d |  |  |  |  | -7d | 0d | 1376 |  | DH1300 |  | 2 |  | DH |
| DH.13007790 |  | DH 1300 // Final Paint & Touch up walls |  | 5d | 2026-11-30 | 2026-12-04 | DH.13006260, DH.13006240, DH.13006220, DH.13006410 |  |  |  |  | -7d | 0d | 1392 |  | DH1300 |  | 2 |  | DH |
| DH.13007810 |  | DH 1300 // Install MEPF Trim and Finishes |  | 5d | 2026-12-07 | 2026-12-11 | DH.13006310, DH.13007790 |  |  |  |  | -7d | 0d | 1394 | HELIX | DH1300 | AC | 2 |  | DH |
| DH.160012144 |  | DH 1300 // Ready to Receive Equipment | milestone | 0d | 2026-12-11 | 2026-12-11 | DH.13007810 FF |  |  |  |  | -7d | 2d | 1394 | HELIX | DH1300 | TBD | 2 |  | DH |
| F.1000A.1230 |  | DH 1300 // Test Security Devices |  | 2d | 2026-12-14 | 2026-12-15 | DH.13007810, F.1000A.1229, F.1000A.1455 FF |  |  |  |  | 44d | 0d | 1156 |  | DH1300 |  |  |  | DH |
| DH.13007820 |  | DH 1300 // Suffolk Pre Punch |  | 5d | 2026-12-16 | 2026-12-22 | F.1000A.1230, DH.160012144 |  |  |  |  | 44d |  | 1395 |  | DH1300 |  | 2 |  | DH |

| ID | WBS | Activity | Type | Duration | Start | Finish | Predecessors | Complete | Remaining | Planned start | Planned finish | Total float | Free float | MSP Activity ID | QTS - AREA | 05 -SUFFOLK - Building Phase | 12 - SUFFOLK - Export_to_Procore | QTS - DASH | QTS - Subcontractor | QTS - Resp |
| --- | --- | --- | --- | --- | --- | --- | --- | --- | --- | --- | --- | --- | --- | --- | --- | --- | --- | --- | --- | --- |
|  | 15 | **PDU Gallery** |  |  | 2026-08-05 | 2026-10-22 |  |  |  |  |  |  |  |  |  |  |  |  |  |  |
| DH.13000.1000 |  | DH1300/PDU Gallery // Seal concrete |  | 2d | 2026-08-05 A | 2026-08-06 A | SOG.1454 | 100% |  | 2026-08-03 | 2026-08-04 |  |  | 1397 | DH1300 | 2 | Y | DH |  |  |
| DH.13000.1010 |  | DH1300/PDU Gallery // MEPF overhead layout |  | 5d | 2026-09-01 A | 2026-09-11 A | DH.13000.1000 | 100% |  | 2026-08-05 | 2026-08-11 |  |  | 1398 | DH1300 | 2 | Y | DH | HELIX | ACOO |
| DH.13000.1040 |  | DH1300/PDU Gallery // Frame walls |  | 5d | 2026-09-18 A | 2026-09-29 A | DH.13000.1010 | 100% |  | 2026-08-12 | 2026-08-18 |  |  | 1401 | DH1300 | 2 | Y | DH |  |  |
| DH.13000.1030 |  | DH1300/PDU Gallery // MEPF high overhead install |  | 3d | 2026-10-01 A | 2026-10-16 | DH.13000.1010 SS |  | 3d | 2026-09-30 | 2026-10-02 | 27d | 0d | 1400 | DH1300 | 2 | Y | DH | HELIX | ACOO |
| DH.13000.1060 |  | DH1300/PDU Gallery // Install Sheetrock Top Down |  | 3d | 2026-10-01 A | 2026-10-16 | DH.13000.1040 SS |  | 3d | 2026-10-08 | 2026-10-13 | 28d | 0d | 1403 | DH1300 | 2 |  | DH |  |  |
| DH.13000.1080 |  | DH1300/PDU Gallery // Install sheetrock on walls (Balance) |  | 5d | 2026-10-05 A | 2026-10-20 | DH.13000.1060 FF, DH.13000.1070 FF+1d |  | 5d | 2026-10-14 | 2026-10-20 | 27d | 0d | 1405 | DH1300 | 2 |  | DH |  |  |
| DH.13000.1711 |  | DH1300/PDU Gallery // MEP rough in walls |  | 3d | 2026-10-05 A | 2026-10-16 | DH.13000.1040 |  | 3d | 2026-10-02 | 2026-10-06 | 27d | 0d | 1403 | DH1300 | 2 | Y | DH | HELIX | AC |
| DH.13000.1050 |  | DH1300/PDU Gallery // Install wall door frames |  | 1d | 2026-10-12 A | 2026-10-12 A | DH.13000.1040 | 100% |  | 2026-10-21 | 2026-10-21 |  |  | 1402 | DH1300 | 2 |  | DH |  |  |
| DH.13000.1090 |  | DH1300/PDU Gallery // Tape and finish walls |  | 1d | 2026-10-13 A | 2026-10-19 | DH.13000.1060 FF+1d |  | 1d | 2026-10-21 | 2026-10-21 | 28d | 1d | 1406 | DH1300 | 2 |  | DH |  |  |
| DH.13000.1110 |  | DH1300/PDU Gallery // Install Cable Tray (From Elec Rm 5301 to CRAHU Gallery) |  | 2d | 2026-10-14 | 2026-10-15 | DH.13000.1010 |  |  |  |  | 32d | 5d | 1408 | DH1300 |  | Y | DH | HELIX | OO |
| DH.13000.1070 |  | DH1300/PDU Gallery // In wall inspection |  | 1d | 2026-10-19 | 2026-10-19 | DH.13000.1030, DH.13000.1711 |  |  |  |  | 27d | 0d | 1404 | DH1300 | 2 | Y | DH |  |  |
| DH.13000.1100 |  | DH1300/PDU Gallery // Paint walls |  | 2d | 2026-10-21 | 2026-10-22 | DH.13000.1080, DH.13000.1090 |  |  |  |  | 27d | 0d | 1407 | DH1300 | 2 |  | DH |  |  |
| DH.13000.1712 |  | DH1300/PDU Gallery // Ready to Receive Equipment | milestone | 0d | 2026-10-22 | 2026-10-22 | DH.13000.1050 FF, DH.13000.1110 FF, DH.13000.1100 FF |  |  |  |  | 27d | 36d | 1407 | DH1300 | 2 |  | DH | HELIX | TBD |
|  | 14 | **CRAH/CDU Galleries** |  |  | 2026-08-05 | 2026-12-18 |  |  |  |  |  |  |  |  |  |  |  |  |  |  |
|  | 2 | **Gallery 1302** |  |  | 2026-08-05 | 2026-12-11 |  |  |  |  |  |  |  |  |  |  |  |  |  |  |
|  | 4 | **Architectural** |  |  | 2026-08-05 | 2026-12-07 |  |  |  |  |  |  |  |  |  |  |  |  |  |  |
| DH.1300670 |  | DH 1300/Gallery 1302 // MEPF overhead layout |  | 5d | 2026-08-05 A | 2026-08-11 A | DH.13000.1000 SS | 100% |  |  |  |  |  | 1412 | DH1300 | 2 | Y | GR | HELIX | ACOO |
| DH.1300660 |  | DH 1300/Gallery 1302 // Seal concrete |  | 2d | 2026-09-02 A | 2026-09-03 A | DH.13001000, DH.13000.1000 SS | 100% |  | 2026-08-03 | 2026-08-04 |  |  | 1379 | DH1300 | 2 | Y | GR |  |  |
| DH.1300700 |  | DH 1300/Gallery 1302 // Frame walls |  | 6d | 2026-09-21 A | 2026-09-28 A | DH.1300660, DH.1300670 | 100% |  | 2026-08-12 | 2026-08-19 |  |  | 1415 | DH1300 | 2 | Y | GR |  |  |
| F.1000A.1465 |  | DH 1300/Gallery 1302 // BMS & EPMS Rough-In |  | 2d | 2026-09-24 A | 2026-09-25 A | DH.1300700 | 100% |  | 2026-10-27 | 2026-10-28 |  |  |  | DH1300 |  |  |  |  |  |
| DH.1300720 |  | DH 1300/Gallery 1302 // Install Sheetrock Top Down |  | 6d | 2026-09-29 A | 2026-10-21 | DH.1300700 SS+2d |  | 6d | 2026-08-17 | 2026-08-24 | -2d | 0d | 1420 | DH1300 |  | Y | GR |  |  |
| DH.1300690 |  | DH 1300/Gallery 1302 // MEPF high overhead install |  | 8d | 2026-10-01 A | 2026-10-23 | DH.1300670, DH.1300720 FF |  | 8d | 2026-09-30 | 2026-10-09 | 37d | 0d | 1414 | DH1300 | 2 |  | GR | HELIX | ACOO |
| DH.1300730 |  | DH 1300/Gallery 1302 // MEP rough in walls |  | 4d | 2026-10-06 A | 2026-10-12 A | DH.1300700 | 100% |  | 2026-10-13 | 2026-10-16 |  |  | 1417 | DH1300 | 2 |  | GR | HELIX | AC |
| DH.1300750 |  | DH 1300/Gallery 1302 // Install Balance of Sheetrock on walls |  | 6d | 2026-10-06 A | 2026-10-21 | DH.1300740 FF, DH.1300730 FF, DH.1300720 FF |  | 6d | 2026-10-13 | 2026-10-20 | -2d | 1d | 1419 | DH1300 | 2 |  | GR |  |  |
| DH.1300740 |  | DH 1300/Gallery 1302 // In wall inspection |  | 1d | 2026-10-13 A | 2026-10-13 A | DH.1300730 | 100% |  | 2026-10-19 | 2026-10-19 |  |  | 1418 | DH1300 | 2 |  | GR |  |  |
| DH.1300770 |  | DH 1300/Gallery 1302 // Tape and finish walls |  | 8d | 2026-10-13 A | 2026-10-23 | DH.1300750 FF+1d |  | 8d | 2026-10-21 | 2026-10-30 | -3d | 0d | 1421 | DH1300 | 2 |  | GR |  |  |
| B120001.3149 |  | DH 1300/Gallery 1302 // Install Overhead Cable Ladder / 36" Cable Tray - TFO |  | 5d | 2026-10-26 | 2026-10-30 | DH.1300690 |  |  |  |  | 37d | 0d | 1181 |  |  |  | GR |  |  |
| DH.1300710 |  | DH 1300/Gallery 1302 // Install wall door frames |  | 1d | 2026-10-26 | 2026-10-26 | DH.1300700 FF, DH.1300770, DH.1300740 |  |  |  |  | 1d | 4d | 1416 | DH1300 | 2 |  | GR |  |  |
| DH.1300790 |  | DH 1300/Gallery 1302 // Prime and Paint walls |  | 4d | 2026-10-26 | 2026-10-29 | DH.1300770 |  |  |  |  | -3d | 0d | 1422 | DH1300 | 2 |  | GR |  |  |
| DH.1300800 |  | DH 1300/Gallery 1302 // Touch up Walls and Fianl Paint |  | 5d | 2026-10-26 | 2026-10-30 | DH.1300790 FF+1d |  |  |  |  | -3d | 0d | 1423 | DH1300 | 2 |  | GR |  |  |
| DH.1300810 |  | DH 1300/Gallery 1302 // Install Trim and Devices |  | 2d | 2026-10-28 | 2026-10-29 | DH.1300790 FF |  |  |  |  | -2d | 1d | 1424 | DH1300 |  |  | GR | HELIX | AC |
| DH.160012145 |  | DH 1300/Gallery 1302 // Ready to Receive Equipment | milestone | 0d | 2026-10-30 | 2026-10-30 | DH.1300800, DH.1300810 FF, DH.1300710 |  |  |  |  | -3d | 2d | 1424 | DH1300 |  |  | GR | HELIX | TBD |
| B120001.3150 |  | DH 1300/Gallery 1302 // Install Overhead HAC - TFO |  | 5d | 2026-11-02 | 2026-11-06 | B120001.3149 |  |  |  |  | 37d | 0d | 1181 |  |  |  | GR |  |  |
| F.1000A.1276 |  | DH 1300/Gallery 1302 // Rough-In Security |  | 2d | 2026-11-09 | 2026-11-10 | B120001.3150, DH.1300690 |  |  |  |  | 37d | 0d | 1156 | DH1300 |  |  | GR | HELIX | AC |
| F.1000A.1277 |  | DH 1300/Gallery 1302 // Pull & Test Security Cable |  | 3d | 2026-11-12 | 2026-11-16 | F.1000A.1276 |  |  |  |  | 37d | 0d | 1156 | DH1300 |  |  | GR |  |  |
| F.1000A.1278 |  | DH 1300/Gallery 1302 // Install Security Devices |  | 2d | 2026-11-17 | 2026-11-18 | F.1000A.1277 |  |  |  |  | 37d | 0d | 1156 | DH1300 |  |  | GR |  |  |
| F.1000A.1279 |  | DH 1300/Gallery 1302 // Mount & Terminate Security Devices |  | 5d | 2026-11-19 | 2026-11-25 | DH.1300790, F.1000A.1278 |  |  |  |  | 37d | 0d | 1156 | DH1300 |  |  | GR |  |  |
| F.1000A.1280 |  | DH 1300/Gallery 1302 // Test Security Devices |  | 2d | 2026-11-27 | 2026-11-30 | DH.1300810, F.1000A.1279, F.1000A.1465 FF |  |  |  |  | 37d | 0d | 1156 | DH1300 |  |  | GR |  |  |
| DH.1300820 |  | DH 1300/Gallery 1302 // Suffolk Pre Punch |  | 5d | 2026-12-01 | 2026-12-07 | F.1000A.1280, DH.160012145, DH.1300810 |  |  |  |  | 37d | 46d | 1425 | DH1300 |  |  | GR |  |  |

| ID | WBS | Activity | Duration | Start | Finish | Predecessors | Total float | Free float | MSP Activity ID | QTS - AREA | QTS - DASH | QTS - Subcontractor | QTS - Resp |
| --- | --- | --- | --- | --- | --- | --- | --- | --- | --- | --- | --- | --- | --- |
|  | 16 | **Raceway** |  |  |  |  |  |  |  |  |  |  |  |
|  | 3 | **Equipment Line-Ups** |  | 2026-11-04 | 2026-12-11 |  |  |  |  |  |  |  |  |
|  | 1 | **A130** |  | 2026-11-04 | 2026-12-08 |  |  |  |  |  |  |  |  |
| DH.1300A-EQP-1 |  | Gallery 1302 - A130/Line-Ups // Set CRAH-DH1300- 01 | 1d | 2026-11-04 | 2026-11-04 | DH.160012145, DH.13006360 | -5d | 0d | 1433 | DH1300 | GR |  |  |
| DH.1300A-EQP-3 |  | Gallery 1302 - A130/Line-Ups // Set CRAH-DH1300- 02 | 1d | 2026-11-04 | 2026-11-04 | DH.1300A-EQP-1 SS | -5d | 0d | 1434 | DH1300 | GR |  |  |
| DH.1300A-EQP-5 |  | Gallery 1302 - A130/Line-Ups // Set MOD-A130-01 | 1d | 2026-11-04 | 2026-11-04 | DH.1300A-EQP-3 FF | 38d | 0d | 1437 | DH1300 | GR | HELIX | TBD |
| DH.1300A-EQP-6 |  | Gallery 1302 - A130/Line-Ups // Set MOD-A130-02 | 1d | 2026-11-04 | 2026-11-04 | DH.1300A-EQP-5 SS | 38d | 0d | 1437 | DH1300 | GR | HELIX | TBD |
| DH.1300A-EQP-10 |  | Gallery 1302 - A130/Line-Ups // Pull Cable Tray Feed from MOD to CRAHU's | 5d | 2026-11-05 | 2026-11-12 | DH.1300A-EQP-6 | 44d | 0d | 1438 | DH1300 | GR | HELIX | OO |
| DH.1300A-EQP-12 |  | Gallery 1302 - A130/Line-Ups // Mount Electrial Gear for Chiller Controls | 10d | 2026-11-05 | 2026-11-19 | DH.1300A-EQP-6 | 38d | 0d | 1443 | DH1300 | GR | HELIX | AC |
| DH.1300A-EQP-7 |  | Gallery 1302 - A130/Line-Ups // Set CDU-DH1300- 01 | 1d | 2026-11-05 | 2026-11-05 | DH.1300A-EQP-1 | 38d | 0d | 1434 | DH1300 | GR |  |  |
| DH.1300A-EQP-9 |  | Gallery 1302 - A130/Line-Ups // Pull Feeder from SWD to MOD | 1d | 2026-11-05 | 2026-11-05 | DH.1300A-EQP-6 | 54d | 9d | 1439 | DH1300 | GR | HELIX | OO |
| DH.1300A-EQP-8 |  | Gallery 1302 - A130/Line-Ups // Set CDU-DH1300- 02 | 1d | 2026-11-06 | 2026-11-06 | DH.1300A-EQP-7, DH.1300A-EQP-3 | 38d | 0d | 1434 | DH1300 | GR |  |  |
| DH.1300A-EQP-4 |  | Gallery 1302 - A130/Line-Ups // Condensate connections to Floor Drains | 10d | 2026-11-09 | 2026-11-23 | DH.1300A-EQP-3, DH.1300A-EQP-7, DH.1300A-EQP-8 | 38d | 2d | 1436 | DH1300 | GR |  |  |
| DH.1300A-EQP-11 |  | Gallery 1302 - A130/Line-Ups // Mechanical Connections to CRAHU Units | 10d | 2026-11-12 | 2026-11-25 | DH.1300A-EQP-3 SS+5d | 36d | 0d | 1448 | DH1300 | GR |  |  |
| DH.1300A-EQP-17 |  | Gallery 1302 - A130/Line-Ups // Pull Feeder and Branch circuits to MIsc equipment and Chiller controls | 10d | 2026-11-12 | 2026-11-25 | DH.1300A-EQP-12 SS+4d | 38d | 0d | 1444 | DH1300 | GR | HELIX | AC |
| DH.1300A-EQP-13 |  | Gallery 1302 - A130/Line-Ups // Pull Cable Tray Feed from MOD to CRAHU's | 5d | 2026-11-13 | 2026-11-19 | DH.1300A-EQP-10 | 44d | 0d | 1441 | DH1300 | GR | HELIX | OO |
| DH.1300A-EQP-16 |  | Gallery 1302 - A130/Line-Ups // Terminate CRAHU Electrical Connections | 5d | 2026-11-17 | 2026-11-23 | DH.1300A-EQP-13 SS+2d, DH.1300A-EQP-10 | 44d | 6d | 1442 | DH1300 | GR | HELIX | OO |
| DH.1300A-EQP-19 |  | Gallery 1302 - A130/Line-Ups // Teminate all Misc Equipment and Chiller Controls | 10d | 2026-11-18 | 2026-12-02 | DH.1300A-EQP-17 SS+4d | 38d | 0d | 1445 | DH1300 | GR |  |  |
| DH.1300A-EQP-14 |  | Gallery 1302 - A130/Line-Ups // Condensate connections to Floor Drains | 10d | 2026-11-19 | 2026-12-03 | DH.13007841, DH.1300A-EQP-11 SS+5d, DH.1300A-EQP-4 SS+5d | 36d | 0d | 1449 | DH1300 | GR |  |  |
| DH.1300A-EQP-15 |  | Gallery 1302 - A130/Line-Ups // Terminate Mod Panels | 1d | 2026-11-20 | 2026-11-20 | DH.1300A-EQP-13, DH.1300A-EQP-10, DH.1300A-EQP-9 | 45d | 7d | 1440 | DH1300 | GR | HELIX | OO |
| DH.1300A-EQP-20 |  | Gallery 1302 - A130/Line-Ups // Electrical Gear FOD Inspection Pre-Start Up | 2d | 2026-12-03 | 2026-12-04 | DH.1300A-EQP-16, DH.1300A-EQP-19, DH.1300A-EQP-15 | 38d | 47d | 1446 | DH1300 | GR | HELIX | QC |
| DH.1300A-EQP-18 |  | Gallery 1302 - A130/Line-Ups // Mechanical Gear FOD Inspection Pre-Start Up | 3d | 2026-12-04 | 2026-12-08 | DH.1300A-EQP-3, DH.1300A-EQP-14, DH.1300A-EQP-4, DH.1300A-EQP-11 | 36d | 45d | 1447 | DH1300 | GR |  |  |
|  | 2 | **B130** |  | 2026-11-04 | 2026-12-08 |  |  |  |  |  |  |  |  |
| DH.1300A-EQP-21 |  | Gallery 1302 - B130/Line-Ups // Set CRAH-DH1300- 03 | 1d | 2026-11-04 | 2026-11-04 | DH.1300A-EQP-3 SS | -5d | 0d | 1433 | DH1300 | GR |  |  |
| DH.1300A-EQP-23 |  | Gallery 1302 - B130/Line-Ups // Set CRAH-DH1300- 04 | 1d | 2026-11-04 | 2026-11-04 | DH.1300A-EQP-21 SS | -5d | 0d | 1434 | DH1300 | GR |  |  |
| DH.1300A-EQP-25 |  | Gallery 1302 - B130/Line-Ups // Set MOD-B130-01 | 1d | 2026-11-04 | 2026-11-04 | DH.1300A-EQP-23 FF | 38d | 0d | 1437 | DH1300 | GR | HELIX | TBD |
| DH.1300A-EQP-26 |  | Gallery 1302 - B130/Line-Ups // Set MOD-B130-02 | 1d | 2026-11-04 | 2026-11-04 | DH.1300A-EQP-25 SS | 38d | 0d | 1437 | DH1300 | GR | HELIX | TBD |
| DH.1300A-EQP-27 |  | Gallery 1302 - B130/Line-Ups // Set CDU-DH1300- 03 | 1d | 2026-11-05 | 2026-11-05 | DH.1300A-EQP-21 | 38d | 0d | 1434 | DH1300 | GR |  |  |
| DH.1300A-EQP-29 |  | Gallery 1302 - B130/Line-Ups // Pull Feeder from SWD to MOD | 1d | 2026-11-05 | 2026-11-05 | DH.1300A-EQP-26 | 54d | 9d | 1439 | DH1300 | GR | HELIX | OO |
| DH.1300A-EQP-30 |  | Gallery 1302 - B130/Line-Ups // Pull Cable Tray Feed from MOD to CRAHU's | 5d | 2026-11-05 | 2026-11-12 | DH.1300A-EQP-26 | 44d | 0d | 1438 | DH1300 | GR | HELIX | OO |
| DH.1300A-EQP-32 |  | Gallery 1302 - B130/Line-Ups // Mount Electrial Gear for Chiller Controls | 10d | 2026-11-05 | 2026-11-19 | DH.1300A-EQP-26 | 38d | 0d | 1443 | DH1300 | GR | HELIX | AC |
| DH.1300A-EQP-28 |  | Gallery 1302 - B130/Line-Ups // Set CDU-DH1300- 04 | 1d | 2026-11-06 | 2026-11-06 | DH.1300A-EQP-27, DH.1300A-EQP-23 | 38d | 0d | 1434 | DH1300 | GR |  |  |
| DH.1300A-EQP-24 |  | Gallery 1302 - B130/Line-Ups // Condensate connections to Floor Drains | 10d | 2026-11-09 | 2026-11-23 | DH.1300A-EQP-23, DH.1300A-EQP-27, DH.1300A-EQP-28 | 38d | 2d | 1436 | DH1300 | GR |  |  |
| DH.1300A-EQP-31 |  | Gallery 1302 - B130/Line-Ups // Mechanical Connections to CRAHU Units | 10d | 2026-11-12 | 2026-11-25 | DH.1300A-EQP-23 SS+5d | 36d | 0d | 1448 | DH1300 | GR |  |  |
| DH.1300A-EQP-37 |  | Gallery 1302 - B130/Line-Ups // Pull Feeder and Branch circuits to MIsc equipment and Chiller controls | 10d | 2026-11-12 | 2026-11-25 | DH.1300A-EQP-32 SS+4d | 38d | 0d | 1444 | DH1300 | GR | HELIX | AC |
| DH.1300A-EQP-33 |  | Gallery 1302 - B130/Line-Ups // Pull Cable Tray Feed from MOD to CRAHU's | 5d | 2026-11-13 | 2026-11-19 | DH.1300A-EQP-30 | 44d | 0d | 1441 | DH1300 | GR | HELIX | OO |
| DH.1300A-EQP-36 |  | Gallery 1302 - B130/Line-Ups // Terminate CRAHU Electrical Connections | 5d | 2026-11-17 | 2026-11-23 | DH.1300A-EQP-33 SS+2d, DH.1300A-EQP-30 | 44d | 6d | 1442 | DH1300 | GR | HELIX | OO |
| DH.1300A-EQP-39 |  | Gallery 1302 - B130/Line-Ups // Teminate all Misc Equipment and Chiller Controls | 10d | 2026-11-18 | 2026-12-02 | DH.1300A-EQP-37 SS+4d | 38d | 0d | 1445 | DH1300 | GR |  |  |
| DH.1300A-EQP-34 |  | Gallery 1302 - B130/Line-Ups // Condensate connections to Floor Drains | 10d | 2026-11-19 | 2026-12-03 | DH.1300A-EQP-31 SS+5d, DH.1300A-EQP-24 SS+5d | 36d | 0d | 1449 | DH1300 | GR |  |  |
| DH.1300A-EQP-35 |  | Gallery 1302 - B130/Line-Ups // Terminate Mod Panels | 1d | 2026-11-20 | 2026-11-20 | DH.1300A-EQP-33, DH.1300A-EQP-30, DH.1300A-EQP-29 | 45d | 7d | 1440 | DH1300 | GR | HELIX | OO |
| DH.1300A-EQP-40 |  | Gallery 1302 - B130/Line-Ups // Electrical Gear FOD Inspection Pre-Start Up | 2d | 2026-12-03 | 2026-12-04 | DH.1300A-EQP-36, DH.1300A-EQP-39, DH.1300A-EQP-35 | 38d | 47d | 1446 | DH1300 | GR | HELIX | QC |
| DH.1300A-EQP-38 |  | Gallery 1302 - B130/Line-Ups // Mechanical Gear FOD Inspection Pre-Start Up | 3d | 2026-12-04 | 2026-12-08 | DH.1300A-EQP-23, DH.1300A-EQP-34, DH.1300A-EQP-24, DH.1300A-EQP-31 | 36d | 45d | 1447 | DH1300 | GR |  |  |

| ID | WBS | Activity | Duration | Start | Finish | Predecessors | Total float | Free float | MSP Activity ID | QTS - AREA | QTS - DASH | QTS - Subcontractor | QTS - Resp |
| --- | --- | --- | --- | --- | --- | --- | --- | --- | --- | --- | --- | --- | --- |
|  | 3 | **C130** |  | 2026-11-04 | 2026-12-08 |  |  |  |  |  |  |  |  |
| DH.1300A-EQP-41 |  | Gallery 1302 - C130/Line-Ups // Set CRAH-DH1300- 05 | 1d | 2026-11-04 | 2026-11-04 | DH.1300A-EQP-23 SS | -5d | 0d | 1433 | DH1300 | GR |  |  |
| DH.1300A-EQP-43 |  | Gallery 1302 - C130/Line-Ups // Set CRAH-DH1300- 06 | 1d | 2026-11-04 | 2026-11-04 | DH.1300A-EQP-41 SS | -5d | 0d | 1434 | DH1300 | GR |  |  |
| DH.1300A-EQP-45 |  | Gallery 1302 - C130/Line-Ups // Set MOD-C130-01 | 1d | 2026-11-04 | 2026-11-04 | DH.1300A-EQP-43 FF | 38d | 0d | 1437 | DH1300 | GR | HELIX | TBD |
| DH.1300A-EQP-46 |  | Gallery 1302 - C130/Line-Ups // Set MOD-C130-02 | 1d | 2026-11-04 | 2026-11-04 | DH.1300A-EQP-45 SS | 38d | 0d | 1437 | DH1300 | GR | HELIX | TBD |
| DH.1300A-EQP-47 |  | Gallery 1302 - C130/Line-Ups // Set CDU-DH1300- 05 | 1d | 2026-11-05 | 2026-11-05 | DH.1300A-EQP-41 | 38d | 0d | 1434 | DH1300 | GR |  |  |
| DH.1300A-EQP-49 |  | Gallery 1302 - C130/Line-Ups // Pull Feeder from SWD to MOD | 1d | 2026-11-05 | 2026-11-05 | DH.1300A-EQP-46 | 54d | 9d | 1439 | DH1300 | GR | HELIX | OO |
| DH.1300A-EQP-50 |  | Gallery 1302 - C130/Line-Ups // Pull Cable Tray Feed from MOD to CRAHU's | 5d | 2026-11-05 | 2026-11-12 | DH.1300A-EQP-46 | 44d | 0d | 1438 | DH1300 | GR | HELIX | OO |
| DH.1300A-EQP-52 |  | Gallery 1302 - C130/Line-Ups // Mount Electrial Gear for Chiller Controls | 10d | 2026-11-05 | 2026-11-19 | DH.1300A-EQP-46 | 38d | 0d | 1443 | DH1300 | GR | HELIX | AC |
| DH.1300A-EQP-48 |  | Gallery 1302 - C130/Line-Ups // Set CDU-DH1300- 06 | 1d | 2026-11-06 | 2026-11-06 | DH.1300A-EQP-47, DH.1300A-EQP-43 | 38d | 0d | 1434 | DH1300 | GR |  |  |
| DH.1300A-EQP-44 |  | Gallery 1302 - C130/Line-Ups // Condensate connections to Floor Drains | 10d | 2026-11-09 | 2026-11-23 | DH.1300A-EQP-43, DH.1300A-EQP-47, DH.1300A-EQP-48 | 38d | 2d | 1436 | DH1300 | GR |  |  |
| DH.1300A-EQP-51 |  | Gallery 1302 - C130/Line-Ups // Mechanical Connections to CRAHU Units | 10d | 2026-11-12 | 2026-11-25 | DH.1300A-EQP-43 SS+5d | 36d | 0d | 1448 | DH1300 | GR |  |  |
| DH.1300A-EQP-57 |  | Gallery 1302 - C130/Line-Ups // Pull Feeder and Branch circuits to MIsc equipment and Chiller controls | 10d | 2026-11-12 | 2026-11-25 | DH.1300A-EQP-52 SS+4d | 38d | 0d | 1444 | DH1300 | GR | HELIX | AC |
| DH.1300A-EQP-53 |  | Gallery 1302 - C130/Line-Ups // Pull Cable Tray Feed from MOD to CRAHU's | 5d | 2026-11-13 | 2026-11-19 | DH.1300A-EQP-50 | 44d | 0d | 1441 | DH1300 | GR | HELIX | OO |
| DH.1300A-EQP-56 |  | Gallery 1302 - C130/Line-Ups // Terminate CRAHU Electrical Connections | 5d | 2026-11-17 | 2026-11-23 | DH.1300A-EQP-53 SS+2d, DH.1300A-EQP-50 | 44d | 6d | 1442 | DH1300 | GR | HELIX | OO |
| DH.1300A-EQP-59 |  | Gallery 1302 - C130/Line-Ups // Teminate all Misc Equipment and Chiller Controls | 10d | 2026-11-18 | 2026-12-02 | DH.1300A-EQP-57 SS+4d | 38d | 0d | 1445 | DH1300 | GR |  |  |
| DH.1300A-EQP-54 |  | Gallery 1302 - C130/Line-Ups // Condensate connections to Floor Drains | 10d | 2026-11-19 | 2026-12-03 | DH.1300A-EQP-51 SS+5d, DH.1300A-EQP-44 SS+5d | 36d | 0d | 1449 | DH1300 | GR |  |  |
| DH.1300A-EQP-55 |  | Gallery 1302 - C130/Line-Ups // Terminate Mod Panels | 1d | 2026-11-20 | 2026-11-20 | DH.1300A-EQP-53, DH.1300A-EQP-50, DH.1300A-EQP-49 | 45d | 7d | 1440 | DH1300 | GR | HELIX | OO |
| DH.1300A-EQP-60 |  | Gallery 1302 - C130/Line-Ups // Electrical Gear FOD Inspection Pre-Start Up | 2d | 2026-12-03 | 2026-12-04 | DH.1300A-EQP-56, DH.1300A-EQP-59, DH.1300A-EQP-55 | 38d | 47d | 1446 | DH1300 | GR | HELIX | QC |
| DH.1300A-EQP-58 |  | Gallery 1302 - C130/Line-Ups // Mechanical Gear FOD Inspection Pre-Start Up | 3d | 2026-12-04 | 2026-12-08 | DH.1300A-EQP-43, DH.1300A-EQP-54, DH.1300A-EQP-44, DH.1300A-EQP-51 | 36d | 45d | 1447 | DH1300 | GR |  |  |
|  | 4 | **D130** |  | 2026-11-05 | 2026-12-09 |  |  |  |  |  |  |  |  |
| DH.1300A-EQP-61 |  | Gallery 1302 - D130/Line-Ups // Set CRAH-DH1300- 07 | 1d | 2026-11-05 | 2026-11-05 | DH.1300A-EQP-43 | -5d | 0d | 1433 | DH1300 | GR |  |  |
| DH.1300A-EQP-63 |  | Gallery 1302 - D130/Line-Ups // Set CRAH-DH1300- 08 | 1d | 2026-11-05 | 2026-11-05 | DH.1300A-EQP-61 SS | -5d | 0d | 1434 | DH1300 | GR |  |  |
| DH.1300A-EQP-65 |  | Gallery 1302 - D130/Line-Ups // Set MOD-D130-01 | 1d | 2026-11-05 | 2026-11-05 | DH.1300A-EQP-63 FF | 37d | 0d | 1437 | DH1300 | GR | HELIX | TBD |
| DH.1300A-EQP-66 |  | Gallery 1302 - D130/Line-Ups // Set MOD-D130-02 | 1d | 2026-11-05 | 2026-11-05 | DH.1300A-EQP-65 SS | 37d | 0d | 1437 | DH1300 | GR | HELIX | TBD |
| DH.1300A-EQP-67 |  | Gallery 1302 - D130/Line-Ups // Set CDU-DH1300- 07 | 1d | 2026-11-06 | 2026-11-06 | DH.1300A-EQP-61 | 37d | 0d | 1434 | DH1300 | GR |  |  |
| DH.1300A-EQP-69 |  | Gallery 1302 - D130/Line-Ups // Pull Feeder from SWD to MOD | 1d | 2026-11-06 | 2026-11-06 | DH.1300A-EQP-66 | 53d | 9d | 1439 | DH1300 | GR | HELIX | OO |
| DH.1300A-EQP-70 |  | Gallery 1302 - D130/Line-Ups // Pull Cable Tray Feed from MOD to CRAHU's | 5d | 2026-11-06 | 2026-11-13 | DH.1300A-EQP-66 | 43d | 0d | 1438 | DH1300 | GR | HELIX | OO |
| DH.1300A-EQP-72 |  | Gallery 1302 - D130/Line-Ups // Mount Electrial Gear for Chiller Controls | 10d | 2026-11-06 | 2026-11-20 | DH.1300A-EQP-66 | 37d | 0d | 1443 | DH1300 | GR | HELIX | AC |
| DH.1300A-EQP-68 |  | Gallery 1302 - D130/Line-Ups // Set CDU-DH1300- 08 | 1d | 2026-11-09 | 2026-11-09 | DH.1300A-EQP-67, DH.1300A-EQP-63 | 37d | 0d | 1434 | DH1300 | GR |  |  |
| DH.1300A-EQP-64 |  | Gallery 1302 - D130/Line-Ups // Condensate connections to Floor Drains | 10d | 2026-11-10 | 2026-11-24 | DH.1300A-EQP-63, DH.1300A-EQP-67, DH.1300A-EQP-68 | 37d | 2d | 1436 | DH1300 | GR |  |  |
| DH.1300A-EQP-71 |  | Gallery 1302 - D130/Line-Ups // Mechanical Connections to CRAHU Units | 10d | 2026-11-13 | 2026-11-27 | DH.1300A-EQP-63 SS+5d | 35d | 0d | 1448 | DH1300 | GR |  |  |
| DH.1300A-EQP-77 |  | Gallery 1302 - D130/Line-Ups // Pull Feeder and Branch circuits to MIsc equipment and Chiller controls | 10d | 2026-11-13 | 2026-11-27 | DH.1300A-EQP-72 SS+4d | 37d | 0d | 1444 | DH1300 | GR | HELIX | AC |
| DH.1300A-EQP-73 |  | Gallery 1302 - D130/Line-Ups // Pull Cable Tray Feed from MOD to CRAHU's | 5d | 2026-11-16 | 2026-11-20 | DH.1300A-EQP-70 | 43d | 0d | 1441 | DH1300 | GR | HELIX | OO |
| DH.1300A-EQP-76 |  | Gallery 1302 - D130/Line-Ups // Terminate CRAHU Electrical Connections | 5d | 2026-11-18 | 2026-11-24 | DH.1300A-EQP-73 SS+2d, DH.1300A-EQP-70 | 43d | 6d | 1442 | DH1300 | GR | HELIX | OO |
| DH.1300A-EQP-79 |  | Gallery 1302 - D130/Line-Ups // Teminate all Misc Equipment and Chiller Controls | 10d | 2026-11-19 | 2026-12-03 | DH.1300A-EQP-77 SS+4d | 37d | 0d | 1445 | DH1300 | GR |  |  |
| DH.1300A-EQP-74 |  | Gallery 1302 - D130/Line-Ups // Condensate connections to Floor Drains | 10d | 2026-11-20 | 2026-12-04 | DH.1300A-EQP-71 SS+5d, DH.1300A-EQP-64 SS+5d | 35d | 0d | 1449 | DH1300 | GR |  |  |
| DH.1300A-EQP-75 |  | Gallery 1302 - D130/Line-Ups // Terminate Mod Panels | 1d | 2026-11-23 | 2026-11-23 | DH.1300A-EQP-73, DH.1300A-EQP-70, DH.1300A-EQP-69 | 44d | 7d | 1440 | DH1300 | GR | HELIX | OO |
| DH.1300A-EQP-80 |  | Gallery 1302 - D130/Line-Ups // Electrical Gear FOD Inspection Pre-Start Up | 2d | 2026-12-04 | 2026-12-07 | DH.1300A-EQP-76, DH.1300A-EQP-79, DH.1300A-EQP-75 | 37d | 46d | 1446 | DH1300 | GR | HELIX | QC |
| DH.1300A-EQP-78 |  | Gallery 1302 - D130/Line-Ups // Mechanical Gear FOD Inspection Pre-Start Up | 3d | 2026-12-07 | 2026-12-09 | DH.1300A-EQP-63, DH.1300A-EQP-74, DH.1300A-EQP-64, DH.1300A-EQP-71 | 35d | 44d | 1447 | DH1300 | GR |  |  |

| ID | WBS | Activity | Duration | Start | Finish | Predecessors | Total float | Free float | MSP Activity ID | QTS - AREA | QTS - DASH | QTS - Subcontractor | QTS - Resp |
| --- | --- | --- | --- | --- | --- | --- | --- | --- | --- | --- | --- | --- | --- |
|  | 5 | **E130** |  | 2026-11-05 | 2026-12-09 |  |  |  |  |  |  |  |  |
| DH.1300A-EQP-81 |  | Gallery 1302 - D130/Line-Ups // Set CRAH-DH1300- 09 | 1d | 2026-11-05 | 2026-11-05 | DH.1300A-EQP-63 SS | -5d | 0d | 1433 | DH1300 | GR |  |  |
| DH.1300A-EQP-83 |  | Gallery 1302 - D130/Line-Ups // Set CRAH-DH1300- 10 | 1d | 2026-11-05 | 2026-11-05 | DH.1300A-EQP-81 SS | -5d | 0d | 1434 | DH1300 | GR |  |  |
| DH.1300A-EQP-85 |  | Gallery 1302 - D130/Line-Ups // Set MOD-E130-01 | 1d | 2026-11-05 | 2026-11-05 | DH.1300A-EQP-83 FF | 37d | 0d | 1437 | DH1300 | GR | HELIX | TBD |
| DH.1300A-EQP-86 |  | Gallery 1302 - D130/Line-Ups // Set MOD-E130-02 | 1d | 2026-11-05 | 2026-11-05 | DH.1300A-EQP-85 SS | 37d | 0d | 1437 | DH1300 | GR | HELIX | TBD |
| DH.1300A-EQP-87 |  | Gallery 1302 - D130/Line-Ups // Set CDU-DH1300- 09 | 1d | 2026-11-06 | 2026-11-06 | DH.1300A-EQP-81 | 37d | 0d | 1434 | DH1300 | GR |  |  |
| DH.1300A-EQP-89 |  | Gallery 1302 - D130/Line-Ups // Pull Feeder from SWD to MOD | 1d | 2026-11-06 | 2026-11-06 | DH.1300A-EQP-86 | 53d | 9d | 1439 | DH1300 | GR | HELIX | OO |
| DH.1300A-EQP-90 |  | Gallery 1302 - D130/Line-Ups // Pull Cable Tray Feed from MOD to CRAHU's | 5d | 2026-11-06 | 2026-11-13 | DH.1300A-EQP-86 | 43d | 0d | 1438 | DH1300 | GR | HELIX | OO |
| DH.1300A-EQP-92 |  | Gallery 1302 - D130/Line-Ups // Mount Electrial Gear for Chiller Controls | 10d | 2026-11-06 | 2026-11-20 | DH.1300A-EQP-86 | 37d | 0d | 1443 | DH1300 | GR | HELIX | AC |
| DH.1300A-EQP-88 |  | Gallery 1302 - D130/Line-Ups // Set CDU-DH1300- 10 | 1d | 2026-11-09 | 2026-11-09 | DH.1300A-EQP-87, DH.1300A-EQP-83 | 37d | 0d | 1434 | DH1300 | GR |  |  |
| DH.1300A-EQP-84 |  | Gallery 1302 - D130/Line-Ups // Condensate connections to Floor Drains | 10d | 2026-11-10 | 2026-11-24 | DH.1300A-EQP-83, DH.1300A-EQP-87, DH.1300A-EQP-88 | 37d | 2d | 1436 | DH1300 | GR |  |  |
| DH.1300A-EQP-91 |  | Gallery 1302 - D130/Line-Ups // Mechanical Connections to CRAHU Units | 10d | 2026-11-13 | 2026-11-27 | DH.1300A-EQP-83 SS+5d | 35d | 0d | 1448 | DH1300 | GR |  |  |
| DH.1300A-EQP-97 |  | Gallery 1302 - D130/Line-Ups // Pull Feeder and Branch circuits to MIsc equipment and Chiller controls | 10d | 2026-11-13 | 2026-11-27 | DH.1300A-EQP-92 SS+4d | 37d | 0d | 1444 | DH1300 | GR | HELIX | AC |
| DH.1300A-EQP-93 |  | Gallery 1302 - D130/Line-Ups // Pull Cable Tray Feed from MOD to CRAHU's | 5d | 2026-11-16 | 2026-11-20 | DH.1300A-EQP-90 | 43d | 0d | 1441 | DH1300 | GR | HELIX | OO |
| DH.1300A-EQP-96 |  | Gallery 1302 - D130/Line-Ups // Terminate CRAHU Electrical Connections | 5d | 2026-11-18 | 2026-11-24 | DH.1300A-EQP-93 SS+2d, DH.1300A-EQP-90 | 43d | 6d | 1442 | DH1300 | GR | HELIX | OO |
| DH.1300A-EQP-99 |  | Gallery 1302 - D130/Line-Ups // Teminate all Misc Equipment and Chiller Controls | 10d | 2026-11-19 | 2026-12-03 | DH.1300A-EQP-97 SS+4d | 37d | 0d | 1445 | DH1300 | GR |  |  |
| DH.1300A-EQP-94 |  | Gallery 1302 - D130/Line-Ups // Condensate connections to Floor Drains | 10d | 2026-11-20 | 2026-12-04 | DH.1300A-EQP-91 SS+5d, DH.1300A-EQP-84 SS+5d | 35d | 0d | 1449 | DH1300 | GR |  |  |
| DH.1300A-EQP-95 |  | Gallery 1302 - D130/Line-Ups // Terminate Mod Panels | 1d | 2026-11-23 | 2026-11-23 | DH.1300A-EQP-93, DH.1300A-EQP-90, DH.1300A-EQP-89 | 44d | 7d | 1440 | DH1300 | GR | HELIX | OO |
| DH.1300A-EQP-100 |  | Gallery 1302 - D130/Line-Ups // Electrical Gear FOD Inspection Pre-Start Up | 2d | 2026-12-04 | 2026-12-07 | DH.1300A-EQP-96, DH.1300A-EQP-99, DH.1300A-EQP-95 | 37d | 46d | 1446 | DH1300 | GR | HELIX | QC |
| DH.1300A-EQP-98 |  | Gallery 1302 - D130/Line-Ups // Mechanical Gear FOD Inspection Pre-Start Up | 3d | 2026-12-07 | 2026-12-09 | DH.1300A-EQP-83, DH.1300A-EQP-94, DH.1300A-EQP-84, DH.1300A-EQP-91 | 35d | 44d | 1447 | DH1300 | GR |  |  |
|  | 6 | **F130** |  | 2026-11-05 | 2026-12-09 |  |  |  |  |  |  |  |  |
| DH.1300A-EQP-101 |  | Gallery 1302 - F130/Line-Ups // Set CRAH-DH1300- 11 | 1d | 2026-11-05 | 2026-11-05 | DH.1300A-EQP-83 SS | -5d | 0d | 1433 | DH1300 | GR |  |  |
| DH.1300A-EQP-103 |  | Gallery 1302 - F130/Line-Ups // Set CRAH-DH1300- 12 | 1d | 2026-11-05 | 2026-11-05 | DH.1300A-EQP-101 SS | -5d | 0d | 1434 | DH1300 | GR |  |  |
| DH.1300A-EQP-105 |  | Gallery 1302 - F130/Line-Ups // Set MOD-F130-01 | 1d | 2026-11-05 | 2026-11-05 | DH.1300A-EQP-103 FF | 37d | 0d | 1437 | DH1300 | GR | HELIX | TBD |
| DH.1300A-EQP-106 |  | Gallery 1302 - F130/Line-Ups // Set MOD-F130-02 | 1d | 2026-11-05 | 2026-11-05 | DH.1300A-EQP-105 SS | 37d | 0d | 1437 | DH1300 | GR | HELIX | TBD |
| DH.1300A-EQP-107 |  | Gallery 1302 - F130/Line-Ups // Set CDU-DH1300- 11 | 1d | 2026-11-06 | 2026-11-06 | DH.1300A-EQP-101 | 37d | 0d | 1434 | DH1300 | GR |  |  |
| DH.1300A-EQP-109 |  | Gallery 1302 - F130/Line-Ups // Pull Feeder from SWD to MOD | 1d | 2026-11-06 | 2026-11-06 | DH.1300A-EQP-106 | 53d | 9d | 1439 | DH1300 | GR | HELIX | OO |
| DH.1300A-EQP-110 |  | Gallery 1302 - F130/Line-Ups // Pull Cable Tray Feed from MOD to CRAHU's | 5d | 2026-11-06 | 2026-11-13 | DH.1300A-EQP-106 | 43d | 0d | 1438 | DH1300 | GR | HELIX | OO |
| DH.1300A-EQP-112 |  | Gallery 1302 - F130/Line-Ups // Mount Electrial Gear for Chiller Controls | 10d | 2026-11-06 | 2026-11-20 | DH.1300A-EQP-106 | 37d | 0d | 1443 | DH1300 | GR | HELIX | AC |
| DH.1300A-EQP-108 |  | Gallery 1302 - F130/Line-Ups // Set CDU-DH1300- 12 | 1d | 2026-11-09 | 2026-11-09 | DH.1300A-EQP-107, DH.1300A-EQP-103 | 37d | 0d | 1434 | DH1300 | GR |  |  |
| DH.1300A-EQP-104 |  | Gallery 1302 - F130/Line-Ups // Condensate connections to Floor Drains | 10d | 2026-11-10 | 2026-11-24 | DH.1300A-EQP-103, DH.1300A-EQP-107, DH.1300A-EQP-108 | 37d | 2d | 1436 | DH1300 | GR |  |  |
| DH.1300A-EQP-111 |  | Gallery 1302 - F130/Line-Ups // Mechanical Connections to CRAHU Units | 10d | 2026-11-13 | 2026-11-27 | DH.1300A-EQP-103 SS+5d | 35d | 0d | 1448 | DH1300 | GR |  |  |
| DH.1300A-EQP-117 |  | Gallery 1302 - F130/Line-Ups // Pull Feeder and Branch circuits to MIsc equipment and Chiller controls | 10d | 2026-11-13 | 2026-11-27 | DH.1300A-EQP-112 SS+4d | 37d | 0d | 1444 | DH1300 | GR | HELIX | AC |
| DH.1300A-EQP-113 |  | Gallery 1302 - F130/Line-Ups // Pull Cable Tray Feed from MOD to CRAHU's | 5d | 2026-11-16 | 2026-11-20 | DH.1300A-EQP-110 | 43d | 0d | 1441 | DH1300 | GR | HELIX | OO |
| DH.1300A-EQP-116 |  | Gallery 1302 - F130/Line-Ups // Terminate CRAHU Electrical Connections | 5d | 2026-11-18 | 2026-11-24 | DH.1300A-EQP-113 SS+2d, DH.1300A-EQP-110 | 43d | 6d | 1442 | DH1300 | GR | HELIX | OO |
| DH.1300A-EQP-119 |  | Gallery 1302 - F130/Line-Ups // Teminate all Misc Equipment and Chiller Controls | 10d | 2026-11-19 | 2026-12-03 | DH.1300A-EQP-117 SS+4d | 37d | 0d | 1445 | DH1300 | GR |  |  |
| DH.1300A-EQP-114 |  | Gallery 1302 - F130/Line-Ups // Condensate connections to Floor Drains | 10d | 2026-11-20 | 2026-12-04 | DH.1300A-EQP-111 SS+5d, DH.1300A-EQP-104 SS+5d | 35d | 0d | 1449 | DH1300 | GR |  |  |
| DH.1300A-EQP-115 |  | Gallery 1302 - F130/Line-Ups // Terminate Mod Panels | 1d | 2026-11-23 | 2026-11-23 | DH.1300A-EQP-113, DH.1300A-EQP-110, DH.1300A-EQP-109 | 44d | 7d | 1440 | DH1300 | GR | HELIX | OO |
| DH.1300A-EQP-120 |  | Gallery 1302 - F130/Line-Ups // Electrical Gear FOD Inspection Pre-Start Up | 2d | 2026-12-04 | 2026-12-07 | DH.1300A-EQP-116, DH.1300A-EQP-119, DH.1300A-EQP-115 | 37d | 46d | 1446 | DH1300 | GR | HELIX | QC |
| DH.1300A-EQP-118 |  | Gallery 1302 - F130/Line-Ups // Mechanical Gear FOD Inspection Pre-Start Up | 3d | 2026-12-07 | 2026-12-09 | DH.1300A-EQP-103, DH.1300A-EQP-114, DH.1300A-EQP-104, DH.1300A-EQP-111 | 35d | 44d | 1447 | DH1300 | GR |  |  |

| ID | WBS | Activity | Duration | Start | Finish | Predecessors | Total float | Free float | MSP Activity ID | QTS - AREA | QTS - DASH | QTS - Subcontractor | QTS - Resp |
| --- | --- | --- | --- | --- | --- | --- | --- | --- | --- | --- | --- | --- | --- |
|  | 7 | **G130** |  | 2026-11-06 | 2026-12-10 |  |  |  |  |  |  |  |  |
| DH.1300A-EQP-121 |  | Gallery 1302 - G130/Line-Ups // Set CRAH-DH1300- 13 | 1d | 2026-11-06 | 2026-11-06 | DH.1300A-EQP-103 | -5d | 0d | 1433 | DH1300 | GR |  |  |
| DH.1300A-EQP-123 |  | Gallery 1302 - G130/Line-Ups // Set CRAH-DH1300- 14 | 1d | 2026-11-06 | 2026-11-06 | DH.1300A-EQP-121 SS | -5d | 0d | 1434 | DH1300 | GR |  |  |
| DH.1300A-EQP-125 |  | Gallery 1302 - G130/Line-Ups // Set MOD-G130-01 | 1d | 2026-11-06 | 2026-11-06 | DH.1300A-EQP-123 FF | 36d | 0d | 1437 | DH1300 | GR | HELIX | TBD |
| DH.1300A-EQP-126 |  | Gallery 1302 - G130/Line-Ups // Set MOD-G130-02 | 1d | 2026-11-06 | 2026-11-06 | DH.1300A-EQP-125 SS | 36d | 0d | 1437 | DH1300 | GR | HELIX | TBD |
| DH.1300A-EQP-127 |  | Gallery 1302 - G130/Line-Ups // Set CDU-DH1300- 13 | 1d | 2026-11-09 | 2026-11-09 | DH.1300A-EQP-121 | 36d | 0d | 1434 | DH1300 | GR |  |  |
| DH.1300A-EQP-129 |  | Gallery 1302 - G130/Line-Ups // Pull Feeder from SWD to MOD | 1d | 2026-11-09 | 2026-11-09 | DH.1300A-EQP-126 | 52d | 9d | 1439 | DH1300 | GR | HELIX | OO |
| DH.1300A-EQP-130 |  | Gallery 1302 - G130/Line-Ups // Pull Cable Tray Feed from MOD to CRAHU's | 5d | 2026-11-09 | 2026-11-16 | DH.1300A-EQP-126 | 42d | 0d | 1438 | DH1300 | GR | HELIX | OO |
| DH.1300A-EQP-132 |  | Gallery 1302 - G130/Line-Ups // Mount Electrial Gear for Chiller Controls | 10d | 2026-11-09 | 2026-11-23 | DH.1300A-EQP-126 | 36d | 0d | 1443 | DH1300 | GR | HELIX | AC |
| DH.1300A-EQP-128 |  | Gallery 1302 - G130/Line-Ups // Set CDU-DH1300- 14 | 1d | 2026-11-10 | 2026-11-10 | DH.1300A-EQP-127, DH.1300A-EQP-123 | 36d | 0d | 1434 | DH1300 | GR |  |  |
| DH.1300A-EQP-124 |  | Gallery 1302 - G130/Line-Ups // Condensate connections to Floor Drains | 10d | 2026-11-12 | 2026-11-25 | DH.1300A-EQP-123, DH.1300A-EQP-127, DH.1300A-EQP-128 | 36d | 2d | 1436 | DH1300 | GR |  |  |
| DH.1300A-EQP-131 |  | Gallery 1302 - G130/Line-Ups // Mechanical Connections to CRAHU Units | 10d | 2026-11-16 | 2026-11-30 | DH.1300A-EQP-123 SS+5d | 34d | 0d | 1448 | DH1300 | GR |  |  |
| DH.1300A-EQP-137 |  | Gallery 1302 - G130/Line-Ups // Pull Feeder and Branch circuits to MIsc equipment and Chiller controls | 10d | 2026-11-16 | 2026-11-30 | DH.1300A-EQP-132 SS+4d | 36d | 0d | 1444 | DH1300 | GR | HELIX | AC |
| DH.1300A-EQP-133 |  | Gallery 1302 - G130/Line-Ups // Pull Cable Tray Feed from MOD to CRAHU's | 5d | 2026-11-17 | 2026-11-23 | DH.1300A-EQP-130 | 42d | 0d | 1441 | DH1300 | GR | HELIX | OO |
| DH.1300A-EQP-136 |  | Gallery 1302 - G130/Line-Ups // Terminate CRAHU Electrical Connections | 5d | 2026-11-19 | 2026-11-25 | DH.1300A-EQP-133 SS+2d, DH.1300A-EQP-130 | 42d | 6d | 1442 | DH1300 | GR | HELIX | OO |
| DH.1300A-EQP-139 |  | Gallery 1302 - G130/Line-Ups // Teminate all Misc Equipment and Chiller Controls | 10d | 2026-11-20 | 2026-12-04 | DH.1300A-EQP-137 SS+4d | 36d | 0d | 1445 | DH1300 | GR |  |  |
| DH.1300A-EQP-134 |  | Gallery 1302 - G130/Line-Ups // Condensate connections to Floor Drains | 10d | 2026-11-23 | 2026-12-07 | DH.1300A-EQP-131 SS+5d, DH.1300A-EQP-124 SS+5d | 34d | 0d | 1449 | DH1300 | GR |  |  |
| DH.1300A-EQP-135 |  | Gallery 1302 - G130/Line-Ups // Terminate Mod Panels | 1d | 2026-11-24 | 2026-11-24 | DH.1300A-EQP-133, DH.1300A-EQP-130, DH.1300A-EQP-129 | 43d | 7d | 1440 | DH1300 | GR | HELIX | OO |
| DH.1300A-EQP-140 |  | Gallery 1302 - G130/Line-Ups // Electrical Gear FOD Inspection Pre-Start Up | 2d | 2026-12-07 | 2026-12-08 | DH.1300A-EQP-136, DH.1300A-EQP-139, DH.1300A-EQP-135 | 36d | 45d | 1446 | DH1300 | GR | HELIX | QC |
| DH.1300A-EQP-138 |  | Gallery 1302 - G130/Line-Ups // Mechanical Gear FOD Inspection Pre-Start Up | 3d | 2026-12-08 | 2026-12-10 | DH.1300A-EQP-123, DH.1300A-EQP-134, DH.1300A-EQP-124, DH.1300A-EQP-131 | 34d | 43d | 1447 | DH1300 | GR |  |  |
|  | 8 | **H130** |  | 2026-11-06 | 2026-12-10 |  |  |  |  |  |  |  |  |
| DH.1300A-EQP-141 |  | Gallery 1302 - H130/Line-Ups // Set CRAH-DH1300- 15 | 1d | 2026-11-06 | 2026-11-06 | DH.1300A-EQP-123 SS | -5d | 0d | 1433 | DH1300 | GR |  |  |
| DH.1300A-EQP-143 |  | Gallery 1302 - H130/Line-Ups // Set CRAH-DH1300- 16 | 1d | 2026-11-06 | 2026-11-06 | DH.1300A-EQP-141 SS | -5d | 0d | 1434 | DH1300 | GR |  |  |
| DH.1300A-EQP-145 |  | Gallery 1302 - H130/Line-Ups // Set MOD-H130-01 | 1d | 2026-11-06 | 2026-11-06 | DH.1300A-EQP-143 FF | 36d | 0d | 1437 | DH1300 | GR | HELIX | TBD |
| DH.1300A-EQP-146 |  | Gallery 1302 - H130/Line-Ups // Set MOD-H130-02 | 1d | 2026-11-06 | 2026-11-06 | DH.1300A-EQP-145 SS | 36d | 0d | 1437 | DH1300 | GR | HELIX | TBD |
| DH.1300A-EQP-147 |  | Gallery 1302 - H130/Line-Ups // Set CDU-DH1300- 15 | 1d | 2026-11-09 | 2026-11-09 | DH.1300A-EQP-141 | 36d | 0d | 1434 | DH1300 | GR |  |  |
| DH.1300A-EQP-149 |  | Gallery 1302 - H130/Line-Ups // Pull Feeder from SWD to MOD | 1d | 2026-11-09 | 2026-11-09 | DH.1300A-EQP-146 | 52d | 9d | 1439 | DH1300 | GR | HELIX | OO |
| DH.1300A-EQP-150 |  | Gallery 1302 - H130/Line-Ups // Pull Cable Tray Feed from MOD to CRAHU's | 5d | 2026-11-09 | 2026-11-16 | DH.1300A-EQP-146 | 42d | 0d | 1438 | DH1300 | GR | HELIX | OO |
| DH.1300A-EQP-152 |  | Gallery 1302 - H130/Line-Ups // Mount Electrial Gear for Chiller Controls | 10d | 2026-11-09 | 2026-11-23 | DH.1300A-EQP-146 | 36d | 0d | 1443 | DH1300 | GR | HELIX | AC |
| DH.1300A-EQP-148 |  | Gallery 1302 - H130/Line-Ups // Set CDU-DH1300- 16 | 1d | 2026-11-10 | 2026-11-10 | DH.1300A-EQP-147, DH.1300A-EQP-143 | 36d | 0d | 1434 | DH1300 | GR |  |  |
| DH.1300A-EQP-144 |  | Gallery 1302 - H130/Line-Ups // Condensate connections to Floor Drains | 10d | 2026-11-12 | 2026-11-25 | DH.1300A-EQP-143, DH.1300A-EQP-147, DH.1300A-EQP-148 | 36d | 2d | 1436 | DH1300 | GR |  |  |
| DH.1300A-EQP-151 |  | Gallery 1302 - H130/Line-Ups // Mechanical Connections to CRAHU Units | 10d | 2026-11-16 | 2026-11-30 | DH.1300A-EQP-143 SS+5d | 34d | 0d | 1448 | DH1300 | GR |  |  |
| DH.1300A-EQP-157 |  | Gallery 1302 - H130/Line-Ups // Pull Feeder and Branch circuits to MIsc equipment and Chiller controls | 10d | 2026-11-16 | 2026-11-30 | DH.1300A-EQP-152 SS+4d | 36d | 0d | 1444 | DH1300 | GR | HELIX | AC |
| DH.1300A-EQP-153 |  | Gallery 1302 - H130/Line-Ups // Pull Cable Tray Feed from MOD to CRAHU's | 5d | 2026-11-17 | 2026-11-23 | DH.1300A-EQP-150 | 42d | 0d | 1441 | DH1300 | GR | HELIX | OO |
| DH.1300A-EQP-156 |  | Gallery 1302 - H130/Line-Ups // Terminate CRAHU Electrical Connections | 5d | 2026-11-19 | 2026-11-25 | DH.1300A-EQP-153 SS+2d, DH.1300A-EQP-150 | 42d | 6d | 1442 | DH1300 | GR | HELIX | OO |
| DH.1300A-EQP-159 |  | Gallery 1302 - H130/Line-Ups // Teminate all Misc Equipment and Chiller Controls | 10d | 2026-11-20 | 2026-12-04 | DH.1300A-EQP-157 SS+4d | 36d | 0d | 1445 | DH1300 | GR |  |  |
| DH.1300A-EQP-154 |  | Gallery 1302 - H130/Line-Ups // Condensate connections to Floor Drains | 10d | 2026-11-23 | 2026-12-07 | DH.1300A-EQP-151 SS+5d, DH.1300A-EQP-144 SS+5d | 34d | 0d | 1449 | DH1300 | GR |  |  |
| DH.1300A-EQP-155 |  | Gallery 1302 - H130/Line-Ups // Terminate Mod Panels | 1d | 2026-11-24 | 2026-11-24 | DH.1300A-EQP-153, DH.1300A-EQP-150, DH.1300A-EQP-149 | 43d | 7d | 1440 | DH1300 | GR | HELIX | OO |
| DH.1300A-EQP-160 |  | Gallery 1302 - H130/Line-Ups // Electrical Gear FOD Inspection Pre-Start Up | 2d | 2026-12-07 | 2026-12-08 | DH.1300A-EQP-156, DH.1300A-EQP-159, DH.1300A-EQP-155 | 36d | 45d | 1446 | DH1300 | GR | HELIX | QC |
| DH.1300A-EQP-158 |  | Gallery 1302 - H130/Line-Ups // Mechanical Gear FOD Inspection Pre-Start Up | 3d | 2026-12-08 | 2026-12-10 | DH.1300A-EQP-143, DH.1300A-EQP-154, DH.1300A-EQP-144, DH.1300A-EQP-151 | 34d | 43d | 1447 | DH1300 | GR |  |  |

| ID | WBS | Activity | Duration | Start | Finish | Predecessors | Total float | Free float | MSP Activity ID | QTS - AREA | QTS - DASH | QTS - Subcontractor | QTS - Resp |
| --- | --- | --- | --- | --- | --- | --- | --- | --- | --- | --- | --- | --- | --- |
|  | 9 | **J130** |  | 2026-11-06 | 2026-12-10 |  |  |  |  |  |  |  |  |
| DH.1300A-EQP-161 |  | Gallery 1302 - J130/Line-Ups // Set CRAH-DH1300- 17 | 1d | 2026-11-06 | 2026-11-06 | DH.1300A-EQP-143 SS | -5d | 0d | 1433 | DH1300 | GR |  |  |
| DH.1300A-EQP-163 |  | Gallery 1302 - J130/Line-Ups // Set CRAH-DH1300- 18 | 1d | 2026-11-06 | 2026-11-06 | DH.1300A-EQP-161 SS | -5d | 0d | 1434 | DH1300 | GR |  |  |
| DH.1300A-EQP-165 |  | Gallery 1302 - J130/Line-Ups // Set MOD-J130-01 | 1d | 2026-11-06 | 2026-11-06 | DH.1300A-EQP-163 FF | 36d | 0d | 1437 | DH1300 | GR | HELIX | TBD |
| DH.1300A-EQP-166 |  | Gallery 1302 - J130/Line-Ups // Set MOD-J130-02 | 1d | 2026-11-06 | 2026-11-06 | DH.1300A-EQP-165 SS | 36d | 0d | 1437 | DH1300 | GR | HELIX | TBD |
| DH.1300A-EQP-167 |  | Gallery 1302 - J130/Line-Ups // Set CDU-DH1300- 17 | 1d | 2026-11-09 | 2026-11-09 | DH.1300A-EQP-161 | 36d | 0d | 1434 | DH1300 | GR |  |  |
| DH.1300A-EQP-169 |  | Gallery 1302 - J130/Line-Ups // Pull Feeder from SWD to MOD | 1d | 2026-11-09 | 2026-11-09 | DH.1300A-EQP-166 | 52d | 9d | 1439 | DH1300 | GR | HELIX | OO |
| DH.1300A-EQP-170 |  | Gallery 1302 - J130/Line-Ups // Pull Cable Tray Feed from MOD to CRAHU's | 5d | 2026-11-09 | 2026-11-16 | DH.1300A-EQP-166 | 42d | 0d | 1438 | DH1300 | GR | HELIX | OO |
| DH.1300A-EQP-172 |  | Gallery 1302 - J130/Line-Ups // Mount Electrial Gear for Chiller Controls | 10d | 2026-11-09 | 2026-11-23 | DH.1300A-EQP-166 | 36d | 0d | 1443 | DH1300 | GR | HELIX | AC |
| DH.1300A-EQP-168 |  | Gallery 1302 - J130/Line-Ups // Set CDU-DH1300- 18 | 1d | 2026-11-10 | 2026-11-10 | DH.1300A-EQP-167, DH.1300A-EQP-163 | 36d | 0d | 1434 | DH1300 | GR |  |  |
| DH.1300A-EQP-164 |  | Gallery 1302 - J130/Line-Ups // Condensate connections to Floor Drains | 10d | 2026-11-12 | 2026-11-25 | DH.1300A-EQP-163, DH.1300A-EQP-167, DH.1300A-EQP-168 | 36d | 2d | 1436 | DH1300 | GR |  |  |
| DH.1300A-EQP-171 |  | Gallery 1302 - J130/Line-Ups // Mechanical Connections to CRAHU Units | 10d | 2026-11-16 | 2026-11-30 | DH.1300A-EQP-163 SS+5d | 34d | 0d | 1448 | DH1300 | GR |  |  |
| DH.1300A-EQP-177 |  | Gallery 1302 - J130/Line-Ups // Pull Feeder and Branch circuits to MIsc equipment and Chiller controls | 10d | 2026-11-16 | 2026-11-30 | DH.1300A-EQP-172 SS+4d | 36d | 0d | 1444 | DH1300 | GR | HELIX | AC |
| DH.1300A-EQP-173 |  | Gallery 1302 - J130/Line-Ups // Pull Cable Tray Feed from MOD to CRAHU's | 5d | 2026-11-17 | 2026-11-23 | DH.1300A-EQP-170 | 42d | 0d | 1441 | DH1300 | GR | HELIX | OO |
| DH.1300A-EQP-176 |  | Gallery 1302 - J130/Line-Ups // Terminate CRAHU Electrical Connections | 5d | 2026-11-19 | 2026-11-25 | DH.1300A-EQP-173 SS+2d, DH.1300A-EQP-170 | 42d | 6d | 1442 | DH1300 | GR | HELIX | OO |
| DH.1300A-EQP-179 |  | Gallery 1302 - J130/Line-Ups // Teminate all Misc Equipment and Chiller Controls | 10d | 2026-11-20 | 2026-12-04 | DH.1300A-EQP-177 SS+4d | 36d | 0d | 1445 | DH1300 | GR |  |  |
| DH.1300A-EQP-174 |  | Gallery 1302 - J130/Line-Ups // Condensate connections to Floor Drains | 10d | 2026-11-23 | 2026-12-07 | DH.1300A-EQP-171 SS+5d, DH.1300A-EQP-164 SS+5d | 34d | 0d | 1449 | DH1300 | GR |  |  |
| DH.1300A-EQP-175 |  | Gallery 1302 - J130/Line-Ups // Terminate Mod Panels | 1d | 2026-11-24 | 2026-11-24 | DH.1300A-EQP-173, DH.1300A-EQP-170, DH.1300A-EQP-169 | 43d | 7d | 1440 | DH1300 | GR | HELIX | OO |
| DH.1300A-EQP-180 |  | Gallery 1302 - J130/Line-Ups // Electrical Gear FOD Inspection Pre-Start Up | 2d | 2026-12-07 | 2026-12-08 | DH.1300A-EQP-176, DH.1300A-EQP-179, DH.1300A-EQP-175 | 36d | 45d | 1446 | DH1300 | GR | HELIX | QC |
| DH.1300A-EQP-178 |  | Gallery 1302 - J130/Line-Ups // Mechanical Gear FOD Inspection Pre-Start Up | 3d | 2026-12-08 | 2026-12-10 | DH.1300A-EQP-163, DH.1300A-EQP-174, DH.1300A-EQP-164, DH.1300A-EQP-171 | 34d | 43d | 1447 | DH1300 | GR |  |  |
|  | 10 | **K130** |  | 2026-11-09 | 2026-12-11 |  |  |  |  |  |  |  |  |
| DH.1300A-EQP-181 |  | Gallery 1302 - K130/Line-Ups // Set CRAH-DH1300- 19 | 1d | 2026-11-09 | 2026-11-09 | DH.1300A-EQP-163 | -5d | 0d | 1433 | DH1300 | GR |  |  |
| DH.1300A-EQP-183 |  | Gallery 1302 - K130/Line-Ups // Set CRAH-DH1300- 20 | 1d | 2026-11-09 | 2026-11-09 | DH.1300A-EQP-181 SS | -5d | 0d | 1434 | DH1300 | GR |  |  |
| DH.1300A-EQP-185 |  | Gallery 1302 - K130/Line-Ups // Set MOD-K130-01 | 1d | 2026-11-09 | 2026-11-09 | DH.1300A-EQP-183 FF | 35d | 0d | 1437 | DH1300 | GR | HELIX | TBD |
| DH.1300A-EQP-186 |  | Gallery 1302 - K130/Line-Ups // Set MOD-K130-02 | 1d | 2026-11-09 | 2026-11-09 | DH.1300A-EQP-185 SS | 35d | 0d | 1437 | DH1300 | GR | HELIX | TBD |
| DH.1300A-EQP-187 |  | Gallery 1302 - K130/Line-Ups // Set CDU-DH1300- 19 | 1d | 2026-11-10 | 2026-11-10 | DH.1300A-EQP-181 | 35d | 0d | 1434 | DH1300 | GR |  |  |
| DH.1300A-EQP-189 |  | Gallery 1302 - K130/Line-Ups // Pull Feeder from SWD to MOD | 1d | 2026-11-10 | 2026-11-10 | DH.1300A-EQP-186 | 51d | 9d | 1439 | DH1300 | GR | HELIX | OO |
| DH.1300A-EQP-190 |  | Gallery 1302 - K130/Line-Ups // Pull Cable Tray Feed from MOD to CRAHU's | 5d | 2026-11-10 | 2026-11-17 | DH.1300A-EQP-186 | 41d | 0d | 1438 | DH1300 | GR | HELIX | OO |
| DH.1300A-EQP-192 |  | Gallery 1302 - K130/Line-Ups // Mount Electrial Gear for Chiller Controls | 10d | 2026-11-10 | 2026-11-24 | DH.1300A-EQP-186 | 35d | 0d | 1443 | DH1300 | GR | HELIX | AC |
| DH.1300A-EQP-188 |  | Gallery 1302 - K130/Line-Ups // Set CDU-DH1300- 20 | 1d | 2026-11-12 | 2026-11-12 | DH.1300A-EQP-187, DH.1300A-EQP-183 | 35d | 0d | 1434 | DH1300 | GR |  |  |
| DH.1300A-EQP-184 |  | Gallery 1302 - K130/Line-Ups // Condensate connections to Floor Drains | 10d | 2026-11-13 | 2026-11-27 | DH.1300A-EQP-183, DH.1300A-EQP-187, DH.1300A-EQP-188 | 35d | 2d | 1436 | DH1300 | GR |  |  |
| DH.1300A-EQP-191 |  | Gallery 1302 - K130/Line-Ups // Mechanical Connections to CRAHU Units | 10d | 2026-11-17 | 2026-12-01 | DH.1300A-EQP-183 SS+5d | 33d | 0d | 1448 | DH1300 | GR |  |  |
| DH.1300A-EQP-197 |  | Gallery 1302 - K130/Line-Ups // Pull Feeder and Branch circuits to MIsc equipment and Chiller controls | 10d | 2026-11-17 | 2026-12-01 | DH.1300A-EQP-192 SS+4d | 35d | 0d | 1444 | DH1300 | GR | HELIX | AC |
| DH.1300A-EQP-193 |  | Gallery 1302 - K130/Line-Ups // Pull Cable Tray Feed from MOD to CRAHU's | 5d | 2026-11-18 | 2026-11-24 | DH.1300A-EQP-190 | 41d | 0d | 1441 | DH1300 | GR | HELIX | OO |
| DH.1300A-EQP-196 |  | Gallery 1302 - K130/Line-Ups // Terminate CRAHU Electrical Connections | 5d | 2026-11-20 | 2026-11-27 | DH.1300A-EQP-193 SS+2d, DH.1300A-EQP-190 | 41d | 6d | 1442 | DH1300 | GR | HELIX | OO |
| DH.1300A-EQP-199 |  | Gallery 1302 - K130/Line-Ups // Teminate all Misc Equipment and Chiller Controls | 10d | 2026-11-23 | 2026-12-07 | DH.1300A-EQP-197 SS+4d | 35d | 0d | 1445 | DH1300 | GR |  |  |
| DH.1300A-EQP-194 |  | Gallery 1302 - K130/Line-Ups // Condensate connections to Floor Drains | 10d | 2026-11-24 | 2026-12-08 | DH.1300A-EQP-191 SS+5d, DH.1300A-EQP-184 SS+5d | 33d | 0d | 1449 | DH1300 | GR |  |  |
| DH.1300A-EQP-195 |  | Gallery 1302 - K130/Line-Ups // Terminate Mod Panels | 1d | 2026-11-25 | 2026-11-25 | DH.1300A-EQP-193, DH.1300A-EQP-190, DH.1300A-EQP-189 | 42d | 7d | 1440 | DH1300 | GR | HELIX | OO |
| DH.1300A-EQP-200 |  | Gallery 1302 - K130/Line-Ups // Electrical Gear FOD Inspection Pre-Start Up | 2d | 2026-12-08 | 2026-12-09 | DH.1300A-EQP-196, DH.1300A-EQP-199, DH.1300A-EQP-195 | 35d | 44d | 1446 | DH1300 | GR | HELIX | QC |
| DH.1300A-EQP-198 |  | Gallery 1302 - K130/Line-Ups // Mechanical Gear FOD Inspection Pre-Start Up | 3d | 2026-12-09 | 2026-12-11 | DH.1300A-EQP-183, DH.1300A-EQP-194, DH.1300A-EQP-184, DH.1300A-EQP-191 | 33d | 42d | 1447 | DH1300 | GR |  |  |

| ID | WBS | Activity | Duration | Start | Finish | Predecessors | Total float | Free float | MSP Activity ID | QTS - AREA | QTS - DASH | QTS - Subcontractor | QTS - Resp | MBTA: Work Type |
| --- | --- | --- | --- | --- | --- | --- | --- | --- | --- | --- | --- | --- | --- | --- |
|  | 11 | **R130** |  | 2026-11-09 | 2026-12-09 |  |  |  |  |  |  |  |  |  |
| DH.1300A-EQP-201 |  | Gallery 1302 - R130/Line-Ups // Set CRAH-DH1300- 21 | 1d | 2026-11-09 | 2026-11-09 | DH.1300A-EQP-183 SS | -5d | 0d | 1433 | DH1300 | GR |  |  |  |
| DH.1300A-EQP-203 |  | Gallery 1302 - R130/Line-Ups // Set CRAH-DH1300- 22 | 1d | 2026-11-09 | 2026-11-09 | DH.1300A-EQP-201 SS | -5d | 0d | 1434 | DH1300 | GR |  |  |  |
| DH.1300A-EQP-205 |  | Gallery 1302 - R130/Line-Ups // Set MOD-R130-01 | 1d | 2026-11-09 | 2026-11-09 | DH.1300A-EQP-203 FF | -5d | 0d | 1437 | DH1300 | GR | HELIX | TBD |  |
| DH.1300A-EQP-206 |  | Gallery 1302 - R130/Line-Ups // Set MOD-R130-02 | 1d | 2026-11-09 | 2026-11-09 | DH.1300A-EQP-205 SS | -5d | 0d | 1437 | DH1300 | GR | HELIX | TBD |  |
| DH.1300A-EQP-207 |  | Gallery 1302 - R130/Line-Ups // Set CDU-DH1300- 21 | 1d | 2026-11-10 | 2026-11-10 | DH.1300A-EQP-201 | -5d | 0d | 1434 | DH1300 | GR |  |  |  |
| DH.1300A-EQP-210 |  | Gallery 1302 - R130/Line-Ups // Pull Cable Tray Feed from MOD to CRAHU's | 5d | 2026-11-10 | 2026-11-17 | DH.1300A-EQP-206 | 1d | 0d | 1438 | DH1300 | GR | HELIX | OO |  |
| DH.1300A-EQP-211 |  | Gallery 1302 - R130/Line-Ups // Mechanical Connections to CRAHU Units | 10d | 2026-11-10 | 2026-11-24 | DH.1300A-EQP-203 | -3d | 2d | 1448 | DH1300 | GR |  |  |  |
| DH.1300A-EQP-212 |  | Gallery 1302 - R130/Line-Ups // Mount Electrial Gear for Chiller Controls | 10d | 2026-11-10 | 2026-11-24 | DH.1300A-EQP-206 | -5d | 0d | 1443 | DH1300 | GR | HELIX | AC |  |
| DH.1300A-EQP-208 |  | Gallery 1302 - R130/Line-Ups // Set CDU-DH1300- 22 | 1d | 2026-11-12 | 2026-11-12 | DH.1300A-EQP-207, DH.1300A-EQP-203 | -5d | 0d | 1434 | DH1300 | GR |  |  |  |
| DH.1300A-EQP-204 |  | Gallery 1302 - R130/Line-Ups // Condensate connections to Floor Drains | 10d | 2026-11-13 | 2026-11-27 | DH.1300A-EQP-203, DH.1300A-EQP-207, DH.1300A-EQP-208 | -5d | 0d | 1436 | DH1300 | GR |  |  |  |
| DH.1300A-EQP-221 |  | Gallery 1302 - R130/Line-Ups // Set SWD-R130 | 1d | 2026-11-13 | 2026-11-13 | DH.1300A-EQP-208 | 7d | 0d | 1437 | DH1300 | GR |  |  |  |
| DH.1300A-EQP-222 |  | Gallery 1302 - R130/Line-Ups // Set SWD-TIE-R130 | 1d | 2026-11-16 | 2026-11-16 | DH.1300A-EQP-221 | 7d | 0d | 1437 | DH1300 | GR |  |  |  |
| DH.1300A-EQP-209 |  | Gallery 1302 - R130/Line-Ups // Pull Feeder from SWD to MOD | 1d | 2026-11-17 | 2026-11-17 | DH.1300A-EQP-222, DH.1300A-EQP-206 | 7d | 5d | 1439 | DH1300 | GR | HELIX | OO |  |
| DH.1300A-EQP-217 |  | Gallery 1302 - R130/Line-Ups // Pull Feeder and Branch circuits to MIsc equipment and Chiller controls | 10d | 2026-11-17 | 2026-12-01 | DH.1300A-EQP-212 SS+4d | -5d | 0d | 1444 | DH1300 | GR | HELIX | AC |  |
| DH.1300A-EQP-213 |  | Gallery 1302 - R130/Line-Ups // Pull Cable Tray Feed from MOD to CRAHU's | 5d | 2026-11-18 | 2026-11-24 | DH.1300A-EQP-210 | 1d | 0d | 1441 | DH1300 | GR | HELIX | OO |  |
| DH.1300A-EQP-214 |  | Gallery 1302 - R130/Line-Ups // Condensate connections to Floor Drains | 10d | 2026-11-20 | 2026-12-04 | DH.1300A-EQP-211 SS+5d, DH.1300A-EQP-204 SS+5d | -5d | 0d | 1449 | DH1300 | GR |  |  |  |
| DH.1300A-EQP-216 |  | Gallery 1302 - R130/Line-Ups // Terminate CRAHU Electrical Connections | 5d | 2026-11-20 | 2026-11-27 | DH.1300A-EQP-213 SS+2d, DH.1300A-EQP-210 | 1d | 6d | 1442 | DH1300 | GR | HELIX | OO |  |
| DH.1300A-EQP-219 |  | Gallery 1302 - R130/Line-Ups // Teminate all Misc Equipment and Chiller Controls | 10d | 2026-11-23 | 2026-12-07 | DH.1300A-EQP-217 SS+4d | -5d | 0d | 1445 | DH1300 | GR |  |  |  |
| DH.1300A-EQP-215 |  | Gallery 1302 - R130/Line-Ups // Terminate Mod Panels | 1d | 2026-11-25 | 2026-11-25 | DH.1300A-EQP-213, DH.1300A-EQP-210, DH.1300A-EQP-209 | 2d | 7d | 1440 | DH1300 | GR | HELIX | OO |  |
| DH.1300A-EQP-218 |  | Gallery 1302 - R130/Line-Ups // Mechanical Gear FOD Inspection Pre-Start Up | 3d | 2026-12-07 | 2026-12-09 | DH.1300A-EQP-203, DH.1300A-EQP-214, DH.1300A-EQP-204, DH.1300A-EQP-211 | -5d | 4d | 1447 | DH1300 | GR |  |  |  |
| DH.1300A-EQP-220 |  | Gallery 1302 - R130/Line-Ups // Electrical Gear FOD Inspection Pre-Start Up | 2d | 2026-12-08 | 2026-12-09 | DH.1300A-EQP-216, DH.1300A-EQP-219, DH.1300A-EQP-215 | -5d | 4d | 1446 | DH1300 | GR | HELIX | QC |  |
|  | 12 | **Equipment Connections** |  | 2026-11-18 | 2026-12-09 |  |  |  |  |  |  |  |  |  |
|  | 1 | **CRAH** |  | 2026-11-18 | 2026-11-30 |  |  |  |  |  |  |  |  |  |
| DH1300.MG.A110.8687 |  | Gallery 1302 // DH 1300 / Elec Room // CRAH Duct Work Termination | 2d | 2026-11-18 | 2026-11-19 | DH.1300A-EQP-210 | 2d | 0d | 7037 | DH1300 | GR |  |  | Con/Install |
| DH1300.MG.A110.8686 |  | Gallery 1302 // DH 1300 / Elec Room // CRAH Chilled Water | 2d | 2026-11-20 | 2026-11-23 | DH1300.MG.A110.8687 | 2d | 0d | 7035 | DH1300 | GR |  |  | Con/Install |
| DH1300.MG.A110.8684 |  | Gallery 1302 // DH 1300 / Elec Room // CRAH Power Connections | 2d | 2026-11-24 | 2026-11-25 | DH1300.MG.A110.8686 | 2d | 0d | 7034 | DH1300 | GR | HELIX | OO | Con/Install |
| DH1300.MG.A110.8685 |  | Gallery 1302 // DH 1300 / Elec Room // CRAH LV Connections | 2d | 2026-11-27 | 2026-11-30 | DH1300.MG.A110.8684 | 2d | 11d | 7036 | DH1300 | GR |  |  | Con/Install |

| ID | WBS | Activity | Type | Duration | Start | Finish | Predecessors | Complete | Remaining | Planned start | Planned finish | Total float | Free float | MSP Activity ID | QTS - Subcontractor | QTS - AREA | QTS - Resp | MBTA: Work Type | QTS - DASH | 05 -SUFFOLK - Building Phase | 12 - SUFFOLK - Export_to_Procore |
| --- | --- | --- | --- | --- | --- | --- | --- | --- | --- | --- | --- | --- | --- | --- | --- | --- | --- | --- | --- | --- | --- |
|  | 2 | **CDU** |  |  | 2026-12-08 | 2026-12-09 |  |  |  |  |  |  |  |  |  |  |  |  |  |  |  |
| DH1300.MG.A110.8688 |  | Gallery 1302 // DH 1300 /Elec Room // CDU Power Connections |  | 2d | 2026-12-08 | 2026-12-09 | DH1300.MG.A110.8690 SS |  |  |  |  | -5d | 0d | 7039 | HELIX | DH1300 | OO | Con/Install | GR |  |  |
| DH1300.MG.A110.8689 |  | Gallery 1302 // DH 11300 / Elec Room // CDU Controls Connections |  | 2d | 2026-12-08 | 2026-12-09 | DH1300.MG.A110.8688 SS |  |  |  |  | -5d | 4d | 7041 |  | DH1300 |  | Con/Install | GR |  |  |
| DH1300.MG.A110.8690 |  | Gallery 1302 // DH 1300 / Elec Room // CDU Chilled Water Connections |  | 2d | 2026-12-08 | 2026-12-09 | DH.1300A-EQP-219 |  |  |  |  | -5d | 0d | 7040 |  | DH1300 |  | Con/Install | GR |  |  |
|  | 3 | **MOD** |  |  | 2026-11-25 | 2026-12-01 |  |  |  |  |  |  |  |  |  |  |  |  |  |  |  |
| DH1300.MG.A110.8691 |  | Gallery 1302 // DH 1300 / Elec Room // MOD Power Connections |  | 2d | 2026-11-25 | 2026-11-27 | DH.1300A-EQP-213 |  |  |  |  | 1d | 0d | 7043 | HELIX | DH1300 | OO | Con/Install | GR |  |  |
| DH1300.MG.A110.8692 |  | Gallery 1302 // DH 1300 / Elec Room // MOD LV Connections |  | 2d | 2026-11-30 | 2026-12-01 | DH1300.MG.A110.8691 |  |  |  |  | 1d | 10d | 7044 | HELIX | DH1300 | AC | Con/Install | GR |  |  |
|  | 4 | **Gallery 1303** |  |  | 2026-08-05 | 2026-12-18 |  |  |  |  |  |  |  |  |  |  |  |  |  |  |  |
|  | 1 | **Architectural** |  |  | 2026-08-05 | 2026-12-09 |  |  |  |  |  |  |  |  |  |  |  |  |  |  |  |
| DH.13001010 |  | DH 1300/Gallery 1303 // MEPF overhead layout |  | 5d | 2026-08-05 A | 2026-08-11 A | DH.1300670 SS | 100% |  | 2026-08-07 | 2026-08-13 |  |  | 1453 | HELIX | DH1300 | ACOO |  | GR | 2 | Y |
| DH.13001000 |  | DH 1300/Gallery 1303 // Seal concrete |  | 2d | 2026-08-06 A | 2026-08-07 A | DH.13001010 SS | 100% |  | 2026-08-05 | 2026-08-06 |  |  | 1452 |  | DH1300 |  |  | GR | 2 | Y |
| DH.13001040 |  | DH 1300/Gallery 1303 // Frame walls |  | 6d | 2026-09-21 A | 2026-09-28 A | DH.13000.1010 | 100% |  | 2026-08-19 | 2026-08-26 |  |  | 1456 |  | DH1300 |  |  | GR | 2 | Y |
| F.1000A.1475 |  | DH 1300/Gallery 1303 // BMS & EPMS Rough-In |  | 2d | 2026-09-24 A | 2026-09-25 A | DH.13001040 | 100% |  | 2026-11-04 | 2026-11-05 |  |  |  |  | DH1300 |  |  |  |  |  |
| DH.13001050 |  | DH 1300/Gallery 1303 // Install Sheetrock Top Down |  | 6d | 2026-09-29 A | 2026-10-21 | DH.13001040 SS+3d |  | 6d | 2026-09-30 | 2026-10-07 | -1d | 0d | 1461 |  | DH1300 |  |  | GR |  |  |
| DH.13001090 |  | DH 1300/Gallery 1303 // Install Balance of Sheetrock on walls |  | 6d | 2026-10-01 A | 2026-10-27 | DH.13001030 FF, DH.13001080 FF |  | 6d | 2026-10-13 | 2026-10-20 | -1d | 0d | 1460 |  | DH1300 |  |  | GR | 2 |  |
| DH.13001100 |  | DH 1300/Gallery 1303 // Tape and finish walls |  | 8d | 2026-10-01 A | 2026-10-28 | DH.13001090 FF+1d, DH.13001050 FF+1d |  | 8d | 2026-10-20 | 2026-10-29 | -1d | 0d | 1462 |  | DH1300 |  |  | GR | 2 |  |
| DH.13001070 |  | DH 1300/Gallery 1303 // MEP rough in walls |  | 4d | 2026-10-05 A | 2026-10-12 A | DH.13001040 | 100% |  | 2026-10-13 | 2026-10-16 |  |  | 1458 | HELIX | DH1300 | AC |  | GR | 2 |  |
| DH.13001030 |  | DH 1300/Gallery 1303 // MEPF high overhead install |  | 10d | 2026-10-06 A | 2026-10-27 | DH.13001010, DH.13001050 SS+4d |  | 10d | 2026-10-06 | 2026-10-20 | -1d | 0d | 1455 | HELIX | DH1300 | ACOO |  | GR | 2 |  |
| DH.13001060 |  | DH 1300/Gallery 1303 // Install wall door frames |  | 2d | 2026-10-12 A | 2026-10-20 | DH.13001100 SS |  | 2d | 2026-10-30 | 2026-11-02 | 1d | 2d | 1457 |  | DH1300 |  |  | GR | 2 |  |
| DH.13001080 |  | DH 1300/Gallery 1303 // In wall inspection |  | 1d | 2026-10-12 A | 2026-10-12 A | DH.13001070 | 100% |  | 2026-10-19 | 2026-10-19 |  |  | 1459 |  | DH1300 |  |  | GR | 2 |  |
| DH.13001110 |  | DH 1300/Gallery 1303 // Prime and Paint walls |  | 4d | 2026-10-19 | 2026-10-22 | DH.13001100 SS+4d |  |  |  |  | -1d | 0d | 1463 |  | DH1300 |  |  | GR | 2 |  |
| DH.13001120 |  | DH 1300/Gallery 1303 // Touch up Walls and Fianl Paint |  | 5d | 2026-10-23 | 2026-10-29 | DH.13001110, DH.13001060 |  |  |  |  | -1d | 0d | 1464 |  | DH1300 |  |  | GR | 2 |  |
| B120001.3151 |  | DH 1300/Gallery 1303 // Install Overhead Cable Ladder / 36" Cable Tray - TFO |  | 5d | 2026-10-28 | 2026-11-03 | DH.13001030 |  |  |  |  | 35d | 0d | 1181 |  |  |  |  | GR |  |  |
| DH.13001130 |  | DH 1300/Gallery 1303 // Install Trim and Devices |  | 2d | 2026-10-28 | 2026-10-29 | DH.13001120 FF |  |  |  |  | -1d | 0d | 1465 | HELIX | DH1300 | AC |  | GR |  |  |
| DH.160012146 |  | DH 1300/Gallery 1303 // Ready to Receive Equipment | milestone | 0d | 2026-10-29 | 2026-10-29 | DH.13001130 FF |  |  |  |  | -1d | 3d | 1465 | HELIX | DH1300 | TBD |  | GR |  |  |
| B120001.3152 |  | DH 1300/Gallery 1303 // Install Overhead HAC - TFO |  | 5d | 2026-11-04 | 2026-11-10 | B120001.3151 |  |  |  |  | 35d | 0d | 1181 |  |  |  |  | GR |  |  |
| F.1000A.1281 |  | DH 1300/Gallery 1303 // Rough-In Security |  | 2d | 2026-11-12 | 2026-11-13 | B120001.3152, DH.13001030 |  |  |  |  | 35d | 0d | 1156 | HELIX | DH1300 | AC |  | GR |  |  |
| F.1000A.1282 |  | DH 1300/Gallery 1303 // Pull & Test Security Cable |  | 3d | 2026-11-16 | 2026-11-18 | F.1000A.1281 |  |  |  |  | 35d | 0d | 1156 |  | DH1300 |  |  | GR |  |  |
| F.1000A.1283 |  | DH 1300/Gallery 1303 // Install Security Devices |  | 2d | 2026-11-19 | 2026-11-20 | F.1000A.1282 |  |  |  |  | 35d | 0d | 1156 |  | DH1300 |  |  | GR |  |  |
| F.1000A.1284 |  | DH 1300/Gallery 1303 // Mount & Terminate Security Devices |  | 5d | 2026-11-23 | 2026-11-30 | DH.13001110, F.1000A.1283 |  |  |  |  | 35d | 0d | 1156 |  | DH1300 |  |  | GR |  |  |
| F.1000A.1285 |  | DH 1300/Gallery 1303 // Test Security Devices |  | 2d | 2026-12-01 | 2026-12-02 | DH.13001130, F.1000A.1284, F.1000A.1475 FF |  |  |  |  | 35d | 0d | 1156 |  | DH1300 |  |  | GR |  |  |
| DH.13001140 |  | DH 1300/Gallery 1303 // Suffolk Pre Punch |  | 5d | 2026-12-03 | 2026-12-09 | F.1000A.1285, DH.160012146 |  |  |  |  | 35d | 44d | 1466 |  | DH1300 |  |  | GR |  |  |

| ID | WBS | Activity | Duration | Start | Finish | Predecessors | Total float | Free float | MSP Activity ID | QTS - AREA | QTS - DASH | QTS - Subcontractor | QTS - Resp |
| --- | --- | --- | --- | --- | --- | --- | --- | --- | --- | --- | --- | --- | --- |
|  | 16 | **Raceway** |  |  |  |  |  |  |  |  |  |  |  |
|  | 3 | **Equipment Line-Ups** |  | 2026-10-14 | 2026-12-18 |  |  |  |  |  |  |  |  |
|  | 1 | **A130** |  | 2026-11-04 | 2026-12-08 |  |  |  |  |  |  |  |  |
| DH.1300B-EQP-1 |  | Gallery 1303 - A130/Line-Ups // Set CRAH-DH1300- 23 | 1d | 2026-11-04 | 2026-11-04 | DH.160012146, DH.13006360 | -4d | 0d | 1474 | DH1300 | GR |  |  |
| DH.1300B-EQP-4 |  | Gallery 1303 - A130/Line-Ups // Set CRAH-DH1300- 24 | 1d | 2026-11-04 | 2026-11-04 | DH.1300B-EQP-1 SS, DH.1300B-EQP-1 FF | -4d | 0d | 1475 | DH1300 | GR |  |  |
| DH.1300B-EQP-10 |  | Gallery 1303 - A130/Line-Ups // Mount Electrial Gear for Chiller Controls | 10d | 2026-11-05 | 2026-11-19 | DH.1300B-EQP-4 | 38d | 0d | 1484 | DH1300 | GR | HELIX | AC |
| DH.1300B-EQP-14 |  | Gallery 1303 - A130/Line-Ups // Terminate Electrical Connections - CRAHU | 3d | 2026-11-05 | 2026-11-09 | DH.1300B-EQP-1 | 53d | 15d | 1483 | DH1300 | GR | HELIX | OO |
| DH.1300B-EQP-199 |  | Gallery 1303 - A130/Line-Ups // Set CDU-DH1300-23 | 1d | 2026-11-05 | 2026-11-05 | DH.1300B-EQP-4 | 41d | 3d | 1478 | DH1300 | GR |  |  |
| DH.1300B-EQP-200 |  | Gallery 1303 - A130/Line-Ups // Set CDU-DH1300-24 | 1d | 2026-11-05 | 2026-11-05 | DH.1300B-EQP-4 | 41d | 3d | 1478 | DH1300 | GR |  |  |
| DH.1300B-EQP-3 |  | Gallery 1303 - A130/Line-Ups // Condensate connections to Floor Drains | 10d | 2026-11-05 | 2026-11-19 | DH.1300B-EQP-1 SS, DH.1300B-EQP-4 | 40d | 4d | 1477 | DH1300 | GR |  |  |
| DH.1300B-EQP-15 |  | Gallery 1303 - A130/Line-Ups // Pull Feeder and Branch circuits to MIsc equipment and Chiller controls | 10d | 2026-11-12 | 2026-11-25 | DH.1300B-EQP-200, DH.1300B-EQP-199, DH.1300B-EQP-10 SS+4d | 38d | 0d | 1485 | DH1300 | GR | HELIX | AC |
| DH.1300B-EQP-9 |  | Gallery 1303 - A130/Line-Ups // Mechanical Connections to CRAHU Units | 5d | 2026-11-12 | 2026-11-18 | DH.1300B-EQP-4 SS+5d | 36d | 0d | 1489 | DH1300 | GR |  |  |
| DH.1300B-EQP-17 |  | Gallery 1303 - A130/Line-Ups // Teminate all Misc Equipment and Chiller Controls | 10d | 2026-11-18 | 2026-12-02 | DH.1300B-EQP-15 SS+4d | 38d | 0d | 1486 | DH1300 | GR |  |  |
| DH.1300B-EQP-12 |  | Gallery 1303 - A130/Line-Ups // Condensate connections to Floor Drains | 10d | 2026-11-19 | 2026-12-03 | DH.1300B-EQP-9 SS+5d, DH.1300B-EQP-3 SS+5d | 36d | 0d | 1490 | DH1300 | GR |  |  |
| DH.1300B-EQP-18 |  | Gallery 1303 - A130/Line-Ups // Electrical Gear FOD Inspection Pre-Start Up | 2d | 2026-12-03 | 2026-12-04 | DH.1300B-EQP-14, DH.1300B-EQP-17 | 38d | 47d | 1487 | DH1300 | GR | HELIX | QC |
| DH.1300B-EQP-16 |  | Gallery 1303 - A130/Line-Ups // Mechanical Gear FOD Inspection Pre-Start Up | 3d | 2026-12-04 | 2026-12-08 | DH.1300B-EQP-12, DH.1300B-EQP-3, DH.1300B-EQP-9, DH.1300B-EQP-1 SS, DH.1300B-EQP-4 | 36d | 45d | 1488 | DH1300 | GR |  |  |
|  | 2 | **B130** |  | 2026-11-04 | 2026-12-15 |  |  |  |  |  |  |  |  |
| DH.1300B-EQP-19 |  | Gallery 1303 - B130/Line-Ups // Set CRAH-DH1300- 25 | 1d | 2026-11-04 | 2026-11-04 | DH.1300B-EQP-4 SS | -4d | 0d | 1474 | DH1300 | GR |  |  |
| DH.1300B-EQP-22 |  | Gallery 1303 - B130/Line-Ups // Set CRAH-DH1300- 26 | 1d | 2026-11-04 | 2026-11-04 | DH.1300B-EQP-19 SS, DH.1300B-EQP-19 FF | -4d | 0d | 1475 | DH1300 | GR |  |  |
| DH.1300B-EQP-201 |  | Gallery 1303 - B130/Line-Ups // Set CDU-DH1300-25 | 1d | 2026-11-05 | 2026-11-05 | DH.1300B-EQP-22 | 41d | 3d | 1478 | DH1300 | GR |  |  |
| DH.1300B-EQP-202 |  | Gallery 1303 - B130/Line-Ups // Set CDU-DH1300-26 | 1d | 2026-11-05 | 2026-11-05 | DH.1300B-EQP-22 | 41d | 3d | 1478 | DH1300 | GR |  |  |
| DH.1300B-EQP-28 |  | Gallery 1303 - B130/Line-Ups // Mount Electrial Gear for Chiller Controls | 10d | 2026-11-05 | 2026-11-19 | DH.1300B-EQP-22 | 38d | 0d | 1484 | DH1300 | GR | HELIX | AC |
| DH.1300B-EQP-32 |  | Gallery 1303 - B130/Line-Ups // Terminate CRAHU Electrical Connections | 5d | 2026-11-05 | 2026-11-12 | DH.1300B-EQP-19 | 51d | 13d | 1483 | DH1300 | GR | HELIX | OO |
| DH.1300B-EQP-20 |  | Gallery 1303 - B130/Line-Ups // Connect CRAH units | 10d | 2026-11-12 | 2026-11-25 | DH.1300B-EQP-19 SS+5d, DH.1300B-EQP-22 | 31d | 0d | 1476 | DH1300 | GR |  |  |
| DH.1300B-EQP-27 |  | Gallery 1303 - B130/Line-Ups // Mechanical Connections to CRAHU Units | 10d | 2026-11-12 | 2026-11-25 | DH.1300B-EQP-22 SS+5d | 36d | 5d | 1489 | DH1300 | GR |  |  |
| DH.1300B-EQP-33 |  | Gallery 1303 - B130/Line-Ups // Pull Feeder and Branch circuits to MIsc equipment and Chiller controls | 10d | 2026-11-12 | 2026-11-25 | DH.1300B-EQP-202, DH.1300B-EQP-201, DH.1300B-EQP-28 SS+4d | 38d | 0d | 1485 | DH1300 | GR | HELIX | AC |
| DH.1300B-EQP-35 |  | Gallery 1303 - B130/Line-Ups // Teminate all Misc Equipment and Chiller Controls | 10d | 2026-11-18 | 2026-12-02 | DH.1300B-EQP-33 SS+4d | 38d | 0d | 1486 | DH1300 | GR |  |  |
| DH.1300B-EQP-21 |  | Gallery 1303 - B130/Line-Ups // Condensate connections to Floor Drains | 10d | 2026-11-19 | 2026-12-03 | DH.1300B-EQP-20 SS+5d | 31d | 0d | 1477 | DH1300 | GR |  |  |
| DH.1300B-EQP-30 |  | Gallery 1303 - B130/Line-Ups // Condensate connections to Floor Drains | 10d | 2026-11-27 | 2026-12-10 | DH.1300B-EQP-27 SS+5d, DH.1300B-EQP-21 SS+5d | 31d | 0d | 1490 | DH1300 | GR |  |  |
| DH.1300B-EQP-36 |  | Gallery 1303 - B130/Line-Ups // Electrical Gear FOD Inspection Pre-Start Up | 2d | 2026-12-03 | 2026-12-04 | DH.1300B-EQP-32, DH.1300B-EQP-35 | 38d | 47d | 1487 | DH1300 | GR | HELIX | QC |
| DH.1300B-EQP-34 |  | Gallery 1303 - B130/Line-Ups // Mechanical Gear FOD Inspection Pre-Start Up | 3d | 2026-12-11 | 2026-12-15 | DH.1300B-EQP-30, DH.1300B-EQP-21, DH.1300B-EQP-27, DH.1300B-EQP-20 | 31d | 40d | 1488 | DH1300 | GR |  |  |

| ID | WBS | Activity | Duration | Start | Finish | Predecessors | Total float | Free float | MSP Activity ID | QTS - AREA | QTS - DASH | QTS - Subcontractor | QTS - Resp |
| --- | --- | --- | --- | --- | --- | --- | --- | --- | --- | --- | --- | --- | --- |
|  | 3 | **C130** |  | 2026-11-04 | 2026-12-15 |  |  |  |  |  |  |  |  |
| DH.1300B-EQP-37 |  | Gallery 1303 - C130/Line-Ups // Set CRAH-DH1300- 27 | 1d | 2026-11-04 | 2026-11-04 | DH.1300B-EQP-22 SS | -4d | 0d | 1474 | DH1300 | GR |  |  |
| DH.1300B-EQP-40 |  | Gallery 1303 - C130/Line-Ups // Set CRAH-DH1300- 28 | 1d | 2026-11-04 | 2026-11-04 | DH.1300B-EQP-37 SS, DH.1300B-EQP-37 FF | -4d | 0d | 1475 | DH1300 | GR |  |  |
| DH.1300B-EQP-203 |  | Gallery 1303 - C130/Line-Ups // Set CDU-DH1300-27 | 1d | 2026-11-05 | 2026-11-05 | DH.1300B-EQP-40 | 41d | 3d | 1478 | DH1300 | GR |  |  |
| DH.1300B-EQP-204 |  | Gallery 1303 - C130/Line-Ups // Set CDU-DH1300-28 | 1d | 2026-11-05 | 2026-11-05 | DH.1300B-EQP-40 | 41d | 3d | 1478 | DH1300 | GR |  |  |
| DH.1300B-EQP-46 |  | Gallery 1303 - C130/Line-Ups // Mount Electrial Gear for Chiller Controls | 10d | 2026-11-05 | 2026-11-19 | DH.1300B-EQP-40 | 38d | 0d | 1484 | DH1300 | GR | HELIX | AC |
| DH.1300B-EQP-50 |  | Gallery 1303 - C130/Line-Ups // Terminate CRAHU Electrical Connections | 5d | 2026-11-05 | 2026-11-12 | DH.1300B-EQP-37 | 51d | 13d | 1483 | DH1300 | GR | HELIX | OO |
| DH.1300B-EQP-38 |  | Gallery 1303 - C130/Line-Ups // Connect CRAH units | 10d | 2026-11-12 | 2026-11-25 | DH.1300B-EQP-37 SS+5d, DH.1300B-EQP-40 | 31d | 0d | 1476 | DH1300 | GR |  |  |
| DH.1300B-EQP-45 |  | Gallery 1303 - C130/Line-Ups // Mechanical Connections to CRAHU Units | 10d | 2026-11-12 | 2026-11-25 | DH.1300B-EQP-40 SS+5d | 36d | 5d | 1489 | DH1300 | GR |  |  |
| DH.1300B-EQP-51 |  | Gallery 1303 - C130/Line-Ups // Pull Feeder and Branch circuits to MIsc equipment and Chiller controls | 10d | 2026-11-12 | 2026-11-25 | DH.1300B-EQP-203, DH.1300B-EQP-204, DH.1300B-EQP-46 SS+4d | 38d | 0d | 1485 | DH1300 | GR | HELIX | AC |
| DH.1300B-EQP-53 |  | Gallery 1303 - C130/Line-Ups // Teminate all Misc Equipment and Chiller Controls | 10d | 2026-11-18 | 2026-12-02 | DH.1300B-EQP-51 SS+4d | 38d | 0d | 1486 | DH1300 | GR |  |  |
| DH.1300B-EQP-39 |  | Gallery 1303 - C130/Line-Ups // Condensate connections to Floor Drains | 10d | 2026-11-19 | 2026-12-03 | DH.1300B-EQP-38 SS+5d | 31d | 0d | 1477 | DH1300 | GR |  |  |
| DH.1300B-EQP-48 |  | Gallery 1303 - C130/Line-Ups // Condensate connections to Floor Drains | 10d | 2026-11-27 | 2026-12-10 | DH.1300B-EQP-45 SS+5d, DH.1300B-EQP-39 SS+5d | 31d | 0d | 1490 | DH1300 | GR |  |  |
| DH.1300B-EQP-54 |  | Gallery 1303 - C130/Line-Ups // Electrical Gear FOD Inspection Pre-Start Up | 2d | 2026-12-03 | 2026-12-04 | DH.1300B-EQP-50, DH.1300B-EQP-53 | 38d | 47d | 1487 | DH1300 | GR | HELIX | QC |
| DH.1300B-EQP-52 |  | Gallery 1303 - C130/Line-Ups // Mechanical Gear FOD Inspection Pre-Start Up | 3d | 2026-12-11 | 2026-12-15 | DH.1300B-EQP-48, DH.1300B-EQP-39, DH.1300B-EQP-45, DH.1300B-EQP-38 | 31d | 40d | 1488 | DH1300 | GR |  |  |
|  | 4 | **D130** |  | 2026-11-05 | 2026-12-16 |  |  |  |  |  |  |  |  |
| DH.1300B-EQP-55 |  | Gallery 1303 - D130/Line-Ups // Set CRAH-DH1300- 29 | 1d | 2026-11-05 | 2026-11-05 | DH.1300B-EQP-40 | -4d | 0d | 1474 | DH1300 | GR |  |  |
| DH.1300B-EQP-58 |  | Gallery 1303 - D130/Line-Ups // Set CRAH-DH1300-30 | 1d | 2026-11-05 | 2026-11-05 | DH.1300B-EQP-55 SS, DH.1300B-EQP-55 FF | -4d | 0d | 1475 | DH1300 | GR |  |  |
| DH.1300B-EQP-205 |  | Gallery 1303 - D130/Line-Ups // Set CDU-DH1300-29 | 1d | 2026-11-06 | 2026-11-06 | DH.1300B-EQP-58 | 40d | 3d | 1478 | DH1300 | GR |  |  |
| DH.1300B-EQP-206 |  | Gallery 1303 - D130/Line-Ups // Set CDU-DH1300-30 | 1d | 2026-11-06 | 2026-11-06 | DH.1300B-EQP-58 | 40d | 3d | 1478 | DH1300 | GR |  |  |
| DH.1300B-EQP-64 |  | Gallery 1303 - D130/Line-Ups // Mount Electrial Gear for Chiller Controls | 10d | 2026-11-06 | 2026-11-20 | DH.1300B-EQP-58 | 37d | 0d | 1484 | DH1300 | GR | HELIX | AC |
| DH.1300B-EQP-68 |  | Gallery 1303 - D130/Line-Ups // Terminate CRAHU Electrical Connections | 5d | 2026-11-06 | 2026-11-13 | DH.1300B-EQP-55 | 50d | 13d | 1483 | DH1300 | GR | HELIX | OO |
| DH.1300B-EQP-56 |  | Gallery 1303 - D130/Line-Ups // Connect CRAH units | 10d | 2026-11-13 | 2026-11-27 | DH.1300B-EQP-55 SS+5d, DH.1300B-EQP-58 | 30d | 0d | 1476 | DH1300 | GR |  |  |
| DH.1300B-EQP-63 |  | Gallery 1303 - D130/Line-Ups // Mechanical Connections to CRAHU Units | 10d | 2026-11-13 | 2026-11-27 | DH.1300B-EQP-58 SS+5d | 35d | 5d | 1489 | DH1300 | GR |  |  |
| DH.1300B-EQP-69 |  | Gallery 1303 - D130/Line-Ups // Pull Feeder and Branch circuits to MIsc equipment and Chiller controls | 10d | 2026-11-13 | 2026-11-27 | DH.1300B-EQP-205, DH.1300B-EQP-206, DH.1300B-EQP-64 SS+4d | 37d | 0d | 1485 | DH1300 | GR | HELIX | AC |
| DH.1300B-EQP-71 |  | Gallery 1303 - D130/Line-Ups // Teminate all Misc Equipment and Chiller Controls | 10d | 2026-11-19 | 2026-12-03 | DH.1300B-EQP-69 SS+4d | 37d | 0d | 1486 | DH1300 | GR |  |  |
| DH.1300B-EQP-57 |  | Gallery 1303 - D130/Line-Ups // Condensate connections to Floor Drains | 10d | 2026-11-20 | 2026-12-04 | DH.1300B-EQP-56 SS+5d | 30d | 0d | 1477 | DH1300 | GR |  |  |
| DH.1300B-EQP-66 |  | Gallery 1303 - D130/Line-Ups // Condensate connections to Floor Drains | 10d | 2026-11-30 | 2026-12-11 | DH.1300B-EQP-63 SS+5d, DH.1300B-EQP-57 SS+5d | 30d | 0d | 1490 | DH1300 | GR |  |  |
| DH.1300B-EQP-72 |  | Gallery 1303 - D130/Line-Ups // Electrical Gear FOD Inspection Pre-Start Up | 2d | 2026-12-04 | 2026-12-07 | DH.1300B-EQP-68, DH.1300B-EQP-71 | 37d | 46d | 1487 | DH1300 | GR | HELIX | QC |
| DH.1300B-EQP-70 |  | Gallery 1303 - D130/Line-Ups // Mechanical Gear FOD Inspection Pre-Start Up | 3d | 2026-12-14 | 2026-12-16 | DH.1300B-EQP-66, DH.1300B-EQP-57, DH.1300B-EQP-63, DH.1300B-EQP-56 | 30d | 39d | 1488 | DH1300 | GR |  |  |

| ID | WBS | Activity | Duration | Start | Finish | Predecessors | Total float | Free float | MSP Activity ID | QTS - AREA | QTS - DASH | QTS - Subcontractor | QTS - Resp |
| --- | --- | --- | --- | --- | --- | --- | --- | --- | --- | --- | --- | --- | --- |
|  | 5 | **E130** |  | 2026-11-05 | 2026-12-16 |  |  |  |  |  |  |  |  |
| DH.1300B-EQP-73 |  | Gallery 1303 - E130/Line-Ups // Set CRAH-DH1300- 31 | 1d | 2026-11-05 | 2026-11-05 | DH.1300B-EQP-58 SS | -4d | 0d | 1474 | DH1300 | GR |  |  |
| DH.1300B-EQP-76 |  | Gallery 1303 - E130/Line-Ups // Set CRAH-DH1300-32 | 1d | 2026-11-05 | 2026-11-05 | DH.1300B-EQP-73 SS, DH.1300B-EQP-73 FF | -4d | 0d | 1475 | DH1300 | GR |  |  |
| DH.1300B-EQP-207 |  | Gallery 1303 - E130/Line-Ups // Set CDU-DH1300-31 | 1d | 2026-11-06 | 2026-11-06 | DH.1300B-EQP-76 | 40d | 3d | 1478 | DH1300 | GR |  |  |
| DH.1300B-EQP-208 |  | Gallery 1303 - E130/Line-Ups // Set CDU-DH1300-32 | 1d | 2026-11-06 | 2026-11-06 | DH.1300B-EQP-76 | 40d | 3d | 1478 | DH1300 | GR |  |  |
| DH.1300B-EQP-82 |  | Gallery 1303 - E130/Line-Ups // Mount Electrial Gear for Chiller Controls | 10d | 2026-11-06 | 2026-11-20 | DH.1300B-EQP-76 | 37d | 0d | 1484 | DH1300 | GR | HELIX | AC |
| DH.1300B-EQP-86 |  | Gallery 1303 - E130/Line-Ups // Terminate CRAHU Electrical Connections | 5d | 2026-11-06 | 2026-11-13 | DH.1300B-EQP-73 | 50d | 13d | 1483 | DH1300 | GR | HELIX | OO |
| DH.1300B-EQP-74 |  | Gallery 1303 - E130/Line-Ups // Connect CRAH units | 10d | 2026-11-13 | 2026-11-27 | DH.1300B-EQP-73 SS+5d, DH.1300B-EQP-76 | 30d | 0d | 1476 | DH1300 | GR |  |  |
| DH.1300B-EQP-81 |  | Gallery 1303 - E130/Line-Ups // Mechanical Connections to CRAHU Units | 10d | 2026-11-13 | 2026-11-27 | DH.1300B-EQP-76 SS+5d | 35d | 5d | 1489 | DH1300 | GR |  |  |
| DH.1300B-EQP-87 |  | Gallery 1303 - E130/Line-Ups // Pull Feeder and Branch circuits to MIsc equipment and Chiller controls | 10d | 2026-11-13 | 2026-11-27 | DH.1300B-EQP-208, DH.1300B-EQP-207, DH.1300B-EQP-82 SS+4d | 37d | 0d | 1485 | DH1300 | GR | HELIX | AC |
| DH.1300B-EQP-89 |  | Gallery 1303 - E130/Line-Ups // Teminate all Misc Equipment and Chiller Controls | 10d | 2026-11-19 | 2026-12-03 | DH.1300B-EQP-87 SS+4d | 37d | 0d | 1486 | DH1300 | GR |  |  |
| DH.1300B-EQP-75 |  | Gallery 1303 - E130/Line-Ups // Condensate connections to Floor Drains | 10d | 2026-11-20 | 2026-12-04 | DH.1300B-EQP-74 SS+5d | 30d | 0d | 1477 | DH1300 | GR |  |  |
| DH.1300B-EQP-84 |  | Gallery 1303 - E130/Line-Ups // Condensate connections to Floor Drains | 10d | 2026-11-30 | 2026-12-11 | DH.1300B-EQP-81 SS+5d, DH.1300B-EQP-75 SS+5d | 30d | 0d | 1490 | DH1300 | GR |  |  |
| DH.1300B-EQP-90 |  | Gallery 1303 - E130/Line-Ups // Electrical Gear FOD Inspection Pre-Start Up | 2d | 2026-12-04 | 2026-12-07 | DH.1300B-EQP-86, DH.1300B-EQP-89 | 37d | 46d | 1487 | DH1300 | GR | HELIX | QC |
| DH.1300B-EQP-88 |  | Gallery 1303 - E130/Line-Ups // Mechanical Gear FOD Inspection Pre-Start Up | 3d | 2026-12-14 | 2026-12-16 | DH.1300B-EQP-84, DH.1300B-EQP-75, DH.1300B-EQP-81, DH.1300B-EQP-74 | 30d | 39d | 1488 | DH1300 | GR |  |  |
|  | 6 | **F130** |  | 2026-11-05 | 2026-12-16 |  |  |  |  |  |  |  |  |
| DH.1300B-EQP-91 |  | Gallery 1303 - F130/Line-Ups // Set CRAH-DH1300-33 | 1d | 2026-11-05 | 2026-11-05 | DH.1300B-EQP-76 SS | -4d | 0d | 1474 | DH1300 | GR |  |  |
| DH.1300B-EQP-104 |  | Gallery 1303 - F130/Line-Ups // Terminate CRAHU Electrical Connections | 5d | 2026-11-06 | 2026-11-13 | DH.1300B-EQP-91 | 50d | 14d | 1483 | DH1300 | GR | HELIX | OO |
| DH.1300B-EQP-94 |  | Gallery 1303 - F130/Line-Ups // Set CRAH-DH1300-34 | 1d | 2026-11-06 | 2026-11-06 | DH.1300B-EQP-91 | -4d | 0d | 1475 | DH1300 | GR |  |  |
| DH.1300B-EQP-100 |  | Gallery 1303 - F130/Line-Ups // Mount Electrial Gear for Chiller Controls | 10d | 2026-11-09 | 2026-11-23 | DH.1300B-EQP-94 | 36d | 0d | 1484 | DH1300 | GR | HELIX | AC |
| DH.1300B-EQP-209 |  | Gallery 1303 - F130/Line-Ups // Set CDU-DH1300-33 | 1d | 2026-11-09 | 2026-11-09 | DH.1300B-EQP-94 | 39d | 3d | 1478 | DH1300 | GR |  |  |
| DH.1300B-EQP-210 |  | Gallery 1303 - F130/Line-Ups // Set CDU-DH1300-34 | 1d | 2026-11-09 | 2026-11-09 | DH.1300B-EQP-94 | 39d | 3d | 1478 | DH1300 | GR |  |  |
| DH.1300B-EQP-92 |  | Gallery 1303 - F130/Line-Ups // Connect CRAH units | 10d | 2026-11-13 | 2026-11-27 | DH.1300B-EQP-91 SS+5d, DH.1300B-EQP-94 | 30d | 0d | 1476 | DH1300 | GR |  |  |
| DH.1300B-EQP-105 |  | Gallery 1303 - F130/Line-Ups // Pull Feeder and Branch circuits to MIsc equipment and Chiller controls | 10d | 2026-11-16 | 2026-11-30 | DH.1300B-EQP-210, DH.1300B-EQP-209, DH.1300B-EQP-100 SS+4d | 36d | 0d | 1485 | DH1300 | GR | HELIX | AC |
| DH.1300B-EQP-99 |  | Gallery 1303 - F130/Line-Ups // Mechanical Connections to CRAHU Units | 10d | 2026-11-16 | 2026-11-30 | DH.1300B-EQP-94 SS+5d | 34d | 4d | 1489 | DH1300 | GR |  |  |
| DH.1300B-EQP-107 |  | Gallery 1303 - F130/Line-Ups // Teminate all Misc Equipment and Chiller Controls | 10d | 2026-11-20 | 2026-12-04 | DH.1300B-EQP-105 SS+4d | 36d | 0d | 1486 | DH1300 | GR |  |  |
| DH.1300B-EQP-93 |  | Gallery 1303 - F130/Line-Ups // Condensate connections to Floor Drains | 10d | 2026-11-20 | 2026-12-04 | DH.1300B-EQP-92 SS+5d | 30d | 0d | 1477 | DH1300 | GR |  |  |
| DH.1300B-EQP-102 |  | Gallery 1303 - F130/Line-Ups // Condensate connections to Floor Drains | 10d | 2026-11-30 | 2026-12-11 | DH.1300B-EQP-99 SS+5d, DH.1300B-EQP-93 SS+5d | 30d | 0d | 1490 | DH1300 | GR |  |  |
| DH.1300B-EQP-108 |  | Gallery 1303 - F130/Line-Ups // Electrical Gear FOD Inspection Pre-Start Up | 2d | 2026-12-07 | 2026-12-08 | DH.1300B-EQP-104, DH.1300B-EQP-107 | 36d | 45d | 1487 | DH1300 | GR | HELIX | QC |
| DH.1300B-EQP-106 |  | Gallery 1303 - F130/Line-Ups // Mechanical Gear FOD Inspection Pre-Start Up | 3d | 2026-12-14 | 2026-12-16 | DH.1300B-EQP-102, DH.1300B-EQP-93, DH.1300B-EQP-99, DH.1300B-EQP-92 | 30d | 39d | 1488 | DH1300 | GR |  |  |

| ID | WBS | Activity | Duration | Start | Finish | Predecessors | Total float | Free float | MSP Activity ID | QTS - AREA | QTS - DASH | QTS - Subcontractor | QTS - Resp |
| --- | --- | --- | --- | --- | --- | --- | --- | --- | --- | --- | --- | --- | --- |
|  | 7 | **G130** |  | 2026-11-06 | 2026-12-17 |  |  |  |  |  |  |  |  |
| DH.1300B-EQP-109 |  | Gallery 1303 - G130/Line-Ups // Set CRAH-DH1300-35 | 1d | 2026-11-06 | 2026-11-06 | DH.1300B-EQP-94 SS | -4d | 0d | 1474 | DH1300 | GR |  |  |
| DH.1300B-EQP-112 |  | Gallery 1303 - G130/Line-Ups // Set CRAH-DH1300-36 | 1d | 2026-11-06 | 2026-11-06 | DH.1300B-EQP-109 SS, DH.1300B-EQP-109 FF | -4d | 0d | 1475 | DH1300 | GR |  |  |
| DH.1300B-EQP-118 |  | Gallery 1303 - G130/Line-Ups // Mount Electrial Gear for Chiller Controls | 10d | 2026-11-09 | 2026-11-23 | DH.1300B-EQP-112 | 36d | 0d | 1484 | DH1300 | GR | HELIX | AC |
| DH.1300B-EQP-122 |  | Gallery 1303 - G130/Line-Ups // Terminate CRAHU Electrical Connections | 5d | 2026-11-09 | 2026-11-16 | DH.1300B-EQP-109 | 49d | 13d | 1483 | DH1300 | GR | HELIX | OO |
| DH.1300B-EQP-211 |  | Gallery 1303 - G130/Line-Ups // Set CDU-DH1300-35 | 1d | 2026-11-09 | 2026-11-09 | DH.1300B-EQP-112 | 39d | 3d | 1478 | DH1300 | GR |  |  |
| DH.1300B-EQP-212 |  | Gallery 1303 - G130/Line-Ups // Set CDU-DH1300-36 | 1d | 2026-11-09 | 2026-11-09 | DH.1300B-EQP-112 | 39d | 3d | 1478 | DH1300 | GR |  |  |
| DH.1300B-EQP-110 |  | Gallery 1303 - G130/Line-Ups // Connect CRAH units | 10d | 2026-11-16 | 2026-11-30 | DH.1300B-EQP-109 SS+5d, DH.1300B-EQP-112 | 29d | 0d | 1476 | DH1300 | GR |  |  |
| DH.1300B-EQP-117 |  | Gallery 1303 - G130/Line-Ups // Mechanical Connections to CRAHU Units | 10d | 2026-11-16 | 2026-11-30 | DH.1300B-EQP-112 SS+5d | 34d | 5d | 1489 | DH1300 | GR |  |  |
| DH.1300B-EQP-123 |  | Gallery 1303 - G130/Line-Ups // Pull Feeder and Branch circuits to MIsc equipment and Chiller controls | 10d | 2026-11-16 | 2026-11-30 | DH.1300B-EQP-211, DH.1300B-EQP-212, DH.1300B-EQP-118 SS+4d | 36d | 0d | 1485 | DH1300 | GR | HELIX | AC |
| DH.1300B-EQP-125 |  | Gallery 1303 - G130/Line-Ups // Teminate all Misc Equipment and Chiller Controls | 10d | 2026-11-20 | 2026-12-04 | DH.1300B-EQP-123 SS+4d | 36d | 0d | 1486 | DH1300 | GR |  |  |
| DH.1300B-EQP-111 |  | Gallery 1303 - G130/Line-Ups // Condensate connections to Floor Drains | 10d | 2026-11-23 | 2026-12-07 | DH.1300B-EQP-110 SS+5d | 29d | 0d | 1477 | DH1300 | GR |  |  |
| DH.1300B-EQP-120 |  | Gallery 1303 - G130/Line-Ups // Condensate connections to Floor Drains | 10d | 2026-12-01 | 2026-12-14 | DH.1300B-EQP-117 SS+5d, DH.1300B-EQP-111 SS+5d | 29d | 0d | 1490 | DH1300 | GR |  |  |
| DH.1300B-EQP-126 |  | Gallery 1303 - G130/Line-Ups // Electrical Gear FOD Inspection Pre-Start Up | 2d | 2026-12-07 | 2026-12-08 | DH.1300B-EQP-122, DH.1300B-EQP-125 | 36d | 45d | 1487 | DH1300 | GR | HELIX | QC |
| DH.1300B-EQP-124 |  | Gallery 1303 - G130/Line-Ups // Mechanical Gear FOD Inspection Pre-Start Up | 3d | 2026-12-15 | 2026-12-17 | DH.1300B-EQP-120, DH.1300B-EQP-111, DH.1300B-EQP-117, DH.1300B-EQP-110 | 29d | 38d | 1488 | DH1300 | GR |  |  |
|  | 8 | **H130** |  | 2026-11-06 | 2026-12-17 |  |  |  |  |  |  |  |  |
| DH.1300B-EQP-127 |  | Gallery 1303 - H130/Line-Ups // Set CRAH-DH1300-37 | 1d | 2026-11-06 | 2026-11-06 | DH.1300B-EQP-112 SS | -4d | 0d | 1474 | DH1300 | GR |  |  |
| DH.1300B-EQP-130 |  | Gallery 1303 - H130/Line-Ups // Set CRAH-DH1300-38 | 1d | 2026-11-06 | 2026-11-06 | DH.1300B-EQP-127 SS, DH.1300B-EQP-127 FF | -4d | 0d | 1475 | DH1300 | GR |  |  |
| DH.1300B-EQP-136 |  | Gallery 1303 - H130/Line-Ups // Mount Electrial Gear for Chiller Controls | 10d | 2026-11-09 | 2026-11-23 | DH.1300B-EQP-130 | 36d | 0d | 1484 | DH1300 | GR | HELIX | AC |
| DH.1300B-EQP-140 |  | Gallery 1303 - H130/Line-Ups // Terminate CRAHU Electrical Connections | 5d | 2026-11-09 | 2026-11-16 | DH.1300B-EQP-127 | 49d | 13d | 1483 | DH1300 | GR | HELIX | OO |
| DH.1300B-EQP-213 |  | Gallery 1303 - H130/Line-Ups // Set CDU-DH1300-37 | 1d | 2026-11-09 | 2026-11-09 | DH.1300B-EQP-130 | 39d | 3d | 1478 | DH1300 | GR |  |  |
| DH.1300B-EQP-214 |  | Gallery 1303 - H130/Line-Ups // Set CDU-DH1300-38 | 1d | 2026-11-09 | 2026-11-09 | DH.1300B-EQP-130 | 39d | 3d | 1478 | DH1300 | GR |  |  |
| DH.1300B-EQP-128 |  | Gallery 1303 - H130/Line-Ups // Connect CRAH units | 10d | 2026-11-16 | 2026-11-30 | DH.1300B-EQP-127 SS+5d, DH.1300B-EQP-130 | 29d | 0d | 1476 | DH1300 | GR |  |  |
| DH.1300B-EQP-135 |  | Gallery 1303 - H130/Line-Ups // Mechanical Connections to CRAHU Units | 10d | 2026-11-16 | 2026-11-30 | DH.1300B-EQP-130 SS+5d | 34d | 5d | 1489 | DH1300 | GR |  |  |
| DH.1300B-EQP-141 |  | Gallery 1303 - H130/Line-Ups // Pull Feeder and Branch circuits to MIsc equipment and Chiller controls | 10d | 2026-11-16 | 2026-11-30 | DH.1300B-EQP-214, DH.1300B-EQP-213, DH.1300B-EQP-136 SS+4d | 36d | 0d | 1485 | DH1300 | GR | HELIX | AC |
| DH.1300B-EQP-143 |  | Gallery 1303 - H130/Line-Ups // Teminate all Misc Equipment and Chiller Controls | 10d | 2026-11-20 | 2026-12-04 | DH.1300B-EQP-141 SS+4d | 36d | 0d | 1486 | DH1300 | GR |  |  |
| DH.1300B-EQP-129 |  | Gallery 1303 - H130/Line-Ups // Condensate connections to Floor Drains | 10d | 2026-11-23 | 2026-12-07 | DH.1300B-EQP-128 SS+5d | 29d | 0d | 1477 | DH1300 | GR |  |  |
| DH.1300B-EQP-138 |  | Gallery 1303 - H130/Line-Ups // Condensate connections to Floor Drains | 10d | 2026-12-01 | 2026-12-14 | DH.1300B-EQP-135 SS+5d, DH.1300B-EQP-129 SS+5d | 29d | 0d | 1490 | DH1300 | GR |  |  |
| DH.1300B-EQP-144 |  | Gallery 1303 - H130/Line-Ups // Electrical Gear FOD Inspection Pre-Start Up | 2d | 2026-12-07 | 2026-12-08 | DH.1300B-EQP-140, DH.1300B-EQP-143 | 36d | 45d | 1487 | DH1300 | GR | HELIX | QC |
| DH.1300B-EQP-142 |  | Gallery 1303 - H130/Line-Ups // Mechanical Gear FOD Inspection Pre-Start Up | 3d | 2026-12-15 | 2026-12-17 | DH.1300B-EQP-138, DH.1300B-EQP-129, DH.1300B-EQP-135, DH.1300B-EQP-128 | 29d | 38d | 1488 | DH1300 | GR |  |  |

| ID | WBS | Activity | Duration | Start | Finish | Predecessors | Total float | Free float | MSP Activity ID | QTS - AREA | QTS - DASH | QTS - Subcontractor | QTS - Resp |
| --- | --- | --- | --- | --- | --- | --- | --- | --- | --- | --- | --- | --- | --- |
|  | 9 | **J130** |  | 2026-11-06 | 2026-12-17 |  |  |  |  |  |  |  |  |
| DH.1300B-EQP-145 |  | Gallery 1303 - J130/Line-Ups // Set CRAH-DH1300-39 | 1d | 2026-11-06 | 2026-11-06 | DH.1300B-EQP-130 SS | -4d | 0d | 1474 | DH1300 | GR |  |  |
| DH.1300B-EQP-148 |  | Gallery 1303 - J130/Line-Ups // Set CRAH-DH1300-40 | 1d | 2026-11-06 | 2026-11-06 | DH.1300B-EQP-145 SS, DH.1300B-EQP-145 FF | -4d | 0d | 1475 | DH1300 | GR |  |  |
| DH.1300B-EQP-154 |  | Gallery 1303 - J130/Line-Ups // Mount Electrial Gear for Chiller Controls | 10d | 2026-11-09 | 2026-11-23 | DH.1300B-EQP-148 | 36d | 0d | 1484 | DH1300 | GR | HELIX | AC |
| DH.1300B-EQP-158 |  | Gallery 1303 - J130/Line-Ups // Terminate CRAHU Electrical Connections | 5d | 2026-11-09 | 2026-11-16 | DH.1300B-EQP-145 | 49d | 13d | 1483 | DH1300 | GR | HELIX | OO |
| DH.1300B-EQP-215 |  | Gallery 1303 - J130/Line-Ups // Set CDU-DH1300-39 | 1d | 2026-11-09 | 2026-11-09 | DH.1300B-EQP-148 | 39d | 3d | 1478 | DH1300 | GR |  |  |
| DH.1300B-EQP-216 |  | Gallery 1303 - J130/Line-Ups // Set CDU-DH1300-40 | 1d | 2026-11-09 | 2026-11-09 | DH.1300B-EQP-148 | 39d | 3d | 1478 | DH1300 | GR |  |  |
| DH.1300B-EQP-146 |  | Gallery 1303 - J130/Line-Ups // Connect CRAH units | 10d | 2026-11-16 | 2026-11-30 | DH.1300B-EQP-145 SS+5d, DH.1300B-EQP-148 | 29d | 0d | 1476 | DH1300 | GR |  |  |
| DH.1300B-EQP-153 |  | Gallery 1303 - J130/Line-Ups // Mechanical Connections to CRAHU Units | 10d | 2026-11-16 | 2026-11-30 | DH.1300B-EQP-148 SS+5d | 34d | 5d | 1489 | DH1300 | GR |  |  |
| DH.1300B-EQP-159 |  | Gallery 1303 - J130/Line-Ups // Pull Feeder and Branch circuits to MIsc equipment and Chiller controls | 10d | 2026-11-16 | 2026-11-30 | DH.1300B-EQP-215, DH.1300B-EQP-216, DH.1300B-EQP-154 SS+4d | 36d | 0d | 1485 | DH1300 | GR | HELIX | AC |
| DH.1300B-EQP-161 |  | Gallery 1303 - J130/Line-Ups // Teminate all Misc Equipment and Chiller Controls | 10d | 2026-11-20 | 2026-12-04 | DH.1300B-EQP-159 SS+4d | 36d | 0d | 1486 | DH1300 | GR |  |  |
| DH.1300B-EQP-147 |  | Gallery 1303 - J130/Line-Ups // Condensate connections to Floor Drains | 10d | 2026-11-23 | 2026-12-07 | DH.1300B-EQP-146 SS+5d | 29d | 0d | 1477 | DH1300 | GR |  |  |
| DH.1300B-EQP-156 |  | Gallery 1303 - J130/Line-Ups // Condensate connections to Floor Drains | 10d | 2026-12-01 | 2026-12-14 | DH.1300B-EQP-153 SS+5d, DH.1300B-EQP-147 SS+5d | 29d | 0d | 1490 | DH1300 | GR |  |  |
| DH.1300B-EQP-162 |  | Gallery 1303 - J130/Line-Ups // Electrical Gear FOD Inspection Pre-Start Up | 2d | 2026-12-07 | 2026-12-08 | DH.1300B-EQP-158, DH.1300B-EQP-161 | 36d | 45d | 1487 | DH1300 | GR | HELIX | QC |
| DH.1300B-EQP-160 |  | Gallery 1303 - J130/Line-Ups // Mechanical Gear FOD Inspection Pre-Start Up | 3d | 2026-12-15 | 2026-12-17 | DH.1300B-EQP-156, DH.1300B-EQP-147, DH.1300B-EQP-153, DH.1300B-EQP-146 | 29d | 38d | 1488 | DH1300 | GR |  |  |
|  | 10 | **K130** |  | 2026-11-09 | 2026-12-18 |  |  |  |  |  |  |  |  |
| DH.1300B-EQP-163 |  | Gallery 1303 - K130/Line-Ups // Set CRAH-DH1300-41 | 1d | 2026-11-09 | 2026-11-09 | DH.1300B-EQP-148 | -4d | 0d | 1474 | DH1300 | GR |  |  |
| DH.1300B-EQP-166 |  | Gallery 1303 - K130/Line-Ups // Set CRAH-DH1300-42 | 1d | 2026-11-09 | 2026-11-09 | DH.1300B-EQP-163 SS, DH.1300B-EQP-163 FF | -4d | 0d | 1475 | DH1300 | GR |  |  |
| DH.1300B-EQP-172 |  | Gallery 1303 - K130/Line-Ups // Mount Electrial Gear for Chiller Controls | 10d | 2026-11-10 | 2026-11-24 | DH.1300B-EQP-166 | 35d | 0d | 1484 | DH1300 | GR | HELIX | AC |
| DH.1300B-EQP-176 |  | Gallery 1303 - K130/Line-Ups // Terminate CRAHU Electrical Connections | 5d | 2026-11-10 | 2026-11-17 | DH.1300B-EQP-163 | 48d | 13d | 1483 | DH1300 | GR | HELIX | OO |
| DH.1300B-EQP-164 |  | Gallery 1303 - K130/Line-Ups // Connect CRAH units | 10d | 2026-11-17 | 2026-12-01 | DH.1300B-EQP-163 SS+5d, DH.1300B-EQP-166 | 28d | 0d | 1476 | DH1300 | GR |  |  |
| DH.1300B-EQP-171 |  | Gallery 1303 - K130/Line-Ups // Mechanical Connections to CRAHU Units | 10d | 2026-11-17 | 2026-12-01 | DH.1300B-EQP-166 SS+5d | 33d | 5d | 1489 | DH1300 | GR |  |  |
| DH.1300B-EQP-177 |  | Gallery 1303 - K130/Line-Ups // Pull Feeder and Branch circuits to MIsc equipment and Chiller controls | 10d | 2026-11-17 | 2026-12-01 | DH.1300B-EQP-172 SS+4d | 35d | 0d | 1485 | DH1300 | GR | HELIX | AC |
| DH.1300B-EQP-179 |  | Gallery 1303 - K130/Line-Ups // Teminate all Misc Equipment and Chiller Controls | 10d | 2026-11-23 | 2026-12-07 | DH.1300B-EQP-177 SS+4d | 35d | 0d | 1486 | DH1300 | GR |  |  |
| DH.1300B-EQP-165 |  | Gallery 1303 - K130/Line-Ups // Condensate connections to Floor Drains | 10d | 2026-11-24 | 2026-12-08 | DH.1300B-EQP-164 SS+5d | 28d | 0d | 1477 | DH1300 | GR |  |  |
| DH.1300B-EQP-174 |  | Gallery 1303 - K130/Line-Ups // Condensate connections to Floor Drains | 10d | 2026-12-02 | 2026-12-15 | DH.1300B-EQP-171 SS+5d, DH.1300B-EQP-165 SS+5d | 28d | 0d | 1490 | DH1300 | GR |  |  |
| DH.1300B-EQP-180 |  | Gallery 1303 - K130/Line-Ups // Electrical Gear FOD Inspection Pre-Start Up | 2d | 2026-12-08 | 2026-12-09 | DH.1300B-EQP-176, DH.1300B-EQP-179 | 35d | 44d | 1487 | DH1300 | GR | HELIX | QC |
| DH.1300B-EQP-178 |  | Gallery 1303 - K130/Line-Ups // Mechanical Gear FOD Inspection Pre-Start Up | 3d | 2026-12-16 | 2026-12-18 | DH.1300B-EQP-174, DH.1300B-EQP-165, DH.1300B-EQP-171, DH.1300B-EQP-164 | 28d | 37d | 1488 | DH1300 | GR |  |  |

| ID | WBS | Activity | Duration | Start | Finish | Predecessors | Total float | Free float | MSP Activity ID | QTS - AREA | QTS - DASH | QTS - Subcontractor | QTS - Resp | MBTA: Work Type |
| --- | --- | --- | --- | --- | --- | --- | --- | --- | --- | --- | --- | --- | --- | --- |
|  | 11 | **R130** |  | 2026-10-14 | 2026-12-08 |  |  |  |  |  |  |  |  |  |
| DH.1300B-EQP-192 |  | Gallery 1303 - R130/Line-Ups // Condensate connections to Floor Drains | 10d | 2026-10-14 | 2026-10-27 |  | 180d |  | 1490 | DH1300 | GR |  |  |  |
| DH.1300B-EQP-181 |  | Gallery 1303 - R130/Line-Ups // Set CRAH-DH1300-43 | 1d | 2026-11-09 | 2026-11-09 | DH.1300B-EQP-166 SS | -4d | 0d | 1474 | DH1300 | GR |  |  |  |
| DH.1300B-EQP-184 |  | Gallery 1303 - R130/Line-Ups // Set CRAH-DH1300-44 | 1d | 2026-11-09 | 2026-11-09 | DH.1300B-EQP-181 SS, DH.1300B-EQP-181 FF | -3d | 0d | 1475 | DH1300 | GR |  |  |  |
| DH.1300B-EQP-190 |  | Gallery 1303 - R130/Line-Ups // Mount Electrial Gear for Chiller Controls | 10d | 2026-11-10 | 2026-11-24 | DH.1300B-EQP-184 | -1d | 0d | 1484 | DH1300 | GR | HELIX | AC |  |
| DH.1300B-EQP-194 |  | Gallery 1303 - R130/Line-Ups // Terminate CRAHU Electrical Connections | 5d | 2026-11-10 | 2026-11-17 | DH.1300B-EQP-181 | 8d | 5d | 1483 | DH1300 | GR | HELIX | OO |  |
| DH.1300B-EQP-195 |  | Gallery 1303 - R130/Line-Ups // Pull Feeder and Branch circuits to MIsc equipment and Chiller controls | 10d | 2026-11-10 | 2026-11-24 | DH.1300B-EQP-190 SS | -1d | 0d | 1485 | DH1300 | GR | HELIX | AC |  |
| DH.1300B-EQP-197 |  | Gallery 1303 - R130/Line-Ups // Teminate all Misc Equipment and Chiller Controls | 10d | 2026-11-10 | 2026-11-24 | DH.1300B-EQP-195 SS | -1d | 0d | 1486 | DH1300 | GR |  |  |  |
| DH.1300B-EQP-182 |  | Gallery 1303 - R130/Line-Ups // Connect CRAH units | 10d | 2026-11-12 | 2026-11-25 | DH.1300B-EQP-181 SS+2d, DH.1300B-EQP-184 | -4d | 0d | 1476 | DH1300 | GR |  |  |  |
| DH.1300B-EQP-189 |  | Gallery 1303 - R130/Line-Ups // Mechanical Connections to CRAHU Units | 10d | 2026-11-17 | 2026-12-01 | DH.1300B-EQP-184 SS+5d | -2d | 2d | 1489 | DH1300 | GR |  |  |  |
| DH.1300B-EQP-183 |  | Gallery 1303 - R130/Line-Ups // Condensate connections to Floor Drains | 10d | 2026-11-19 | 2026-12-03 | DH.1300B-EQP-182 SS+5d | -4d | 0d | 1477 | DH1300 | GR |  |  |  |
| DH.1300B-EQP-198 |  | Gallery 1303 - R130/Line-Ups // Electrical Gear FOD Inspection Pre-Start Up | 2d | 2026-11-25 | 2026-11-27 | DH.1300B-EQP-194, DH.1300B-EQP-197 | 3d | 12d | 1487 | DH1300 | GR | HELIX | QC |  |
| DH.1300B-EQP-196 |  | Gallery 1303 - R130/Line-Ups // Mechanical Gear FOD Inspection Pre-Start Up | 3d | 2026-12-04 | 2026-12-08 | DH.1300B-EQP-183, DH.1300B-EQP-189, DH.1300B-EQP-182 | -4d | 5d | 1488 | DH1300 | GR |  |  |  |
|  | 12 | **Equipment Connections** |  | 2026-11-10 | 2026-12-03 |  |  |  |  |  |  |  |  |  |
|  | 1 | **CRAH** |  | 2026-11-10 | 2026-11-20 |  |  |  |  |  |  |  |  |  |
| DH1300-004 |  | Gallery 1303 // DH 1300 / Elec Room // CRAH Duct Work Termination | 2d | 2026-11-10 | 2026-11-12 | DH.1300B-EQP-184 | 7d | 0d | 7037 | DH1300 | GR |  |  | Con/Install |
| DH1300-003 |  | Gallery 1303 // DH 1300 / Elec Room // CRAH Chilled Water | 2d | 2026-11-13 | 2026-11-16 | DH1300-004 | 7d | 0d | 7035 | DH1300 | GR |  |  | Con/Install |
| DH1300-001 |  | Gallery 1303 // DH 1300 / Elec Room // CRAH Power Connections | 2d | 2026-11-17 | 2026-11-18 | DH1300-003 | 7d | 0d | 7034 | DH1300 | GR | HELIX | OO | Con/Install |
| DH1300-002 |  | Gallery 1303 // DH 1300 / Elec Room // CRAH LV Connections | 2d | 2026-11-19 | 2026-11-20 | DH1300-001 | 7d | 16d | 7036 | DH1300 | GR |  |  | Con/Install |
|  | 2 | **CDU** |  | 2026-11-25 | 2026-12-03 |  |  |  |  |  |  |  |  |  |
| DH1300-007 |  | Gallery 1303 // DH 1300 / Elec Room // CDU Chilled Water Connections | 2d | 2026-11-25 | 2026-11-27 | DH.1300B-EQP-197 | -1d | 0d | 7040 | DH1300 | GR |  |  | Con/Install |
| DH1300-005 |  | Gallery 1303 // DH 1300 /Elec Room // CDU Power Connections | 2d | 2026-11-30 | 2026-12-01 | DH1300-007 | -1d | 0d | 7039 | DH1300 | GR | HELIX | OO | Con/Install |
| DH1300-006 |  | Gallery 1303 // DH 1300 / Elec Room // CDU Controls Connections | 2d | 2026-12-02 | 2026-12-03 | DH1300-005 | -1d | 8d | 7041 | DH1300 | GR |  |  | Con/Install |
|  | 3 | **MOD** |  | 2026-11-23 | 2026-11-27 |  |  |  |  |  |  |  |  |  |
| DH1300-008 |  | Gallery 1303 // DH 1300 / Elec Room // MOD Power Connections | 2d | 2026-11-23 | 2026-11-24 | DH.1300B-EQP-195 FF | 3d | 0d | 7043 | DH1300 | GR | HELIX | OO | Con/Install |
| DH1300-009 |  | Gallery 1303 // DH 1300 / Elec Room // MOD LV Connections | 2d | 2026-11-25 | 2026-11-27 | DH1300-008 | 3d | 12d | 7044 | DH1300 | GR | HELIX | OO | Con/Install |

| ID | WBS | Activity | Type | Duration | Start | Finish | Predecessors | Complete | Remaining | Planned start | Planned finish | Total float | Free float | MSP Activity ID | QTS - AREA | 05 -SUFFOLK - Building Phase | 12 - SUFFOLK - Export_to_Procore | QTS - DASH | QTS - Subcontractor | QTS - Resp |
| --- | --- | --- | --- | --- | --- | --- | --- | --- | --- | --- | --- | --- | --- | --- | --- | --- | --- | --- | --- | --- |
|  | 6 | **Corridors** |  |  | 2026-08-06 | 2026-12-09 |  |  |  |  |  |  |  |  |  |  |  |  |  |  |
|  | 1 | **Corridor 1000A** |  |  |  |  |  |  |  |  |  |  |  |  |  |  |  |  |  |  |
|  | 3 | **Corridor 1000** |  |  | 2026-08-06 | 2026-12-09 |  |  |  |  |  |  |  |  |  |  |  |  |  |  |
| DH.130012078 |  | DH 1300/Corridor 1000 // Seal concrete |  | 1d | 2026-08-06 A | 2026-08-06 A | B120001.3046 | 100% |  | 2026-08-10 | 2026-08-10 |  |  | 1494 | DH1300 | 2 | Y | COR |  |  |
| DH.130012068 |  | DH 1300/Corridor 1000 // MEPF Overhead Hangers |  | 5d | 2026-09-08 A | 2026-09-14 A | DH.130012078 | 100% |  | 2026-08-11 | 2026-08-17 |  |  | 1495 | DH1300 | 2 | Y | COR | HELIX | ALOO |
| DH.130012069 |  | DH 1300/Corridor 1000 // Frame walls |  | 1d | 2026-09-18 A | 2026-09-22 A | DH.1300.1040 | 100% |  | 2026-09-01 | 2026-09-01 |  |  | 1499 | DH1300 | 2 |  | COR |  |  |
| DH.130012071 |  | DH 1300/Corridor 1000 // MEPF high overhead install |  | 3d | 2026-09-24 A | 2026-10-16 | DH.130012068 |  | 3d | 2026-08-18 | 2026-08-20 | -5d | 0d | 1497 | DH1300 | 2 | Y | COR | HELIX | ALOO |
| DH.130012072 |  | DH 1300/Corridor 1000 // MEP rough in walls |  | 3d | 2026-10-05 A | 2026-10-30 | B120001.3156 FF, DH.130012069 |  | 3d | 2026-10-20 | 2026-10-22 | -5d | 0d | 1501 | DH1300 | 2 |  | COR | HELIX | AC |
| B120001.3155 |  | DH 1300/Corridor 1000 // Install Overhead Cable Ladder / 36" Cable Tray - TFO |  | 5d | 2026-10-19 | 2026-10-23 | DH.130012071 |  |  |  |  | -5d | 0d | 1181 |  |  |  | COR |  |  |
| B120001.3156 |  | DH 1300/Corridor 1000 // Install Overhead HAC - TFO |  | 5d | 2026-10-26 | 2026-10-30 | B120001.3155 |  |  |  |  | -5d | 0d | 1181 |  |  |  | COR |  |  |
| DH.130012073 |  | DH 1300/Corridor 1000 // In wall inspection |  | 1d | 2026-11-02 | 2026-11-02 | DH.130012072 |  |  |  |  | -5d | 0d | 1502 | DH1300 | 2 |  | COR |  |  |
| DH.130012070 |  | DH 1300/Corridor 1000 // Install Top Down Sheetrock |  | 3d | 2026-11-03 | 2026-11-05 | DH.130012073, DH.130012069 SS+3d |  |  |  |  | -5d | 0d | 1498 | DH1300 |  |  | COR |  |  |
| DH.130012074 |  | DH 1300/Corridor 1000 // Install Balance of Sheetrock on Walls |  | 5d | 2026-11-03 | 2026-11-09 | DH.130012071, DH.130012070 SS |  |  |  |  | -5d | 0d | 1503 | DH1300 | 2 |  | COR |  |  |
| DH.130012075 |  | DH 1300/Corridor 1000 // Tape and finish walls |  | 8d | 2026-11-10 | 2026-11-20 | DH.130012074 |  |  |  |  | -5d | 0d | 1504 | DH1300 | 2 |  | COR |  |  |
| DH.130012076 |  | DH 1300/Corridor 1000 // Install wall door frames |  | 3d | 2026-11-23 | 2026-11-25 | DH.130012069 SS+1d, DH.130012075 |  |  |  |  | -5d | 0d | 1500 | DH1300 | 2 |  | COR |  |  |
| DH.130012077 |  | DH 1300/Corridor 1000 // Prime and Paint first coat walls |  | 3d | 2026-11-23 | 2026-11-25 | DH.130012075 |  |  |  |  | -5d | 0d | 1493 | DH1300 | 2 |  | COR |  |  |
| DH.130012079 |  | DH 1300/Corridor 1000 // Install lights and exit signs |  | 3d | 2026-11-27 | 2026-12-01 | DH.130012077, DH.130012076 |  |  |  |  | -5d | 0d | 1492 | DH1300 | 2 |  | COR | HELIX | AC |
| DH.130012080 |  | DH 1300/Corridor 1000 // Final Coat Paint & Touchup Walls |  | 4d | 2026-12-02 | 2026-12-07 | DH.130012079 |  |  |  |  | -5d | 0d | 1506 | DH1300 | 2 |  | COR |  |  |
| DH.130012081 |  | DH 1300/Corridor 1000 // Install MEP Devices and Trim |  | 2d | 2026-12-08 | 2026-12-09 | DH.130012080 |  |  |  |  | -5d | 0d | 1505 | DH1300 | 2 |  | COR | HELIX | AC |
| DH.160012148 |  | DH 1300/Corridor 1000 // Ready To Receive Equipment | milestone | 0d | 2026-12-09 | 2026-12-09 | DH.130012081 FF |  |  |  |  | -5d | 4d | 1505 | DH1300 | 2 |  | COR | HELIX | TBD |
|  | 2 | **Corridor 1000D** |  |  | 2026-08-06 | 2026-11-24 |  |  |  |  |  |  |  |  |  |  |  |  |  |  |
| DH.130012092 |  | DH 1300/Corridor 1000D // Seal concrete |  | 1d | 2026-08-06 A | 2026-08-06 A | DH.130012078 FF | 100% |  | 2026-08-11 | 2026-08-11 |  |  | 1494 | DH1300 | 2 | Y | COR |  |  |
| DH.130012082 |  | DH 1300/Corridor 1000D // MEPF Overhead Hangers |  | 5d | 2026-09-08 A | 2026-09-14 A | DH.130012092 | 100% |  | 2026-08-12 | 2026-08-18 |  |  | 1495 | DH1300 | 2 | Y | COR | HELIX | ALOO |
| DH.130012085 |  | DH 1300/Corridor 1000D // MEPF high overhead install |  | 3d | 2026-09-24 A | 2026-10-16 | DH.130012082 |  | 3d | 2026-08-19 | 2026-08-21 | 6d | 1d | 1497 | DH1300 | 2 | Y | COR | HELIX | ALOO |
| DH.130012083 |  | DH 1300/Corridor 1000D // Frame walls |  | 3d | 2026-10-08 A | 2026-10-16 | DH.130012069 |  | 3d | 2026-10-05 | 2026-10-07 | 5d | 0d | 1499 | DH1300 | 2 |  | COR |  |  |
| DH.130012086 |  | DH 1300/Corridor 1000D // MEP rough in walls |  | 3d | 2026-10-09 A | 2026-10-14 | DH.130012083 SS+2d | 100% | 0d | 2026-10-15 | 2026-10-19 | 5d | 0d | 1501 | DH1300 | 2 |  | COR | HELIX | AC |
| B120001.3157 |  | DH 1300/Corridor 1000D // Install Overhead Cable Ladder / 36" Cable Tray - TFO |  | 5d | 2026-10-14 | 2026-10-20 | DH.130012082 |  |  |  |  | 24d | 0d | 1181 |  |  | Y | COR |  |  |
| DH.130012087 |  | DH 1300/Corridor 1000D // In wall inspection |  | 1d | 2026-10-14 | 2026-10-14 | DH.130012086 |  |  |  |  | 5d | 0d | 1502 | DH1300 | 2 |  | COR |  |  |
| DH.130012084 |  | DH 1300/Corridor 1000D // Install Top Down Sheetrock |  | 3d | 2026-10-15 | 2026-10-19 | DH.130012087, DH.130012083 SS+3d |  |  |  |  | 5d | 0d | 1498 | DH1300 |  |  | COR |  |  |
| DH.130012088 |  | DH 1300/Corridor 1000D // Install Balance of Sheetrock on Walls |  | 5d | 2026-10-20 | 2026-10-26 | DH.130012084, DH.130012085, DH.130012087 |  |  |  |  | 5d | 0d | 1503 | DH1300 | 2 |  | COR |  |  |
| B120001.3158 |  | DH 1300/Corridor 1000D // Install Overhead HAC - TFO |  | 5d | 2026-10-21 | 2026-10-27 | B120001.3157 |  |  |  |  | 24d | 19d | 1181 |  |  |  | COR |  |  |
| DH.130012089 |  | DH 1300/Corridor 1000D // Tape and finish walls |  | 8d | 2026-10-27 | 2026-11-05 | DH.130012088 |  |  |  |  | 5d | 0d | 1504 | DH1300 | 2 |  | COR |  |  |
| DH.130012090 |  | DH 1300/Corridor 1000D // Install wall door frames |  | 3d | 2026-11-06 | 2026-11-10 | DH.130012083 SS+1d, DH.130012089 |  |  |  |  | 5d | 0d | 1500 | DH1300 | 2 |  | COR |  |  |
| DH.130012091 |  | DH 1300/Corridor 1000D // Prime and Paint first coat walls |  | 3d | 2026-11-06 | 2026-11-10 | DH.130012089 |  |  |  |  | 5d | 0d | 1493 | DH1300 | 2 |  | COR |  |  |
| DH.130012093 |  | DH 1300/Corridor 1000D // Install lights and exit signs |  | 3d | 2026-11-12 | 2026-11-16 | DH.130012091, DH.130012090 |  |  |  |  | 5d | 0d | 1492 | DH1300 | 2 |  | COR | HELIX | AC |
| DH.130012094 |  | DH 1300/Corridor 1000D // Final Coat Paint & Touchup Walls |  | 4d | 2026-11-17 | 2026-11-20 | DH.130012093 |  |  |  |  | 5d | 0d | 1506 | DH1300 | 2 |  | COR |  |  |
| DH.130012095 |  | DH 1300/Corridor 1000D // Install MEP Devices and Trim |  | 2d | 2026-11-23 | 2026-11-24 | DH.130012094 |  |  |  |  | 5d | 0d | 1505 | DH1300 | 2 |  | COR | HELIX | AC |
| DH.160012149 |  | DH 1300/Corridor 1000D // Ready to Receive Equipment | milestone | 0d | 2026-11-24 | 2026-11-24 | B120001.3158, DH.130012095 FF |  |  |  |  | 5d | 14d | 1505 | DH1300 | 2 |  | COR | HELIX | TBD |

| ID | WBS | Activity | Type | Duration | Start | Finish | Predecessors | Complete | Remaining | Planned start | Planned finish | Total float | Free float | MSP Activity ID | QTS - AREA | 12 - SUFFOLK - Export_to_Procore | QTS - DASH | QTS - Subcontractor | QTS - Resp | 05 -SUFFOLK - Building Phase |
| --- | --- | --- | --- | --- | --- | --- | --- | --- | --- | --- | --- | --- | --- | --- | --- | --- | --- | --- | --- | --- |
|  | 10 | **Flex 1000D1** |  |  | 2026-08-06 | 2026-11-20 |  |  |  |  |  |  |  |  |  |  |  |  |  |  |
| DH.1300..1000 |  | DH 1300/Flex 1000D1 // Seal Concrete |  | 5d | 2026-08-06 A | 2026-08-12 A | DH.130012092 | 100% |  | 2026-08-12 | 2026-08-18 |  |  | 1508 | DH1300 | Y | OR |  |  |  |
| DH.1300..1010 |  | DH 1300/Flex 1000D1 // MEPF Layout of Overhead Supports |  | 2d | 2026-09-08 A | 2026-09-09 A | DH.1300..1000 | 100% |  | 2026-08-19 | 2026-08-20 |  |  | 1509 | DH1300 | Y | OR | HELIX | AC |  |
| DH.1300..1020 |  | DH 1300/Flex 1000D1 // MEPF Install High Overhead Systems |  | 6d | 2026-09-14 A | 2026-10-16 | DH.1300..1010 | 50% | 3d | 2026-08-21 | 2026-08-28 | 13d | 0d | 1510 | DH1300 |  | OR | HELIX | AC |  |
| DH.1300..1040 |  | DH 1300/Flex 1000D1 // Frame Walls including Backing |  | 4d | 2026-09-24 A | 2026-09-30 A | DH.1300..1010 | 100% |  | 2026-08-21 | 2026-08-26 |  |  | 1511 | DH1300 |  | OR |  |  |  |
| DH.1300..1120 |  | DH 1300/Flex 1000D1 // Install MEPF Overhead Ceiling Rough |  | 3d | 2026-09-24 A | 2026-10-16 | DH.1300..1010 |  | 3d | 2026-08-21 | 2026-08-25 | 64d | 13d | 1520 | DH1300 |  | OR | HELIX | AC |  |
| DH.1300..1060 |  | DH 1300/Flex 1000D1 // MEPF Install Rough Wall |  | 2d | 2026-10-05 A | 2026-10-15 | DH.1300..1040 |  | 2d | 2026-10-06 | 2026-10-07 | 14d | 1d | 1513 | DH1300 |  | OR | HELIX | AC |  |
| DH.1300..1070 |  | DH 1300/Flex 1000D1 // Install Top Down Sheet Rock |  | 5d | 2026-10-09 A | 2026-10-20 | DH.1300..1040 |  | 5d | 2026-10-06 | 2026-10-13 | 12d | 0d | 1514 | DH1300 |  | OR |  |  |  |
| DH.1300..1080 |  | DH 1300/Flex 1000D1 // Rough Wall Inspspection (Approval to Close up) |  | 1d | 2026-10-19 | 2026-10-19 | DH.1300..1020, DH.1300..1060 |  |  |  |  | 13d | 1d | 1515 | DH1300 |  | OR |  |  |  |
| DH.1300..1090 |  | DH 1300/Flex 1000D1 // Install Balance of Sheetrock |  | 3d | 2026-10-21 | 2026-10-23 | DH.1300..1070, DH.1300..1080 |  |  |  |  | 12d | 0d | 1516 | DH1300 |  | OR |  |  |  |
| DH.1300..1100 |  | DH 1300/Flex 1000D1 // Tape and Finish Walls |  | 6d | 2026-10-26 | 2026-11-02 | DH.1300..1090 |  |  |  |  | 12d | 0d | 1517 | DH1300 |  | OR |  |  |  |
| DH.1300..1110 |  | DH 1300/Flex 1000D1 // Prime and First Coat of Paint |  | 2d | 2026-11-03 | 2026-11-04 | DH.1300..1100 |  |  |  |  | 12d | 0d | 1519 | DH1300 |  | OR |  |  |  |
| DH.1300..1130 |  | DH 1300/Flex 1000D1 // Install Lighting, Fire Alarm & Fire Protection |  | 2d | 2026-11-05 | 2026-11-06 | DH.1300..1110, DH.1300..1120 |  |  |  |  | 51d | 4d | 1521 | DH1300 |  | OR | HELIX | AC |  |
| DH.1300..1140 |  | DH 1300/Flex 1000D1 // Wall Touch up Final Coat of Paint |  | 3d | 2026-11-05 | 2026-11-09 | DH.1300..1110 |  |  |  |  | 12d | 0d | 1522 | DH1300 |  | OR |  |  |  |
| DH.1300..1050 |  | DH 1300/Flex 1000D1 // Install Door Frames |  | 1d | 2026-11-10 | 2026-11-10 | DH.1300..1140, DH.1300..1120, DH.1300..1040 FF |  |  |  |  | 49d | 2d | 1518 | DH1300 |  | OR |  |  |  |
| DH.1300..1150 |  | DH 1300/Flex 1000D1 // Install Wall Base, Trim, and Devices |  | 3d | 2026-11-10 | 2026-11-13 | DH.1300..1140 |  |  |  |  | 12d | 0d | 1523 | DH1300 |  | OR |  |  |  |
| DH.1300..1161 |  | DH 1300/Flex 1000D1 // Ready to Receive Equipment | milestone | 0d | 2026-11-13 | 2026-11-13 | DH.1300..1110 FF, DH.1300..1150 FF |  |  |  |  | 12d | 0d | 1523 | DH1300 |  | OR | HELIX | TBD |  |
| DH.1300..1160 |  | DH 1300/Flex 1000D1 // Suffolk Pre Punch |  | 5d | 2026-11-16 | 2026-11-20 | DH.1300..1130, DH.1300..1161, DH.1300..1050 |  |  |  |  | 47d | 56d | 1524 | DH1300 |  | OR |  |  |  |
|  | 11 | **IDF 1000D2** |  |  |  |  |  |  |  |  |  |  |  |  |  |  |  |  |  |  |
|  | 12 | **Preaction 1000D3** |  |  |  |  |  |  |  |  |  |  |  |  |  |  |  |  |  |  |
|  | 13 | **Restroom-Dock & Janitor** |  |  | 2026-09-14 | 2026-12-03 |  |  |  |  |  |  |  |  |  |  |  |  |  |  |
| DH.1300010 |  | DH 1300/Restroom-Dock & Janitor // RR-Doc-Jan MEPF overhead layout |  | 5d | 2026-09-14 A | 2026-09-18 A | DH.13000.1010 | 100% |  | 2026-08-12 | 2026-08-18 |  |  | 1561 | DH1300 | Y | OR | HELIX | AC | 2 |
| DH.1300030 |  | DH 1300/Restroom-Dock & Janitor // RR-Doc-Jan Frame walls |  | 5d | 2026-09-15 A | 2026-09-21 A | DH.1300020 | 100% |  | 2026-08-26 | 2026-09-01 |  |  | 1565 | DH1300 |  | OR |  |  | 2 |
| DH.1300020 |  | DH 1300/Restroom-Dock & Janitor // RR-Doc-Jan Layout walls |  | 5d | 2026-09-21 A | 2026-09-25 A | DH.1300010 | 100% |  | 2026-08-19 | 2026-08-25 |  |  | 1562 | DH1300 | Y | OR |  |  | 2 |
| DH.1300040 |  | DH 1300/Restroom-Dock & Janitor // RR-Doc-Jan Install wall door frames |  | 3d | 2026-09-30 A | 2026-10-02 A | DH.1300030 | 100% |  | 2026-10-07 | 2026-10-09 |  |  | 1566 | DH1300 |  | OR |  |  | 2 |
| DH.1300060 |  | DH 1300/Restroom-Dock & Janitor // RR-Doc-Jan MEP rough in walls |  | 3d | 2026-10-05 A | 2026-10-07 A | DH.1300040 | 100% |  | 2026-10-13 | 2026-10-15 |  |  | 1567 | DH1300 |  | OR | HELIX | AC | 2 |
| DH.1300070 |  | DH 1300/Restroom-Dock & Janitor // RR-Doc-Jan In wall inspection |  | 1d | 2026-10-07 A | 2026-10-07 A | DH.1300060 | 100% |  | 2026-10-16 | 2026-10-16 |  |  | 1568 | DH1300 |  | OR |  |  | 2 |
| DH.1300050 |  | DH 1300/Restroom-Dock & Janitor // RR-Doc-Jan Install Top Down Sheetrock |  | 5d | 2026-10-14 | 2026-10-20 | DH.1300030 SS+3d |  |  |  |  | -1d | 0d | 1564 | DH1300 |  | OR |  |  |  |
| DH.1300080 |  | DH 1300/Restroom-Dock & Janitor // RR-Doc-Jan MEPF high overhead install |  | 3d | 2026-10-21 | 2026-10-23 | DH.1300050 |  |  |  |  | -1d | 0d | 1563 | DH1300 |  | OR | HELIX | AC | 2 |
| DH.1300090 |  | DH 1300/Restroom-Dock & Janitor // RR-Doc-Jan Install Balance of Sheetrock on Walls |  | 5d | 2026-10-26 | 2026-10-30 | DH.1300080, DH.1300050 SS, DH.1300070 |  |  |  |  | -1d | 0d | 1569 | DH1300 |  | OR |  |  | 2 |
| DH.1300100 |  | DH 1300/Restroom-Dock & Janitor // RR-Doc-Jan Tape and finish walls |  | 8d | 2026-11-02 | 2026-11-12 | DH.1300090 |  |  |  |  | -1d | 0d | 1570 | DH1300 |  | OR |  |  | 2 |
| DH.1300000 |  | DH 1300/Restroom-Dock & Janitor // RR-Doc-Jan Seal concrete |  | 5d | 2026-11-13 | 2026-11-19 | DH.1300100 |  |  |  |  | -1d | 0d | 1560 | DH1300 |  | OR |  |  | 2 |
| DH.1300110 |  | DH 1300/Restroom-Dock & Janitor // RR-Doc-Jan Prime and Paint first coat walls |  | 3d | 2026-11-13 | 2026-11-17 | DH.1300100 |  |  |  |  | 1d | 2d | 1559 | DH1300 |  | OR |  |  | 2 |
| DH.1300120 |  | DH 1300/Restroom-Dock & Janitor // RR-Doc-Jan Install lights and exit signs |  | 3d | 2026-11-20 | 2026-11-24 | DH.1300000, DH.1300110 |  |  |  |  | -1d | 0d | 1558 | DH1300 |  | OR | HELIX | AC | 2 |
| DH.1300130 |  | DH 1300/Restroom-Dock & Janitor // RR-Doc-Jan Final Coat Paint & Touchup Walls |  | 4d | 2026-11-25 | 2026-12-01 | DH.1300120 |  |  |  |  | -1d | 0d | 1572 | DH1300 |  | OR |  |  | 2 |
| DH.1300140 |  | DH 1300/Restroom-Dock & Janitor // RR-Doc-Jan Install MEP Devices and Trim |  | 2d | 2026-12-02 | 2026-12-03 | DH.1300130 |  |  |  |  | -1d | 8d | 1571 | DH1300 |  | OR | HELIX | AC | 2 |

| ID | WBS | Activity | Duration | Start | Finish | Predecessors | Total float | Free float | QTS - Subcontractor | QTS - AREA |
| --- | --- | --- | --- | --- | --- | --- | --- | --- | --- | --- |
|  | 4 | **Loading Dock 1030** |  | 2026-10-19 | 2026-12-24 |  |  |  |  |  |
| DH1300.LD.1981 |  | DH 1300 / Loading Dock #1030 // Overhead Fire Protection | 5d | 2026-10-19 | 2026-10-23 | DH.130012071 | 24d | 0d |  |  |
| DH1300.LD.1982 |  | DH 1300 / Loading Dock #1030 // Overhead Mechanical Piping | 5d | 2026-10-26 | 2026-10-30 | DH1300.LD.1981 | 24d | 0d |  |  |
| DH1300.LD.1983 |  | DH 1300 / Loading Dock #1030 // OH Electrical Rough | 5d | 2026-11-02 | 2026-11-06 | DH1300.LD.1982 | 24d | 0d |  |  |
| DH1300.LD.1984 |  | DH 1300 / Loading Dock #1030 // Overhead Mechanical Duct | 5d | 2026-11-02 | 2026-11-06 | DH1300.LD.1982 | 44d | 0d |  |  |
| DH1300.LD.1985 |  | DH 1300 / Loading Dock #1030 // In-Wall Electrical Rough | 2d | 2026-11-09 | 2026-11-10 | DH1300.LD.1983 | 24d | 0d |  |  |
| DH1300.LD.1986 |  | DH 1300 / Loading Dock #1030 // Top of Wall Fire Stop | 2d | 2026-11-09 | 2026-11-10 | DH1300.LD.1983 | 42d | 14d |  |  |
| DH1300.LD.1998 |  | DH 1300 / Loading Dock #1030 // Install Dock Levelers | 2d | 2026-11-09 | 2026-11-10 | DH1300.LD.1984 | 47d | 19d |  |  |
| DH1300.LD.1987 |  | DH 1300 / Loading Dock #1030 // In-Wall Inspection | 1d | 2026-11-12 | 2026-11-12 | DH1300.LD.1985 | 24d | 0d |  |  |
| DH1300.LD.1989 |  | DH 1300 / Loading Dock #1030 // Hang, Tape, & Finish Drywall | 10d | 2026-11-13 | 2026-11-27 | DH1300.LD.1987 | 24d | 0d |  |  |
| DH1300.LD.1990 |  | DH 1300 / Loading Dock #1030 // Paint Walls | 3d | 2026-11-30 | 2026-12-02 | DH1300.LD.1989 | 24d | 0d |  |  |
| DH1300.LD.1992 |  | DH 1300 / Loading Dock #1030 // Install Fire Alarm | 5d | 2026-12-03 | 2026-12-09 | DH1300.LD.1986, DH1300.LD.1984, DH1300.LD.1990 | 28d | 0d |  |  |
| DH1300.LD.1994 |  | DH 1300 / Loading Dock #1030 // Install Fire Sprinkler Heads | 5d | 2026-12-03 | 2026-12-09 | DH1300.LD.1992 FF | 30d | 6d |  |  |
| DH1300.LD.1995 |  | DH 1300 / Loading Dock #1030 // Pull, Test, & Terminate | 6d | 2026-12-03 | 2026-12-10 | DH1300.LD.1990 | 24d | 0d |  |  |
| DH1300.LD.2010 |  | DH 1300 / Loading Dock #1030 // Install Overhead Door - 1030.2 | 1d | 2026-12-10 | 2026-12-10 | DH1300.LD.1992, DH1300.LD.1998 | 28d | 0d |  |  |
| DH1300.LD.1996 |  | DH 1300 / Loading Dock #1030 // Install Overhead Lighting Fixtures | 5d | 2026-12-11 | 2026-12-17 | DH1300.LD.1995 | 24d | 0d |  |  |
| DH1300.LD.1999 |  | DH 1300 / Loading Dock #1030 // Install Overhead Door - 1030.3 | 1d | 2026-12-11 | 2026-12-11 | DH1300.LD.2010 | 28d | 0d |  |  |
| DH1300.LD.2011 |  | DH 1300 / Loading Dock #1030 // Loading Dock Operational | 0d | 2026-12-14 | 2026-12-14 | DH1300.LD.1999 | 33d | 9d |  |  |
| DH1300.LD.1997 |  | DH 1300 / Loading Dock #1030// Electrical Trim | 5d | 2026-12-18 | 2026-12-24 | DH1300.LD.2011 FF, DH1300.LD.1999, DH1300.LD.1994, DH1300.LD.1996, DH1300.LD.1990 | 24d | 33d |  |  |
|  | 1 | **NO MAME** |  | 2026-12-16 | 2027-03-19 |  |  |  |  |  |
|  | 1 | **Energization & L3 Prefunctional Testing** |  | 2026-12-16 | 2027-02-16 |  |  |  |  |  |
| DH1300.L3CX.59 |  | DH1300 L3 Start | 0d | 2026-12-16 | 2026-12-16 | DH.1300140, DH.1300..1161, DH.160012149, DH.130012095, DH.160012148, DH.130012081, DH1300-009, DH1300-006, DH1300-002, DH.1300B-EQP-196, DH.1300B-EQP-198, DH.160012146, DH1300.MG.A110.8692, DH1300.MG.A110.8689, DH1300.MG.A110.8685, DH.1300A-EQP-218, DH.1300A-EQP-220, DH.1300A-EQP-215, DH.160012145, DH.13000.1712, DH.13000.1110, DH.160012144, DH.1300.3062, DH.1300.3061, DH.1300.3059, DH.1300.3054, B120001.3109, DH.1300.3042, DH.1300.1310, DH.1300.1300, DH.1300.1330, DH.1300.1240, B120001.3108, DH.1300.1180, DH.1300.3067 | -9d | 0d | HELIX | DH1300 |
| DH1300.L3CX.BMS.21 |  | DH1300 L3 PTPs & SOOs – BMS | 40d | 2026-12-16 | 2027-02-12 | DH1300.L3CX.ELEC.83 SS | -9d | 0d |  | DH1300 |
| DH1300.L3CX.ELEC.83 |  | DH1300 L3 FTEs | 5d | 2026-12-16 | 2026-12-22 | DH1300.L3CX.59 SS | -9d | 0d |  | DH1300 |
| DH1300.L3CX.MECH.63 |  | DH1300 L3 Startup / Pre-Functional – MECHANICAL | 20d | 2026-12-21 | 2027-01-20 | DH1300.L3CX.ELEC.83 SS+3d | -2d | 7d |  | DH1300 |
| DH1300.L3CX.ELEC.73 |  | DH1300 L3 Startup / Pre-Functional – ELECTRICAL | 15d | 2026-12-23 | 2027-01-14 | DH1300.L3CX.ELEC.83 | 1d | 10d |  | DH1300 |
| DH1300.L3CX.MECH.73 |  | DH1300 L3 TAB (Air, Water and Reports) – MECHANICAL | 10d | 2027-02-01 | 2027-02-12 | DH1300.L3CX.MECH.63, DH1300.L3CX.BMS.21 FF | -9d | 0d |  | DH1300 |
| DH1300.L3CX.MECH.83 |  | DH1300 L3 FLS – MECHANICAL | 10d | 2027-02-01 | 2027-02-12 | DH1300.L3CX.MECH.73 FF, DH1300.L3CX.MECH.63, DH1300.L3CX.ELEC.73 | -9d | 0d |  | DH1300 |
| DH1300.L3CX.49 |  | DH1300 L3 Cx Complete | 0d | 2027-02-16 | 2027-02-16 | DH1300.LD.1997 FF, DH1300.L3CX.MECH.73 FF, DH1300.L3CX.MECH.83 FF | -9d | 0d |  | DH1300 |

| ID | WBS | Activity | Duration | Start | Finish | Predecessors | Complete | Remaining | Planned start | Planned finish | Total float | Free float | QTS - AREA | QTS - DASH | MSP Activity ID | QTS - Subcontractor | QTS - Resp | 12 - SUFFOLK - Export_to_Procore |
| --- | --- | --- | --- | --- | --- | --- | --- | --- | --- | --- | --- | --- | --- | --- | --- | --- | --- | --- |
|  | 2 | **L4 Function Testing** |  | 2027-01-13 | 2027-02-18 |  |  |  |  |  |  |  |  |  |  |  |  |  |
| DH1300.L4CX.COMM.150 |  | DH1300 L4 Cx | 25d | 2027-01-13 | 2027-02-18 | DH1300.L3CX.49 FF+3d |  |  |  |  | 0d |  | DH1300 |  |  |  |  |  |
|  | 3 | **L5 Integrated System Testing (IST)** |  | 2027-01-29 | 2027-03-19 |  |  |  |  |  |  |  |  |  |  |  |  |  |
| DH1300.L5CX.COMM.240 |  | DH1300 L5 Integrated Systems Testing - IST | 20d | 2027-01-29 | 2027-02-26 | DH1300.L4CX.COMM.150 FF+6d |  |  |  |  | 0d |  | DH1300 |  |  |  |  |  |
| DH1300.A2110.CO |  | DH 1300/L5 Integrated System Testing (IST) // DH1300– Phase Closeout Period O&M / TRAINING/ CLOSEOUT DOCS | 15d | 2027-03-01 | 2027-03-19 | DH1300.L5CX.COMM.250 |  |  |  |  | 53d | 0d | DH1300 | Cx |  |  |  |  |
| DH1300.L5CX.COMM.250 |  | DH1300 – IST / L5 Cx Complete | 0d | 2027-03-01 | 2027-03-01 | DH1300.L5CX.COMM.240 |  |  |  |  | 0d |  | DH1300 |  |  |  |  |  |
|  | 2 | **Commissioning & Start Up** |  |  |  |  |  |  |  |  |  |  |  |  |  |  |  |  |
|  | 2 | **Data Hall 1500** |  | 2026-06-25 | 2027-06-24 |  |  |  |  |  |  |  |  |  |  |  |  |  |
|  | 10 | **Exterior Build Out** |  | 2026-06-25 | 2027-01-08 |  |  |  |  |  |  |  |  |  |  |  |  |  |
|  | 9 | **Electrical Yard** |  | 2026-09-17 | 2026-12-21 |  |  |  |  |  |  |  |  |  |  |  |  |  |
|  | 3 | **Electrical** |  | 2026-09-17 | 2026-12-21 |  |  |  |  |  |  |  |  |  |  |  |  |  |
|  | 1 | **Underground** |  | 2026-09-17 | 2026-10-29 |  |  |  |  |  |  |  |  |  |  |  |  |  |
|  | 1 | **Column Line 5.0 - 5.9** |  | 2026-09-17 | 2026-10-29 |  |  |  |  |  |  |  |  |  |  |  |  |  |
| DH.1500 |  | DH1500/Electrical Yard-Underground // Excavate From MVG to Transformers | 10d | 2026-09-17 A | 2026-09-23 A | STRUCTURE.7510, STRUCTURE.7020, FDN.1248 | 100% |  | 2026-09-04 | 2026-09-18 |  |  | DH1500 | EY | 1048 |  |  |  |
| B1200380 |  | DH1500/Electrical Yard-Underground // Install Raceway from MVG to Transformers | 10d | 2026-10-08 A | 2026-10-27 | DH.1500 |  | 10d | 2026-09-30 | 2026-10-14 | 4d | 0d | DH1500 | EY | 1050 | HELIX | D18A |  |
| B1200381 |  | DH1500/Electrical Yard-Underground // Backfill Raceways from MVG to Transformers | 6d | 2026-10-13 A | 2026-10-29 | B1200380 FF+2d |  | 6d | 2026-10-15 | 2026-10-22 | 4d | 0d | DH1500 | EY | 1051 | HELIX | D18A |  |
|  | 2 | **Column-Line 5.0 - 5.9** |  |  |  |  |  |  |  |  |  |  |  |  |  |  |  |  |
|  | 2 | **Pads** |  | 2026-10-30 | 2026-11-18 |  |  |  |  |  |  |  |  |  |  |  |  |  |
| B1200392 |  | DH1500/Electrical Yard-Pads // Excavate / Form / Rebar /pour-Finish Pads (House Gen & (9) Xfmr) 0.1 to 1.4 Line | 6d | 2026-10-30 | 2026-11-06 | B1200381, B1200386 |  |  |  |  | 18d | 0d | DH1500 | EY | 1065 |  |  | Y |
| B1200393 |  | DH1500/Electrical Yard-Pads // Pad Strip and Cure (House Gen & (9) Xfmr) 0.1 to 1.4 Line | 1d | 2026-11-09 | 2026-11-09 | B1200392 |  |  |  |  | 29.88d | 5d | DH1500 | EY | 1067 |  |  | Y |
| B1200394 |  | DH1500/Electrical Yard-Pads // Excavate / Form / Rebar /pour-Finish Pads (16 Xfmrs) 1.4 to 1.8 Line | 6d | 2026-11-09 | 2026-11-17 | B1200392 |  |  |  |  | 18d | 0d | DH1500 | EY | 1066 |  |  | Y |
| B1200395 |  | DH1500/Electrical Yard-Pads // Pad Strip and Cure (16 Xfmrs) 1.4 to 1.8 Line | 1d | 2026-11-18 | 2026-11-18 | B1200393, B1200394 |  |  |  |  | 24.88d | 0d | DH1500 | EY | 1068 |  |  | Y |
|  | 3 | **Equipment** |  | 2026-11-19 | 2026-12-21 |  |  |  |  |  |  |  |  |  |  |  |  |  |
|  | 1 | **A150** |  | 2026-11-19 | 2026-11-20 |  |  |  |  |  |  |  |  |  |  |  |  |  |
| DH.15001 |  | DH1500/Electrical Yard // Set XFMR - XFMR-A150a | 1d | 2026-11-19 | 2026-11-19 | B1200395, STRUCTURE.6980 |  |  |  |  | 24.88d | 0d | DH1500 | EY | 537 | HELIX | D18A |  |
| DH.15002 |  | DH1500/Electrical Yard // Set XFMR - XFMR-A150p | 1d | 2026-11-20 | 2026-11-20 | DH.15001 |  |  |  |  | 24.88d | 0d | DH1500 | EY | 537 | HELIX | D18A |  |

| ID | WBS | Activity | Duration | Start | Finish | Predecessors | Total float | Free float | MSP Activity ID | QTS - Subcontractor | QTS - AREA | QTS - Resp | QTS - DASH |
| --- | --- | --- | --- | --- | --- | --- | --- | --- | --- | --- | --- | --- | --- |
|  | 2 | **B150** |  | 2026-11-23 | 2026-11-24 |  |  |  |  |  |  |  |  |
| DH.15003 |  | DH1500/Electrical Yard // Set XFMR - XFMR-B150a | 1d | 2026-11-23 | 2026-11-23 | DH.15002 | 24.88d | 0d | 537 | HELIX | DH1500 | D18A | EY |
| DH.15004 |  | DH1500/Electrical Yard // Set XFMR - XFMR-B150p | 1d | 2026-11-24 | 2026-11-24 | DH.15003 | 24.88d | 0d | 537 | HELIX | DH1500 | D18A | EY |
|  | 3 | **C150** |  | 2026-11-25 | 2026-11-27 |  |  |  |  |  |  |  |  |
| DH.15005 |  | DH1500/Electrical Yard // Set XFMR - XFMR-C150a | 1d | 2026-11-25 | 2026-11-25 | DH.15004 | 24.88d | 0d | 537 | HELIX | DH1500 | D18A | EY |
| DH.15006 |  | DH1500/Electrical Yard // Set XFMR - XFMR-C150p | 1d | 2026-11-27 | 2026-11-27 | DH.15005 | 24.88d | 0d | 537 | HELIX | DH1500 | D18A | EY |
|  | 4 | **D150** |  | 2026-11-30 | 2026-12-01 |  |  |  |  |  |  |  |  |
| DH.15007 |  | DH1500/Electrical Yard // Set XFMR - XFMR-D150a | 1d | 2026-11-30 | 2026-11-30 | DH.15006 | 24.88d | 0d | 537 | HELIX | DH1500 | D18A | EY |
| DH.15008 |  | DH1500/Electrical Yard // Set XFMR - XFMR-D150p | 1d | 2026-12-01 | 2026-12-01 | DH.15007 | 24.88d | 0d | 537 | HELIX | DH1500 | D18A | EY |
|  | 5 | **E150** |  | 2026-12-02 | 2026-12-03 |  |  |  |  |  |  |  |  |
| DH.15009 |  | DH1500/Electrical Yard // Set XFMR - XFMR-E150a | 1d | 2026-12-02 | 2026-12-02 | DH.15008 | 24.88d | 0d | 537 | HELIX | DH1500 | D18A | EY |
| DH.15000 |  | DH1500/Electrical Yard // Set XFMR - XFMR-E150p | 1d | 2026-12-03 | 2026-12-03 | DH.15009 | 24.88d | 0d | 537 | HELIX | DH1500 | D18A | EY |
|  | 6 | **F150** |  | 2026-12-04 | 2026-12-07 |  |  |  |  |  |  |  |  |
| DH.160012120 |  | DH1500/Electrical Yard // Set XFMR - XFMR-F150a | 1d | 2026-12-04 | 2026-12-04 | DH.15000 | 24.88d | 0d | 537 | HELIX | DH1500 | D18A | EY |
| DH.160012121 |  | DH1500/Electrical Yard // Set XFMR - XFMR-F150p | 1d | 2026-12-07 | 2026-12-07 | DH.160012120 | 24.88d | 0d | 537 | HELIX | DH1500 | D18A | EY |
|  | 7 | **G150** |  | 2026-12-08 | 2026-12-09 |  |  |  |  |  |  |  |  |
| DH.160012122 |  | DH1500/Electrical Yard // Set XFMR - XFMR-G150a | 1d | 2026-12-08 | 2026-12-08 | DH.160012121 | 24.88d | 0d | 537 | HELIX | DH1500 | D18A | EY |
| DH.160012123 |  | DH1500/Electrical Yard // Set XFMR - XFMR-G150p | 1d | 2026-12-09 | 2026-12-09 | DH.160012122 | 24.88d | 0d | 537 | HELIX | DH1500 | D18A | EY |
|  | 8 | **H150** |  | 2026-12-10 | 2026-12-11 |  |  |  |  |  |  |  |  |
| DH.160012124 |  | DH1500/Electrical Yard // Set XFMR - XFMR-H150a | 1d | 2026-12-10 | 2026-12-10 | DH.160012123 | 24.88d | 0d | 537 | HELIX | DH1500 | D18A | EY |
| DH.160012125 |  | DH1500/Electrical Yard // Set XFMR - XFMR-H150p | 1d | 2026-12-11 | 2026-12-11 | DH.160012124 | 24.88d | 0d | 537 | HELIX | DH1500 | D18A | EY |
|  | 9 | **J150** |  | 2026-12-14 | 2026-12-15 |  |  |  |  |  |  |  |  |
| DH.160012126 |  | DH1500/Electrical Yard // Set XFMR - XFMR-J150a | 1d | 2026-12-14 | 2026-12-14 | DH.160012125 | 24.88d | 0d | 537 | HELIX | DH1500 | D18A | EY |
| DH.160012127 |  | DH1500/Electrical Yard // Set XFMR - XFMR-J150p | 1d | 2026-12-15 | 2026-12-15 | DH.160012126 | 24.88d | 0d | 537 | HELIX | DH1500 | D18A | EY |

| ID | WBS | Activity | Duration | Start | Finish | Predecessors | Complete | Planned start | Planned finish | Total float | Free float | Constraint | MSP Activity ID | QTS - Subcontractor | QTS - AREA | QTS - Resp | QTS - DASH | 12 - SUFFOLK - Export_to_Procore |
| --- | --- | --- | --- | --- | --- | --- | --- | --- | --- | --- | --- | --- | --- | --- | --- | --- | --- | --- |
|  | 10 | **K150** |  | 2026-12-16 | 2026-12-17 |  |  |  |  |  |  |  |  |  |  |  |  |  |
| DH.160012128 |  | DH1500/Electrical Yard // Set XFMR - XFMR-K150a | 1d | 2026-12-16 | 2026-12-16 | DH.160012127 |  |  |  | 24.88d | 0d |  | 537 | HELIX | DH1500 | D18A | EY |  |
| DH.160012129 |  | DH1500/Electrical Yard // Set XFMR - XFMR-K150p | 1d | 2026-12-17 | 2026-12-17 | DH.160012128 |  |  |  | 24.88d | 0d |  | 537 | HELIX | DH1500 | D18A | EY |  |
|  | 11 | **R150** |  | 2026-12-18 | 2026-12-21 |  |  |  |  |  |  |  |  |  |  |  |  |  |
| DH.160012130 |  | DH1500/Electrical Yard // Set XFMR - XFMR-R150a | 1d | 2026-12-18 | 2026-12-18 | DH.160012129 |  |  |  | 24.88d | 0d |  | 537 | HELIX | DH1500 | D18A | EY |  |
| DH.160012131 |  | DH1500/Electrical Yard // Set XFMR - XFMR-R150p | 1d | 2026-12-21 | 2026-12-21 | DH.160012130 |  |  |  | 24.88d | 25d |  | 537 | HELIX | DH1500 | D18A | EY |  |
|  | 1 | **Mechanical Yard** |  | 2026-06-25 | 2027-01-08 |  |  |  |  |  |  |  |  |  |  |  |  |  |
|  | 1 | **Pads** |  | 2026-06-25 | 2026-09-02 |  |  |  |  |  |  |  |  |  |  |  |  |  |
| A5796 |  | DH1500/Mechanical Yard-Pads // Excavate / Form / Rebar / Pour Chiller Pads | 8d | 2026-06-25 A | 2026-07-07 A | A5772 SS, A5772 | 100% | 2026-08-14 | 2026-08-25 |  |  |  | 1074 |  | DH1500 |  | MY | Y |
| A5877 |  | DH1500/Mechanical Yard-Pads // Excavate / Form / Rebar / TES Tank Pads | 8d | 2026-07-22 A | 2026-07-27 A | A5796 | 100% | 2026-07-24 | 2026-08-04 |  |  |  |  |  | DH1500 |  |  |  |
| A5798 |  | DH1500/Mechanical Yard-Pads // Excavate / Form / Rebar / Pour Support and TES Pads (Column Lines 1 to 1.3) | 5d | 2026-08-03 A | 2026-08-07 A | A5796, A5877 | 100% | 2026-08-26 | 2026-09-01 |  |  |  | 1079 |  | DH1500 |  | MY | Y |
| A5801 |  | DH1500/Mechanical Yard-Pads // Excavate / Form / Rebar / Pour Support and TES Pads (Column Lines 1.6 to 1.9) | 5d | 2026-08-27 A | 2026-09-02 A | A5798, A5796 SS | 100% | 2026-09-02 | 2026-09-09 |  |  |  | 1081 |  | DH1500 |  | MY | Y |
|  | 5 | **Equipment** |  | 2026-12-16 | 2027-01-08 |  |  |  |  |  |  |  |  |  |  |  |  |  |
| A5910 |  | DH1500/Mechanical Yard - OFCI Chiller Delivery Date (12/16/26 through 12/17/26) | 0d | 2026-12-16 | 2026-12-16 | A5796 |  |  |  | 11.88d | 0d | finish on or after 2026-12-16 |  |  |  |  |  |  |
|  | 1 | **A150** |  | 2026-12-16 | 2026-12-22 |  |  |  |  |  |  |  |  |  |  |  |  |  |
| DH.150012001 |  | DH1500/Mechanical Yard-A150 // Set Chiller - CHLR-1CY40-A150 | 1d | 2026-12-16 | 2026-12-16 | A5910, FDN.1248, STRUCTURE.6980 |  |  |  | 11.88d | 0d |  | 1083 |  | DH1500 |  | MY |  |
| DH.150012002 |  | DH1500/Mechanical Yard-A150 // Set TES tank - TES-1CY40-A150 | 1d | 2026-12-17 | 2026-12-17 | DH.150012001 |  |  |  | 54.88d | 0d |  | 1083 |  | DH1500 |  | MY |  |
| DH.150012023 |  | DH1500/Mechanical Yard-A150 // Install CHWP | 1d | 2026-12-18 | 2026-12-18 | DH.150012002 |  |  |  | 54.88d | 0d |  | 1083 |  | DH1500 |  | MY |  |
| DH.150012024 |  | DH1500/Mechanical Yard-A150 // Install Mechanical Piping Mains (Building -to Line) | 1d | 2026-12-21 | 2026-12-21 | DH.150012023 |  |  |  | 54.88d | 0d |  | 1083 |  | DH1500 |  | MY |  |
| DH.150012025 |  | DH1500/Mechanical Yard-A150 // Install Mechanical Chiller to Mains | 1d | 2026-12-22 | 2026-12-22 | DH.150012024 |  |  |  | 54.88d | 1d |  | 1083 |  | DH1500 |  | MY |  |
|  | 2 | **B150** |  | 2026-12-16 | 2026-12-22 |  |  |  |  |  |  |  |  |  |  |  |  |  |
| DH.150012003 |  | DH1500/Mechanical Yard-B150 // Set Chiller - CHLR-1CY40-B150 | 1d | 2026-12-16 | 2026-12-16 | A5910, DH.150012001 SS |  |  |  | 11.88d | 0d |  | 1083 |  | DH1500 |  | MY |  |
| DH.150012004 |  | DH1500/Mechanical Yard-B150 // Set TES tank - TES-1CY40-B150 | 1d | 2026-12-17 | 2026-12-17 | DH.150012003 |  |  |  | 54.88d | 0d |  | 1083 |  | DH1500 |  | MY |  |
| DH.150012026 |  | DH1500/Mechanical Yard-B150 // Install CHWP | 1d | 2026-12-18 | 2026-12-18 | DH.150012004 |  |  |  | 54.88d | 0d |  | 1083 |  | DH1500 |  | MY |  |
| DH.150012027 |  | DH1500/Mechanical Yard-B150 // Install Mechanical Piping Mains (Building -to Line) | 1d | 2026-12-21 | 2026-12-21 | DH.150012026 |  |  |  | 54.88d | 0d |  | 1083 |  | DH1500 |  | MY |  |
| DH.150012028 |  | DH1500/Mechanical Yard-B150 // Install Mechanical Chiller to Mains | 1d | 2026-12-22 | 2026-12-22 | DH.150012027 |  |  |  | 54.88d | 1d |  | 1083 |  | DH1500 |  | MY |  |

| ID | WBS | Activity | Duration | Start | Finish | Predecessors | Total float | Free float | MSP Activity ID | QTS - AREA | QTS - DASH |
| --- | --- | --- | --- | --- | --- | --- | --- | --- | --- | --- | --- |
|  | 3 | **C150** |  | 2026-12-16 | 2026-12-22 |  |  |  |  |  |  |
| DH.150012005 |  | DH1500/Mechanical Yard-C150 // Set Chiller - CHLR-1CY40-C150 | 1d | 2026-12-16 | 2026-12-16 | A5910, DH.150012003 SS | 11.88d | 0d | 1083 | DH1500 | MY |
| DH.150012006 |  | DH1500/Mechanical Yard-C150 // Set TES tank - TES-1CY40-C150 | 1d | 2026-12-17 | 2026-12-17 | DH.150012005 | 54.88d | 0d | 1083 | DH1500 | MY |
| DH.150012029 |  | DH1500/Mechanical Yard-C150 // Install CHWP | 1d | 2026-12-18 | 2026-12-18 | DH.150012006 | 54.88d | 0d | 1083 | DH1500 | MY |
| DH.150012030 |  | DH1500/Mechanical Yard-C150 // Install Mechanical Piping Mains (Building -to Line) | 1d | 2026-12-21 | 2026-12-21 | DH.150012029 | 54.88d | 0d | 1083 | DH1500 | MY |
| DH.150012031 |  | DH1500/Mechanical Yard-C150 // Install Mechanical Chiller to Mains | 1d | 2026-12-22 | 2026-12-22 | DH.150012030 | 54.88d | 1d | 1083 | DH1500 | MY |
|  | 4 | **D150** |  | 2026-12-16 | 2026-12-22 |  |  |  |  |  |  |
| DH.150012007 |  | DH1500/Mechanical Yard-D150 // Set Chiller - CHLR-1CY40-D150 | 1d | 2026-12-16 | 2026-12-16 | A5910, DH.150012005 SS | 11.88d | 0d | 1083 | DH1500 | MY |
| DH.150012008 |  | DH1500/Mechanical Yard-D150 // Set TES tank - TES-1CY40-D150 | 1d | 2026-12-17 | 2026-12-17 | DH.150012007 | 54.88d | 0d | 1083 | DH1500 | MY |
| DH.150012032 |  | DH1500/Mechanical Yard-D150 // Install CHWP | 1d | 2026-12-18 | 2026-12-18 | DH.150012008 | 54.88d | 0d | 1083 | DH1500 | MY |
| DH.150012033 |  | DH1500/Mechanical Yard-D150 // Install Mechanical Piping Mains (Building -to Line) | 1d | 2026-12-21 | 2026-12-21 | DH.150012032 | 54.88d | 0d | 1083 | DH1500 | MY |
| DH.150012034 |  | DH1500/Mechanical Yard-D150 // Install Mechanical Chiller to Mains | 1d | 2026-12-22 | 2026-12-22 | DH.150012033 | 54.88d | 1d | 1083 | DH1500 | MY |
|  | 5 | **E150** |  | 2026-12-16 | 2026-12-22 |  |  |  |  |  |  |
| DH.150012009 |  | DH1500/Mechanical Yard-E150 // Set Chiller - CHLR-1CY40-E150 | 1d | 2026-12-16 | 2026-12-16 | A5910, DH.150012007 SS | 11.88d | 0d | 1083 | DH1500 | MY |
| DH.150012010 |  | DH1500/Mechanical Yard-E150 // Set TES tank - TES-1CY40-E150 | 1d | 2026-12-17 | 2026-12-17 | DH.150012009 | 54.88d | 0d | 1083 | DH1500 | MY |
| DH.150012035 |  | DH1500/Mechanical Yard-E150 // Install CHWP | 1d | 2026-12-18 | 2026-12-18 | DH.150012010 | 54.88d | 0d | 1083 | DH1500 | MY |
| DH.150012036 |  | DH1500/Mechanical Yard-E150 // Install Mechanical Piping Mains (Building -to Line) | 1d | 2026-12-21 | 2026-12-21 | DH.150012035 | 54.88d | 0d | 1083 | DH1500 | MY |
| DH.150012037 |  | DH1500/Mechanical Yard-E150 // Install Mechanical Chiller to Mains | 1d | 2026-12-22 | 2026-12-22 | DH.150012036 | 54.88d | 1d | 1083 | DH1500 | MY |
|  | 6 | **F150** |  | 2026-12-16 | 2026-12-22 |  |  |  |  |  |  |
| DH.150012011 |  | DH1500/Mechanical Yard-F150 // Set Chiller - CHLR-1CY40-F150 | 1d | 2026-12-16 | 2026-12-16 | A5910, DH.150012009 SS | 11.88d | 0d | 1083 | DH1500 | MY |
| DH.150012012 |  | DH1500/Mechanical Yard-F150 // Set TES tank - TES-1CY40-F150 | 1d | 2026-12-17 | 2026-12-17 | DH.150012011 | 54.88d | 0d | 1083 | DH1500 | MY |
| DH.150012038 |  | DH1500/Mechanical Yard-F150 // Install CHWP | 1d | 2026-12-18 | 2026-12-18 | DH.150012012 | 54.88d | 0d | 1083 | DH1500 | MY |
| DH.150012039 |  | DH1500/Mechanical Yard-F150 // Install Mechanical Piping Mains (Building -to Line) | 1d | 2026-12-21 | 2026-12-21 | DH.150012038 | 54.88d | 0d | 1083 | DH1500 | MY |
| DH.150012040 |  | DH1500/Mechanical Yard-F150 // Install Mechanical Chiller to Mains | 1d | 2026-12-22 | 2026-12-22 | DH.150012039 | 54.88d | 1d | 1083 | DH1500 | MY |

| ID | WBS | Activity | Duration | Start | Finish | Predecessors | Total float | Free float | MSP Activity ID | QTS - AREA | QTS - DASH |
| --- | --- | --- | --- | --- | --- | --- | --- | --- | --- | --- | --- |
|  | 7 | **G150** |  | 2026-12-17 | 2026-12-23 |  |  |  |  |  |  |
| DH.150012013 |  | DH1500/Mechanical Yard-G150 // Set Chiller - CHLR-1CY40-G150 | 1d | 2026-12-17 | 2026-12-17 | DH.150012011 | 11.88d | 0d | 1083 | DH1500 | MY |
| DH.150012014 |  | DH1500/Mechanical Yard-G150 // Set TES tank - TES-1CY40-G150 | 1d | 2026-12-18 | 2026-12-18 | DH.150012013 | 53.88d | 0d | 1083 | DH1500 | MY |
| DH.150012041 |  | DH1500/Mechanical Yard-G150 // Install CHWP | 1d | 2026-12-21 | 2026-12-21 | DH.150012014 | 53.88d | 0d | 1083 | DH1500 | MY |
| DH.150012042 |  | DH1500/Mechanical Yard-G150 // Install Mechanical Piping Mains (Building -to Line) | 1d | 2026-12-22 | 2026-12-22 | DH.150012041 | 53.88d | 0d | 1083 | DH1500 | MY |
| DH.150012043 |  | DH1500/Mechanical Yard-G150 // Install Mechanical Chiller to Mains | 1d | 2026-12-23 | 2026-12-23 | DH.150012042 | 53.88d | 0d | 1083 | DH1500 | MY |
|  | 8 | **H150** |  | 2026-12-17 | 2026-12-23 |  |  |  |  |  |  |
| DH.150012015 |  | DH1500/Mechanical Yard-H150 // Set Chiller - CHLR-1CY40-H150 | 1d | 2026-12-17 | 2026-12-17 | DH.150012013 SS | 11.88d | 0d | 1083 | DH1500 | MY |
| DH.150012016 |  | DH1500/Mechanical Yard-H150 // Set TES tank - TES-1CY40-H150 | 1d | 2026-12-18 | 2026-12-18 | DH.150012015 | 53.88d | 0d | 1083 | DH1500 | MY |
| DH.150012044 |  | DH1500/Mechanical Yard-H150 // Install CHWP | 1d | 2026-12-21 | 2026-12-21 | DH.150012016 | 53.88d | 0d | 1083 | DH1500 | MY |
| DH.150012045 |  | DH1500/Mechanical Yard-H150 // Install Mechanical Piping Mains (Building -to Line) | 1d | 2026-12-22 | 2026-12-22 | DH.150012044 | 53.88d | 0d | 1083 | DH1500 | MY |
| DH.150012046 |  | DH1500/Mechanical Yard-H150 // Install Mechanical Chiller to Mains | 1d | 2026-12-23 | 2026-12-23 | DH.150012045 | 53.88d | 0d | 1083 | DH1500 | MY |
|  | 9 | **J150** |  | 2026-12-17 | 2026-12-23 |  |  |  |  |  |  |
| DH.150012017 |  | DH1500/Mechanical Yard-J150 // Set Chiller - CHLR-1CY40-J150 | 1d | 2026-12-17 | 2026-12-17 | DH.150012015 SS | 11.88d | 0d | 1083 | DH1500 | MY |
| DH.150012018 |  | DH1500/Mechanical Yard-J150 // Set TES tank - TES-1CY40-J150 | 1d | 2026-12-18 | 2026-12-18 | DH.150012017 | 53.88d | 0d | 1083 | DH1500 | MY |
| DH.150012047 |  | DH1500/Mechanical Yard-J150 // Install CHWP | 1d | 2026-12-21 | 2026-12-21 | DH.150012018 | 53.88d | 0d | 1083 | DH1500 | MY |
| DH.150012048 |  | DH1500/Mechanical Yard-J150 // Install Mechanical Piping Mains (Building -to Line) | 1d | 2026-12-22 | 2026-12-22 | DH.150012047 | 53.88d | 0d | 1083 | DH1500 | MY |
| DH.150012049 |  | DH1500/Mechanical Yard-J150 // Install Mechanical Chiller to Mains | 1d | 2026-12-23 | 2026-12-23 | DH.150012048 | 53.88d | 0d | 1083 | DH1500 | MY |
|  | 10 | **K150** |  | 2026-12-17 | 2026-12-23 |  |  |  |  |  |  |
| DH.150012019 |  | DH1500/Mechanical Yard-K150 // Set Chiller - CHLR-1CY40-K150 | 1d | 2026-12-17 | 2026-12-17 | DH.150012017 SS | 11.88d | 0d | 1083 | DH1500 | MY |
| DH.150012020 |  | DH1500/Mechanical Yard-K150 // Set TES tank - TES-1CY40-K150 | 1d | 2026-12-18 | 2026-12-18 | DH.150012019 | 53.88d | 0d | 1083 | DH1500 | MY |
| DH.150012050 |  | DH1500/Mechanical Yard-K150 // Install CHWP | 1d | 2026-12-21 | 2026-12-21 | DH.150012020 | 53.88d | 0d | 1083 | DH1500 | MY |
| DH.150012051 |  | DH1500/Mechanical Yard-K150 // Install Mechanical Piping Mains (Building -to Line) | 1d | 2026-12-22 | 2026-12-22 | DH.150012050 | 53.88d | 0d | 1083 | DH1500 | MY |
| DH.150012052 |  | DH1500/Mechanical Yard-K150 // Install Mechanical Chiller to Mains | 1d | 2026-12-23 | 2026-12-23 | DH.150012051 | 53.88d | 0d | 1083 | DH1500 | MY |

| ID | WBS | Activity | Duration | Start | Finish | Predecessors | Complete | Remaining | Planned start | Planned finish | Total float | Free float | MSP Activity ID | QTS - AREA | QTS - DASH | QTS - Subcontractor | QTS - Resp | 05 -SUFFOLK - Building Phase |
| --- | --- | --- | --- | --- | --- | --- | --- | --- | --- | --- | --- | --- | --- | --- | --- | --- | --- | --- |
|  | 11 | **R150** |  | 2026-12-17 | 2026-12-23 |  |  |  |  |  |  |  |  |  |  |  |  |  |
| DH.150012021 |  | DH1500/Mechanical Yard-R150 // Set Chiller - CHLR-1CY40-R150 | 1d | 2026-12-17 | 2026-12-17 | DH.150012019 SS |  |  |  |  | 11.88d | 0d | 1083 | DH1500 | MY |  |  |  |
| DH.150012022 |  | DH1500/Mechanical Yard-R150 // Set TES tank - TES-1CY40-R150 | 1d | 2026-12-18 | 2026-12-18 | DH.150012021 |  |  |  |  | 11.88d | 0d | 1083 | DH1500 | MY |  |  |  |
| DH.150012053 |  | DH1500/Mechanical Yard-R150 // Install CHWP | 1d | 2026-12-21 | 2026-12-21 | DH.150012022 |  |  |  |  | 11.88d | 0d | 1083 | DH1500 | MY |  |  |  |
| DH.150012054 |  | DH1500/Mechanical Yard-R150 // Install Mechanical Piping Mains (Building -to Line) | 1d | 2026-12-22 | 2026-12-22 | DH.150012053 |  |  |  |  | 11.88d | 0d | 1083 | DH1500 | MY |  |  |  |
| DH.150012055 |  | DH1500/Mechanical Yard-R150 // Install Mechanical Chiller to Mains | 1d | 2026-12-23 | 2026-12-23 | DH.150012054 |  |  |  |  | 11.88d | 0d | 1083 | DH1500 | MY |  |  |  |
|  | 12 | **Test & Flushing** |  | 2026-12-24 | 2027-01-08 |  |  |  |  |  |  |  |  |  |  |  |  |  |
| A5742 |  | DH1500/Mechanical Yard-Test & Flushing // Line Test & Checking | 2d | 2026-12-24 | 2026-12-28 | DH.150012025, DH.150012028, DH.150012031, DH.150012034, DH.150012037, DH.150012040, DH.150012043, DH.150012046, DH.150012049, DH.150012052, DH.150012055 |  |  |  |  | 56.88d | 0d |  | DH1500 | MY |  |  |  |
| A5744 |  | DH1500/Mechanical Yard-Test & Flushing // Electrical & Controls Testing / Checking | 3d | 2026-12-29 | 2026-12-31 | A5742 |  |  |  |  | 56.88d | 0d |  | DH1500 | MY | HELIX | TBD |  |
| A5743 |  | DH1500/Mechanical Yard-Test & Flushing // Fill, Flush & Purge | 5d | 2027-01-04 | 2027-01-08 | A5744 |  |  |  |  | 56.88d | 84d |  | DH1500 | MY |  |  |  |
|  | 2 | **Electrical & Controls** |  | 2026-09-01 | 2026-11-27 |  |  |  |  |  |  |  |  |  |  |  |  |  |
| A5802 |  | DH1500/Electrical & Controls // Excavate Raceways from Building to Chiller Pad | 8d | 2026-09-01 A | 2026-10-16 | A5796, A5801 SS | 62% | 3d | 2026-09-10 | 2026-09-21 | 84.88d | 0d | 1095 | DH1500 | MY | HELIX | PRICE |  |
| A5803 |  | DH1500/Electrical & Controls // Install Raceway from Building To Chiller Pad | 8d | 2026-09-03 A | 2026-10-19 | A5802 SS+4d | 50% | 4d | 2026-09-16 | 2026-09-25 | 84.88d | 0d | 1096 | DH1500 | MY | HELIX | PRICE |  |
| A5804 |  | DH1500/Electrical & Controls // Backfill Chiller Raceways from Building to Chiller Pad | 8d | 2026-10-19 | 2026-10-28 | A5802 |  |  |  |  | 85.88d | 1d | 1075 | DH1500 | MY | HELIX | PRICE |  |
| A5807 |  | DH1500/Electrical & Controls // Raceway connections to Chiller units | 6d | 2026-10-20 | 2026-10-27 | A5804 SS, A5803 |  |  |  |  | 84.88d | 0d | 1099 | DH1500 | MY | HELIX | PRICE |  |
| A5809 |  | DH1500/Electrical & Controls // Install Panels and Raceways to CHWP | 10d | 2026-10-20 | 2026-11-02 | A5807 SS |  |  |  |  | 84.88d | 0d | 1101 | DH1500 | MY | HELIX | PRICE |  |
| A5810 |  | DH1500/Electrical & Controls // Install Controls conduits and wire to Chiller units | 12d | 2026-10-20 | 2026-11-04 | A5809 SS |  |  |  |  | 84.88d | 0d | 1103 | DH1500 | MY | HELIX | PRICE |  |
| A5813 |  | DH1500/Electrical & Controls // Pull and Terminate Feeders to Chiller units | 6d | 2026-10-28 | 2026-11-04 | A5804 SS, A5807 |  |  |  |  | 88.88d | 0d | 1105 | DH1500 | MY | HELIX | PRICE |  |
| A5815 |  | DH1500/Electrical & Controls // Mechanical CWP Support Caisson Footings | 10d | 2026-11-05 | 2026-11-19 | A5810 |  |  |  |  | 84.88d | 0d | 1103 | DH1500 | MY | HELIX | PRICE |  |
| A5816 |  | DH1500/Electrical & Controls // Chiller units Ready to Energize | 6d | 2026-11-05 | 2026-11-13 | A5809, A5810, A5813 |  |  |  |  | 88.88d | 4d | 1112 | DH1500 | MY | HELIX | PRICE |  |
| A5817 |  | DH1500/Electrical & Controls // Fine Grade Install Landscape Fabric & Install Rock | 5d | 2026-11-20 | 2026-11-27 | A5816, A5810, A5815 |  |  |  |  | 84.88d | 112d | 1103 | DH1500 | MY | HELIX | PRICE |  |
|  | 2 | **Roof - RTUs** |  | 2026-08-12 | 2026-11-03 |  |  |  |  |  |  |  |  |  |  |  |  |  |
|  | 1 | **Column Lines 1.2 thru 2.0** |  | 2026-08-12 | 2026-11-03 |  |  |  |  |  |  |  |  |  |  |  |  |  |
| DH.150012057 |  | DH1500/Roof - RTUs // - RTU-RT- 015 | 1d | 2026-08-12 A | 2026-08-12 A | DH.150012058 SS+2d | 100% |  | 2026-08-18 | 2026-08-18 |  |  | 1119 | DH1500 |  |  |  | 2 |
| DH.150012058 |  | DH1500/Roof - RTUs // - RTU-RT- 014 | 1d | 2026-08-12 A | 2026-08-12 A | DH.140012064 | 100% |  | 2026-08-14 | 2026-08-14 |  |  | 1120 | DH1500 |  |  |  | 2 |
| DH.150012064 |  | DH1500/Roof - RTUs // - RTU-RT- 016 | 1d | 2026-08-12 A | 2026-08-12 A | DH.150012057 | 100% |  | 2026-08-19 | 2026-08-19 |  |  | 1119 | DH1500 |  |  |  | 2 |
| DH.150012059 |  | DH1500/Roof - RTUs // Install Mechanical Piping | 15d | 2026-09-01 A | 2026-09-22 A | DH.150012058, DH.150012064 | 100% |  | 2026-08-20 | 2026-09-10 |  |  | 1117 | DH1500 |  |  |  | 2 |
| DH.150012056 |  | DH1500/Roof - RTUs // Install heat trace system | 15d | 2026-10-14 | 2026-11-03 | DH.150012059 |  |  |  |  | 100.88d | 128d | 1116 | DH1500 |  | HELIX | JT | 2 |
| DH.15007841 |  | DH1500/Roof - RTUs // Install Electrical Conduit and Controls Piping | 15d | 2026-10-14 | 2026-11-03 | DH.150012059, DH.150012064 |  |  |  |  | 87.88d | 45d | 1118 | DH1500 |  | HELIX | JT | 2 |

| ID | WBS | Activity | Type | Duration | Start | Finish | Predecessors | Complete | Remaining | Planned start | Planned finish | Total float | Free float | Constraint | MSP Activity ID | QTS - AREA | QTS - DASH | QTS - Subcontractor | QTS - Resp |
| --- | --- | --- | --- | --- | --- | --- | --- | --- | --- | --- | --- | --- | --- | --- | --- | --- | --- | --- | --- |
|  | 1 | **Interior Build Out** |  |  | 2026-09-29 | 2027-06-24 |  |  |  |  |  |  |  |  |  |  |  |  |  |
|  | 9 | **Flex 1000E10** |  |  | 2026-10-01 | 2026-12-30 |  |  |  |  |  |  |  |  |  |  |  |  |  |
| DH.1500.1000 |  | DH1500/Flex 1000E10 // Seal Concrete |  | 2d | 2026-10-01 A | 2026-10-02 A | SOG.1466 | 100% |  | 2026-09-30 | 2026-10-01 |  |  |  | 66 | DH1500 | OR |  |  |
| DH.1500.1040 |  | DH1500/Flex 1000E10 // Frame Walls including Backing |  | 4d | 2026-10-13 A | 2026-10-19 | DH.1500.1000 |  | 4d | 2026-10-06 | 2026-10-09 | 39.88d | 14d |  | 1155 | DH1500 | OR |  |  |
| DH.1500.1010 |  | DH1500/Flex 1000E10 // MEPF Layout of Overhead Supports |  | 2d | 2026-10-14 | 2026-10-15 | DH.1500.1000, STRUCTURE.7510 |  |  |  |  | 25.88d | 0d |  | 1153 | DH1500 | OR | HELIX | ALOO |
| B120001.3179 |  | DH1500/Flex 1000E10 // Install Overhead Cable Ladder / 36" Cable Tray - TFO |  | 5d | 2026-10-16 | 2026-10-22 | A5683, DH.1500.1010 |  |  |  |  | 25.88d | 0d |  | 1181 | DH1500 | OR |  |  |
| B120001.3180 |  | DH1500/Flex 1000E10 // Install Overhead HAC - TFO |  | 5d | 2026-10-23 | 2026-10-29 | B120001.3179 |  |  |  |  | 25.88d | 0d |  | 1181 | DH1500 | OR |  |  |
| DH.1500.1020 |  | DH1500/Flex 1000E10 // MEPF Install High Overhead Systems |  | 6d | 2026-10-30 | 2026-11-06 | B120001.3180, DH.1500.1010 |  |  |  |  | 25.88d | 0d |  | 1154 | DH1500 | OR | HELIX | ALOO |
| DH.1500.1060 |  | DH1500/Flex 1000E10 // MEPF Install Rough Wall |  | 2d | 2026-11-09 | 2026-11-10 | DH.1500.1020, DH.1500.1040 |  |  |  |  | 25.88d | 0d |  | 1156 | DH1500 | OR | HELIX | AC |
| DH.1500.1080 |  | DH1500/Flex 1000E10 // Rough Wall Inspspection (Approval to Close up) |  | 1d | 2026-11-12 | 2026-11-12 | DH.1500.1060 |  |  |  |  | 25.88d | 0d |  | 1158 | DH1500 | OR |  |  |
| DH.1500.1070 |  | DH1500/Flex 1000E10 // Install Top Down Sheet Rock |  | 5d | 2026-11-13 | 2026-11-19 | DH.1500.1080, DH.1500.1040 SS+2d |  |  |  |  | 25.88d | 0d |  | 1157 | DH1500 | OR |  |  |
| DH.1500.1090 |  | DH1500/Flex 1000E10 // Install Balance of Sheetrock |  | 3d | 2026-11-20 | 2026-11-24 | DH.1500.1070 |  |  |  |  | 25.88d | 0d |  | 1159 | DH1500 | OR |  |  |
| DH.1500.1100 |  | DH1500/Flex 1000E10 // Tape and Finish Walls |  | 6d | 2026-11-25 | 2026-12-03 | DH.1500.1090 |  |  |  |  | 25.88d | 0d |  | 1160 | DH1500 | OR |  |  |
| DH.1500.1110 |  | DH1500/Flex 1000E10 // Prime and First Coat of Paint |  | 2d | 2026-12-04 | 2026-12-07 | DH.1500.1100 |  |  |  |  | 25.88d | 0d |  | 1162 | DH1500 | OR |  |  |
| DH.1500.1120 |  | DH1500/Flex 1000E10 // Install MEPF Overhead Ceiling Rough |  | 3d | 2026-12-08 | 2026-12-10 | DH.1500.1110 |  |  |  |  | 25.88d | 0d |  | 1163 | DH1500 | OR | HELIX | AC |
| DH.1500.1130 |  | DH1500/Flex 1000E10 // Install Lighting, Fire Alarm & Fire Protection |  | 2d | 2026-12-11 | 2026-12-14 | DH.1500.1120 |  |  |  |  | 25.88d | 0d |  | 1164 | DH1500 | OR | HELIX | AC |
| DH.1500.1140 |  | DH1500/Flex 1000E10 // Wall Touch up Final Coat of Paint |  | 3d | 2026-12-15 | 2026-12-17 | DH.1500.1130 |  |  |  |  | 25.88d | 0d |  | 1165 | DH1500 | OR |  |  |
| DH.1500.1050 |  | DH1500/Flex 1000E10 // Install Door Frames |  | 1d | 2026-12-18 | 2026-12-18 | DH.1500.1140, DH.1500.1040 FF |  |  |  |  | 64.88d | 2d |  | 1161 | DH1500 | OR |  |  |
| DH.1500.1150 |  | DH1500/Flex 1000E10 // Install Wall Base, Trim, and Devices |  | 3d | 2026-12-18 | 2026-12-22 | DH.1500.1140 |  |  |  |  | 25.88d | 0d |  | 1166 | DH1500 | OR |  |  |
| DH.1500.3057 |  | DH1500/Flex 1000E10 // Ready to Receive Equipment | milestone | 0d | 2026-12-22 | 2026-12-22 | DH.1500.1150 |  |  |  |  | 25.88d | 0d |  | 1166 | DH1500 | OR | HELIX | TBD |
| DH.1500.1160 |  | DH1500/Flex 1000E10 // Suffolk Pre Punch |  | 5d | 2026-12-23 | 2026-12-30 | DH.1500.3057, DH.1500.1050 |  |  |  |  | 62.88d | 90d |  | 1167 | DH1500 | OR |  |  |
|  | 7 | **Electrical Room #5501** |  |  | 2026-10-01 | 2027-03-04 |  |  |  |  |  |  |  |  |  |  |  |  |  |
| B120001.3057 |  | DH1500/Electrical Room #5501 // MEPF Layout of Overhead Supports |  | 2d | 2026-10-01 A | 2026-10-02 A | B120001.3048 | 100% |  | 2026-10-06 | 2026-10-07 |  |  |  | 1170 | DH1500 | ER | HELIX | ALOO |
| B120001.3060 |  | DH1500/Electrical Room #5501 // MEPF Install High Overhead Systems |  | 6d | 2026-10-05 A | 2026-10-21 | B120001.3057 |  | 6d | 2026-10-08 | 2026-10-16 | 31.88d | 0d |  | 1171 | DH1500 | ER | HELIX | ALOO |
| B120001.3058 |  | DH1500/Electrical Room #5501 // Frame Walls including Backing |  | 4d | 2026-10-13 A | 2026-10-19 | B120001.3057 |  | 4d | 2026-10-28 | 2026-11-02 | 35.88d | 0d |  | 1172 | DH1500 | ER |  |  |
| B120001.3181 |  | DH1500/Electrical Room #5501 // Install Overhead Cable Ladder / 36" Cable Tray - TFO |  | 5d | 2026-10-14 | 2026-10-20 | B120001.3057 |  |  |  |  | 27.88d | 0d |  | 1181 | DH1500 | ER |  |  |
| DH.1400.3036 |  | DH1500/Electrical Room #5501 // Install Overhead Buss duct |  | 2d | 2026-10-14 | 2026-10-15 | B120001.3057 |  |  |  |  | 35.88d | 8d |  | 1188 | DH1500 | ER | HELIX | AL |
| B120001.3061 |  | DH1500/Electrical Room #5501 // MEPF Install Rough Wall |  | 2d | 2026-10-20 | 2026-10-21 | B120001.3058 |  |  |  |  | 37.88d | 0d |  | 1174 | DH1500 | ER | HELIX | AC |
| B120001.3062 |  | DH1500/Electrical Room #5501 // Install Top Down Sheet Rock |  | 5d | 2026-10-20 | 2026-10-26 | B120001.3058 |  |  |  |  | 35.88d | 0d |  | 1175 | DH1500 | ER |  |  |
| B120001.3182 |  | DH1500/Electrical Room #5501 // Install Overhead HAC - TFO |  | 5d | 2026-10-21 | 2026-10-27 | B120001.3181 |  |  |  |  | 27.88d | 0d |  | 1181 | DH1500 | ER |  |  |
| B120001.3063 |  | DH1500/Electrical Room #5501 // Rough Wall Inspspection (Approval to Close up) |  | 1d | 2026-10-22 | 2026-10-22 | B120001.3061 |  |  |  |  | 37.88d | 2d |  | 1176 | DH1500 | ER |  |  |
| DH.1300.3040 |  | DH1500/Electrical Room #5501 // Install Cable Tray |  | 3d | 2026-10-22 | 2026-10-26 | B120001.3060 |  |  |  |  | 31.88d | 4d |  | 1182 | DH1500 | ER | HELIX | OO |
| F.1000A.1246 |  | DH1500/Electrical Room #5501 // Rough-In Security |  | 2d | 2026-10-22 | 2026-10-23 | B120001.3060 |  |  |  |  | 117d | 0d |  | 1156 | DH1500 | ER | HELIX | AC |
| F.1000A.1535 |  | DH1500/Electrical Room #5501 // BMS & EPMS Rough-In |  | 2d | 2026-10-22 | 2026-10-23 | F.1000A.1246 SS, F.1000A.1246 FF |  |  |  |  | 129d | 39d |  |  | DH1500 |  |  |  |
| F.1000A.1247 |  | DH1500/Electrical Room #5501 // Pull & Test Security Cable |  | 3d | 2026-10-26 | 2026-10-28 | F.1000A.1246 |  |  |  |  | 117d | 0d |  | 1156 | DH1500 | ER |  |  |
| B120001.3064 |  | DH1500/Electrical Room #5501 // Install Balance of Sheetrock |  | 3d | 2026-10-27 | 2026-10-29 | B120001.3062, B120001.3063 |  |  |  |  | 35.88d | 6d |  | 1177 | DH1500 | ER |  |  |
| DH.1400.3037 |  | DH1500/Electrical Room #5501 // Install Cable Tray |  | 3d | 2026-10-28 | 2026-10-30 | B120001.3182, DH.1400.3036 |  |  |  |  | 27.88d | 0d |  | 1182 | DH1500 | ER | HELIX | OO |
| F.1000A.1248 |  | DH1500/Electrical Room #5501 // Install Security Devices |  | 2d | 2026-10-29 | 2026-10-30 | F.1000A.1247 |  |  |  |  | 117d | 27d |  | 1156 | DH1500 | ER |  |  |
| DH.1400.3039 |  | DH1500/Electrical Room #5501 // Install Cable Buss From Exterior |  | 3d | 2026-11-02 | 2026-11-04 | DH.1400.3037, DH.1300.3040 |  |  |  |  | 27.88d | 0d |  | 1189 | DH1500 | ER | HELIX | TBD |
| DH.1500.1170 |  | DH1500/Electrical Room #5501 // Install Overhead Buss duct |  | 2d | 2026-11-05 | 2026-11-06 | DH.1400.3039 |  |  |  |  | 27.88d | 0d |  | 1188 | DH1500 | ER | HELIX | AL |
| DH.1500.1180 |  | DH1500/Electrical Room #5501 // Install Cable Tray |  | 3d | 2026-11-06 | 2026-11-10 | DH.1500.1170 SS+1d |  |  |  |  | 27.88d | 0d |  | 1182 | DH1500 | ER | HELIX | OO |
| ER.5101.3108 |  | DH1500/Electrical Room #5501 // Room Ready to Receive Equipment | milestone | 0d | 2026-11-06 | 2026-11-06 | DH.1500.1170, B120001.3064 |  |  |  |  | 29.88d | 9d |  | 1107 | DH1500 | ER | HELIX | TBD |
| DH.1500.1220 |  | DH1500/Electrical Room #5501 // Pull Cable Tray Feeders (CRAHU/CDU) |  | 10d | 2026-11-12 | 2026-11-25 | B120001.3064, DH.1500.1180 |  |  |  |  | 31.88d | 10d |  | 1191 | DH1500 | ER | HELIX | OO |
| DH.1500.1290 |  | DH1500/Electrical Room #5501 // Pull Misc Feeder and Branch Circuits |  | 10d | 2026-11-12 | 2026-11-25 | B120001.3064, DH.1500.1180 |  |  |  |  | 31.88d | 0d |  | 1198 | DH1500 | ER | HELIX | AL |
| DH.1500.1250 |  | DH1500/Electrical Room #5501 // Set CRAH-ER5501- 01 |  | 1d | 2026-11-23 | 2026-11-23 | ER.5101.3132 |  |  |  |  | 21.88d | 0d |  | 1194 | DH1500 | ER |  |  |
| DH.1500.3031 |  | DH1500/Electrical Room #5501 // Set CRAH-ER5501- 02 |  | 1d | 2026-11-23 | 2026-11-23 | ER.5101.3132, DH.1500.1250 SS |  |  |  |  | 21.88d | 0d |  | 1194 | DH1500 | ER |  |  |
| DH.1500.3032 |  | DH1500/Electrical Room #5501 // Set CRAH-ER5501- 03 |  | 1d | 2026-11-23 | 2026-11-23 | ER.5101.3132, DH.1500.3031 SS |  |  |  |  | 21.88d | 0d |  | 1194 | DH1500 | ER |  |  |
| ER.5101.3132 |  | DH1500/Electrical Room #5501 // DH1500 - OFCI CRAH-125 Delivery Date (11/23/2027) First Shipment |  | 0d | 2026-11-23 | 2026-11-23 | ER.5101.3108 FF |  |  |  |  | 21.88d | 0d | finish on or after 2026-11-23 |  |  |  |  |  |
| DH.1500.3033 |  | DH1500/Electrical Room #5501 // Set CRAH-ER5501- 04 |  | 1d | 2026-11-24 | 2026-11-24 | ER.5101.3132, DH.1500.3032 |  |  |  |  | 21.88d | 0d |  | 1194 | DH1500 | ER |  |  |
| DH.1500.3034 |  | DH1500/Electrical Room #5501 // Set CRAH-ER5501- 05 |  | 1d | 2026-11-24 | 2026-11-24 | ER.5101.3132, DH.1500.3033 SS |  |  |  |  | 21.88d | 0d |  | 1194 | DH1500 | ER |  |  |
| DH.1500.3035 |  | DH1500/Electrical Room #5501 // Set CRAH-ER5501- 06 |  | 1d | 2026-11-24 | 2026-11-24 | ER.5101.3132, DH.1500.3034 SS |  |  |  |  | 21.88d | 0d |  | 1194 | DH1500 | ER |  |  |
| ER.5101.3099 |  | DH1500/Electrical Room #5501 // Set PDU - PDU-R150-01 |  | 1d | 2026-11-25 | 2026-11-25 | DH.1500.3035 |  |  |  |  | 21.88d | 0d |  | 1107 | DH1500 | ER | HELIX | TBD |
| DH.1500.1300 |  | DH1500/Electrical Room #5501 // Land and Terminate Misc Feeder and Branch Circuits |  | 10d | 2026-11-27 | 2026-12-10 | DH.1500.1290 |  |  |  |  | 31.88d | 54d |  | 1184 | DH1500 | ER | HELIX | TBD |
| ER.5101.3105 |  | DH1500/Electrical Room #5501 // Set UPS - UPS-R150 |  | 1d | 2026-11-27 | 2026-11-27 | ER.5101.3099 |  |  |  |  | 21.88d | 0d |  | 1107 | DH1500 | ER | HELIX | TBD |
| DH.1500.1260 |  | DH1500/Electrical Room #5501 // Mechanical Connections to CRAHU |  | 5d | 2026-11-30 | 2026-12-04 | ER.5101.3105, DH.1500.1250, DH.1500.3035 |  |  |  |  | 21.88d | 0d |  | 1195 | DH1500 | ER |  |  |
| DH.1500.1270 |  | DH1500/Electrical Room #5501 // Install Condensate lines from CRAHU's |  | 2d | 2026-12-07 | 2026-12-08 | DH.1500.3034, DH.1500.1260 |  |  |  |  | 33.88d | 12d |  | 1196 | DH1500 | ER |  |  |
| DH.1500.1280 |  | DH1500/Electrical Room #5501 // Install Elec Feeders to CRAHU's |  | 3d | 2026-12-07 | 2026-12-09 | DH.1500.1180, DH.1500.1260 |  |  |  |  | 21.88d | 0d |  | 1197 | DH1500 | ER | HELIX | OO |
| B120001.3059 |  | DH1500/Electrical Room #5501 // Install Door Frames |  | 1d | 2026-12-10 | 2026-12-10 | DH.1500.1280, B120001.3058 FF |  |  |  |  | 21.88d | 0d |  | 1179 | DH1500 | ER |  |  |
| DH.1500.1240 |  | DH1500/Electrical Room #5501 // Land and Terminate Cabel Tray Feeders In Gear |  | 10d | 2026-12-11 | 2026-12-24 | B120001.3059, DH.1500.1220 |  |  |  |  | 21.88d | 0d |  | 1193 | DH1500 | ER | HELIX | TBD |
| F.1000A.1249 |  | DH1500/Electrical Room #5501 // Mount & Terminate Security Devices |  | 5d | 2026-12-11 | 2026-12-17 | B120001.3059, F.1000A.1248 |  |  |  |  | 90d | 0d |  | 1156 | DH1500 | ER |  |  |
| F.1000A.1250 |  | DH1500/Electrical Room #5501 // Test Security Devices |  | 2d | 2026-12-18 | 2026-12-21 | F.1000A.1249, F.1000A.1535 FF |  |  |  |  | 90d | 59d |  | 1156 | DH1500 | ER |  |  |
| DH.1500.1330 |  | DH1500/Electrical Room #5501 // Mechanical Equipment Pre-Start up |  | 2d | 2026-12-28 | 2026-12-29 | DH.1500.1240, DH.1500.1260, DH.1500.1270, DH.1500.1280 |  |  |  |  | 21.88d | 54d |  | 1201 | DH1500 | ER |  |  |
| ER.5101.3075 |  | DH1500/Electrical Room #5501 // Set Skid - SKID-A150 |  | 1d | 2027-01-04 | 2027-01-04 | ER.5101.3110, ER.5101.3108, DH.1500.1180, DH.1500.1170 |  |  |  |  | -6.12d | 0d |  | 1107 | DH1500 | ER | HELIX | TBD |
| ER.5101.3076 |  | DH1500/Electrical Room #5501 // Set Skid - SKID-B150 |  | 1d | 2027-01-04 | 2027-01-04 | ER.5101.3110, ER.5101.3075 SS |  |  |  |  | -6.12d | 0d |  | 1107 | DH1500 | ER | HELIX | TBD |
| ER.5101.3077 |  | DH1500/Electrical Room #5501 // Set Skid - SKID-C150 |  | 1d | 2027-01-04 | 2027-01-04 | ER.5101.3110, ER.5101.3076 SS |  |  |  |  | -6.12d | 26d |  | 1107 | DH1500 | ER | HELIX | TBD |
| ER.5101.3110 |  | DH1500/Electrical Room #5501 // DH1500 - OFCI Skid Ship Date (01/04/2027) First Shipment | milestone | 0d | 2027-01-04 | 2027-01-04 | ER.5101.3108 FF |  |  |  |  | -6.12d | 0d | finish on or after 2027-01-04 | 1107 | DH1500 | ER |  |  |
| ER.5101.3078 |  | DH1500/Electrical Room #5501 // Set Skid - SKID-D150 |  | 1d | 2027-02-11 | 2027-02-11 | ER.5101.3122, ER.5101.3077 |  |  |  |  | -32.12d | 0d |  | 1107 | DH1500 | ER | HELIX | TBD |
| ER.5101.3079 |  | DH1500/Electrical Room #5501 // Set Skid - SKID-E150 |  | 1d | 2027-02-11 | 2027-02-11 | ER.5101.3122, ER.5101.3078 SS |  |  |  |  | -32.12d | 0d |  | 1107 | DH1500 | ER | HELIX | TBD |
| ER.5101.3122 |  | DH1500/Electrical Room #5501 // DH1500 - OFCI Skid Delivery Date (02/11/2027) 2nd Shipment |  | 0d | 2027-02-11 | 2027-02-11 | ER.5101.3108 FF |  |  |  |  | -32.12d | 0d | finish on or after 2027-02-11 |  |  |  |  |  |
| DH.1500.1200 |  | DH1500/Electrical Room #5501 // Install Cable Buss From Exterior |  | 3d | 2027-02-12 | 2027-02-17 | B120001.3064, DH.1500.1180, ER.5101.3079 |  |  |  |  | -22.12d | 0d |  | 1189 | DH1500 | ER | HELIX | TBD |

| ID | WBS | Activity | Type | Duration | Start | Finish | Predecessors | Complete | Remaining | Planned start | Planned finish | Total float | Free float | Constraint | MSP Activity ID | QTS - Subcontractor | QTS - AREA | QTS - Resp | QTS - DASH |
| --- | --- | --- | --- | --- | --- | --- | --- | --- | --- | --- | --- | --- | --- | --- | --- | --- | --- | --- | --- |
| DH.1500.1320 |  | DH1500/Electrical Room #5501 // Buss Duct Tie In to Elect Gear |  | 3d | 2027-02-12 | 2027-02-17 | B120001.3064, DH.1500.1180, DH.1500.1170, ER.5101.3079 |  |  |  |  | -13.12d | 9d |  | 1200 | HELIX | DH1500 | TBD | ER |
| DH.1500.1210 |  | DH1500/Electrical Room #5501 // Pull Cable Buss Feeders |  | 6d | 2027-02-18 | 2027-02-25 | DH.1500.1200 |  |  |  |  | -22.12d | 0d |  | 1190 | HELIX | DH1500 | TBD | ER |
| DH.1500.1230 |  | DH1500/Electrical Room #5501 // Terminate Cable Buss Feeders |  | 3d | 2027-02-26 | 2027-03-02 | DH.1500.1210 |  |  |  |  | -22.12d | 0d |  | 1192 | HELIX | DH1500 | TBD | ER |
| DH.1500.1310 |  | DH1500/Electrical Room #5501 // Final FOD Check of all Panels |  | 2d | 2027-03-03 | 2027-03-04 | DH.1500.1300, DH.1500.1320, DH.1500.1240, DH.1500.1230 |  |  |  |  | -22.12d | 10d |  | 1199 | HELIX | DH1500 | QC | ER |
|  | 2 | **Electrcal Room #5504** |  |  | 2026-10-01 | 2027-03-18 |  |  |  |  |  |  |  |  |  |  |  |  |  |
| B120001.3092 |  | DH1500/Electrical Room #5504 // MEPF Layout of Overhead Supports |  | 2d | 2026-10-01 A | 2026-10-02 A | B120001.3057 FF | 100% |  | 2026-10-08 | 2026-10-09 |  |  |  | 1170 | HELIX | DH1500 | ALOO | ER |
| B120001.3094 |  | DH1500/Electrical Room #5504 // MEPF Install High Overhead Systems |  | 6d | 2026-10-05 A | 2026-10-21 | B120001.3092 |  | 6d | 2026-10-13 | 2026-10-20 | 41.88d | 0d |  | 1171 | HELIX | DH1500 | ALOO | ER |
| B120001.3093 |  | DH1500/Electrical Room #5504 // Frame Walls including Backing |  | 4d | 2026-10-13 A | 2026-10-19 | B120001.3092 |  | 4d | 2026-10-30 | 2026-11-04 | 34.88d | 0d |  | 1172 |  | DH1500 |  | ER |
| B120001.3183 |  | DH1500/Electrical Room #5504 // Install Overhead Cable Ladder / 36" Cable Tray - TFO |  | 5d | 2026-10-14 | 2026-10-20 | B120001.3092 |  |  |  |  | 37.88d | 0d |  | 1181 |  | DH1500 |  | ER |
| DH.1400.3064 |  | DH1500/Electrical Room #5504 // Install Overhead Buss duct |  | 2d | 2026-10-14 | 2026-10-15 | B120001.3092 |  |  |  |  | 46.88d | 9d |  | 1188 | HELIX | DH1500 | AL | ER |
| B120001.3095 |  | DH1500/Electrical Room #5504 // MEPF Install Rough Wall |  | 2d | 2026-10-20 | 2026-10-21 | B120001.3093 |  |  |  |  | 34.88d | 0d |  | 1174 | HELIX | DH1500 | AC | ER |
| B120001.3184 |  | DH1500/Electrical Room #5504 // Install Overhead HAC - TFO |  | 5d | 2026-10-21 | 2026-10-27 | B120001.3183 |  |  |  |  | 37.88d | 0d |  | 1181 |  | DH1500 |  | ER |
| B120001.3097 |  | DH1500/Electrical Room #5504 // Rough Wall Inspspection (Approval to Close up) |  | 1d | 2026-10-22 | 2026-10-22 | B120001.3095 |  |  |  |  | 34.88d | 0d |  | 1176 |  | DH1500 |  | ER |
| DH.1300.3066 |  | DH1500/Electrical Room #5504 // Install Cable Tray |  | 3d | 2026-10-22 | 2026-10-26 | B120001.3094 |  |  |  |  | 41.88d | 74d |  | 1182 | HELIX | DH1500 | OO | ER |
| F.1000A.1251 |  | DH1500/Electrical Room #5504 // Rough-In Security |  | 2d | 2026-10-22 | 2026-10-23 | B120001.3094 |  |  |  |  | 117d | 0d |  | 1156 | HELIX | DH1500 | AC | ER |
| F.1000A.1545 |  | DH1500/Electrical Room #5504 // BMS & EPMS Rough-In |  | 2d | 2026-10-22 | 2026-10-23 | F.1000A.1251 SS, F.1000A.1251 FF |  |  |  |  | 129d | 98d |  |  |  | DH1500 |  |  |
| B120001.3096 |  | DH1500/Electrical Room #5504 // Install Top Down Sheet Rock |  | 5d | 2026-10-23 | 2026-10-29 | B120001.3097, B120001.3093 SS+2d |  |  |  |  | 34.88d | 0d |  | 1175 |  | DH1500 |  | ER |
| F.1000A.1252 |  | DH1500/Electrical Room #5504 // Pull & Test Security Cable |  | 3d | 2026-10-26 | 2026-10-28 | F.1000A.1251 |  |  |  |  | 117d | 82d |  | 1156 |  | DH1500 |  | ER |
| DH.1400.3065 |  | DH1500/Electrical Room #5504 // Install Cable Tray |  | 3d | 2026-10-28 | 2026-10-30 | B120001.3184, DH.1400.3064 SS+1d |  |  |  |  | 37.88d | 70d |  | 1182 | HELIX | DH1500 | OO | ER |
| B120001.3098 |  | DH1500/Electrical Room #5504 // Install Balance of Sheetrock |  | 3d | 2026-10-30 | 2026-11-03 | B120001.3096 |  |  |  |  | 34.88d | 0d |  | 1177 |  | DH1500 |  | ER |
| DH.1400.3071 |  | DH1500/Electrical Room #5504 // Room Ready to Receive Equipment | milestone | 0d | 2026-11-03 | 2026-11-03 | B120001.3098 |  |  |  |  | 34.88d | 44d |  | 1189 | HELIX | DH1500 | TBD | ER |
| DH.1500.3036 |  | DH1500/Electrical Room #5504 // Set CRAH-ER5504- 01 |  | 1d | 2026-11-24 | 2026-11-24 | ER.5101.3132 FS+1d |  |  |  |  | 25.88d | 0d |  | 1194 |  | DH1500 |  | ER |
| DH.1500.3038 |  | DH1500/Electrical Room #5504 // Set CRAH-ER5504- 02 |  | 1d | 2026-11-25 | 2026-11-25 | ER.5101.3132 FS+1d, DH.1500.3036 |  |  |  |  | 25.88d | 0d |  | 1194 |  | DH1500 |  | ER |
| DH.1500.3039 |  | DH1500/Electrical Room #5504 // Set CRAH-ER5504- 03 |  | 1d | 2026-11-25 | 2026-11-25 | ER.5101.3132 FS+1d, DH.1500.3038 FF |  |  |  |  | 25.88d | 0d |  | 1194 |  | DH1500 |  | ER |
| DH.1500.3041 |  | DH1500/Electrical Room #5504 // Set CRAH-ER5504- 04 |  | 1d | 2026-11-25 | 2026-11-25 | ER.5101.3132 FS+1d, DH.1500.3039 FF |  |  |  |  | 25.88d | 0d |  | 1194 |  | DH1500 |  | ER |
| DH.1500.3042 |  | DH1500/Electrical Room #5504 // Set CRAH-ER5504- 05 |  | 1d | 2026-11-27 | 2026-11-27 | ER.5101.3132 FS+1d, DH.1500.3041 |  |  |  |  | 25.88d | 0d |  | 1194 |  | DH1500 |  | ER |
| DH.1500.3043 |  | DH1500/Electrical Room #5504 // Set CRAH-ER5504- 06 |  | 1d | 2026-11-27 | 2026-11-27 | ER.5101.3132 FS+1d, DH.1500.3042 FF |  |  |  |  | 25.88d | 0d |  | 1194 |  | DH1500 |  | ER |
| DH.1500.3044 |  | DH1500/Electrical Room #5504 // Mechanical Connections to CRAHU |  | 5d | 2026-11-30 | 2026-12-04 | DH.1500.3036, DH.1500.3043 |  |  |  |  | 32.88d | 0d |  | 1195 |  | DH1500 |  | ER |
| DH.1500.3045 |  | DH1500/Electrical Room #5504 // Install Condensate lines from CRAHU's |  | 2d | 2026-12-07 | 2026-12-08 | DH.1500.3042, DH.1500.3044 |  |  |  |  | 33.88d | 66d |  | 1196 |  | DH1500 |  | ER |
| ER.5101.3112 |  | DH1500/Electrical Room #5504 // DH1500 - OFCI Skid Ship Date (01/09/2027) 2ND Shipment | milestone | 0d | 2027-01-11 | 2027-01-11 | DH.1400.3071 FF |  |  |  |  | -9.12d | 23d | finish on or after 2027-01-09 | 1107 |  | DH1500 |  | ER |
| ER.5101.3080 |  | DH1500/Electrical Room #5504 // Set Skid - SKID-F150 |  | 1d | 2027-02-11 | 2027-02-11 | ER.5101.3122, ER.5101.3079 SS |  |  |  |  | -32.12d | 0d |  | 1107 | HELIX | DH1500 | TBD | ER |
| ER.5101.3081 |  | DH1500/Electrical Room #5504 // Set Skid - SKID-G150 |  | 1d | 2027-02-11 | 2027-02-11 | ER.5101.3122, ER.5101.3080 SS |  |  |  |  | -32.12d | 0d |  | 1107 | HELIX | DH1500 | TBD | ER |
| ER.5101.3082 |  | DH1500/Electrical Room #5504 // Set Skid - SKID-H150 |  | 1d | 2027-02-12 | 2027-02-12 | ER.5101.3112, ER.5101.3081 |  |  |  |  | -32.12d | 0d |  | 1107 | HELIX | DH1500 | TBD | ER |
| ER.5101.3083 |  | DH1500/Electrical Room #5504 // Set Skid - SKID-J150 |  | 1d | 2027-02-12 | 2027-02-12 | ER.5101.3112, ER.5101.3082 SS |  |  |  |  | -32.12d | 0d |  | 1107 | HELIX | DH1500 | TBD | ER |
| ER.5101.3084 |  | DH1500/Electrical Room #5504 // Set Skid - SKID-K150 |  | 1d | 2027-02-12 | 2027-02-12 | ER.5101.3112, ER.5101.3083 SS |  |  |  |  | -32.12d | 0d |  | 1107 | HELIX | DH1500 | TBD | ER |
| DH.1400.3066 |  | DH1500/Electrical Room #5504 // Install Cable Buss From Exterior |  | 3d | 2027-02-16 | 2027-02-18 | DH.1400.3065, DH.1300.3066, ER.5101.3084 |  |  |  |  | -32.12d | 0d |  | 1189 | HELIX | DH1500 | TBD | ER |
| DH.1500.3037 |  | DH1500/Electrical Room #5504 // Install Overhead Buss duct |  | 2d | 2027-02-19 | 2027-02-22 | DH.1400.3066 |  |  |  |  | -32.12d | 0d |  | 1188 | HELIX | DH1500 | AL | ER |
| DH.1500.3040 |  | DH1500/Electrical Room #5504 // Install Cable Tray |  | 3d | 2027-02-19 | 2027-02-23 | DH.1500.3037 SS |  |  |  |  | -32.12d | 0d |  | 1182 | HELIX | DH1500 | OO | ER |
| DH.1500.3046 |  | DH1500/Electrical Room #5504 // Install Elec Feeders to CRAHU's |  | 3d | 2027-02-24 | 2027-02-26 | DH.1500.3040, DH.1500.3044 |  |  |  |  | -20.12d | 0d |  | 1197 | HELIX | DH1500 | OO | ER |
| DH.1500.3047 |  | DH1500/Electrical Room #5504 // Install Cable Buss From Exterior |  | 3d | 2027-02-24 | 2027-02-26 | DH.1500.3037, B120001.3098, DH.1500.3040, ER.5101.3084 |  |  |  |  | -29.12d | 0d |  | 1189 | HELIX | DH1500 | TBD | ER |
| DH.1500.3048 |  | DH1500/Electrical Room #5504 // Buss Duct Tie In to Elect Gear |  | 3d | 2027-02-24 | 2027-02-26 | B120001.3098, DH.1500.3040, DH.1500.3037 |  |  |  |  | -20.12d | 12d |  | 1200 | HELIX | DH1500 | TBD | ER |
| DH.1500.3050 |  | DH1500/Electrical Room #5504 // Pull Cable Tray Feeders (CRAHU/CDU) |  | 10d | 2027-02-24 | 2027-03-09 | DH.1500.3043, DH.1500.3037, B120001.3098, DH.1500.3040 |  |  |  |  | -32.12d | 0d |  | 1191 | HELIX | DH1500 | OO | ER |
| DH.1500.3051 |  | DH1500/Electrical Room #5504 // Pull Misc Feeder and Branch Circuits |  | 10d | 2027-02-24 | 2027-03-09 | DH.1500.3037, B120001.3098, DH.1500.3040 |  |  |  |  | -32.12d | 0d |  | 1198 | HELIX | DH1500 | AL | ER |
| B120001.3099 |  | DH1500/Electrical Room #5504 // Install Door Frames |  | 1d | 2027-03-01 | 2027-03-01 | DH.1500.3046, B120001.3093 FF |  |  |  |  | 35d | 0d |  | 1179 |  | DH1500 |  | ER |
| DH.1500.3049 |  | DH1500/Electrical Room #5504 // Pull Cable Buss Feeders |  | 6d | 2027-03-01 | 2027-03-08 | DH.1500.3047 |  |  |  |  | -29.12d | 0d |  | 1190 | HELIX | DH1500 | TBD | ER |
| F.1000A.1253 |  | DH1500/Electrical Room #5504 // Install Security Devices |  | 2d | 2027-03-02 | 2027-03-03 | B120001.3099, F.1000A.1252 |  |  |  |  | 35d | 0d |  | 1156 |  | DH1500 |  | ER |
| DH.1500.3053 |  | DH1500/Electrical Room #5504 // Land and Terminate Cabel Tray Feeders In Gear |  | 10d | 2027-03-03 | 2027-03-16 | DH.1500.3050 SS+5d |  |  |  |  | -32.12d | 0d |  | 1193 | HELIX | DH1500 | TBD | ER |
| DH.1500.3054 |  | DH1500/Electrical Room #5504 // Land and Terminate Misc Feeder and Branch Circuits |  | 10d | 2027-03-03 | 2027-03-16 | DH.1500.3051 SS+5d |  |  |  |  | -32.12d | 0d |  | 1184 | HELIX | DH1500 | TBD | ER |
| F.1000A.1254 |  | DH1500/Electrical Room #5504 // Mount & Terminate Security Devices |  | 5d | 2027-03-04 | 2027-03-10 | B120001.3099, F.1000A.1253 |  |  |  |  | 35d | 4d |  | 1156 |  | DH1500 |  | ER |
| DH.1500.3052 |  | DH1500/Electrical Room #5504 // Terminate Cable Buss Feeders |  | 3d | 2027-03-09 | 2027-03-11 | DH.1500.3049 |  |  |  |  | -29.12d | 3d |  | 1192 | HELIX | DH1500 | TBD | ER |
| DH.1500.3055 |  | DH1500/Electrical Room #5504 // Final FOD Check of all Panels |  | 2d | 2027-03-17 | 2027-03-18 | DH.1500.3054, DH.1500.3048, DH.1500.3053, DH.1500.3052 |  |  |  |  | -32.12d | 0d |  | 1199 | HELIX | DH1500 | QC | ER |
| DH.1500.3056 |  | DH1500/Electrical Room #5504 // Mechanical Equipment Pre-Start up |  | 2d | 2027-03-17 | 2027-03-18 | DH.1500.3053, DH.1500.3044, DH.1500.3045, DH.1500.3046 |  |  |  |  | -32.12d | 0d |  | 1201 |  | DH1500 |  | ER |
| F.1000A.1255 |  | DH1500/Electrical Room #5504 // Test Security Devices |  | 2d | 2027-03-17 | 2027-03-18 | DH.1500.3053, F.1000A.1254, F.1000A.1545 FF |  |  |  |  | 31d | 0d |  | 1156 |  | DH1500 |  | ER |

| ID | WBS | Activity | Type | Duration | Start | Finish | Predecessors | Remaining | Planned start | Planned finish | Total float | Free float | MSP Activity ID | QTS - AREA | 05 -SUFFOLK - Building Phase | QTS - DASH | QTS - Subcontractor | QTS - Resp |
| --- | --- | --- | --- | --- | --- | --- | --- | --- | --- | --- | --- | --- | --- | --- | --- | --- | --- | --- |
|  | 3 | **Data Hall 1500** |  |  | 2026-10-08 | 2027-01-12 |  |  |  |  |  |  |  |  |  |  |  |  |
| DH.15006300 |  | DH 1500 // Frame walls |  | 10d | 2026-10-08 A | 2026-10-27 | DH.16006300 FF | 10d | 2026-10-08 | 2026-10-22 | 9.88d | 0d | 1383 | DH1500 | 2 | DH |  |  |
| DH.15006270 |  | DH 1500 // MEPF overhead layout |  | 3d | 2026-10-14 | 2026-10-16 | B120001.3057, STRUCTURE.7510 |  |  |  | 19.88d | 0d | 1380 | DH1500 | 2 | DH | HELIX | ACOO |
| B120001.3185 |  | DH 1500 // Install Overhead Cable Ladder / 36" Cable Tray - TFO |  | 5d | 2026-10-19 | 2026-10-23 | DH.15006270 |  |  |  | 19.88d | 0d | 1181 |  |  | DH |  |  |
| B120001.3186 |  | DH 1500 // Install Overhead HAC - TFO |  | 5d | 2026-10-26 | 2026-10-30 | B120001.3185 |  |  |  | 19.88d | 0d | 1181 |  |  | DH |  |  |
| DH.15006320 |  | DH 1500 // MEP rough in walls |  | 5d | 2026-10-28 | 2026-11-03 | DH.15006300 |  |  |  | 9.88d | 0d | 1386 | DH1500 | 2 | DH | HELIX | AC |
| DH.15006290 |  | DH 1500 // MEPF high overhead install |  | 10d | 2026-11-02 | 2026-11-16 | B120001.3186, DH.15006270 |  |  |  | 19.88d | 0d | 1382 | DH1500 | 2 | DH | HELIX | ACOO |
| DH.150012067 |  | DH 1500 // Install 1-Side Sheet Rock (DH-Side) |  | 3d | 2026-11-04 | 2026-11-06 | DH.15006320, DH.15006300 |  |  |  | 9.88d | 0d | 1385 | DH1500 | 2 | DH |  |  |
| DH.15006360 |  | DH 1500 // Tape and finish walls |  | 15d | 2026-11-09 | 2026-12-01 | DH.15006300 SS, DH.150012067 |  |  |  | 9.88d | 0d | 1390 | DH1500 | 2 | DH |  |  |
| DH.15007800 |  | DH 1500 // Install Ceiling supports (rods/wires) no grid |  | 5d | 2026-11-17 | 2026-11-23 | DH.15006290, DH.15006300 SS |  |  |  | 19.88d | 0d | 1375 | DH1500 | 2 | DH |  |  |
| F.1000A.1256 |  | DH 1500 // Rough-In Security |  | 2d | 2026-11-17 | 2026-11-18 | DH.15006290 |  |  |  | 95d | 0d | 1156 | DH1500 |  | DH | HELIX | AC |
| F.1000A.1555 |  | DH 1500 // BMS & EPMS Rough-In |  | 2d | 2026-11-17 | 2026-11-18 | F.1000A.1256 SS, F.1000A.1256 FF |  |  |  | 107d | 31d |  |  |  |  |  |  |
| F.1000A.1257 |  | DH 1500 // Pull & Test Security Cable |  | 3d | 2026-11-19 | 2026-11-23 | F.1000A.1256 |  |  |  | 95d | 13d | 1156 | DH1500 |  | DH |  |  |
| DH.15006220 |  | DH 1500 // Install ceiling grid system |  | 8d | 2026-11-24 | 2026-12-04 | DH.15007800 |  |  |  | 19.88d | 0d | 1374 | DH1500 | 2 | DH |  |  |
| DH.15006260 |  | DH 1500 // Polish concrete |  | 5d | 2026-12-02 | 2026-12-08 | DH.15006360 |  |  |  | 25.88d | 6d | 1378 | DH1500 | 2 | DH |  |  |
| DH.15006410 |  | DH 1500 // Prime and 1st coat of Paint |  | 5d | 2026-12-02 | 2026-12-08 | DH.15006360 |  |  |  | 25.88d | 0d | 1391 | DH1500 | 2 | DH |  |  |
| DH.15006250 |  | DH 1500 // Install overhead MEP and lighting |  | 5d | 2026-12-07 | 2026-12-11 | DH.15006220 |  |  |  | 19.88d | 0d | 1377 | DH1500 | 2 | DH | HELIX | AC |
| DH.15006310 |  | DH 1500 // Install wall door frames |  | 3d | 2026-12-09 | 2026-12-11 | DH.15006410, DH.15006300 FF |  |  |  | 27.88d | 0d | 1385 | DH1500 | 2 | DH |  |  |
| DH.15006240 |  | DH 1500 // Install ceiling grid tiles |  | 3d | 2026-12-14 | 2026-12-16 | DH.15006250, DH.15006220 SS+3d |  |  |  | 19.88d | 0d | 1376 | DH1500 | 2 | DH |  |  |
| F.1000A.1258 |  | DH 1500 // Install Security Devices |  | 2d | 2026-12-14 | 2026-12-15 | DH.15006310, F.1000A.1257 |  |  |  | 82d | 0d | 1156 | DH1500 |  | DH |  |  |
| F.1000A.1259 |  | DH 1500 // Mount & Terminate Security Devices |  | 5d | 2026-12-16 | 2026-12-22 | DH.15006410, F.1000A.1258 |  |  |  | 82d | 6d | 1156 | DH1500 |  | DH |  |  |
| DH.15007790 |  | DH 1500 // Final Paint & Touch up walls |  | 5d | 2026-12-17 | 2026-12-23 | DH.15006260, DH.15006240, DH.15006220, DH.15006410 |  |  |  | 19.88d | 0d | 1392 | DH1500 | 2 | DH |  |  |
| DH.15007810 |  | DH 1500 // Install MEPF Trim and Finishes |  | 5d | 2026-12-24 | 2026-12-31 | DH.15006310, DH.15007790 |  |  |  | 19.88d | 0d | 1394 | DH1500 | 2 | DH | HELIX | AC |
| DH.160012156 |  | DH 1500 // Room Ready to Receive Equipment | milestone | 0d | 2026-12-31 | 2026-12-31 | DH.15007810 FF |  |  |  | 19.88d | 2d | 1394 | DH1500 | 2 | DH | HELIX | TBD |
| F.1000A.1260 |  | DH 1500 // Test Security Devices |  | 2d | 2027-01-04 | 2027-01-05 | DH.15007810, F.1000A.1259, F.1000A.1555 FF |  |  |  | 76d | 0d | 1156 | DH1500 |  | DH |  |  |
| DH.15007820 |  | DH 1500 // Data Hall 1500 Suffolk Pre Punch |  | 5d | 2027-01-06 | 2027-01-12 | F.1000A.1260, DH.160012156 |  |  |  | 76d | 99d | 1395 | DH1500 | 2 | DH |  |  |

| ID | WBS | Activity | Type | Duration | Start | Finish | Predecessors | Complete | Remaining | Planned start | Planned finish | Total float | Free float | MSP Activity ID | QTS - AREA | 05 -SUFFOLK - Building Phase | QTS - DASH | QTS - Subcontractor | QTS - Resp |
| --- | --- | --- | --- | --- | --- | --- | --- | --- | --- | --- | --- | --- | --- | --- | --- | --- | --- | --- | --- |
|  | 15 | **PDU Gallery** |  |  | 2026-10-01 | 2026-12-07 |  |  |  |  |  |  |  |  |  |  |  |  |  |
| DH.15000.1000 |  | DH1500/PDU Gallery // Seal concrete |  | 2d | 2026-10-01 A | 2026-10-02 A | SOG.1466 | 100% |  | 2026-09-30 | 2026-10-01 |  |  | 1397 | DH1500 | 2 | GR |  |  |
| DH.15000.1040 |  | DH1500/PDU Gallery // Frame walls |  | 5d | 2026-10-13 A | 2026-10-21 | DH.15006300 SS+4d |  | 5d | 2026-10-21 | 2026-10-27 | 51.88d | 15d | 1401 | DH1500 | 2 | GR |  |  |
| DH.15000.1010 |  | DH1500/PDU Gallery // MEPF overhead layout |  | 5d | 2026-10-19 | 2026-10-23 | DH.15006270 |  |  |  |  | 36.88d | 0d | 1398 | DH1500 | 2 | GR | HELIX | ACOO |
| B120001.3207 |  | DH1500/PDU Gallery // Install Overhead Cable Ladder / 36" Cable Tray - TFO |  | 5d | 2026-10-26 | 2026-10-30 | DH.15000.1010 |  |  |  |  | 36.88d | 0d | 1181 | DH1500 |  | GR |  |  |
| B120001.3208 |  | DH1500/PDU Gallery // Install Overhead HAC - TFO |  | 5d | 2026-11-02 | 2026-11-06 | B120001.3207 |  |  |  |  | 36.88d | 0d | 1181 | DH1500 |  | GR |  |  |
| DH.15000.1030 |  | DH1500/PDU Gallery // MEPF high overhead install |  | 3d | 2026-11-09 | 2026-11-12 | B120001.3208, DH.15000.1010 SS |  |  |  |  | 36.88d | 0d | 1400 | DH1500 | 2 | GR | HELIX | ACOO |
| DH.15000.1711 |  | DH1500/PDU Gallery // MEP rough in walls |  | 3d | 2026-11-13 | 2026-11-17 | DH.15000.1030, DH.15000.1040 |  |  |  |  | 36.88d | 0d | 1403 | DH1500 | 2 | GR | HELIX | AC |
| DH.15000.1070 |  | DH1500/PDU Gallery // In wall inspection |  | 1d | 2026-11-18 | 2026-11-18 | DH.15000.1010, DH.15000.1711 |  |  |  |  | 36.88d | 0d | 1404 | DH1500 | 2 | GR |  |  |
| DH.15000.1060 |  | DH1500/PDU Gallery // Install Sheetrock Top Down |  | 3d | 2026-11-19 | 2026-11-23 | DH.15000.1070 |  |  |  |  | 36.88d | 0d | 1403 | DH1500 | 2 | GR |  |  |
| DH.15000.1080 |  | DH1500/PDU Gallery // Install sheetrock on walls (Balance) |  | 5d | 2026-11-24 | 2026-12-01 | DH.15000.1060, DH.15000.1070 |  |  |  |  | 36.88d | 0d | 1405 | DH1500 | 2 | GR |  |  |
| DH.15000.1090 |  | DH1500/PDU Gallery // Tape and finish walls |  | 1d | 2026-12-02 | 2026-12-02 | DH.15000.1080 |  |  |  |  | 36.88d | 0d | 1406 | DH1500 | 2 | GR |  |  |
| DH.15000.1050 |  | DH1500/PDU Gallery // Install wall door frames |  | 1d | 2026-12-03 | 2026-12-03 | DH.15000.1090 |  |  |  |  | 36.88d | 0d | 1402 | DH1500 | 2 | GR |  |  |
| DH.15000.1110 |  | DH1500/PDU Gallery // Install Cable Tray (From Elec Rm 5501 to CRAHU Gallery) |  | 2d | 2026-12-03 | 2026-12-04 | DH.1500.1180, DH.15000.1090 |  |  |  |  | 37.88d | 15d | 1408 | DH1500 |  | GR | HELIX | OO |
| DH.15000.1100 |  | DH1500/PDU Gallery // Paint walls |  | 2d | 2026-12-04 | 2026-12-07 | DH.15000.1050, DH.15000.1040, DH.15000.1090 |  |  |  |  | 36.88d | 0d | 1407 | DH1500 | 2 | GR |  |  |
| DH.15000.1712 |  | DH1500/PDU Gallery // Ready to Receive Equipment | milestone | 0d | 2026-12-07 | 2026-12-07 | DH.15000.1100 FF |  |  |  |  | 36.88d | 69d | 1407 | DH1500 | 2 | GR | HELIX | TBD |
|  | 14 | **CRAH/CDU Galleries** |  |  | 2026-10-01 | 2027-02-17 |  |  |  |  |  |  |  |  |  |  |  |  |  |
|  | 2 | **Gallery 1502** |  |  | 2026-10-01 | 2027-02-05 |  |  |  |  |  |  |  |  |  |  |  |  |  |
|  | 4 | **Architectural** |  |  | 2026-10-01 | 2027-01-06 |  |  |  |  |  |  |  |  |  |  |  |  |  |
| DH.1500660 |  | DH 1500/Gallery 1502 // Seal concrete |  | 2d | 2026-10-01 A | 2026-10-02 A | DH.15000.1000 | 100% |  | 2026-10-02 | 2026-10-05 |  |  | 1379 | DH1500 | 2 | GR |  |  |
| DH.1500670 |  | DH 1500/Gallery 1502 // MEPF overhead layout |  | 5d | 2026-10-14 | 2026-10-20 | DH.1400670 SS |  |  |  |  | -10.12d | 0d | 1412 | DH1500 | 2 | GR | HELIX | ACOO |
| B120001.3209 |  | DH 1500/Gallery 1502 // Install Overhead Cable Ladder / 36" Cable Tray - TFO |  | 5d | 2026-10-21 | 2026-10-27 | DH.1500670 |  |  |  |  | -2.12d | 0d | 1181 |  |  | GR |  |  |
| DH.1500700 |  | DH 1500/Gallery 1502 // Frame walls |  | 6d | 2026-10-21 | 2026-10-28 | DH.1500670 |  |  |  |  | -10.12d | 0d | 1415 | DH1500 | 2 | GR |  |  |
| B120001.3210 |  | DH 1500/Gallery 1502 // Install Overhead HAC - TFO |  | 5d | 2026-10-28 | 2026-11-03 | B120001.3209 |  |  |  |  | -2.12d | 0d | 1181 |  |  | GR |  |  |
| DH.1500730 |  | DH 1500/Gallery 1502 // MEP rough in walls |  | 4d | 2026-10-29 | 2026-11-03 | DH.1500700 |  |  |  |  | 0.88d | 0d | 1417 | DH1500 | 2 | GR | HELIX | AC |
| DH.1500690 |  | DH 1500/Gallery 1502 // MEPF high overhead install |  | 10d | 2026-11-04 | 2026-11-18 | B120001.3210, DH.1500670 SS |  |  |  |  | -2.12d | 0d | 1414 | DH1500 | 2 | GR | HELIX | ACOO |
| DH.1500740 |  | DH 1500/Gallery 1502 // In wall inspection |  | 1d | 2026-11-04 | 2026-11-04 | DH.1500730 |  |  |  |  | 0.88d | 0d | 1418 | DH1500 | 2 | GR |  |  |
| DH.1500720 |  | DH 1500/Gallery 1502 // Install Sheetrock Top Down |  | 6d | 2026-11-05 | 2026-11-13 | DH.1500740, DH.1500700 SS+3d |  |  |  |  | 0.88d | 3d | 1420 | DH1500 |  | GR |  |  |
| DH.1500750 |  | DH 1500/Gallery 1502 // Install Balance of Sheetrock on walls |  | 6d | 2026-11-19 | 2026-11-27 | DH.1500720, DH.1500690 |  |  |  |  | -2.12d | 0d | 1419 | DH1500 | 2 | GR |  |  |
| F.1000A.1296 |  | DH 1500/Gallery 1502 // Rough-In Security |  | 2d | 2026-11-19 | 2026-11-20 | DH.1500690 |  |  |  |  | 71.88d | 0d | 1156 | DH1500 |  | GR | HELIX | AC |
| F.1000A.1565 |  | DH 1500/Gallery 1502 // BMS & EPMS Rough-In |  | 2d | 2026-11-19 | 2026-11-20 | F.1000A.1296 SS, F.1000A.1296 FF |  |  |  |  | 83.88d | 25d |  |  |  |  |  |  |
| F.1000A.1297 |  | DH 1500/Gallery 1502 // Pull & Test Security Cable |  | 3d | 2026-11-23 | 2026-11-25 | F.1000A.1296 |  |  |  |  | 71.88d | 10d | 1156 | DH1500 |  | GR |  |  |
| DH.1500770 |  | DH 1500/Gallery 1502 // Tape and finish walls |  | 8d | 2026-11-30 | 2026-12-09 | DH.1500750 |  |  |  |  | -2.12d | 0d | 1421 | DH1500 | 2 | GR |  |  |
| DH.1500710 |  | DH 1500/Gallery 1502 // Install wall door frames |  | 1d | 2026-12-10 | 2026-12-10 | DH.1500700 FF, DH.1500770, DH.1500740 |  |  |  |  | 0.88d | 0d | 1416 | DH1500 | 2 | GR |  |  |
| DH.1500790 |  | DH 1500/Gallery 1502 // Prime and Paint walls |  | 4d | 2026-12-10 | 2026-12-15 | DH.1500770 |  |  |  |  | -2.12d | 0d | 1422 | DH1500 | 2 | GR |  |  |
| F.1000A.1298 |  | DH 1500/Gallery 1502 // Install Security Devices |  | 2d | 2026-12-11 | 2026-12-14 | DH.1500710, F.1000A.1297 |  |  |  |  | 61.88d | 1d | 1156 | DH1500 |  | GR |  |  |
| DH.1500800 |  | DH 1500/Gallery 1502 // Touch up Walls and Fianl Paint |  | 5d | 2026-12-16 | 2026-12-22 | DH.1500790, DH.1500710 |  |  |  |  | -2.12d | 0d | 1423 | DH1500 | 2 | GR |  |  |
| F.1000A.1299 |  | DH 1500/Gallery 1502 // Mount & Terminate Security Devices |  | 5d | 2026-12-16 | 2026-12-22 | DH.1500790, F.1000A.1298 |  |  |  |  | 60.88d | 2d | 1156 | DH1500 |  | GR |  |  |
| DH.1500810 |  | DH 1500/Gallery 1502 // Install Trim and Devices |  | 2d | 2026-12-23 | 2026-12-24 | DH.1500800 |  |  |  |  | -2.12d | 0d | 1424 | DH1500 |  | GR | HELIX | AC |
| DH.160012157 |  | DH 1500/Gallery 1502 // Ready to Receive Equipment | milestone | 0d | 2026-12-24 | 2026-12-24 | DH.1500810 |  |  |  |  | -2.12d | 0d | 1424 | DH1500 |  | GR | HELIX | TBD |
| F.1000A.1300 |  | DH 1500/Gallery 1502 // Test Security Devices |  | 2d | 2026-12-28 | 2026-12-29 | DH.1500810, F.1000A.1299, F.1000A.1565 FF |  |  |  |  | 58.88d | 0d | 1156 | DH1500 |  | GR |  |  |
| DH.1500820 |  | DH 1500/Gallery 1502 // Suffolk Pre Punch |  | 5d | 2026-12-30 | 2027-01-06 | F.1000A.1300, DH.160012157 |  |  |  |  | 58.88d | 86d | 1425 | DH1500 |  | GR |  |  |

| ID | WBS | Activity | Duration | Start | Finish | Predecessors | Total float | Free float | MSP Activity ID | QTS - AREA | QTS - DASH | QTS - Subcontractor | QTS - Resp |
| --- | --- | --- | --- | --- | --- | --- | --- | --- | --- | --- | --- | --- | --- |
|  | 16 | **Raceway** |  |  |  |  |  |  |  |  |  |  |  |
|  | 3 | **Equipment Line-Ups** |  | 2026-12-28 | 2027-02-05 |  |  |  |  |  |  |  |  |
|  | 1 | **A150** |  | 2026-12-28 | 2027-01-29 |  |  |  |  |  |  |  |  |
| DH.1500A-EQP-1 |  | Gallery 1502 - A150/Line-Ups // Set CRAH-DH1500- 01 | 1d | 2026-12-28 | 2026-12-28 | DH.160012157, DH.15006360 | -2.12d | 0d | 1433 | DH1500 | GR |  |  |
| DH.1500A-EQP-3 |  | Gallery 1502 - A150/Line-Ups // Set CRAH-DH1500- 02 | 1d | 2026-12-28 | 2026-12-28 | DH.1500A-EQP-1 SS | -2.12d | 0d | 1434 | DH1500 | GR |  |  |
| DH.1500A-EQP-5 |  | Gallery 1502 - A150/Line-Ups // Set MOD-A150-01 | 1d | 2026-12-28 | 2026-12-28 | DH.1500A-EQP-3 FF | 44.88d | 0d | 1437 | DH1500 | GR | HELIX | TBD |
| DH.1500A-EQP-6 |  | Gallery 1502 - A150/Line-Ups // Set MOD-A150-02 | 1d | 2026-12-28 | 2026-12-28 | DH.1500A-EQP-5 SS | 44.88d | 0d | 1437 | DH1500 | GR | HELIX | TBD |
| DH.1500A-EQP-10 |  | Gallery 1502 - A150/Line-Ups // Pull Cable Tray Feed from MOD to CRAHU's | 5d | 2026-12-29 | 2027-01-05 | DH.15000.1110, DH.1500A-EQP-6 | 50.88d | 0d | 1438 | DH1500 | GR | HELIX | OO |
| DH.1500A-EQP-12 |  | Gallery 1502 - A150/Line-Ups // Mount Electrial Gear for Chiller Controls | 10d | 2026-12-29 | 2027-01-12 | DH.1500A-EQP-6 | 44.88d | 0d | 1443 | DH1500 | GR | HELIX | AC |
| DH.1500A-EQP-7 |  | Gallery 1502 - A150/Line-Ups // Set CDU-DH1500- 01 | 1d | 2026-12-29 | 2026-12-29 | DH.1500A-EQP-1 | 44.88d | 0d | 1434 | DH1500 | GR |  |  |
| DH.1500A-EQP-9 |  | Gallery 1502 - A150/Line-Ups // Pull Feeder from SWD to MOD | 1d | 2026-12-29 | 2026-12-29 | DH.1500A-EQP-6 | 60.88d | 9d | 1439 | DH1500 | GR | HELIX | OO |
| DH.1500A-EQP-8 |  | Gallery 1502 - A150/Line-Ups // Set CDU-DH1500- 02 | 1d | 2026-12-30 | 2026-12-30 | DH.1500A-EQP-7, DH.1500A-EQP-3 | 44.88d | 0d | 1434 | DH1500 | GR |  |  |
| DH.1500A-EQP-4 |  | Gallery 1502 - A150/Line-Ups // Condensate connections to Floor Drains | 10d | 2026-12-31 | 2027-01-14 | DH.1500A-EQP-3, DH.1500A-EQP-7, DH.1500A-EQP-8 | 44.88d | 2d | 1436 | DH1500 | GR |  |  |
| DH.1500A-EQP-11 |  | Gallery 1502 - A150/Line-Ups // Mechanical Connections to CRAHU Units | 10d | 2027-01-05 | 2027-01-19 | DH.1500A-EQP-3 SS+5d | 42.88d | 0d | 1448 | DH1500 | GR |  |  |
| DH.1500A-EQP-17 |  | Gallery 1502 - A150/Line-Ups // Pull Feeder and Branch circuits to MIsc equipment and Chiller controls | 10d | 2027-01-05 | 2027-01-19 | DH.1500A-EQP-12 SS+4d | 44.88d | 0d | 1444 | DH1500 | GR | HELIX | AC |
| DH.1500A-EQP-13 |  | Gallery 1502 - A150/Line-Ups // Pull Cable Tray Feed from MOD to CRAHU's | 5d | 2027-01-06 | 2027-01-12 | DH.1500A-EQP-10 | 50.88d | 0d | 1441 | DH1500 | GR | HELIX | OO |
| DH.1500A-EQP-16 |  | Gallery 1502 - A150/Line-Ups // Terminate CRAHU Electrical Connections | 5d | 2027-01-08 | 2027-01-14 | DH.1500A-EQP-13 SS+2d, DH.1500A-EQP-10 | 50.88d | 6d | 1442 | DH1500 | GR | HELIX | OO |
| DH.1500A-EQP-19 |  | Gallery 1502 - A150/Line-Ups // Teminate all Misc Equipment and Chiller Controls | 10d | 2027-01-11 | 2027-01-25 | DH.1500A-EQP-17 SS+4d | 44.88d | 0d | 1445 | DH1500 | GR |  |  |
| DH.1500A-EQP-14 |  | Gallery 1502 - A150/Line-Ups // Condensate connections to Floor Drains | 10d | 2027-01-12 | 2027-01-26 | DH.150012025, DH.15007841, DH.1500A-EQP-11 SS+5d, DH.1500A-EQP-4 SS+5d | 42.88d | 0d | 1449 | DH1500 | GR |  |  |
| DH.1500A-EQP-15 |  | Gallery 1502 - A150/Line-Ups // Terminate Mod Panels | 1d | 2027-01-13 | 2027-01-13 | DH.1500A-EQP-13, DH.1500A-EQP-10, DH.1500A-EQP-9 | 51.88d | 7d | 1440 | DH1500 | GR | HELIX | OO |
| DH.1500A-EQP-20 |  | Gallery 1502 - A150/Line-Ups // Electrical Gear FOD Inspection Pre-Start Up | 2d | 2027-01-26 | 2027-01-27 | DH.1500A-EQP-16, DH.1500A-EQP-19, DH.1500A-EQP-15 | 44.88d | 72d | 1446 | DH1500 | GR | HELIX | QC |
| DH.1500A-EQP-18 |  | Gallery 1502 - A150/Line-Ups // Mechanical Gear FOD Inspection Pre-Start Up | 3d | 2027-01-27 | 2027-01-29 | DH.1500A-EQP-3, DH.1500A-EQP-14, DH.1500A-EQP-4, DH.1500A-EQP-11 | 42.88d | 70d | 1447 | DH1500 | GR |  |  |
|  | 2 | **B150** |  | 2026-12-28 | 2027-01-29 |  |  |  |  |  |  |  |  |
| DH.1500A-EQP-21 |  | Gallery 1502 - B150/Line-Ups // Set CRAH-DH1500- 03 | 1d | 2026-12-28 | 2026-12-28 | DH.1500A-EQP-3 SS | -2.12d | 0d | 1433 | DH1500 | GR |  |  |
| DH.1500A-EQP-23 |  | Gallery 1502 - B150/Line-Ups // Set CRAH-DH1500- 04 | 1d | 2026-12-28 | 2026-12-28 | DH.1500A-EQP-21 SS | -2.12d | 0d | 1434 | DH1500 | GR |  |  |
| DH.1500A-EQP-25 |  | Gallery 1502 - B150/Line-Ups // Set MOD-B150-01 | 1d | 2026-12-28 | 2026-12-28 | DH.1500A-EQP-23 FF | 44.88d | 0d | 1437 | DH1500 | GR | HELIX | TBD |
| DH.1500A-EQP-26 |  | Gallery 1502 - B150/Line-Ups // Set MOD-B150-02 | 1d | 2026-12-28 | 2026-12-28 | DH.1500A-EQP-25 SS | 44.88d | 0d | 1437 | DH1500 | GR | HELIX | TBD |
| DH.1500A-EQP-27 |  | Gallery 1502 - B150/Line-Ups // Set CDU-DH1500- 03 | 1d | 2026-12-29 | 2026-12-29 | DH.1500A-EQP-21 | 44.88d | 0d | 1434 | DH1500 | GR |  |  |
| DH.1500A-EQP-29 |  | Gallery 1502 - B150/Line-Ups // Pull Feeder from SWD to MOD | 1d | 2026-12-29 | 2026-12-29 | DH.1500A-EQP-26 | 60.88d | 9d | 1439 | DH1500 | GR | HELIX | OO |
| DH.1500A-EQP-30 |  | Gallery 1502 - B150/Line-Ups // Pull Cable Tray Feed from MOD to CRAHU's | 5d | 2026-12-29 | 2027-01-05 | DH.1500A-EQP-26 | 50.88d | 0d | 1438 | DH1500 | GR | HELIX | OO |
| DH.1500A-EQP-32 |  | Gallery 1502 - B150/Line-Ups // Mount Electrial Gear for Chiller Controls | 10d | 2026-12-29 | 2027-01-12 | DH.1500A-EQP-26 | 44.88d | 0d | 1443 | DH1500 | GR | HELIX | AC |
| DH.1500A-EQP-28 |  | Gallery 1502 - B150/Line-Ups // Set CDU-DH1500- 04 | 1d | 2026-12-30 | 2026-12-30 | DH.1500A-EQP-27, DH.1500A-EQP-23 | 44.88d | 0d | 1434 | DH1500 | GR |  |  |
| DH.1500A-EQP-24 |  | Gallery 1502 - B150/Line-Ups // Condensate connections to Floor Drains | 10d | 2026-12-31 | 2027-01-14 | DH.1500A-EQP-23, DH.1500A-EQP-27, DH.1500A-EQP-28 | 44.88d | 2d | 1436 | DH1500 | GR |  |  |
| DH.1500A-EQP-31 |  | Gallery 1502 - B150/Line-Ups // Mechanical Connections to CRAHU Units | 10d | 2027-01-05 | 2027-01-19 | DH.1500A-EQP-23 SS+5d | 42.88d | 0d | 1448 | DH1500 | GR |  |  |
| DH.1500A-EQP-37 |  | Gallery 1502 - B150/Line-Ups // Pull Feeder and Branch circuits to MIsc equipment and Chiller controls | 10d | 2027-01-05 | 2027-01-19 | DH.1500A-EQP-32 SS+4d | 44.88d | 0d | 1444 | DH1500 | GR | HELIX | AC |
| DH.1500A-EQP-33 |  | Gallery 1502 - B150/Line-Ups // Pull Cable Tray Feed from MOD to CRAHU's | 5d | 2027-01-06 | 2027-01-12 | DH.1500A-EQP-30 | 50.88d | 0d | 1441 | DH1500 | GR | HELIX | OO |
| DH.1500A-EQP-36 |  | Gallery 1502 - B150/Line-Ups // Terminate CRAHU Electrical Connections | 5d | 2027-01-08 | 2027-01-14 | DH.1500A-EQP-33 SS+2d, DH.1500A-EQP-30 | 50.88d | 6d | 1442 | DH1500 | GR | HELIX | OO |
| DH.1500A-EQP-39 |  | Gallery 1502 - B150/Line-Ups // Teminate all Misc Equipment and Chiller Controls | 10d | 2027-01-11 | 2027-01-25 | DH.1500A-EQP-37 SS+4d | 44.88d | 0d | 1445 | DH1500 | GR |  |  |
| DH.1500A-EQP-34 |  | Gallery 1502 - B150/Line-Ups // Condensate connections to Floor Drains | 10d | 2027-01-12 | 2027-01-26 | DH.150012028, DH.1500A-EQP-31 SS+5d, DH.1500A-EQP-24 SS+5d | 42.88d | 0d | 1449 | DH1500 | GR |  |  |
| DH.1500A-EQP-35 |  | Gallery 1502 - B150/Line-Ups // Terminate Mod Panels | 1d | 2027-01-13 | 2027-01-13 | DH.1500A-EQP-33, DH.1500A-EQP-30, DH.1500A-EQP-29 | 51.88d | 7d | 1440 | DH1500 | GR | HELIX | OO |
| DH.1500A-EQP-40 |  | Gallery 1502 - B150/Line-Ups // Electrical Gear FOD Inspection Pre-Start Up | 2d | 2027-01-26 | 2027-01-27 | DH.1500A-EQP-36, DH.1500A-EQP-39, DH.1500A-EQP-35 | 44.88d | 72d | 1446 | DH1500 | GR | HELIX | QC |
| DH.1500A-EQP-38 |  | Gallery 1502 - B150/Line-Ups // Mechanical Gear FOD Inspection Pre-Start Up | 3d | 2027-01-27 | 2027-01-29 | DH.1500A-EQP-23, DH.1500A-EQP-34, DH.1500A-EQP-24, DH.1500A-EQP-31 | 42.88d | 70d | 1447 | DH1500 | GR |  |  |

| ID | WBS | Activity | Duration | Start | Finish | Predecessors | Total float | Free float | MSP Activity ID | QTS - AREA | QTS - DASH | QTS - Subcontractor | QTS - Resp |
| --- | --- | --- | --- | --- | --- | --- | --- | --- | --- | --- | --- | --- | --- |
|  | 3 | **C150** |  | 2026-12-28 | 2027-01-29 |  |  |  |  |  |  |  |  |
| DH.1500A-EQP-41 |  | Gallery 1502 - C150/Line-Ups // Set CRAH-DH1500- 05 | 1d | 2026-12-28 | 2026-12-28 | DH.1500A-EQP-23 SS | -2.12d | 0d | 1433 | DH1500 | GR |  |  |
| DH.1500A-EQP-43 |  | Gallery 1502 - C150/Line-Ups // Set CRAH-DH1500- 06 | 1d | 2026-12-28 | 2026-12-28 | DH.1500A-EQP-41 SS | -2.12d | 0d | 1434 | DH1500 | GR |  |  |
| DH.1500A-EQP-45 |  | Gallery 1502 - C150/Line-Ups // Set MOD-C150-01 | 1d | 2026-12-28 | 2026-12-28 | DH.1500A-EQP-43 FF | 44.88d | 0d | 1437 | DH1500 | GR | HELIX | TBD |
| DH.1500A-EQP-46 |  | Gallery 1502 - C150/Line-Ups // Set MOD-C150-02 | 1d | 2026-12-28 | 2026-12-28 | DH.1500A-EQP-45 SS | 44.88d | 0d | 1437 | DH1500 | GR | HELIX | TBD |
| DH.1500A-EQP-47 |  | Gallery 1502 - C150/Line-Ups // Set CDU-DH1500- 05 | 1d | 2026-12-29 | 2026-12-29 | DH.1500A-EQP-41 | 44.88d | 0d | 1434 | DH1500 | GR |  |  |
| DH.1500A-EQP-49 |  | Gallery 1502 - C150/Line-Ups // Pull Feeder from SWD to MOD | 1d | 2026-12-29 | 2026-12-29 | DH.1500A-EQP-46 | 60.88d | 9d | 1439 | DH1500 | GR | HELIX | OO |
| DH.1500A-EQP-50 |  | Gallery 1502 - C150/Line-Ups // Pull Cable Tray Feed from MOD to CRAHU's | 5d | 2026-12-29 | 2027-01-05 | DH.1500A-EQP-46 | 50.88d | 0d | 1438 | DH1500 | GR | HELIX | OO |
| DH.1500A-EQP-52 |  | Gallery 1502 - C150/Line-Ups // Mount Electrial Gear for Chiller Controls | 10d | 2026-12-29 | 2027-01-12 | DH.1500A-EQP-46 | 44.88d | 0d | 1443 | DH1500 | GR | HELIX | AC |
| DH.1500A-EQP-48 |  | Gallery 1502 - C150/Line-Ups // Set CDU-DH1500- 06 | 1d | 2026-12-30 | 2026-12-30 | DH.1500A-EQP-47, DH.1500A-EQP-43 | 44.88d | 0d | 1434 | DH1500 | GR |  |  |
| DH.1500A-EQP-44 |  | Gallery 1502 - C150/Line-Ups // Condensate connections to Floor Drains | 10d | 2026-12-31 | 2027-01-14 | DH.1500A-EQP-43, DH.1500A-EQP-47, DH.1500A-EQP-48 | 44.88d | 2d | 1436 | DH1500 | GR |  |  |
| DH.1500A-EQP-51 |  | Gallery 1502 - C150/Line-Ups // Mechanical Connections to CRAHU Units | 10d | 2027-01-05 | 2027-01-19 | DH.1500A-EQP-43 SS+5d | 42.88d | 0d | 1448 | DH1500 | GR |  |  |
| DH.1500A-EQP-57 |  | Gallery 1502 - C150/Line-Ups // Pull Feeder and Branch circuits to MIsc equipment and Chiller controls | 10d | 2027-01-05 | 2027-01-19 | DH.1500A-EQP-52 SS+4d | 44.88d | 0d | 1444 | DH1500 | GR | HELIX | AC |
| DH.1500A-EQP-53 |  | Gallery 1502 - C150/Line-Ups // Pull Cable Tray Feed from MOD to CRAHU's | 5d | 2027-01-06 | 2027-01-12 | DH.1500A-EQP-50 | 50.88d | 0d | 1441 | DH1500 | GR | HELIX | OO |
| DH.1500A-EQP-56 |  | Gallery 1502 - C150/Line-Ups // Terminate CRAHU Electrical Connections | 5d | 2027-01-08 | 2027-01-14 | DH.1500A-EQP-53 SS+2d, DH.1500A-EQP-50 | 50.88d | 6d | 1442 | DH1500 | GR | HELIX | OO |
| DH.1500A-EQP-59 |  | Gallery 1502 - C150/Line-Ups // Teminate all Misc Equipment and Chiller Controls | 10d | 2027-01-11 | 2027-01-25 | DH.1500A-EQP-57 SS+4d | 44.88d | 0d | 1445 | DH1500 | GR |  |  |
| DH.1500A-EQP-54 |  | Gallery 1502 - C150/Line-Ups // Condensate connections to Floor Drains | 10d | 2027-01-12 | 2027-01-26 | DH.150012031, DH.1500A-EQP-51 SS+5d, DH.1500A-EQP-44 SS+5d | 42.88d | 0d | 1449 | DH1500 | GR |  |  |
| DH.1500A-EQP-55 |  | Gallery 1502 - C150/Line-Ups // Terminate Mod Panels | 1d | 2027-01-13 | 2027-01-13 | DH.1500A-EQP-53, DH.1500A-EQP-50, DH.1500A-EQP-49 | 51.88d | 7d | 1440 | DH1500 | GR | HELIX | OO |
| DH.1500A-EQP-60 |  | Gallery 1502 - C150/Line-Ups // Electrical Gear FOD Inspection Pre-Start Up | 2d | 2027-01-26 | 2027-01-27 | DH.1500A-EQP-56, DH.1500A-EQP-59, DH.1500A-EQP-55 | 44.88d | 72d | 1446 | DH1500 | GR | HELIX | QC |
| DH.1500A-EQP-58 |  | Gallery 1502 - C150/Line-Ups // Mechanical Gear FOD Inspection Pre-Start Up | 3d | 2027-01-27 | 2027-01-29 | DH.1500A-EQP-43, DH.1500A-EQP-54, DH.1500A-EQP-44, DH.1500A-EQP-51 | 42.88d | 70d | 1447 | DH1500 | GR |  |  |
|  | 4 | **D150** |  | 2026-12-29 | 2027-02-05 |  |  |  |  |  |  |  |  |
| DH.1500A-EQP-61 |  | Gallery 1502 - D150/Line-Ups // Set CRAH-DH1500- 07 | 1d | 2026-12-29 | 2026-12-29 | DH.1500A-EQP-43 | -2.12d | 0d | 1433 | DH1500 | GR |  |  |
| DH.1500A-EQP-63 |  | Gallery 1502 - D150/Line-Ups // Set CRAH-DH1500- 08 | 1d | 2026-12-29 | 2026-12-29 | DH.1500A-EQP-61 SS | -2.12d | 0d | 1434 | DH1500 | GR |  |  |
| DH.1500A-EQP-65 |  | Gallery 1502 - D150/Line-Ups // Set MOD-D150-01 | 1d | 2026-12-29 | 2026-12-29 | DH.1500A-EQP-63 FF | 43.88d | 0d | 1437 | DH1500 | GR | HELIX | TBD |
| DH.1500A-EQP-66 |  | Gallery 1502 - D150/Line-Ups // Set MOD-D150-02 | 1d | 2026-12-29 | 2026-12-29 | DH.1500A-EQP-65 SS | 43.88d | 0d | 1437 | DH1500 | GR | HELIX | TBD |
| DH.1500A-EQP-67 |  | Gallery 1502 - D150/Line-Ups // Set CDU-DH1500- 07 | 1d | 2026-12-30 | 2026-12-30 | DH.1500A-EQP-61 | 48.88d | 0d | 1434 | DH1500 | GR |  |  |
| DH.1500A-EQP-69 |  | Gallery 1502 - D150/Line-Ups // Pull Feeder from SWD to MOD | 1d | 2026-12-30 | 2026-12-30 | DH.1500A-EQP-66 | 59.88d | 9d | 1439 | DH1500 | GR | HELIX | OO |
| DH.1500A-EQP-70 |  | Gallery 1502 - D150/Line-Ups // Pull Cable Tray Feed from MOD to CRAHU's | 5d | 2026-12-30 | 2027-01-06 | DH.1500A-EQP-66 | 49.88d | 0d | 1438 | DH1500 | GR | HELIX | OO |
| DH.1500A-EQP-72 |  | Gallery 1502 - D150/Line-Ups // Mount Electrial Gear for Chiller Controls | 10d | 2026-12-30 | 2027-01-13 | DH.1500A-EQP-66 | 43.88d | 0d | 1443 | DH1500 | GR | HELIX | AC |
| DH.1500A-EQP-68 |  | Gallery 1502 - D150/Line-Ups // Set CDU-DH1500- 08 | 1d | 2026-12-31 | 2026-12-31 | DH.1500A-EQP-67, DH.1500A-EQP-63 | 48.88d | 7d | 1434 | DH1500 | GR |  |  |
| DH.1500A-EQP-71 |  | Gallery 1502 - D150/Line-Ups // Mechanical Connections to CRAHU Units | 10d | 2027-01-06 | 2027-01-20 | DH.1500A-EQP-63 SS+5d | 37.88d | 0d | 1448 | DH1500 | GR |  |  |
| DH.1500A-EQP-77 |  | Gallery 1502 - D150/Line-Ups // Pull Feeder and Branch circuits to MIsc equipment and Chiller controls | 10d | 2027-01-06 | 2027-01-20 | DH.1500A-EQP-72 SS+4d | 43.88d | 6d | 1444 | DH1500 | GR | HELIX | AC |
| DH.1500A-EQP-73 |  | Gallery 1502 - D150/Line-Ups // Pull Cable Tray Feed from MOD to CRAHU's | 5d | 2027-01-07 | 2027-01-13 | DH.1500A-EQP-70 | 49.88d | 0d | 1441 | DH1500 | GR | HELIX | OO |
| DH.1500A-EQP-76 |  | Gallery 1502 - D150/Line-Ups // Terminate CRAHU Electrical Connections | 5d | 2027-01-11 | 2027-01-15 | DH.1500A-EQP-73 SS+2d, DH.1500A-EQP-70 | 49.88d | 12d | 1442 | DH1500 | GR | HELIX | OO |
| DH.1500A-EQP-74 |  | Gallery 1502 - D150/Line-Ups // Condensate connections to Floor Drains | 10d | 2027-01-13 | 2027-01-27 | DH.150012034, DH.1500A-EQP-63, DH.1500A-EQP-67, DH.1500A-EQP-68, DH.1500A-EQP-71 SS+5d | 41.88d | 0d | 1449 | DH1500 | GR |  |  |
| DH.1500A-EQP-75 |  | Gallery 1502 - D150/Line-Ups // Terminate Mod Panels | 1d | 2027-01-14 | 2027-01-14 | DH.1500A-EQP-68, DH.1500A-EQP-73, DH.1500A-EQP-70, DH.1500A-EQP-69 | 50.88d | 13d | 1440 | DH1500 | GR | HELIX | OO |
| DH.1500A-EQP-79 |  | Gallery 1502 - D150/Line-Ups // Teminate all Misc Equipment and Chiller Controls | 10d | 2027-01-21 | 2027-02-03 | DH.1500A-EQP-71, DH.1500A-EQP-77 SS+4d | 37.88d | 0d | 1445 | DH1500 | GR |  |  |
| DH.1500A-EQP-78 |  | Gallery 1502 - D150/Line-Ups // Mechanical Gear FOD Inspection Pre-Start Up | 3d | 2027-01-28 | 2027-02-01 | DH.1500A-EQP-67, DH.1500A-EQP-68, DH.1500A-EQP-63, DH.1500A-EQP-74, DH.1500A-EQP-71 | 41.88d | 69d | 1447 | DH1500 | GR |  |  |
| DH.1500A-EQP-80 |  | Gallery 1502 - D150/Line-Ups // Electrical Gear FOD Inspection Pre-Start Up | 2d | 2027-02-04 | 2027-02-05 | DH.1500A-EQP-76, DH.1500A-EQP-79, DH.1500A-EQP-75 | 37.88d | 65d | 1446 | DH1500 | GR | HELIX | QC |

| ID | WBS | Activity | Duration | Start | Finish | Predecessors | Total float | Free float | MSP Activity ID | QTS - AREA | QTS - DASH | QTS - Subcontractor | QTS - Resp |
| --- | --- | --- | --- | --- | --- | --- | --- | --- | --- | --- | --- | --- | --- |
|  | 5 | **E150** |  | 2026-12-29 | 2027-02-01 |  |  |  |  |  |  |  |  |
| DH.1500A-EQP-81 |  | Gallery 1502 - E150/Line-Ups // Set CRAH-DH1500- 09 | 1d | 2026-12-29 | 2026-12-29 | DH.1500A-EQP-63 SS | -2.12d | 0d | 1433 | DH1500 | GR |  |  |
| DH.1500A-EQP-83 |  | Gallery 1502 - E150/Line-Ups // Set CRAH-DH1500- 10 | 1d | 2026-12-29 | 2026-12-29 | DH.1500A-EQP-81 SS | -2.12d | 0d | 1434 | DH1500 | GR |  |  |
| DH.1500A-EQP-85 |  | Gallery 1502 - E150/Line-Ups // Set MOD-E150-01 | 1d | 2026-12-29 | 2026-12-29 | DH.1500A-EQP-83 FF | 43.88d | 0d | 1437 | DH1500 | GR | HELIX | TBD |
| DH.1500A-EQP-86 |  | Gallery 1502 - E150/Line-Ups // Set MOD-E150-02 | 1d | 2026-12-29 | 2026-12-29 | DH.1500A-EQP-85 SS | 43.88d | 0d | 1437 | DH1500 | GR | HELIX | TBD |
| DH.1500A-EQP-87 |  | Gallery 1502 - E150/Line-Ups // Set CDU-DH1500- 09 | 1d | 2026-12-30 | 2026-12-30 | DH.1500A-EQP-81 | 43.88d | 0d | 1434 | DH1500 | GR |  |  |
| DH.1500A-EQP-89 |  | Gallery 1502 - E150/Line-Ups // Pull Feeder from SWD to MOD | 1d | 2026-12-30 | 2026-12-30 | DH.1500A-EQP-86 | 59.88d | 9d | 1439 | DH1500 | GR | HELIX | OO |
| DH.1500A-EQP-90 |  | Gallery 1502 - E150/Line-Ups // Pull Cable Tray Feed from MOD to CRAHU's | 5d | 2026-12-30 | 2027-01-06 | DH.1500A-EQP-86 | 49.88d | 0d | 1438 | DH1500 | GR | HELIX | OO |
| DH.1500A-EQP-92 |  | Gallery 1502 - E150/Line-Ups // Mount Electrial Gear for Chiller Controls | 10d | 2026-12-30 | 2027-01-13 | DH.1500A-EQP-86 | 43.88d | 0d | 1443 | DH1500 | GR | HELIX | AC |
| DH.1500A-EQP-88 |  | Gallery 1502 - E150/Line-Ups // Set CDU-DH1500- 10 | 1d | 2026-12-31 | 2026-12-31 | DH.1500A-EQP-87, DH.1500A-EQP-83 | 43.88d | 0d | 1434 | DH1500 | GR |  |  |
| DH.1500A-EQP-84 |  | Gallery 1502 - E150/Line-Ups // Condensate connections to Floor Drains | 10d | 2027-01-04 | 2027-01-15 | DH.1500A-EQP-83, DH.1500A-EQP-87, DH.1500A-EQP-88 | 43.88d | 2d | 1436 | DH1500 | GR |  |  |
| DH.1500A-EQP-91 |  | Gallery 1502 - E150/Line-Ups // Mechanical Connections to CRAHU Units | 10d | 2027-01-06 | 2027-01-20 | DH.1500A-EQP-83 SS+5d | 41.88d | 0d | 1448 | DH1500 | GR |  |  |
| DH.1500A-EQP-97 |  | Gallery 1502 - E150/Line-Ups // Pull Feeder and Branch circuits to MIsc equipment and Chiller controls | 10d | 2027-01-06 | 2027-01-20 | DH.1500A-EQP-92 SS+4d | 43.88d | 0d | 1444 | DH1500 | GR | HELIX | AC |
| DH.1500A-EQP-93 |  | Gallery 1502 - E150/Line-Ups // Pull Cable Tray Feed from MOD to CRAHU's | 5d | 2027-01-07 | 2027-01-13 | DH.1500A-EQP-90 | 49.88d | 0d | 1441 | DH1500 | GR | HELIX | OO |
| DH.1500A-EQP-96 |  | Gallery 1502 - E150/Line-Ups // Terminate CRAHU Electrical Connections | 5d | 2027-01-11 | 2027-01-15 | DH.1500A-EQP-93 SS+2d, DH.1500A-EQP-90 | 49.88d | 6d | 1442 | DH1500 | GR | HELIX | OO |
| DH.1500A-EQP-99 |  | Gallery 1502 - E150/Line-Ups // Teminate all Misc Equipment and Chiller Controls | 10d | 2027-01-12 | 2027-01-26 | DH.1500A-EQP-97 SS+4d | 43.88d | 0d | 1445 | DH1500 | GR |  |  |
| DH.1500A-EQP-94 |  | Gallery 1502 - E150/Line-Ups // Condensate connections to Floor Drains | 10d | 2027-01-13 | 2027-01-27 | DH.150012037, DH.1500A-EQP-91 SS+5d, DH.1500A-EQP-84 SS+5d | 41.88d | 0d | 1449 | DH1500 | GR |  |  |
| DH.1500A-EQP-95 |  | Gallery 1502 - E150/Line-Ups // Terminate Mod Panels | 1d | 2027-01-14 | 2027-01-14 | DH.1500A-EQP-93, DH.1500A-EQP-90, DH.1500A-EQP-89 | 50.88d | 7d | 1440 | DH1500 | GR | HELIX | OO |
| DH.1500A-EQP-100 |  | Gallery 1502 - E150/Line-Ups // Electrical Gear FOD Inspection Pre-Start Up | 2d | 2027-01-27 | 2027-01-28 | DH.1500A-EQP-96, DH.1500A-EQP-99, DH.1500A-EQP-95 | 43.88d | 71d | 1446 | DH1500 | GR | HELIX | QC |
| DH.1500A-EQP-98 |  | Gallery 1502 - E150/Line-Ups // Mechanical Gear FOD Inspection Pre-Start Up | 3d | 2027-01-28 | 2027-02-01 | DH.1500A-EQP-83, DH.1500A-EQP-94, DH.1500A-EQP-84, DH.1500A-EQP-91 | 41.88d | 69d | 1447 | DH1500 | GR |  |  |
|  | 6 | **F150** |  | 2026-12-29 | 2027-02-01 |  |  |  |  |  |  |  |  |
| DH.1500A-EQP-101 |  | Gallery 1502 - F150/Line-Ups // Set CRAH-DH1500- 11 | 1d | 2026-12-29 | 2026-12-29 | DH.1500A-EQP-83 SS | -2.12d | 0d | 1433 | DH1500 | GR |  |  |
| DH.1500A-EQP-103 |  | Gallery 1502 - F150/Line-Ups // Set CRAH-DH1500- 12 | 1d | 2026-12-29 | 2026-12-29 | DH.1500A-EQP-101 SS | -2.12d | 0d | 1434 | DH1500 | GR |  |  |
| DH.1500A-EQP-105 |  | Gallery 1502 - F150/Line-Ups // Set MOD-F150-01 | 1d | 2026-12-29 | 2026-12-29 | DH.1500A-EQP-103 FF | 43.88d | 0d | 1437 | DH1500 | GR | HELIX | TBD |
| DH.1500A-EQP-106 |  | Gallery 1502 - F150/Line-Ups // Set MOD-F150-02 | 1d | 2026-12-29 | 2026-12-29 | DH.1500A-EQP-105 SS | 43.88d | 0d | 1437 | DH1500 | GR | HELIX | TBD |
| DH.1500A-EQP-107 |  | Gallery 1502 - F150/Line-Ups // Set CDU-DH1500- 11 | 1d | 2026-12-30 | 2026-12-30 | DH.1500A-EQP-101 | 43.88d | 0d | 1434 | DH1500 | GR |  |  |
| DH.1500A-EQP-109 |  | Gallery 1502 - F150/Line-Ups // Pull Feeder from SWD to MOD | 1d | 2026-12-30 | 2026-12-30 | DH.1500A-EQP-106 | 59.88d | 9d | 1439 | DH1500 | GR | HELIX | OO |
| DH.1500A-EQP-110 |  | Gallery 1502 - F150/Line-Ups // Pull Cable Tray Feed from MOD to CRAHU's | 5d | 2026-12-30 | 2027-01-06 | DH.1500A-EQP-106 | 49.88d | 0d | 1438 | DH1500 | GR | HELIX | OO |
| DH.1500A-EQP-112 |  | Gallery 1502 - F150/Line-Ups // Mount Electrial Gear for Chiller Controls | 10d | 2026-12-30 | 2027-01-13 | DH.1500A-EQP-106 | 43.88d | 0d | 1443 | DH1500 | GR | HELIX | AC |
| DH.1500A-EQP-108 |  | Gallery 1502 - F150/Line-Ups // Set CDU-DH1500- 12 | 1d | 2026-12-31 | 2026-12-31 | DH.1500A-EQP-107, DH.1500A-EQP-103 | 43.88d | 0d | 1434 | DH1500 | GR |  |  |
| DH.1500A-EQP-104 |  | Gallery 1502 - F150/Line-Ups // Condensate connections to Floor Drains | 10d | 2027-01-04 | 2027-01-15 | DH.1500A-EQP-103, DH.1500A-EQP-107, DH.1500A-EQP-108 | 43.88d | 2d | 1436 | DH1500 | GR |  |  |
| DH.1500A-EQP-111 |  | Gallery 1502 - F150/Line-Ups // Mechanical Connections to CRAHU Units | 10d | 2027-01-06 | 2027-01-20 | DH.1500A-EQP-103 SS+5d | 41.88d | 0d | 1448 | DH1500 | GR |  |  |
| DH.1500A-EQP-117 |  | Gallery 1502 - F150/Line-Ups // Pull Feeder and Branch circuits to MIsc equipment and Chiller controls | 10d | 2027-01-06 | 2027-01-20 | DH.1500A-EQP-112 SS+4d | 43.88d | 0d | 1444 | DH1500 | GR | HELIX | AC |
| DH.1500A-EQP-113 |  | Gallery 1502 - F150/Line-Ups // Pull Cable Tray Feed from MOD to CRAHU's | 5d | 2027-01-07 | 2027-01-13 | DH.1500A-EQP-110 | 49.88d | 0d | 1441 | DH1500 | GR | HELIX | OO |
| DH.1500A-EQP-116 |  | Gallery 1502 - F150/Line-Ups // Terminate CRAHU Electrical Connections | 5d | 2027-01-11 | 2027-01-15 | DH.1500A-EQP-113 SS+2d, DH.1500A-EQP-110 | 49.88d | 6d | 1442 | DH1500 | GR | HELIX | OO |
| DH.1500A-EQP-119 |  | Gallery 1502 - F150/Line-Ups // Teminate all Misc Equipment and Chiller Controls | 10d | 2027-01-12 | 2027-01-26 | DH.1500A-EQP-117 SS+4d | 43.88d | 0d | 1445 | DH1500 | GR |  |  |
| DH.1500A-EQP-114 |  | Gallery 1502 - F150/Line-Ups // Condensate connections to Floor Drains | 10d | 2027-01-13 | 2027-01-27 | DH.150012040, DH.1500A-EQP-111 SS+5d, DH.1500A-EQP-104 SS+5d | 41.88d | 0d | 1449 | DH1500 | GR |  |  |
| DH.1500A-EQP-115 |  | Gallery 1502 - F150/Line-Ups // Terminate Mod Panels | 1d | 2027-01-14 | 2027-01-14 | DH.1500A-EQP-113, DH.1500A-EQP-110, DH.1500A-EQP-109 | 50.88d | 7d | 1440 | DH1500 | GR | HELIX | OO |
| DH.1500A-EQP-120 |  | Gallery 1502 - F150/Line-Ups // Electrical Gear FOD Inspection Pre-Start Up | 2d | 2027-01-27 | 2027-01-28 | DH.1500A-EQP-116, DH.1500A-EQP-119, DH.1500A-EQP-115 | 43.88d | 71d | 1446 | DH1500 | GR | HELIX | QC |
| DH.1500A-EQP-118 |  | Gallery 1502 - F150/Line-Ups // Mechanical Gear FOD Inspection Pre-Start Up | 3d | 2027-01-28 | 2027-02-01 | DH.1500A-EQP-103, DH.1500A-EQP-114, DH.1500A-EQP-104, DH.1500A-EQP-111 | 41.88d | 69d | 1447 | DH1500 | GR |  |  |

| ID | WBS | Activity | Duration | Start | Finish | Predecessors | Total float | Free float | MSP Activity ID | QTS - AREA | QTS - DASH | QTS - Subcontractor | QTS - Resp |
| --- | --- | --- | --- | --- | --- | --- | --- | --- | --- | --- | --- | --- | --- |
|  | 7 | **G150** |  | 2026-12-30 | 2027-02-02 |  |  |  |  |  |  |  |  |
| DH.1500A-EQP-121 |  | Gallery 1502 - G150/Line-Ups // Set CRAH-DH1500- 13 | 1d | 2026-12-30 | 2026-12-30 | DH.1500A-EQP-103 | -2.12d | 0d | 1433 | DH1500 | GR |  |  |
| DH.1500A-EQP-123 |  | Gallery 1502 - G150/Line-Ups // Set CRAH-DH1500- 14 | 1d | 2026-12-30 | 2026-12-30 | DH.1500A-EQP-121 SS | -2.12d | 0d | 1434 | DH1500 | GR |  |  |
| DH.1500A-EQP-125 |  | Gallery 1502 - G150/Line-Ups // Set MOD-G150-01 | 1d | 2026-12-30 | 2026-12-30 | DH.1500A-EQP-123 FF | 42.88d | 0d | 1437 | DH1500 | GR | HELIX | TBD |
| DH.1500A-EQP-126 |  | Gallery 1502 - G150/Line-Ups // Set MOD-G150-02 | 1d | 2026-12-30 | 2026-12-30 | DH.1500A-EQP-125 SS | 42.88d | 0d | 1437 | DH1500 | GR | HELIX | TBD |
| DH.1500A-EQP-127 |  | Gallery 1502 - G150/Line-Ups // Set CDU-DH1500- 13 | 1d | 2026-12-31 | 2026-12-31 | DH.1500A-EQP-121 | 42.88d | 0d | 1434 | DH1500 | GR |  |  |
| DH.1500A-EQP-129 |  | Gallery 1502 - G150/Line-Ups // Pull Feeder from SWD to MOD | 1d | 2026-12-31 | 2026-12-31 | DH.1500A-EQP-126 | 58.88d | 9d | 1439 | DH1500 | GR | HELIX | OO |
| DH.1500A-EQP-130 |  | Gallery 1502 - G150/Line-Ups // Pull Cable Tray Feed from MOD to CRAHU's | 5d | 2026-12-31 | 2027-01-07 | DH.1500A-EQP-126 | 48.88d | 0d | 1438 | DH1500 | GR | HELIX | OO |
| DH.1500A-EQP-132 |  | Gallery 1502 - G150/Line-Ups // Mount Electrial Gear for Chiller Controls | 10d | 2026-12-31 | 2027-01-14 | DH.1500A-EQP-126 | 42.88d | 0d | 1443 | DH1500 | GR | HELIX | AC |
| DH.1500A-EQP-128 |  | Gallery 1502 - G150/Line-Ups // Set CDU-DH1500- 14 | 1d | 2027-01-04 | 2027-01-04 | DH.1500A-EQP-127, DH.1500A-EQP-123 | 42.88d | 0d | 1434 | DH1500 | GR |  |  |
| DH.1500A-EQP-124 |  | Gallery 1502 - G150/Line-Ups // Condensate connections to Floor Drains | 10d | 2027-01-05 | 2027-01-19 | DH.1500A-EQP-123, DH.1500A-EQP-127, DH.1500A-EQP-128 | 42.88d | 2d | 1436 | DH1500 | GR |  |  |
| DH.1500A-EQP-131 |  | Gallery 1502 - G150/Line-Ups // Mechanical Connections to CRAHU Units | 10d | 2027-01-07 | 2027-01-21 | DH.1500A-EQP-123 SS+5d | 40.88d | 0d | 1448 | DH1500 | GR |  |  |
| DH.1500A-EQP-137 |  | Gallery 1502 - G150/Line-Ups // Pull Feeder and Branch circuits to MIsc equipment and Chiller controls | 10d | 2027-01-07 | 2027-01-21 | DH.1500A-EQP-132 SS+4d | 42.88d | 0d | 1444 | DH1500 | GR | HELIX | AC |
| DH.1500A-EQP-133 |  | Gallery 1502 - G150/Line-Ups // Pull Cable Tray Feed from MOD to CRAHU's | 5d | 2027-01-08 | 2027-01-14 | DH.1500A-EQP-130 | 48.88d | 0d | 1441 | DH1500 | GR | HELIX | OO |
| DH.1500A-EQP-136 |  | Gallery 1502 - G150/Line-Ups // Terminate CRAHU Electrical Connections | 5d | 2027-01-12 | 2027-01-19 | DH.1500A-EQP-133 SS+2d, DH.1500A-EQP-130 | 48.88d | 6d | 1442 | DH1500 | GR | HELIX | OO |
| DH.1500A-EQP-139 |  | Gallery 1502 - G150/Line-Ups // Teminate all Misc Equipment and Chiller Controls | 10d | 2027-01-13 | 2027-01-27 | DH.1500A-EQP-137 SS+4d | 42.88d | 0d | 1445 | DH1500 | GR |  |  |
| DH.1500A-EQP-134 |  | Gallery 1502 - G150/Line-Ups // Condensate connections to Floor Drains | 10d | 2027-01-14 | 2027-01-28 | DH.150012043, DH.1500A-EQP-131 SS+5d, DH.1500A-EQP-124 SS+5d | 40.88d | 0d | 1449 | DH1500 | GR |  |  |
| DH.1500A-EQP-135 |  | Gallery 1502 - G150/Line-Ups // Terminate Mod Panels | 1d | 2027-01-15 | 2027-01-15 | DH.1500A-EQP-133, DH.1500A-EQP-130, DH.1500A-EQP-129 | 49.88d | 7d | 1440 | DH1500 | GR | HELIX | OO |
| DH.1500A-EQP-140 |  | Gallery 1502 - G150/Line-Ups // Electrical Gear FOD Inspection Pre-Start Up | 2d | 2027-01-28 | 2027-01-29 | DH.1500A-EQP-136, DH.1500A-EQP-139, DH.1500A-EQP-135 | 42.88d | 70d | 1446 | DH1500 | GR | HELIX | QC |
| DH.1500A-EQP-138 |  | Gallery 1502 - G150/Line-Ups // Mechanical Gear FOD Inspection Pre-Start Up | 3d | 2027-01-29 | 2027-02-02 | DH.1500A-EQP-123, DH.1500A-EQP-134, DH.1500A-EQP-124, DH.1500A-EQP-131 | 40.88d | 68d | 1447 | DH1500 | GR |  |  |
|  | 8 | **H150** |  | 2026-12-30 | 2027-02-02 |  |  |  |  |  |  |  |  |
| DH.1500A-EQP-141 |  | Gallery 1502 - H150/Line-Ups // Set CRAH-DH1500- 15 | 1d | 2026-12-30 | 2026-12-30 | DH.1500A-EQP-123 SS | -2.12d | 0d | 1433 | DH1500 | GR |  |  |
| DH.1500A-EQP-143 |  | Gallery 1502 - H150/Line-Ups // Set CRAH-DH1500- 16 | 1d | 2026-12-30 | 2026-12-30 | DH.1500A-EQP-141 SS | -2.12d | 0d | 1434 | DH1500 | GR |  |  |
| DH.1500A-EQP-145 |  | Gallery 1502 - H150/Line-Ups // Set MOD-H150-01 | 1d | 2026-12-30 | 2026-12-30 | DH.1500A-EQP-143 FF | 42.88d | 0d | 1437 | DH1500 | GR | HELIX | TBD |
| DH.1500A-EQP-146 |  | Gallery 1502 - H150/Line-Ups // Set MOD-H150-02 | 1d | 2026-12-30 | 2026-12-30 | DH.1500A-EQP-145 SS | 42.88d | 0d | 1437 | DH1500 | GR | HELIX | TBD |
| DH.1500A-EQP-147 |  | Gallery 1502 - H150/Line-Ups // Set CDU-DH1500- 15 | 1d | 2026-12-31 | 2026-12-31 | DH.1500A-EQP-141 | 42.88d | 0d | 1434 | DH1500 | GR |  |  |
| DH.1500A-EQP-149 |  | Gallery 1502 - H150/Line-Ups // Pull Feeder from SWD to MOD | 1d | 2026-12-31 | 2026-12-31 | DH.1500A-EQP-146 | 58.88d | 9d | 1439 | DH1500 | GR | HELIX | OO |
| DH.1500A-EQP-150 |  | Gallery 1502 - H150/Line-Ups // Pull Cable Tray Feed from MOD to CRAHU's | 5d | 2026-12-31 | 2027-01-07 | DH.1500A-EQP-146 | 48.88d | 0d | 1438 | DH1500 | GR | HELIX | OO |
| DH.1500A-EQP-152 |  | Gallery 1502 - H150/Line-Ups // Mount Electrial Gear for Chiller Controls | 10d | 2026-12-31 | 2027-01-14 | DH.1500A-EQP-146 | 42.88d | 0d | 1443 | DH1500 | GR | HELIX | AC |
| DH.1500A-EQP-148 |  | Gallery 1502 - H150/Line-Ups // Set CDU-DH1500- 16 | 1d | 2027-01-04 | 2027-01-04 | DH.1500A-EQP-147, DH.1500A-EQP-143 | 42.88d | 0d | 1434 | DH1500 | GR |  |  |
| DH.1500A-EQP-144 |  | Gallery 1502 - H150/Line-Ups // Condensate connections to Floor Drains | 10d | 2027-01-05 | 2027-01-19 | DH.1500A-EQP-143, DH.1500A-EQP-147, DH.1500A-EQP-148 | 42.88d | 2d | 1436 | DH1500 | GR |  |  |
| DH.1500A-EQP-151 |  | Gallery 1502 - H150/Line-Ups // Mechanical Connections to CRAHU Units | 10d | 2027-01-07 | 2027-01-21 | DH.1500A-EQP-143 SS+5d | 40.88d | 0d | 1448 | DH1500 | GR |  |  |
| DH.1500A-EQP-157 |  | Gallery 1502 - H150/Line-Ups // Pull Feeder and Branch circuits to MIsc equipment and Chiller controls | 10d | 2027-01-07 | 2027-01-21 | DH.1500A-EQP-152 SS+4d | 42.88d | 0d | 1444 | DH1500 | GR | HELIX | AC |
| DH.1500A-EQP-153 |  | Gallery 1502 - H150/Line-Ups // Pull Cable Tray Feed from MOD to CRAHU's | 5d | 2027-01-08 | 2027-01-14 | DH.1500A-EQP-150 | 48.88d | 0d | 1441 | DH1500 | GR | HELIX | OO |
| DH.1500A-EQP-156 |  | Gallery 1502 - H150/Line-Ups // Terminate CRAHU Electrical Connections | 5d | 2027-01-12 | 2027-01-19 | DH.1500A-EQP-153 SS+2d, DH.1500A-EQP-150 | 48.88d | 6d | 1442 | DH1500 | GR | HELIX | OO |
| DH.1500A-EQP-159 |  | Gallery 1502 - H150/Line-Ups // Teminate all Misc Equipment and Chiller Controls | 10d | 2027-01-13 | 2027-01-27 | DH.1500A-EQP-157 SS+4d | 42.88d | 0d | 1445 | DH1500 | GR |  |  |
| DH.1500A-EQP-154 |  | Gallery 1502 - H150/Line-Ups // Condensate connections to Floor Drains | 10d | 2027-01-14 | 2027-01-28 | DH.150012046, DH.1500A-EQP-151 SS+5d, DH.1500A-EQP-144 SS+5d | 40.88d | 0d | 1449 | DH1500 | GR |  |  |
| DH.1500A-EQP-155 |  | Gallery 1502 - H150/Line-Ups // Terminate Mod Panels | 1d | 2027-01-15 | 2027-01-15 | DH.1500A-EQP-153, DH.1500A-EQP-150, DH.1500A-EQP-149 | 49.88d | 7d | 1440 | DH1500 | GR | HELIX | OO |
| DH.1500A-EQP-160 |  | Gallery 1502 - H150/Line-Ups // Electrical Gear FOD Inspection Pre-Start Up | 2d | 2027-01-28 | 2027-01-29 | DH.1500A-EQP-156, DH.1500A-EQP-159, DH.1500A-EQP-155 | 42.88d | 70d | 1446 | DH1500 | GR | HELIX | QC |
| DH.1500A-EQP-158 |  | Gallery 1502 - H150/Line-Ups // Mechanical Gear FOD Inspection Pre-Start Up | 3d | 2027-01-29 | 2027-02-02 | DH.1500A-EQP-143, DH.1500A-EQP-154, DH.1500A-EQP-144, DH.1500A-EQP-151 | 40.88d | 68d | 1447 | DH1500 | GR |  |  |

| ID | WBS | Activity | Duration | Start | Finish | Predecessors | Total float | Free float | MSP Activity ID | QTS - AREA | QTS - DASH | QTS - Subcontractor | QTS - Resp |
| --- | --- | --- | --- | --- | --- | --- | --- | --- | --- | --- | --- | --- | --- |
|  | 9 | **J150** |  | 2026-12-30 | 2027-02-02 |  |  |  |  |  |  |  |  |
| DH.1500A-EQP-161 |  | Gallery 1502 - J150/Line-Ups // Set CRAH-DH1500- 17 | 1d | 2026-12-30 | 2026-12-30 | DH.1500A-EQP-143 SS | -2.12d | 0d | 1433 | DH1500 | GR |  |  |
| DH.1500A-EQP-163 |  | Gallery 1502 - J150/Line-Ups // Set CRAH-DH1500- 18 | 1d | 2026-12-30 | 2026-12-30 | DH.1500A-EQP-161 SS | -2.12d | 0d | 1434 | DH1500 | GR |  |  |
| DH.1500A-EQP-165 |  | Gallery 1502 - J150/Line-Ups // Set MOD-J150-01 | 1d | 2026-12-30 | 2026-12-30 | DH.1500A-EQP-163 FF | 42.88d | 0d | 1437 | DH1500 | GR | HELIX | TBD |
| DH.1500A-EQP-166 |  | Gallery 1502 - J150/Line-Ups // Set MOD-J150-02 | 1d | 2026-12-30 | 2026-12-30 | DH.1500A-EQP-165 SS | 42.88d | 0d | 1437 | DH1500 | GR | HELIX | TBD |
| DH.1500A-EQP-167 |  | Gallery 1502 - J150/Line-Ups // Set CDU-DH1500- 17 | 1d | 2026-12-31 | 2026-12-31 | DH.1500A-EQP-161 | 42.88d | 0d | 1434 | DH1500 | GR |  |  |
| DH.1500A-EQP-169 |  | Gallery 1502 - J150/Line-Ups // Pull Feeder from SWD to MOD | 1d | 2026-12-31 | 2026-12-31 | DH.1500A-EQP-166 | 58.88d | 9d | 1439 | DH1500 | GR | HELIX | OO |
| DH.1500A-EQP-170 |  | Gallery 1502 - J150/Line-Ups // Pull Cable Tray Feed from MOD to CRAHU's | 5d | 2026-12-31 | 2027-01-07 | DH.1500A-EQP-166 | 48.88d | 0d | 1438 | DH1500 | GR | HELIX | OO |
| DH.1500A-EQP-172 |  | Gallery 1502 - J150/Line-Ups // Mount Electrial Gear for Chiller Controls | 10d | 2026-12-31 | 2027-01-14 | DH.1500A-EQP-166 | 42.88d | 0d | 1443 | DH1500 | GR | HELIX | AC |
| DH.1500A-EQP-168 |  | Gallery 1502 - J150/Line-Ups // Set CDU-DH1500- 18 | 1d | 2027-01-04 | 2027-01-04 | DH.1500A-EQP-167, DH.1500A-EQP-163 | 42.88d | 0d | 1434 | DH1500 | GR |  |  |
| DH.1500A-EQP-164 |  | Gallery 1502 - J150/Line-Ups // Condensate connections to Floor Drains | 10d | 2027-01-05 | 2027-01-19 | DH.1500A-EQP-163, DH.1500A-EQP-167, DH.1500A-EQP-168 | 42.88d | 2d | 1436 | DH1500 | GR |  |  |
| DH.1500A-EQP-171 |  | Gallery 1502 - J150/Line-Ups // Mechanical Connections to CRAHU Units | 10d | 2027-01-07 | 2027-01-21 | DH.1500A-EQP-163 SS+5d | 40.88d | 0d | 1448 | DH1500 | GR |  |  |
| DH.1500A-EQP-177 |  | Gallery 1502 - J150/Line-Ups // Pull Feeder and Branch circuits to MIsc equipment and Chiller controls | 10d | 2027-01-07 | 2027-01-21 | DH.1500A-EQP-172 SS+4d | 42.88d | 0d | 1444 | DH1500 | GR | HELIX | AC |
| DH.1500A-EQP-173 |  | Gallery 1502 - J150/Line-Ups // Pull Cable Tray Feed from MOD to CRAHU's | 5d | 2027-01-08 | 2027-01-14 | DH.1500A-EQP-170 | 48.88d | 0d | 1441 | DH1500 | GR | HELIX | OO |
| DH.1500A-EQP-176 |  | Gallery 1502 - J150/Line-Ups // Terminate CRAHU Electrical Connections | 5d | 2027-01-12 | 2027-01-19 | DH.1500A-EQP-173 SS+2d, DH.1500A-EQP-170 | 48.88d | 6d | 1442 | DH1500 | GR | HELIX | OO |
| DH.1500A-EQP-179 |  | Gallery 1502 - J150/Line-Ups // Teminate all Misc Equipment and Chiller Controls | 10d | 2027-01-13 | 2027-01-27 | DH.1500A-EQP-177 SS+4d | 42.88d | 0d | 1445 | DH1500 | GR |  |  |
| DH.1500A-EQP-174 |  | Gallery 1502 - J150/Line-Ups // Condensate connections to Floor Drains | 10d | 2027-01-14 | 2027-01-28 | DH.150012049, DH.1500A-EQP-171 SS+5d, DH.1500A-EQP-164 SS+5d | 40.88d | 0d | 1449 | DH1500 | GR |  |  |
| DH.1500A-EQP-175 |  | Gallery 1502 - J150/Line-Ups // Terminate Mod Panels | 1d | 2027-01-15 | 2027-01-15 | DH.1500A-EQP-173, DH.1500A-EQP-170, DH.1500A-EQP-169 | 49.88d | 7d | 1440 | DH1500 | GR | HELIX | OO |
| DH.1500A-EQP-180 |  | Gallery 1502 - J150/Line-Ups // Electrical Gear FOD Inspection Pre-Start Up | 2d | 2027-01-28 | 2027-01-29 | DH.1500A-EQP-176, DH.1500A-EQP-179, DH.1500A-EQP-175 | 42.88d | 70d | 1446 | DH1500 | GR | HELIX | QC |
| DH.1500A-EQP-178 |  | Gallery 1502 - J150/Line-Ups // Mechanical Gear FOD Inspection Pre-Start Up | 3d | 2027-01-29 | 2027-02-02 | DH.1500A-EQP-163, DH.1500A-EQP-174, DH.1500A-EQP-164, DH.1500A-EQP-171 | 40.88d | 68d | 1447 | DH1500 | GR |  |  |
|  | 10 | **K150** |  | 2026-12-31 | 2027-02-03 |  |  |  |  |  |  |  |  |
| DH.1500A-EQP-181 |  | Gallery 1502 - K150/Line-Ups // Set CRAH-DH1500- 19 | 1d | 2026-12-31 | 2026-12-31 | DH.1500A-EQP-163 | -2.12d | 0d | 1433 | DH1500 | GR |  |  |
| DH.1500A-EQP-183 |  | Gallery 1502 - K150/Line-Ups // Set CRAH-DH1500- 20 | 1d | 2026-12-31 | 2026-12-31 | DH.1500A-EQP-181 SS | -2.12d | 0d | 1434 | DH1500 | GR |  |  |
| DH.1500A-EQP-185 |  | Gallery 1502 - K150/Line-Ups // Set MOD-K150-01 | 1d | 2026-12-31 | 2026-12-31 | DH.1500A-EQP-183 FF | 41.88d | 0d | 1437 | DH1500 | GR | HELIX | TBD |
| DH.1500A-EQP-186 |  | Gallery 1502 - K150/Line-Ups // Set MOD-K150-02 | 1d | 2026-12-31 | 2026-12-31 | DH.1500A-EQP-185 SS | 41.88d | 0d | 1437 | DH1500 | GR | HELIX | TBD |
| DH.1500A-EQP-187 |  | Gallery 1502 - K150/Line-Ups // Set CDU-DH1500- 19 | 1d | 2027-01-04 | 2027-01-04 | DH.1500A-EQP-181 | 46.88d | 0d | 1434 | DH1500 | GR |  |  |
| DH.1500A-EQP-189 |  | Gallery 1502 - K150/Line-Ups // Pull Feeder from SWD to MOD | 1d | 2027-01-04 | 2027-01-04 | DH.1500A-EQP-186 | 57.88d | 9d | 1439 | DH1500 | GR | HELIX | OO |
| DH.1500A-EQP-190 |  | Gallery 1502 - K150/Line-Ups // Pull Cable Tray Feed from MOD to CRAHU's | 5d | 2027-01-04 | 2027-01-08 | DH.1500A-EQP-186 | 47.88d | 0d | 1438 | DH1500 | GR | HELIX | OO |
| DH.1500A-EQP-192 |  | Gallery 1502 - K150/Line-Ups // Mount Electrial Gear for Chiller Controls | 10d | 2027-01-04 | 2027-01-15 | DH.1500A-EQP-186 | 41.88d | 0d | 1443 | DH1500 | GR | HELIX | AC |
| DH.1500A-EQP-188 |  | Gallery 1502 - K150/Line-Ups // Set CDU-DH1500- 20 | 1d | 2027-01-05 | 2027-01-05 | DH.1500A-EQP-187, DH.1500A-EQP-183 | 46.88d | 7d | 1434 | DH1500 | GR |  |  |
| DH.1500A-EQP-191 |  | Gallery 1502 - K150/Line-Ups // Mechanical Connections to CRAHU Units | 10d | 2027-01-08 | 2027-01-22 | DH.1500A-EQP-183 SS+5d | 39.88d | 0d | 1448 | DH1500 | GR |  |  |
| DH.1500A-EQP-197 |  | Gallery 1502 - K150/Line-Ups // Pull Feeder and Branch circuits to MIsc equipment and Chiller controls | 10d | 2027-01-08 | 2027-01-22 | DH.1500A-EQP-192 SS+4d | 41.88d | 0d | 1444 | DH1500 | GR | HELIX | AC |
| DH.1500A-EQP-193 |  | Gallery 1502 - K150/Line-Ups // Pull Cable Tray Feed from MOD to CRAHU's | 5d | 2027-01-11 | 2027-01-15 | DH.1500A-EQP-190 | 47.88d | 0d | 1441 | DH1500 | GR | HELIX | OO |
| DH.1500A-EQP-196 |  | Gallery 1502 - K150/Line-Ups // Terminate CRAHU Electrical Connections | 5d | 2027-01-13 | 2027-01-20 | DH.1500A-EQP-193 SS+2d, DH.1500A-EQP-190 | 47.88d | 6d | 1442 | DH1500 | GR | HELIX | OO |
| DH.1500A-EQP-199 |  | Gallery 1502 - K150/Line-Ups // Teminate all Misc Equipment and Chiller Controls | 10d | 2027-01-14 | 2027-01-28 | DH.1500A-EQP-197 SS+4d | 41.88d | 0d | 1445 | DH1500 | GR |  |  |
| DH.1500A-EQP-194 |  | Gallery 1502 - K150/Line-Ups // Condensate connections to Floor Drains | 10d | 2027-01-15 | 2027-01-29 | DH.1500A-EQP-183, DH.1500A-EQP-187, DH.1500A-EQP-188, DH.150012052, DH.1500A-EQP-191 SS+5d | 39.88d | 0d | 1449 | DH1500 | GR |  |  |
| DH.1500A-EQP-195 |  | Gallery 1502 - K150/Line-Ups // Terminate Mod Panels | 1d | 2027-01-19 | 2027-01-19 | DH.1500A-EQP-193, DH.1500A-EQP-190, DH.1500A-EQP-189 | 48.88d | 7d | 1440 | DH1500 | GR | HELIX | OO |
| DH.1500A-EQP-200 |  | Gallery 1502 - K150/Line-Ups // Electrical Gear FOD Inspection Pre-Start Up | 2d | 2027-01-29 | 2027-02-01 | DH.1500A-EQP-196, DH.1500A-EQP-199, DH.1500A-EQP-195 | 41.88d | 69d | 1446 | DH1500 | GR | HELIX | QC |
| DH.1500A-EQP-198 |  | Gallery 1502 - K150/Line-Ups // Mechanical Gear FOD Inspection Pre-Start Up | 3d | 2027-02-01 | 2027-02-03 | DH.1500A-EQP-187, DH.1500A-EQP-188, DH.1500A-EQP-183, DH.1500A-EQP-194, DH.1500A-EQP-191 | 39.88d | 67d | 1447 | DH1500 | GR |  |  |

| ID | WBS | Activity | Duration | Start | Finish | Predecessors | Total float | Free float | MSP Activity ID | QTS - AREA | QTS - DASH | QTS - Subcontractor | QTS - Resp | MBTA: Work Type |
| --- | --- | --- | --- | --- | --- | --- | --- | --- | --- | --- | --- | --- | --- | --- |
|  | 11 | **R150** |  | 2026-12-31 | 2027-02-03 |  |  |  |  |  |  |  |  |  |
| DH.1500A-EQP-201 |  | Gallery 1502 - R150/Line-Ups // Set CRAH-DH1500- 21 | 1d | 2026-12-31 | 2026-12-31 | DH.1500A-EQP-183 SS | -2.12d | 0d | 1433 | DH1500 | GR |  |  |  |
| DH.1500A-EQP-203 |  | Gallery 1502 - R150/Line-Ups // Set CRAH-DH1500- 22 | 1d | 2026-12-31 | 2026-12-31 | DH.1500A-EQP-201 SS | -2.12d | 0d | 1434 | DH1500 | GR |  |  |  |
| DH.1500A-EQP-205 |  | Gallery 1502 - R150/Line-Ups // Set MOD-R150-01 | 1d | 2026-12-31 | 2026-12-31 | DH.1500A-EQP-203 FF | -0.12d | 0d | 1437 | DH1500 | GR | HELIX | TBD |  |
| DH.1500A-EQP-206 |  | Gallery 1502 - R150/Line-Ups // Set MOD-R150-02 | 1d | 2026-12-31 | 2026-12-31 | DH.1500A-EQP-205 SS | -0.12d | 0d | 1437 | DH1500 | GR | HELIX | TBD |  |
| DH.1500A-EQP-207 |  | Gallery 1502 - R150/Line-Ups // Set CDU-DH1500- 21 | 1d | 2027-01-04 | 2027-01-04 | DH.1500A-EQP-201 | 4.88d | 0d | 1434 | DH1500 | GR |  |  |  |
| DH.1500A-EQP-210 |  | Gallery 1502 - R150/Line-Ups // Pull Cable Tray Feed from MOD to CRAHU's | 5d | 2027-01-04 | 2027-01-08 | DH.1500A-EQP-206 | 1.88d | 0d | 1438 | DH1500 | GR | HELIX | OO |  |
| DH.1500A-EQP-212 |  | Gallery 1502 - R150/Line-Ups // Mount Electrial Gear for Chiller Controls | 10d | 2027-01-04 | 2027-01-15 | DH.1500A-EQP-206 | -0.12d | 0d | 1443 | DH1500 | GR | HELIX | AC |  |
| DH.1500A-EQP-208 |  | Gallery 1502 - R150/Line-Ups // Set CDU-DH1500- 22 | 1d | 2027-01-05 | 2027-01-05 | DH.1500A-EQP-207, DH.1500A-EQP-203 | 4.88d | 0d | 1434 | DH1500 | GR |  |  |  |
| DH.1500A-EQP-221 |  | Gallery 1502 - R150/Line-Ups // Set SWD-R150 | 1d | 2027-01-06 | 2027-01-06 | DH.1500A-EQP-208 | 11.88d | 0d | 1437 | DH1500 | GR |  |  |  |
| DH.1500A-EQP-222 |  | Gallery 1502 - R150/Line-Ups // Set SWD-TIE-R150 | 1d | 2027-01-07 | 2027-01-07 | DH.1500A-EQP-221 | 11.88d | 0d | 1437 | DH1500 | GR |  |  |  |
| DH.1500A-EQP-209 |  | Gallery 1502 - R150/Line-Ups // Pull Feeder from SWD to MOD | 1d | 2027-01-08 | 2027-01-08 | DH.1500A-EQP-222, DH.1500A-EQP-206 | 11.88d | 5d | 1439 | DH1500 | GR | HELIX | OO |  |
| DH.1500A-EQP-211 |  | Gallery 1502 - R150/Line-Ups // Mechanical Connections to CRAHU Units | 10d | 2027-01-08 | 2027-01-22 | DH.1500A-EQP-203 SS+5d | -2.12d | 0d | 1448 | DH1500 | GR |  |  |  |
| DH.1500A-EQP-217 |  | Gallery 1502 - R150/Line-Ups // Pull Feeder and Branch circuits to MIsc equipment and Chiller controls | 10d | 2027-01-08 | 2027-01-22 | DH.1500A-EQP-212 SS+4d | -0.12d | 0d | 1444 | DH1500 | GR | HELIX | AC |  |
| DH.1500A-EQP-213 |  | Gallery 1502 - R150/Line-Ups // Pull Cable Tray Feed from MOD to CRAHU's | 5d | 2027-01-11 | 2027-01-15 | DH.1500A-EQP-210 | 1.88d | 0d | 1441 | DH1500 | GR | HELIX | OO |  |
| DH.1500A-EQP-216 |  | Gallery 1502 - R150/Line-Ups // Terminate CRAHU Electrical Connections | 5d | 2027-01-13 | 2027-01-20 | DH.1500A-EQP-213 SS+2d, DH.1500A-EQP-210 | 5.88d | 6d | 1442 | DH1500 | GR | HELIX | OO |  |
| DH.1500A-EQP-219 |  | Gallery 1502 - R150/Line-Ups // Teminate all Misc Equipment and Chiller Controls | 10d | 2027-01-14 | 2027-01-28 | DH.1500A-EQP-217 SS+4d | -0.12d | 0d | 1445 | DH1500 | GR |  |  |  |
| DH.1500A-EQP-214 |  | Gallery 1502 - R150/Line-Ups // Condensate connections to Floor Drains | 10d | 2027-01-15 | 2027-01-29 | DH.1500A-EQP-203, DH.1500A-EQP-207, DH.1500A-EQP-208, DH.150012055, DH.1500A-EQP-211 SS+5d | -2.12d | 0d | 1449 | DH1500 | GR |  |  |  |
| DH.1500A-EQP-215 |  | Gallery 1502 - R150/Line-Ups // Terminate Mod Panels | 1d | 2027-01-19 | 2027-01-19 | DH.1500A-EQP-213, DH.1500A-EQP-210, DH.1500A-EQP-209 | 6.88d | 7d | 1440 | DH1500 | GR | HELIX | OO |  |
| DH.1500A-EQP-220 |  | Gallery 1502 - R150/Line-Ups // Electrical Gear FOD Inspection Pre-Start Up | 2d | 2027-01-29 | 2027-02-01 | DH.160012131, DH.1500A-EQP-216, DH.1500A-EQP-219, DH.1500A-EQP-215 | -0.12d | 32d | 1446 | DH1500 | GR | HELIX | QC |  |
| DH.1500A-EQP-218 |  | Gallery 1502 - R150/Line-Ups // Mechanical Gear FOD Inspection Pre-Start Up | 3d | 2027-02-01 | 2027-02-03 | DH.1500A-EQP-207, DH.1500A-EQP-208, DH.1500A-EQP-203, DH.1500A-EQP-214, DH.1500A-EQP-211 | -2.12d | 30d | 1447 | DH1500 | GR |  |  |  |
|  | 12 | **Equipment Connections** |  | 2027-01-19 | 2027-01-28 |  |  |  |  |  |  |  |  |  |
|  | 1 | **CRAH** |  | 2027-01-19 | 2027-01-28 |  |  |  |  |  |  |  |  |  |
| DH1500.MG.A110.8687 |  | Gallery 1502 // DH 1500 / Elec Room // CRAH Duct Work Termination | 2d | 2027-01-19 | 2027-01-20 | DH.1500A-EQP-213 | 1.88d | 0d | 7037 | DH1500 | GR |  |  | Con/Install |
| DH1500.MG.A110.8686 |  | Gallery 1502 // DH 1500 / Elec Room // CRAH Chilled Water | 2d | 2027-01-21 | 2027-01-22 | DH1500.MG.A110.8687 | 1.88d | 0d | 7035 | DH1500 | GR |  |  | Con/Install |
| DH1500.MG.A110.8684 |  | Gallery 1502 // DH 1500 / Elec Room // CRAH Power Connections | 2d | 2027-01-25 | 2027-01-26 | DH1500.MG.A110.8686 | 1.88d | 0d | 7034 | DH1500 | GR | HELIX | OO | Con/Install |
| DH1500.MG.A110.8685 |  | Gallery 1502 // DH 1500 / Elec Room // CRAH LV Connections | 2d | 2027-01-27 | 2027-01-28 | DH1500.MG.A110.8684 | 1.88d | 34d | 7036 | DH1500 | GR |  |  | Con/Install |

| ID | WBS | Activity | Type | Duration | Start | Finish | Predecessors | Total float | Free float | MSP Activity ID | QTS - AREA | MBTA: Work Type | QTS - DASH | QTS - Subcontractor | QTS - Resp | 05 -SUFFOLK - Building Phase |
| --- | --- | --- | --- | --- | --- | --- | --- | --- | --- | --- | --- | --- | --- | --- | --- | --- |
|  | 2 | **CDU** |  |  | 2027-01-19 | 2027-01-26 |  |  |  |  |  |  |  |  |  |  |
| DH1500.MG.A110.8690 |  | Gallery 1502 // DH 1500 / Elec Room // CDU Chilled Water Connections |  | 2d | 2027-01-19 | 2027-01-20 | DH.1500A-EQP-213 | 3.88d | 0d | 7040 | DH1500 | Con/Install | GR |  |  |  |
| DH1500.MG.A110.8688 |  | Gallery 1502 // DH 1500 /Elec Room // CDU Power Connections |  | 2d | 2027-01-21 | 2027-01-22 | DH1500.MG.A110.8690 | 3.88d | 0d | 7039 | DH1500 | Con/Install | GR | HELIX | OO |  |
| DH1500.MG.A110.8689 |  | Gallery 1502 // DH 1500 / Elec Room // CDU Controls Connections |  | 2d | 2027-01-25 | 2027-01-26 | DH1500.MG.A110.8688 | 3.88d | 36d | 7041 | DH1500 | Con/Install | GR |  |  |  |
|  | 3 | **MOD** |  |  | 2027-01-25 | 2027-01-28 |  |  |  |  |  |  |  |  |  |  |
| DH1500.MG.A110.8691 |  | Gallery 1502 // DH 1500 / Elec Room // MOD Power Connections |  | 2d | 2027-01-25 | 2027-01-26 | DH.1500A-EQP-217 | 1.88d | 0d | 7043 | DH1500 | Con/Install | GR | HELIX | OO |  |
| DH1500.MG.A110.8692 |  | Gallery 1502 // DH 1500 / Elec Room // MOD LV Connections |  | 2d | 2027-01-27 | 2027-01-28 | DH1500.MG.A110.8691 | 1.88d | 34d | 7044 | DH1500 | Con/Install | GR | HELIX | AC |  |
|  | 4 | **Gallery 1503** |  |  | 2026-10-14 | 2027-02-17 |  |  |  |  |  |  |  |  |  |  |
|  | 1 | **Architectural** |  |  | 2026-10-14 | 2027-01-13 |  |  |  |  |  |  |  |  |  |  |
| DH.15001000 |  | DH 1500/Gallery 1503 // Seal concrete |  | 5d | 2026-10-14 | 2026-10-20 | DH.15000.1000 | 6.88d | 18d | 1452 | DH1500 |  | GR |  |  | 2 |
| DH.15001010 |  | DH 1500/Gallery 1503 // MEPF overhead layout |  | 5d | 2026-10-14 | 2026-10-20 | DH.14006270 | -11.12d | 0d | 1453 | DH1500 |  | GR | HELIX | ACOO | 2 |
| B120001.3211 |  | DH 1500/Gallery 1503 // Install Overhead Cable Ladder / 36" Cable Tray - TFO |  | 5d | 2026-10-21 | 2026-10-27 | DH.15001010 | -11.12d | 0d | 1181 |  |  | GR |  |  |  |
| B120001.3212 |  | DH 1500/Gallery 1503 // Install Overhead HAC - TFO |  | 5d | 2026-10-21 | 2026-10-27 | B120001.3211 FF | -11.12d | 0d | 1181 |  |  | GR |  |  |  |
| DH.15001030 |  | DH 1500/Gallery 1503 // MEPF high overhead install |  | 10d | 2026-10-28 | 2026-11-10 | B120001.3212, DH.15001010 SS | -11.12d | 0d | 1455 | DH1500 |  | GR | HELIX | ACOO | 2 |
| DH.15001040 |  | DH 1500/Gallery 1503 // Frame walls |  | 6d | 2026-10-29 | 2026-11-05 | DH.1500700 | -10.12d | 0d | 1456 | DH1500 |  | GR |  |  | 2 |
| DH.15001070 |  | DH 1500/Gallery 1503 // MEP rough in walls |  | 4d | 2026-11-06 | 2026-11-12 | DH.15001040 | -10.12d | 0d | 1458 | DH1500 |  | GR | HELIX | AC | 2 |
| F.1000A.1301 |  | DH 1500/Gallery 1503 // Rough-In Security |  | 2d | 2026-11-09 | 2026-11-10 | DH.15001030 FF | -11.12d | 0d | 1156 | DH1500 |  | GR | HELIX | AC |  |
| F.1000A.1575 |  | DH 1500/Gallery 1503 // BMS & EPMS Rough-In |  | 2d | 2026-11-09 | 2026-11-10 | F.1000A.1301 SS, F.1000A.1301 FF | 90.88d | 37d |  |  |  |  |  |  |  |
| F.1000A.1302 |  | DH 1500/Gallery 1503 // Pull & Test Security Cable |  | 3d | 2026-11-12 | 2026-11-16 | F.1000A.1301 | -11.12d | 0d | 1156 | DH1500 |  | GR |  |  |  |
| DH.15001080 |  | DH 1500/Gallery 1503 // In wall inspection |  | 1d | 2026-11-13 | 2026-11-13 | DH.15001070 | -10.12d | 1d | 1459 | DH1500 |  | GR |  |  | 2 |
| DH.15001050 |  | DH 1500/Gallery 1503 // Install Sheetrock Top Down |  | 6d | 2026-11-17 | 2026-11-24 | DH.15001080, F.1000A.1302, DH.15001040 SS+3d, DH.15001000 | -11.12d | 0d | 1461 | DH1500 |  | GR |  |  |  |
| DH.15001090 |  | DH 1500/Gallery 1503 // Install Balance of Sheetrock on walls |  | 6d | 2026-11-25 | 2026-12-03 | DH.15001050, DH.15001030 | -11.12d | 0d | 1460 | DH1500 |  | GR |  |  | 2 |
| DH.15001100 |  | DH 1500/Gallery 1503 // Tape and finish walls |  | 8d | 2026-12-04 | 2026-12-15 | DH.15001090, DH.15001080 | -11.12d | 0d | 1462 | DH1500 |  | GR |  |  | 2 |
| DH.15001060 |  | DH 1500/Gallery 1503 // Install wall door frames |  | 2d | 2026-12-16 | 2026-12-17 | DH.15001100 | -9.12d | 0d | 1457 | DH1500 |  | GR |  |  | 2 |
| DH.15001110 |  | DH 1500/Gallery 1503 // Prime and Paint walls |  | 4d | 2026-12-16 | 2026-12-21 | DH.15001100 | -11.12d | 0d | 1463 | DH1500 |  | GR |  |  | 2 |
| F.1000A.1303 |  | DH 1500/Gallery 1503 // Install Security Devices |  | 2d | 2026-12-18 | 2026-12-21 | DH.15001060, F.1000A.1302 | 56.88d | 0d | 1156 | DH1500 |  | GR |  |  |  |
| DH.15001120 |  | DH 1500/Gallery 1503 // Touch up Walls and Fianl Paint |  | 5d | 2026-12-22 | 2026-12-29 | DH.15001110, DH.15001060 | -11.12d | 0d | 1464 | DH1500 |  | GR |  |  | 2 |
| F.1000A.1304 |  | DH 1500/Gallery 1503 // Mount & Terminate Security Devices |  | 5d | 2026-12-22 | 2026-12-29 | DH.15001110, F.1000A.1303 | 56.88d | 3d | 1156 | DH1500 |  | GR |  |  |  |
| DH.15001130 |  | DH 1500/Gallery 1503 // Install Trim and Devices |  | 2d | 2026-12-30 | 2026-12-31 | DH.15001120 | -11.12d | 0d | 1465 | DH1500 |  | GR | HELIX | AC |  |
| DH.160012158 |  | DH 1500/Gallery 1503 // Ready to Receive Equipment | milestone | 0d | 2026-12-31 | 2026-12-31 | DH.15001130 | -11.12d | 0d | 1465 | DH1500 |  | GR | HELIX | TBD |  |
| F.1000A.1305 |  | DH 1500/Gallery 1503 // Test Security Devices |  | 2d | 2027-01-05 | 2027-01-06 | DH.15001130 FS+1d, F.1000A.1304, F.1000A.1575 FF | 53.88d | 0d | 1156 | DH1500 |  | GR |  |  |  |
| DH.15001140 |  | DH 1500/Gallery 1503 // Suffolk Pre Punch |  | 5d | 2027-01-07 | 2027-01-13 | F.1000A.1305, DH.160012158 | 53.88d | 81d | 1466 | DH1500 |  | GR |  |  |  |

| ID | WBS | Activity | Duration | Start | Finish | Predecessors | Total float | Free float | MSP Activity ID | QTS - AREA | QTS - DASH | QTS - Subcontractor | QTS - Resp |
| --- | --- | --- | --- | --- | --- | --- | --- | --- | --- | --- | --- | --- | --- |
|  | 16 | **Raceway** |  |  |  |  |  |  |  |  |  |  |  |
|  | 3 | **Equipment Line-Ups** |  | 2027-01-04 | 2027-02-17 |  |  |  |  |  |  |  |  |
|  | 1 | **A150** |  | 2027-01-04 | 2027-02-04 |  |  |  |  |  |  |  |  |
| DH.1500B-EQP-1 |  | Gallery 1503 - A150/Line-Ups // Set CRAH-DH1500- 23 | 1d | 2027-01-04 | 2027-01-04 | DH.160012158, DH.15006360 | -11.12d | 0d | 1474 | DH1500 | GR |  |  |
| DH.1500B-EQP-4 |  | Gallery 1503 - A150/Line-Ups // Set CRAH-DH1500- 24 | 1d | 2027-01-04 | 2027-01-04 | DH.1500B-EQP-1 SS, DH.1500B-EQP-1 FF | -11.12d | 0d | 1475 | DH1500 | GR |  |  |
| DH.1500B-EQP-10 |  | Gallery 1503 - A150/Line-Ups // Mount Electrial Gear for Chiller Controls | 10d | 2027-01-05 | 2027-01-19 | DH.1500B-EQP-4 | 40.88d | 0d | 1484 | DH1500 | GR | HELIX | AC |
| DH.1500B-EQP-14 |  | Gallery 1503 - A150/Line-Ups // Terminate Electrical Connections - CRAHU | 3d | 2027-01-05 | 2027-01-07 | DH.1500B-EQP-1 | 55.88d | 15d | 1483 | DH1500 | GR | HELIX | OO |
| DH.1500B-EQP-199 |  | Gallery 1503 - A150/Line-Ups // Set CDU-DH1500-23 | 1d | 2027-01-05 | 2027-01-05 | DH.1500B-EQP-4 | 43.88d | 3d | 1478 | DH1500 | GR |  |  |
| DH.1500B-EQP-200 |  | Gallery 1503 - A150/Line-Ups // Set CDU-DH1500-24 | 1d | 2027-01-05 | 2027-01-05 | DH.1500B-EQP-4 | 43.88d | 3d | 1478 | DH1500 | GR |  |  |
| DH.1500B-EQP-3 |  | Gallery 1503 - A150/Line-Ups // Condensate connections to Floor Drains | 10d | 2027-01-05 | 2027-01-19 | DH.1500B-EQP-1 SS, DH.1500B-EQP-4 | 42.88d | 4d | 1477 | DH1500 | GR |  |  |
| DH.1500B-EQP-15 |  | Gallery 1503 - A150/Line-Ups // Pull Feeder and Branch circuits to MIsc equipment and Chiller controls | 10d | 2027-01-11 | 2027-01-25 | DH.1500B-EQP-199, DH.1500B-EQP-200, DH.1500B-EQP-10 SS+4d | 40.88d | 0d | 1485 | DH1500 | GR | HELIX | AC |
| DH.1500B-EQP-9 |  | Gallery 1503 - A150/Line-Ups // Mechanical Connections to CRAHU Units | 5d | 2027-01-11 | 2027-01-15 | DH.1500B-EQP-4 SS+5d | 38.88d | 0d | 1489 | DH1500 | GR |  |  |
| DH.1500B-EQP-17 |  | Gallery 1503 - A150/Line-Ups // Teminate all Misc Equipment and Chiller Controls | 10d | 2027-01-15 | 2027-01-29 | DH.1500B-EQP-15 SS+4d | 40.88d | 0d | 1486 | DH1500 | GR |  |  |
| DH.1500B-EQP-12 |  | Gallery 1503 - A150/Line-Ups // Condensate connections to Floor Drains | 10d | 2027-01-19 | 2027-02-01 | DH.1500B-EQP-9 SS+5d, DH.1500B-EQP-3 SS+5d | 38.88d | 0d | 1490 | DH1500 | GR |  |  |
| DH.1500B-EQP-18 |  | Gallery 1503 - A150/Line-Ups // Electrical Gear FOD Inspection Pre-Start Up | 2d | 2027-02-01 | 2027-02-02 | DH.1500B-EQP-14, DH.1500B-EQP-17 | 40.88d | 68d | 1487 | DH1500 | GR | HELIX | QC |
| DH.1500B-EQP-16 |  | Gallery 1503 - A150/Line-Ups // Mechanical Gear FOD Inspection Pre-Start Up | 3d | 2027-02-02 | 2027-02-04 | DH.1500B-EQP-12, DH.1500B-EQP-3, DH.1500B-EQP-9, DH.1500B-EQP-1 SS, DH.1500B-EQP-4 | 38.88d | 66d | 1488 | DH1500 | GR |  |  |
|  | 2 | **B150** |  | 2027-01-04 | 2027-02-11 |  |  |  |  |  |  |  |  |
| DH.1500B-EQP-19 |  | Gallery 1503 - B150/Line-Ups // Set CRAH-DH1500- 25 | 1d | 2027-01-04 | 2027-01-04 | DH.1500B-EQP-4 SS | -11.12d | 0d | 1474 | DH1500 | GR |  |  |
| DH.1500B-EQP-22 |  | Gallery 1503 - B150/Line-Ups // Set CRAH-DH1500- 26 | 1d | 2027-01-04 | 2027-01-04 | DH.1500B-EQP-19 SS, DH.1500B-EQP-19 FF | -11.12d | 0d | 1475 | DH1500 | GR |  |  |
| DH.1500B-EQP-201 |  | Gallery 1503 - B150/Line-Ups // Set CDU-DH1500-25 | 1d | 2027-01-05 | 2027-01-05 | DH.1500B-EQP-22 | 43.88d | 3d | 1478 | DH1500 | GR |  |  |
| DH.1500B-EQP-202 |  | Gallery 1503 - B150/Line-Ups // Set CDU-DH1500-26 | 1d | 2027-01-05 | 2027-01-05 | DH.1500B-EQP-22 | 43.88d | 3d | 1478 | DH1500 | GR |  |  |
| DH.1500B-EQP-28 |  | Gallery 1503 - B150/Line-Ups // Mount Electrial Gear for Chiller Controls | 10d | 2027-01-05 | 2027-01-19 | DH.1500B-EQP-22 | 40.88d | 0d | 1484 | DH1500 | GR | HELIX | AC |
| DH.1500B-EQP-32 |  | Gallery 1503 - B150/Line-Ups // Terminate CRAHU Electrical Connections | 5d | 2027-01-05 | 2027-01-11 | DH.1500B-EQP-19 | 53.88d | 13d | 1483 | DH1500 | GR | HELIX | OO |
| DH.1500B-EQP-20 |  | Gallery 1503 - B150/Line-Ups // Connect CRAH units | 10d | 2027-01-11 | 2027-01-25 | DH.1500B-EQP-19 SS+5d, DH.1500B-EQP-22 | 33.88d | 0d | 1476 | DH1500 | GR |  |  |
| DH.1500B-EQP-27 |  | Gallery 1503 - B150/Line-Ups // Mechanical Connections to CRAHU Units | 10d | 2027-01-11 | 2027-01-25 | DH.1500B-EQP-22 SS+5d | 38.88d | 5d | 1489 | DH1500 | GR |  |  |
| DH.1500B-EQP-33 |  | Gallery 1503 - B150/Line-Ups // Pull Feeder and Branch circuits to MIsc equipment and Chiller controls | 10d | 2027-01-11 | 2027-01-25 | DH.1500B-EQP-202, DH.1500B-EQP-201, DH.1500B-EQP-28 SS+4d | 40.88d | 0d | 1485 | DH1500 | GR | HELIX | AC |
| DH.1500B-EQP-35 |  | Gallery 1503 - B150/Line-Ups // Teminate all Misc Equipment and Chiller Controls | 10d | 2027-01-15 | 2027-01-29 | DH.1500B-EQP-33 SS+4d | 40.88d | 0d | 1486 | DH1500 | GR |  |  |
| DH.1500B-EQP-21 |  | Gallery 1503 - B150/Line-Ups // Condensate connections to Floor Drains | 10d | 2027-01-19 | 2027-02-01 | DH.1500B-EQP-20 SS+5d | 33.88d | 0d | 1477 | DH1500 | GR |  |  |
| DH.1500B-EQP-30 |  | Gallery 1503 - B150/Line-Ups // Condensate connections to Floor Drains | 10d | 2027-01-26 | 2027-02-08 | DH.1500B-EQP-27 SS+5d, DH.1500B-EQP-21 SS+5d | 33.88d | 0d | 1490 | DH1500 | GR |  |  |
| DH.1500B-EQP-36 |  | Gallery 1503 - B150/Line-Ups // Electrical Gear FOD Inspection Pre-Start Up | 2d | 2027-02-01 | 2027-02-02 | DH.1500B-EQP-32, DH.1500B-EQP-35 | 40.88d | 68d | 1487 | DH1500 | GR | HELIX | QC |
| DH.1500B-EQP-34 |  | Gallery 1503 - B150/Line-Ups // Mechanical Gear FOD Inspection Pre-Start Up | 3d | 2027-02-09 | 2027-02-11 | DH.1500B-EQP-30, DH.1500B-EQP-21, DH.1500B-EQP-27, DH.1500B-EQP-20 | 33.88d | 61d | 1488 | DH1500 | GR |  |  |

| ID | WBS | Activity | Duration | Start | Finish | Predecessors | Total float | Free float | MSP Activity ID | QTS - AREA | QTS - DASH | QTS - Subcontractor | QTS - Resp |
| --- | --- | --- | --- | --- | --- | --- | --- | --- | --- | --- | --- | --- | --- |
|  | 3 | **C150** |  | 2027-01-04 | 2027-02-11 |  |  |  |  |  |  |  |  |
| DH.1500B-EQP-37 |  | Gallery 1503 - C150/Line-Ups // Set CRAH-DH1500- 27 | 1d | 2027-01-04 | 2027-01-04 | DH.1500B-EQP-22 SS | -11.12d | 0d | 1474 | DH1500 | GR |  |  |
| DH.1500B-EQP-40 |  | Gallery 1503 - C150/Line-Ups // Set CRAH-DH1500- 28 | 1d | 2027-01-04 | 2027-01-04 | DH.1500B-EQP-37 SS, DH.1500B-EQP-37 FF | -11.12d | 0d | 1475 | DH1500 | GR |  |  |
| DH.1500B-EQP-203 |  | Gallery 1503 - C150/Line-Ups // Set CDU-DH1500-27 | 1d | 2027-01-05 | 2027-01-05 | DH.1500B-EQP-40 | 43.88d | 3d | 1478 | DH1500 | GR |  |  |
| DH.1500B-EQP-204 |  | Gallery 1503 - C150/Line-Ups // Set CDU-DH1500-28 | 1d | 2027-01-05 | 2027-01-05 | DH.1500B-EQP-40 | 43.88d | 3d | 1478 | DH1500 | GR |  |  |
| DH.1500B-EQP-46 |  | Gallery 1503 - C150/Line-Ups // Mount Electrial Gear for Chiller Controls | 10d | 2027-01-05 | 2027-01-19 | DH.1500B-EQP-40 | 40.88d | 0d | 1484 | DH1500 | GR | HELIX | AC |
| DH.1500B-EQP-50 |  | Gallery 1503 - C150/Line-Ups // Terminate CRAHU Electrical Connections | 5d | 2027-01-05 | 2027-01-11 | DH.1500B-EQP-37 | 53.88d | 13d | 1483 | DH1500 | GR | HELIX | OO |
| DH.1500B-EQP-38 |  | Gallery 1503 - C150/Line-Ups // Connect CRAH units | 10d | 2027-01-11 | 2027-01-25 | DH.1500B-EQP-37 SS+5d, DH.1500B-EQP-40 | 33.88d | 0d | 1476 | DH1500 | GR |  |  |
| DH.1500B-EQP-45 |  | Gallery 1503 - C150/Line-Ups // Mechanical Connections to CRAHU Units | 10d | 2027-01-11 | 2027-01-25 | DH.1500B-EQP-40 SS+5d | 38.88d | 5d | 1489 | DH1500 | GR |  |  |
| DH.1500B-EQP-51 |  | Gallery 1503 - C150/Line-Ups // Pull Feeder and Branch circuits to MIsc equipment and Chiller controls | 10d | 2027-01-11 | 2027-01-25 | DH.1500B-EQP-204, DH.1500B-EQP-203, DH.1500B-EQP-46 SS+4d | 40.88d | 0d | 1485 | DH1500 | GR | HELIX | AC |
| DH.1500B-EQP-53 |  | Gallery 1503 - C150/Line-Ups // Teminate all Misc Equipment and Chiller Controls | 10d | 2027-01-15 | 2027-01-29 | DH.1500B-EQP-51 SS+4d | 40.88d | 0d | 1486 | DH1500 | GR |  |  |
| DH.1500B-EQP-39 |  | Gallery 1503 - C150/Line-Ups // Condensate connections to Floor Drains | 10d | 2027-01-19 | 2027-02-01 | DH.1500B-EQP-38 SS+5d | 33.88d | 0d | 1477 | DH1500 | GR |  |  |
| DH.1500B-EQP-48 |  | Gallery 1503 - C150/Line-Ups // Condensate connections to Floor Drains | 10d | 2027-01-26 | 2027-02-08 | DH.1500B-EQP-45 SS+5d, DH.1500B-EQP-39 SS+5d | 33.88d | 0d | 1490 | DH1500 | GR |  |  |
| DH.1500B-EQP-54 |  | Gallery 1503 - C150/Line-Ups // Electrical Gear FOD Inspection Pre-Start Up | 2d | 2027-02-01 | 2027-02-02 | DH.1500B-EQP-50, DH.1500B-EQP-53 | 40.88d | 68d | 1487 | DH1500 | GR | HELIX | QC |
| DH.1500B-EQP-52 |  | Gallery 1503 - C150/Line-Ups // Mechanical Gear FOD Inspection Pre-Start Up | 3d | 2027-02-09 | 2027-02-11 | DH.1500B-EQP-48, DH.1500B-EQP-39, DH.1500B-EQP-45, DH.1500B-EQP-38 | 33.88d | 61d | 1488 | DH1500 | GR |  |  |
|  | 4 | **D150** |  | 2027-01-05 | 2027-02-12 |  |  |  |  |  |  |  |  |
| DH.1500B-EQP-55 |  | Gallery 1503 - D150/Line-Ups // Set CRAH-DH1500- 29 | 1d | 2027-01-05 | 2027-01-05 | DH.1500B-EQP-40 | -11.12d | 0d | 1474 | DH1500 | GR |  |  |
| DH.1500B-EQP-58 |  | Gallery 1503 - D150/Line-Ups // Set CRAH-DH1500-30 | 1d | 2027-01-05 | 2027-01-05 | DH.1500B-EQP-55 SS, DH.1500B-EQP-55 FF | -11.12d | 0d | 1475 | DH1500 | GR |  |  |
| DH.1500B-EQP-205 |  | Gallery 1503 - D150/Line-Ups // Set CDU-DH1500-29 | 1d | 2027-01-06 | 2027-01-06 | DH.1500B-EQP-58 | 42.88d | 3d | 1478 | DH1500 | GR |  |  |
| DH.1500B-EQP-206 |  | Gallery 1503 - D150/Line-Ups // Set CDU-DH1500-30 | 1d | 2027-01-06 | 2027-01-06 | DH.1500B-EQP-58 | 42.88d | 3d | 1478 | DH1500 | GR |  |  |
| DH.1500B-EQP-64 |  | Gallery 1503 - D150/Line-Ups // Mount Electrial Gear for Chiller Controls | 10d | 2027-01-06 | 2027-01-20 | DH.1500B-EQP-58 | 39.88d | 0d | 1484 | DH1500 | GR | HELIX | AC |
| DH.1500B-EQP-68 |  | Gallery 1503 - D150/Line-Ups // Terminate CRAHU Electrical Connections | 5d | 2027-01-06 | 2027-01-12 | DH.1500B-EQP-55 | 52.88d | 13d | 1483 | DH1500 | GR | HELIX | OO |
| DH.1500B-EQP-56 |  | Gallery 1503 - D150/Line-Ups // Connect CRAH units | 10d | 2027-01-12 | 2027-01-26 | DH.1500B-EQP-55 SS+5d, DH.1500B-EQP-58 | 32.88d | 0d | 1476 | DH1500 | GR |  |  |
| DH.1500B-EQP-63 |  | Gallery 1503 - D150/Line-Ups // Mechanical Connections to CRAHU Units | 10d | 2027-01-12 | 2027-01-26 | DH.1500B-EQP-58 SS+5d | 37.88d | 5d | 1489 | DH1500 | GR |  |  |
| DH.1500B-EQP-69 |  | Gallery 1503 - D150/Line-Ups // Pull Feeder and Branch circuits to MIsc equipment and Chiller controls | 10d | 2027-01-12 | 2027-01-26 | DH.1500B-EQP-206, DH.1500B-EQP-205, DH.1500B-EQP-64 SS+4d | 39.88d | 0d | 1485 | DH1500 | GR | HELIX | AC |
| DH.1500B-EQP-71 |  | Gallery 1503 - D150/Line-Ups // Teminate all Misc Equipment and Chiller Controls | 10d | 2027-01-19 | 2027-02-01 | DH.1500B-EQP-69 SS+4d | 39.88d | 0d | 1486 | DH1500 | GR |  |  |
| DH.1500B-EQP-57 |  | Gallery 1503 - D150/Line-Ups // Condensate connections to Floor Drains | 10d | 2027-01-20 | 2027-02-02 | DH.1500B-EQP-56 SS+5d | 32.88d | 0d | 1477 | DH1500 | GR |  |  |
| DH.1500B-EQP-66 |  | Gallery 1503 - D150/Line-Ups // Condensate connections to Floor Drains | 10d | 2027-01-27 | 2027-02-09 | DH.1500B-EQP-63 SS+5d, DH.1500B-EQP-57 SS+5d | 32.88d | 0d | 1490 | DH1500 | GR |  |  |
| DH.1500B-EQP-72 |  | Gallery 1503 - D150/Line-Ups // Electrical Gear FOD Inspection Pre-Start Up | 2d | 2027-02-02 | 2027-02-03 | DH.1500B-EQP-68, DH.1500B-EQP-71 | 39.88d | 67d | 1487 | DH1500 | GR | HELIX | QC |
| DH.1500B-EQP-70 |  | Gallery 1503 - D150/Line-Ups // Mechanical Gear FOD Inspection Pre-Start Up | 3d | 2027-02-10 | 2027-02-12 | DH.1500B-EQP-66, DH.1500B-EQP-57, DH.1500B-EQP-63, DH.1500B-EQP-56 | 32.88d | 60d | 1488 | DH1500 | GR |  |  |

| ID | WBS | Activity | Duration | Start | Finish | Predecessors | Total float | Free float | MSP Activity ID | QTS - AREA | QTS - DASH | QTS - Subcontractor | QTS - Resp |
| --- | --- | --- | --- | --- | --- | --- | --- | --- | --- | --- | --- | --- | --- |
|  | 5 | **E150** |  | 2027-01-05 | 2027-02-12 |  |  |  |  |  |  |  |  |
| DH.1500B-EQP-73 |  | Gallery 1503 - E150/Line-Ups // Set CRAH-DH1500- 31 | 1d | 2027-01-05 | 2027-01-05 | DH.1500B-EQP-58 SS | -11.12d | 0d | 1474 | DH1500 | GR |  |  |
| DH.1500B-EQP-76 |  | Gallery 1503 - E150/Line-Ups // Set CRAH-DH1500-32 | 1d | 2027-01-05 | 2027-01-05 | DH.1500B-EQP-73 SS, DH.1500B-EQP-73 FF | -11.12d | 0d | 1475 | DH1500 | GR |  |  |
| DH.1500B-EQP-207 |  | Gallery 1503 - E150/Line-Ups // Set CDU-DH1500-31 | 1d | 2027-01-06 | 2027-01-06 | DH.1500B-EQP-76 FF, DH.1500B-EQP-76 | 42.88d | 3d | 1478 | DH1500 | GR |  |  |
| DH.1500B-EQP-208 |  | Gallery 1503 - E150/Line-Ups // Set CDU-DH1500-32 | 1d | 2027-01-06 | 2027-01-06 | DH.1500B-EQP-76 | 42.88d | 3d | 1478 | DH1500 | GR |  |  |
| DH.1500B-EQP-82 |  | Gallery 1503 - E150/Line-Ups // Mount Electrial Gear for Chiller Controls | 10d | 2027-01-06 | 2027-01-20 | DH.1500B-EQP-76 | 39.88d | 0d | 1484 | DH1500 | GR | HELIX | AC |
| DH.1500B-EQP-86 |  | Gallery 1503 - E150/Line-Ups // Terminate CRAHU Electrical Connections | 5d | 2027-01-06 | 2027-01-12 | DH.1500B-EQP-73 | 52.88d | 13d | 1483 | DH1500 | GR | HELIX | OO |
| DH.1500B-EQP-74 |  | Gallery 1503 - E150/Line-Ups // Connect CRAH units | 10d | 2027-01-12 | 2027-01-26 | DH.1500B-EQP-73 SS+5d, DH.1500B-EQP-76 | 32.88d | 0d | 1476 | DH1500 | GR |  |  |
| DH.1500B-EQP-81 |  | Gallery 1503 - E150/Line-Ups // Mechanical Connections to CRAHU Units | 10d | 2027-01-12 | 2027-01-26 | DH.1500B-EQP-76 SS+5d | 37.88d | 5d | 1489 | DH1500 | GR |  |  |
| DH.1500B-EQP-87 |  | Gallery 1503 - E150/Line-Ups // Pull Feeder and Branch circuits to MIsc equipment and Chiller controls | 10d | 2027-01-12 | 2027-01-26 | DH.1500B-EQP-208, DH.1500B-EQP-207, DH.1500B-EQP-82 SS+4d | 39.88d | 0d | 1485 | DH1500 | GR | HELIX | AC |
| DH.1500B-EQP-89 |  | Gallery 1503 - E150/Line-Ups // Teminate all Misc Equipment and Chiller Controls | 10d | 2027-01-19 | 2027-02-01 | DH.1500B-EQP-87 SS+4d | 39.88d | 0d | 1486 | DH1500 | GR |  |  |
| DH.1500B-EQP-75 |  | Gallery 1503 - E150/Line-Ups // Condensate connections to Floor Drains | 10d | 2027-01-20 | 2027-02-02 | DH.1500B-EQP-74 SS+5d | 32.88d | 0d | 1477 | DH1500 | GR |  |  |
| DH.1500B-EQP-84 |  | Gallery 1503 - E150/Line-Ups // Condensate connections to Floor Drains | 10d | 2027-01-27 | 2027-02-09 | DH.1500B-EQP-81 SS+5d, DH.1500B-EQP-75 SS+5d | 32.88d | 0d | 1490 | DH1500 | GR |  |  |
| DH.1500B-EQP-90 |  | Gallery 1503 - E150/Line-Ups // Electrical Gear FOD Inspection Pre-Start Up | 2d | 2027-02-02 | 2027-02-03 | DH.1500B-EQP-86, DH.1500B-EQP-89 | 39.88d | 67d | 1487 | DH1500 | GR | HELIX | QC |
| DH.1500B-EQP-88 |  | Gallery 1503 - E150/Line-Ups // Mechanical Gear FOD Inspection Pre-Start Up | 3d | 2027-02-10 | 2027-02-12 | DH.1500B-EQP-84, DH.1500B-EQP-75, DH.1500B-EQP-81, DH.1500B-EQP-74 | 32.88d | 60d | 1488 | DH1500 | GR |  |  |
|  | 6 | **F150** |  | 2027-01-05 | 2027-02-12 |  |  |  |  |  |  |  |  |
| DH.1500B-EQP-91 |  | Gallery 1503 - F150/Line-Ups // Set CRAH-DH1500-33 | 1d | 2027-01-05 | 2027-01-05 | DH.1500B-EQP-76 SS | -11.12d | 0d | 1474 | DH1500 | GR |  |  |
| DH.1500B-EQP-94 |  | Gallery 1503 - F150/Line-Ups // Set CRAH-DH1500-34 | 1d | 2027-01-05 | 2027-01-05 | DH.1500B-EQP-91 SS, DH.1500B-EQP-91 FF | -11.12d | 0d | 1475 | DH1500 | GR |  |  |
| DH.1500B-EQP-100 |  | Gallery 1503 - F150/Line-Ups // Mount Electrial Gear for Chiller Controls | 10d | 2027-01-06 | 2027-01-20 | DH.1500B-EQP-94 | 39.88d | 0d | 1484 | DH1500 | GR | HELIX | AC |
| DH.1500B-EQP-104 |  | Gallery 1503 - F150/Line-Ups // Terminate CRAHU Electrical Connections | 5d | 2027-01-06 | 2027-01-12 | DH.1500B-EQP-91 | 52.88d | 13d | 1483 | DH1500 | GR | HELIX | OO |
| DH.1500B-EQP-209 |  | Gallery 1503 - F150/Line-Ups // Set CDU-DH1500-33 | 1d | 2027-01-06 | 2027-01-06 | DH.1500B-EQP-94 | 42.88d | 3d | 1478 | DH1500 | GR |  |  |
| DH.1500B-EQP-210 |  | Gallery 1503 - F150/Line-Ups // Set CDU-DH1500-34 | 1d | 2027-01-06 | 2027-01-06 | DH.1500B-EQP-94 | 42.88d | 3d | 1478 | DH1500 | GR |  |  |
| DH.1500B-EQP-105 |  | Gallery 1503 - F150/Line-Ups // Pull Feeder and Branch circuits to MIsc equipment and Chiller controls | 10d | 2027-01-12 | 2027-01-26 | DH.1500B-EQP-210, DH.1500B-EQP-209, DH.1500B-EQP-100 SS+4d | 39.88d | 0d | 1485 | DH1500 | GR | HELIX | AC |
| DH.1500B-EQP-92 |  | Gallery 1503 - F150/Line-Ups // Connect CRAH units | 10d | 2027-01-12 | 2027-01-26 | DH.1500B-EQP-91 SS+5d, DH.1500B-EQP-94 | 32.88d | 0d | 1476 | DH1500 | GR |  |  |
| DH.1500B-EQP-99 |  | Gallery 1503 - F150/Line-Ups // Mechanical Connections to CRAHU Units | 10d | 2027-01-12 | 2027-01-26 | DH.1500B-EQP-94 SS+5d | 37.88d | 5d | 1489 | DH1500 | GR |  |  |
| DH.1500B-EQP-107 |  | Gallery 1503 - F150/Line-Ups // Teminate all Misc Equipment and Chiller Controls | 10d | 2027-01-19 | 2027-02-01 | DH.1500B-EQP-105 SS+4d | 39.88d | 0d | 1486 | DH1500 | GR |  |  |
| DH.1500B-EQP-93 |  | Gallery 1503 - F150/Line-Ups // Condensate connections to Floor Drains | 10d | 2027-01-20 | 2027-02-02 | DH.1500B-EQP-92 SS+5d | 32.88d | 0d | 1477 | DH1500 | GR |  |  |
| DH.1500B-EQP-102 |  | Gallery 1503 - F150/Line-Ups // Condensate connections to Floor Drains | 10d | 2027-01-27 | 2027-02-09 | DH.1500B-EQP-99 SS+5d, DH.1500B-EQP-93 SS+5d | 32.88d | 0d | 1490 | DH1500 | GR |  |  |
| DH.1500B-EQP-108 |  | Gallery 1503 - F150/Line-Ups // Electrical Gear FOD Inspection Pre-Start Up | 2d | 2027-02-02 | 2027-02-03 | DH.1500B-EQP-104, DH.1500B-EQP-107 | 39.88d | 67d | 1487 | DH1500 | GR | HELIX | QC |
| DH.1500B-EQP-106 |  | Gallery 1503 - F150/Line-Ups // Mechanical Gear FOD Inspection Pre-Start Up | 3d | 2027-02-10 | 2027-02-12 | DH.1500B-EQP-102, DH.1500B-EQP-93, DH.1500B-EQP-99, DH.1500B-EQP-92 | 32.88d | 60d | 1488 | DH1500 | GR |  |  |

| ID | WBS | Activity | Duration | Start | Finish | Predecessors | Total float | Free float | MSP Activity ID | QTS - AREA | QTS - DASH | QTS - Subcontractor | QTS - Resp |
| --- | --- | --- | --- | --- | --- | --- | --- | --- | --- | --- | --- | --- | --- |
|  | 7 | **G150** |  | 2027-01-06 | 2027-02-16 |  |  |  |  |  |  |  |  |
| DH.1500B-EQP-109 |  | Gallery 1503 - G150/Line-Ups // Set CRAH-DH1500-35 | 1d | 2027-01-06 | 2027-01-06 | DH.1500B-EQP-94 | -11.12d | 0d | 1474 | DH1500 | GR |  |  |
| DH.1500B-EQP-112 |  | Gallery 1503 - G150/Line-Ups // Set CRAH-DH1500-36 | 1d | 2027-01-06 | 2027-01-06 | DH.1500B-EQP-109 SS, DH.1500B-EQP-109 FF | -11.12d | 0d | 1475 | DH1500 | GR |  |  |
| DH.1500B-EQP-118 |  | Gallery 1503 - G150/Line-Ups // Mount Electrial Gear for Chiller Controls | 10d | 2027-01-07 | 2027-01-21 | DH.1500B-EQP-112 | 38.88d | 0d | 1484 | DH1500 | GR | HELIX | AC |
| DH.1500B-EQP-122 |  | Gallery 1503 - G150/Line-Ups // Terminate CRAHU Electrical Connections | 5d | 2027-01-07 | 2027-01-13 | DH.1500B-EQP-109 | 51.88d | 13d | 1483 | DH1500 | GR | HELIX | OO |
| DH.1500B-EQP-211 |  | Gallery 1503 - G150/Line-Ups // Set CDU-DH1500-35 | 1d | 2027-01-07 | 2027-01-07 | DH.1500B-EQP-112 | 41.88d | 3d | 1478 | DH1500 | GR |  |  |
| DH.1500B-EQP-212 |  | Gallery 1503 - G150/Line-Ups // Set CDU-DH1500-36 | 1d | 2027-01-07 | 2027-01-07 | DH.1500B-EQP-112 | 41.88d | 3d | 1478 | DH1500 | GR |  |  |
| DH.1500B-EQP-110 |  | Gallery 1503 - G150/Line-Ups // Connect CRAH units | 10d | 2027-01-13 | 2027-01-27 | DH.1500B-EQP-109 SS+5d, DH.1500B-EQP-112 | 31.88d | 0d | 1476 | DH1500 | GR |  |  |
| DH.1500B-EQP-117 |  | Gallery 1503 - G150/Line-Ups // Mechanical Connections to CRAHU Units | 10d | 2027-01-13 | 2027-01-27 | DH.1500B-EQP-112 SS+5d | 36.88d | 5d | 1489 | DH1500 | GR |  |  |
| DH.1500B-EQP-123 |  | Gallery 1503 - G150/Line-Ups // Pull Feeder and Branch circuits to MIsc equipment and Chiller controls | 10d | 2027-01-13 | 2027-01-27 | DH.1500B-EQP-212, DH.1500B-EQP-211, DH.1500B-EQP-118 SS+4d | 38.88d | 0d | 1485 | DH1500 | GR | HELIX | AC |
| DH.1500B-EQP-125 |  | Gallery 1503 - G150/Line-Ups // Teminate all Misc Equipment and Chiller Controls | 10d | 2027-01-20 | 2027-02-02 | DH.1500B-EQP-123 SS+4d | 38.88d | 0d | 1486 | DH1500 | GR |  |  |
| DH.1500B-EQP-111 |  | Gallery 1503 - G150/Line-Ups // Condensate connections to Floor Drains | 10d | 2027-01-21 | 2027-02-03 | DH.1500B-EQP-110 SS+5d | 31.88d | 0d | 1477 | DH1500 | GR |  |  |
| DH.1500B-EQP-120 |  | Gallery 1503 - G150/Line-Ups // Condensate connections to Floor Drains | 10d | 2027-01-28 | 2027-02-10 | DH.1500B-EQP-117 SS+5d, DH.1500B-EQP-111 SS+5d | 31.88d | 0d | 1490 | DH1500 | GR |  |  |
| DH.1500B-EQP-126 |  | Gallery 1503 - G150/Line-Ups // Electrical Gear FOD Inspection Pre-Start Up | 2d | 2027-02-03 | 2027-02-04 | DH.1500B-EQP-122, DH.1500B-EQP-125 | 38.88d | 66d | 1487 | DH1500 | GR | HELIX | QC |
| DH.1500B-EQP-124 |  | Gallery 1503 - G150/Line-Ups // Mechanical Gear FOD Inspection Pre-Start Up | 3d | 2027-02-11 | 2027-02-16 | DH.1500B-EQP-120, DH.1500B-EQP-111, DH.1500B-EQP-117, DH.1500B-EQP-110 | 31.88d | 59d | 1488 | DH1500 | GR |  |  |
|  | 8 | **H150** |  | 2027-01-06 | 2027-02-16 |  |  |  |  |  |  |  |  |
| DH.1500B-EQP-127 |  | Gallery 1503 - H150/Line-Ups // Set CRAH-DH1500-37 | 1d | 2027-01-06 | 2027-01-06 | DH.1500B-EQP-112 SS | -11.12d | 0d | 1474 | DH1500 | GR |  |  |
| DH.1500B-EQP-130 |  | Gallery 1503 - H150/Line-Ups // Set CRAH-DH1500-38 | 1d | 2027-01-06 | 2027-01-06 | DH.1500B-EQP-127 SS, DH.1500B-EQP-127 FF | -11.12d | 0d | 1475 | DH1500 | GR |  |  |
| DH.1500B-EQP-136 |  | Gallery 1503 - H150/Line-Ups // Mount Electrial Gear for Chiller Controls | 10d | 2027-01-07 | 2027-01-21 | DH.1500B-EQP-130 | 38.88d | 0d | 1484 | DH1500 | GR | HELIX | AC |
| DH.1500B-EQP-140 |  | Gallery 1503 - H150/Line-Ups // Terminate CRAHU Electrical Connections | 5d | 2027-01-07 | 2027-01-13 | DH.1500B-EQP-127 | 51.88d | 13d | 1483 | DH1500 | GR | HELIX | OO |
| DH.1500B-EQP-213 |  | Gallery 1503 - H150/Line-Ups // Set CDU-DH1500-37 | 1d | 2027-01-07 | 2027-01-07 | DH.1500B-EQP-130 | 41.88d | 3d | 1478 | DH1500 | GR |  |  |
| DH.1500B-EQP-214 |  | Gallery 1503 - H150/Line-Ups // Set CDU-DH1500-38 | 1d | 2027-01-07 | 2027-01-07 | DH.1500B-EQP-130 | 41.88d | 3d | 1478 | DH1500 | GR |  |  |
| DH.1500B-EQP-128 |  | Gallery 1503 - H150/Line-Ups // Connect CRAH units | 10d | 2027-01-13 | 2027-01-27 | DH.1500B-EQP-127 SS+5d, DH.1500B-EQP-130 | 31.88d | 0d | 1476 | DH1500 | GR |  |  |
| DH.1500B-EQP-135 |  | Gallery 1503 - H150/Line-Ups // Mechanical Connections to CRAHU Units | 10d | 2027-01-13 | 2027-01-27 | DH.1500B-EQP-130 SS+5d | 36.88d | 5d | 1489 | DH1500 | GR |  |  |
| DH.1500B-EQP-141 |  | Gallery 1503 - H150/Line-Ups // Pull Feeder and Branch circuits to MIsc equipment and Chiller controls | 10d | 2027-01-13 | 2027-01-27 | DH.1500B-EQP-213, DH.1500B-EQP-214, DH.1500B-EQP-136 SS+4d | 38.88d | 0d | 1485 | DH1500 | GR | HELIX | AC |
| DH.1500B-EQP-143 |  | Gallery 1503 - H150/Line-Ups // Teminate all Misc Equipment and Chiller Controls | 10d | 2027-01-20 | 2027-02-02 | DH.1500B-EQP-141 SS+4d | 38.88d | 0d | 1486 | DH1500 | GR |  |  |
| DH.1500B-EQP-129 |  | Gallery 1503 - H150/Line-Ups // Condensate connections to Floor Drains | 10d | 2027-01-21 | 2027-02-03 | DH.1500B-EQP-128 SS+5d | 31.88d | 0d | 1477 | DH1500 | GR |  |  |
| DH.1500B-EQP-138 |  | Gallery 1503 - H150/Line-Ups // Condensate connections to Floor Drains | 10d | 2027-01-28 | 2027-02-10 | DH.1500B-EQP-135 SS+5d, DH.1500B-EQP-129 SS+5d | 31.88d | 0d | 1490 | DH1500 | GR |  |  |
| DH.1500B-EQP-144 |  | Gallery 1503 - H150/Line-Ups // Electrical Gear FOD Inspection Pre-Start Up | 2d | 2027-02-03 | 2027-02-04 | DH.1500B-EQP-140, DH.1500B-EQP-143 | 38.88d | 66d | 1487 | DH1500 | GR | HELIX | QC |
| DH.1500B-EQP-142 |  | Gallery 1503 - H150/Line-Ups // Mechanical Gear FOD Inspection Pre-Start Up | 3d | 2027-02-11 | 2027-02-16 | DH.1500B-EQP-138, DH.1500B-EQP-129, DH.1500B-EQP-135, DH.1500B-EQP-128 | 31.88d | 59d | 1488 | DH1500 | GR |  |  |

| ID | WBS | Activity | Duration | Start | Finish | Predecessors | Total float | Free float | MSP Activity ID | QTS - AREA | QTS - DASH | QTS - Subcontractor | QTS - Resp |
| --- | --- | --- | --- | --- | --- | --- | --- | --- | --- | --- | --- | --- | --- |
|  | 9 | **J150** |  | 2027-01-06 | 2027-02-16 |  |  |  |  |  |  |  |  |
| DH.1500B-EQP-145 |  | Gallery 1503 - J150/Line-Ups // Set CRAH-DH1500-39 | 1d | 2027-01-06 | 2027-01-06 | DH.1500B-EQP-130 SS | -11.12d | 0d | 1474 | DH1500 | GR |  |  |
| DH.1500B-EQP-148 |  | Gallery 1503 - J150/Line-Ups // Set CRAH-DH1500-40 | 1d | 2027-01-06 | 2027-01-06 | DH.1500B-EQP-145 SS, DH.1500B-EQP-145 FF | -11.12d | 0d | 1475 | DH1500 | GR |  |  |
| DH.1500B-EQP-154 |  | Gallery 1503 - J150/Line-Ups // Mount Electrial Gear for Chiller Controls | 10d | 2027-01-07 | 2027-01-21 | DH.1500B-EQP-148 | 38.88d | 0d | 1484 | DH1500 | GR | HELIX | AC |
| DH.1500B-EQP-158 |  | Gallery 1503 - J150/Line-Ups // Terminate CRAHU Electrical Connections | 5d | 2027-01-07 | 2027-01-13 | DH.1500B-EQP-145 | 51.88d | 13d | 1483 | DH1500 | GR | HELIX | OO |
| DH.1500B-EQP-215 |  | Gallery 1503 - J150/Line-Ups // Set CDU-DH1500-39 | 1d | 2027-01-07 | 2027-01-07 | DH.1500B-EQP-148 | 41.88d | 3d | 1478 | DH1500 | GR |  |  |
| DH.1500B-EQP-216 |  | Gallery 1503 - J150/Line-Ups // Set CDU-DH1500-40 | 1d | 2027-01-07 | 2027-01-07 | DH.1500B-EQP-148 | 41.88d | 3d | 1478 | DH1500 | GR |  |  |
| DH.1500B-EQP-146 |  | Gallery 1503 - J150/Line-Ups // Connect CRAH units | 10d | 2027-01-13 | 2027-01-27 | DH.1500B-EQP-145 SS+5d, DH.1500B-EQP-148 | 31.88d | 0d | 1476 | DH1500 | GR |  |  |
| DH.1500B-EQP-153 |  | Gallery 1503 - J150/Line-Ups // Mechanical Connections to CRAHU Units | 10d | 2027-01-13 | 2027-01-27 | DH.1500B-EQP-148 SS+5d | 36.88d | 5d | 1489 | DH1500 | GR |  |  |
| DH.1500B-EQP-159 |  | Gallery 1503 - J150/Line-Ups // Pull Feeder and Branch circuits to MIsc equipment and Chiller controls | 10d | 2027-01-13 | 2027-01-27 | DH.1500B-EQP-216, DH.1500B-EQP-215, DH.1500B-EQP-154 SS+4d | 38.88d | 0d | 1485 | DH1500 | GR | HELIX | AC |
| DH.1500B-EQP-161 |  | Gallery 1503 - J150/Line-Ups // Teminate all Misc Equipment and Chiller Controls | 10d | 2027-01-20 | 2027-02-02 | DH.1500B-EQP-159 SS+4d | 38.88d | 0d | 1486 | DH1500 | GR |  |  |
| DH.1500B-EQP-147 |  | Gallery 1503 - J150/Line-Ups // Condensate connections to Floor Drains | 10d | 2027-01-21 | 2027-02-03 | DH.1500B-EQP-146 SS+5d | 31.88d | 0d | 1477 | DH1500 | GR |  |  |
| DH.1500B-EQP-156 |  | Gallery 1503 - J150/Line-Ups // Condensate connections to Floor Drains | 10d | 2027-01-28 | 2027-02-10 | DH.1500B-EQP-153 SS+5d, DH.1500B-EQP-147 SS+5d | 31.88d | 0d | 1490 | DH1500 | GR |  |  |
| DH.1500B-EQP-162 |  | Gallery 1503 - J150/Line-Ups // Electrical Gear FOD Inspection Pre-Start Up | 2d | 2027-02-03 | 2027-02-04 | DH.1500B-EQP-158, DH.1500B-EQP-161 | 38.88d | 66d | 1487 | DH1500 | GR | HELIX | QC |
| DH.1500B-EQP-160 |  | Gallery 1503 - J150/Line-Ups // Mechanical Gear FOD Inspection Pre-Start Up | 3d | 2027-02-11 | 2027-02-16 | DH.1500B-EQP-156, DH.1500B-EQP-147, DH.1500B-EQP-153, DH.1500B-EQP-146 | 31.88d | 59d | 1488 | DH1500 | GR |  |  |
|  | 10 | **K150** |  | 2027-01-07 | 2027-02-17 |  |  |  |  |  |  |  |  |
| DH.1500B-EQP-163 |  | Gallery 1503 - K150/Line-Ups // Set CRAH-DH1500-41 | 1d | 2027-01-07 | 2027-01-07 | DH.1500B-EQP-148 | -11.12d | 0d | 1474 | DH1500 | GR |  |  |
| DH.1500B-EQP-166 |  | Gallery 1503 - K150/Line-Ups // Set CRAH-DH1500-42 | 1d | 2027-01-07 | 2027-01-07 | DH.1500B-EQP-163 SS, DH.1500B-EQP-163 FF | -11.12d | 0d | 1475 | DH1500 | GR |  |  |
| DH.1500B-EQP-172 |  | Gallery 1503 - K150/Line-Ups // Mount Electrial Gear for Chiller Controls | 10d | 2027-01-08 | 2027-01-22 | DH.1500B-EQP-166 | 37.88d | 0d | 1484 | DH1500 | GR | HELIX | AC |
| DH.1500B-EQP-176 |  | Gallery 1503 - K150/Line-Ups // Terminate CRAHU Electrical Connections | 5d | 2027-01-08 | 2027-01-14 | DH.1500B-EQP-163 | 50.88d | 13d | 1483 | DH1500 | GR | HELIX | OO |
| DH.1500B-EQP-164 |  | Gallery 1503 - K150/Line-Ups // Connect CRAH units | 10d | 2027-01-14 | 2027-01-28 | DH.1500B-EQP-163 SS+5d, DH.1500B-EQP-166 | 30.88d | 0d | 1476 | DH1500 | GR |  |  |
| DH.1500B-EQP-171 |  | Gallery 1503 - K150/Line-Ups // Mechanical Connections to CRAHU Units | 10d | 2027-01-14 | 2027-01-28 | DH.1500B-EQP-166 SS+5d | 35.88d | 5d | 1489 | DH1500 | GR |  |  |
| DH.1500B-EQP-177 |  | Gallery 1503 - K150/Line-Ups // Pull Feeder and Branch circuits to MIsc equipment and Chiller controls | 10d | 2027-01-14 | 2027-01-28 | DH.1500B-EQP-172 SS+4d | 37.88d | 0d | 1485 | DH1500 | GR | HELIX | AC |
| DH.1500B-EQP-179 |  | Gallery 1503 - K150/Line-Ups // Teminate all Misc Equipment and Chiller Controls | 10d | 2027-01-21 | 2027-02-03 | DH.1500B-EQP-177 SS+4d | 37.88d | 0d | 1486 | DH1500 | GR |  |  |
| DH.1500B-EQP-165 |  | Gallery 1503 - K150/Line-Ups // Condensate connections to Floor Drains | 10d | 2027-01-22 | 2027-02-04 | DH.1500B-EQP-164 SS+5d | 30.88d | 0d | 1477 | DH1500 | GR |  |  |
| DH.1500B-EQP-174 |  | Gallery 1503 - K150/Line-Ups // Condensate connections to Floor Drains | 10d | 2027-01-29 | 2027-02-11 | DH.1500B-EQP-171 SS+5d, DH.1500B-EQP-165 SS+5d | 30.88d | 0d | 1490 | DH1500 | GR |  |  |
| DH.1500B-EQP-180 |  | Gallery 1503 - K150/Line-Ups // Electrical Gear FOD Inspection Pre-Start Up | 2d | 2027-02-04 | 2027-02-05 | DH.1500B-EQP-176, DH.1500B-EQP-179 | 37.88d | 65d | 1487 | DH1500 | GR | HELIX | QC |
| DH.1500B-EQP-178 |  | Gallery 1503 - K150/Line-Ups // Mechanical Gear FOD Inspection Pre-Start Up | 3d | 2027-02-12 | 2027-02-17 | DH.1500B-EQP-174, DH.1500B-EQP-165, DH.1500B-EQP-171, DH.1500B-EQP-164 | 30.88d | 58d | 1488 | DH1500 | GR |  |  |

| ID | WBS | Activity | Duration | Start | Finish | Predecessors | Total float | Free float | MSP Activity ID | QTS - AREA | QTS - DASH | QTS - Subcontractor | QTS - Resp | MBTA: Work Type |
| --- | --- | --- | --- | --- | --- | --- | --- | --- | --- | --- | --- | --- | --- | --- |
|  | 11 | **R150** |  | 2027-01-07 | 2027-02-17 |  |  |  |  |  |  |  |  |  |
| DH.1500B-EQP-181 |  | Gallery 1503 - R150/Line-Ups // Set CRAH-DH1500-43 | 1d | 2027-01-07 | 2027-01-07 | DH.1500B-EQP-166 SS | -11.12d | 0d | 1474 | DH1500 | GR |  |  |  |
| DH.1500B-EQP-184 |  | Gallery 1503 - R150/Line-Ups // Set CRAH-DH1500-44 | 1d | 2027-01-07 | 2027-01-07 | DH.1500B-EQP-181 SS, DH.1500B-EQP-181 FF | -7.12d | 0d | 1475 | DH1500 | GR |  |  |  |
| DH.1500B-EQP-190 |  | Gallery 1503 - R150/Line-Ups // Mount Electrial Gear for Chiller Controls | 10d | 2027-01-08 | 2027-01-22 | DH.1500B-EQP-184 | -0.12d | 0d | 1484 | DH1500 | GR | HELIX | AC |  |
| DH.1500B-EQP-194 |  | Gallery 1503 - R150/Line-Ups // Terminate CRAHU Electrical Connections | 5d | 2027-01-08 | 2027-01-14 | DH.1500B-EQP-181 | 8.88d | 5d | 1483 | DH1500 | GR | HELIX | OO |  |
| DH.1500B-EQP-195 |  | Gallery 1503 - R150/Line-Ups // Pull Feeder and Branch circuits to MIsc equipment and Chiller controls | 10d | 2027-01-08 | 2027-01-22 | DH.1500B-EQP-190 SS | -0.12d | 0d | 1485 | DH1500 | GR | HELIX | AC |  |
| DH.1500B-EQP-197 |  | Gallery 1503 - R150/Line-Ups // Teminate all Misc Equipment and Chiller Controls | 10d | 2027-01-08 | 2027-01-22 | DH.1500B-EQP-195 SS | 3.88d | 0d | 1486 | DH1500 | GR |  |  |  |
| DH.1500B-EQP-182 |  | Gallery 1503 - R150/Line-Ups // Connect CRAH units | 10d | 2027-01-14 | 2027-01-28 | DH.1500B-EQP-181 SS+5d, DH.1500B-EQP-184 | -11.12d | 0d | 1476 | DH1500 | GR |  |  |  |
| DH.1500B-EQP-189 |  | Gallery 1503 - R150/Line-Ups // Mechanical Connections to CRAHU Units | 10d | 2027-01-14 | 2027-01-28 | DH.1500B-EQP-184 SS+5d | -6.12d | 5d | 1489 | DH1500 | GR |  |  |  |
| DH.1500B-EQP-183 |  | Gallery 1503 - R150/Line-Ups // Condensate connections to Floor Drains | 10d | 2027-01-22 | 2027-02-04 | DH.1500B-EQP-182 SS+5d | -11.12d | 0d | 1477 | DH1500 | GR |  |  |  |
| DH.1500B-EQP-198 |  | Gallery 1503 - R150/Line-Ups // Electrical Gear FOD Inspection Pre-Start Up | 2d | 2027-01-25 | 2027-01-26 | DH.1500B-EQP-194, DH.1500B-EQP-197 | 3.88d | 36d | 1487 | DH1500 | GR | HELIX | QC |  |
| DH.1500B-EQP-192 |  | Gallery 1503 - R150/Line-Ups // Condensate connections to Floor Drains | 10d | 2027-01-29 | 2027-02-11 | DH.1500B-EQP-189 SS+5d, DH.1500B-EQP-183 SS+5d | -11.12d | 0d | 1490 | DH1500 | GR |  |  |  |
| DH.1500B-EQP-196 |  | Gallery 1503 - R150/Line-Ups // Mechanical Gear FOD Inspection Pre-Start Up | 3d | 2027-02-12 | 2027-02-17 | DH.1500B-EQP-192, DH.1500B-EQP-183, DH.1500B-EQP-189, DH.1500B-EQP-182 | -11.12d | 21d | 1488 | DH1500 | GR |  |  |  |
|  | 12 | **Equipment Connections** |  | 2027-01-08 | 2027-02-01 |  |  |  |  |  |  |  |  |  |
|  | 1 | **CRAH** |  | 2027-01-08 | 2027-01-20 |  |  |  |  |  |  |  |  |  |
| DH1500-004 |  | Gallery 1503 // DH 1500 / Elec Room // CRAH Duct Work Termination | 2d | 2027-01-08 | 2027-01-11 | DH.1500B-EQP-184 | 7.88d | 0d | 7037 | DH1500 | GR |  |  | Con/Install |
| DH1500-003 |  | Gallery 1503 // DH 1500 / Elec Room // CRAH Chilled Water | 2d | 2027-01-12 | 2027-01-13 | DH1500-004 | 7.88d | 0d | 7035 | DH1500 | GR |  |  | Con/Install |
| DH1500-001 |  | Gallery 1503 // DH 1500 / Elec Room // CRAH Power Connections | 2d | 2027-01-14 | 2027-01-15 | DH1500-003 | 7.88d | 0d | 7034 | DH1500 | GR | HELIX | OO | Con/Install |
| DH1500-002 |  | Gallery 1503 // DH 1500 / Elec Room // CRAH LV Connections | 2d | 2027-01-19 | 2027-01-20 | DH1500-001 | 7.88d | 40d | 7036 | DH1500 | GR |  |  | Con/Install |
|  | 2 | **CDU** |  | 2027-01-25 | 2027-02-01 |  |  |  |  |  |  |  |  |  |
| DH1500-007 |  | Gallery 1503 // DH 1500 / Elec Room // CDU Chilled Water Connections | 2d | 2027-01-25 | 2027-01-26 | DH.1500B-EQP-195 | -0.12d | 0d | 7040 | DH1500 | GR |  |  | Con/Install |
| DH1500-005 |  | Gallery 1503 // DH 1500 /Elec Room // CDU Power Connections | 2d | 2027-01-27 | 2027-01-28 | DH1500-007 | -0.12d | 0d | 7039 | DH1500 | GR | HELIX | OO | Con/Install |
| DH1500-006 |  | Gallery 1503 // DH 1500 / Elec Room // CDU Controls Connections | 2d | 2027-01-29 | 2027-02-01 | DH1500-005 | -0.12d | 32d | 7041 | DH1500 | GR |  |  | Con/Install |
|  | 3 | **MOD** |  | 2027-01-21 | 2027-01-26 |  |  |  |  |  |  |  |  |  |
| DH1500-008 |  | Gallery 1503 // DH 1500 / Elec Room // MOD Power Connections | 2d | 2027-01-21 | 2027-01-22 | DH.1500B-EQP-195 FF | 3.88d | 0d | 7043 | DH1500 | GR | HELIX | OO | Con/Install |
| DH1500-009 |  | Gallery 1503 // DH 1500 / Elec Room // MOD LV Connections | 2d | 2027-01-25 | 2027-01-26 | DH1500-008 | 3.88d | 36d | 7044 | DH1500 | GR | HELIX | OO | Con/Install |

| ID | WBS | Activity | Type | Duration | Start | Finish | Predecessors | Complete | Planned start | Planned finish | Total float | Free float | MSP Activity ID | QTS - AREA | 05 -SUFFOLK - Building Phase | QTS - DASH | QTS - Subcontractor | QTS - Resp |
| --- | --- | --- | --- | --- | --- | --- | --- | --- | --- | --- | --- | --- | --- | --- | --- | --- | --- | --- |
|  | 6 | **Corridors** |  |  | 2026-10-05 | 2026-12-18 |  |  |  |  |  |  |  |  |  |  |  |  |
|  | 1 | **Corridor 1000A (No apply)** |  |  |  |  |  |  |  |  |  |  |  |  |  |  |  |  |
|  | 3 | **Corridor 1000** |  |  | 2026-10-05 | 2026-12-15 |  |  |  |  |  |  |  |  |  |  |  |  |
| DH.150012078 |  | DH 1500/Corridor 1000 // Seal concrete |  | 1d | 2026-10-05 A | 2026-10-05 A | DH.1500660 | 100% | 2026-10-06 | 2026-10-06 |  |  | 1494 | DH1500 | 2 | COR |  |  |
| DH.150012071 |  | DH 1500/Corridor 1000 // MEPF high overhead install |  | 3d | 2026-10-14 | 2026-10-16 | DH.150012078 |  |  |  | 30.88d | 0d | 1497 | DH1500 | 2 | COR | HELIX | ALOO |
| B120001.3215 |  | DH 1500/Corridor 1000 // Install Overhead Cable Ladder / 36" Cable Tray - TFO |  | 5d | 2026-10-19 | 2026-10-23 | DH.150012071 |  |  |  | 30.88d | 0d | 1181 |  |  | COR |  |  |
| B120001.3216 |  | DH 1500/Corridor 1000 // Install Overhead HAC - TFO |  | 5d | 2026-10-26 | 2026-10-30 | B120001.3215 |  |  |  | 30.88d | 0d | 1181 |  |  | COR |  |  |
| DH.150012069 |  | DH 1500/Corridor 1000 // Frame walls |  | 3d | 2026-10-29 | 2026-11-02 | DH.1500700 |  |  |  | 27.88d | 0d | 1499 | DH1500 | 2 | COR |  |  |
| DH.150012068 |  | DH 1500/Corridor 1000 // MEPF Overhead Hangers |  | 5d | 2026-11-02 | 2026-11-06 | B120001.3216, DH.150012078 |  |  |  | 30.88d | 0d | 1495 | DH1500 | 2 | COR | HELIX | ALOO |
| DH.150012072 |  | DH 1500/Corridor 1000 // MEP rough in walls |  | 3d | 2026-11-03 | 2026-11-05 | DH.150012069, DH.150012071 |  |  |  | 30.88d | 0d | 1501 | DH1500 | 2 | COR | HELIX | AC |
| DH.150012073 |  | DH 1500/Corridor 1000 // In wall inspection |  | 1d | 2026-11-06 | 2026-11-06 | DH.150012072 |  |  |  | 30.88d | 0d | 1502 | DH1500 | 2 | COR |  |  |
| DH.150012070 |  | DH 1500/Corridor 1000 // Install Top Down Sheetrock |  | 3d | 2026-11-09 | 2026-11-12 | DH.150012073, DH.150012069 SS+3d |  |  |  | 30.88d | 0d | 1498 | DH1500 |  | COR |  |  |
| DH.150012074 |  | DH 1500/Corridor 1000 // Install Balance of Sheetrock on Walls |  | 5d | 2026-11-09 | 2026-11-16 | DH.150012071, DH.150012070 SS, DH.150012068 |  |  |  | 30.88d | 0d | 1503 | DH1500 | 2 | COR |  |  |
| DH.150012075 |  | DH 1500/Corridor 1000 // Tape and finish walls |  | 8d | 2026-11-17 | 2026-11-27 | DH.150012074 |  |  |  | 30.88d | 0d | 1504 | DH1500 | 2 | COR |  |  |
| DH.150012076 |  | DH 1500/Corridor 1000 // Install wall door frames |  | 3d | 2026-11-30 | 2026-12-02 | DH.150012069 SS+1d, DH.150012075 |  |  |  | 30.88d | 0d | 1500 | DH1500 | 2 | COR |  |  |
| DH.150012077 |  | DH 1500/Corridor 1000 // Prime and Paint first coat walls |  | 3d | 2026-11-30 | 2026-12-02 | DH.150012075 |  |  |  | 30.88d | 0d | 1493 | DH1500 | 2 | COR |  |  |
| DH.150012079 |  | DH 1500/Corridor 1000 // Install lights and exit signs |  | 3d | 2026-12-03 | 2026-12-07 | DH.150012077, DH.150012076 |  |  |  | 30.88d | 0d | 1492 | DH1500 | 2 | COR | HELIX | AC |
| DH.150012080 |  | DH 1500/Corridor 1000 // Final Coat Paint & Touchup Walls |  | 4d | 2026-12-08 | 2026-12-11 | DH.150012079 |  |  |  | 30.88d | 0d | 1506 | DH1500 | 2 | COR |  |  |
| DH.150012081 |  | DH 1500/Corridor 1000 // Install MEP Devices and Trim |  | 2d | 2026-12-14 | 2026-12-15 | DH.150012080 |  |  |  | 30.88d | 0d | 1505 | DH1500 | 2 | COR | HELIX | AC |
| DH.160012160 |  | DH 1500/Corridor 1000 // Ready to Receive Equipment | milestone | 0d | 2026-12-15 | 2026-12-15 | DH.150012081 FF |  |  |  | 30.88d | 63d | 1505 | DH1500 | 2 | COR | HELIX | TBD |
|  | 2 | **Corridor 1000F** |  |  | 2026-10-05 | 2026-12-18 |  |  |  |  |  |  |  |  |  |  |  |  |
| DH.150012092 |  | DH 1500/Corridor 1000F // Seal concrete |  | 1d | 2026-10-05 A | 2026-10-05 A | DH.150012078 | 100% | 2026-10-07 | 2026-10-07 |  |  | 1494 | DH1500 | 2 | COR |  |  |
| DH.150012085 |  | DH 1500/Corridor 1000F // MEPF high overhead install |  | 3d | 2026-10-14 | 2026-10-16 | DH.150012092 |  |  |  | 13.88d | 0d | 1497 | DH1500 | 2 | COR | HELIX | ALOO |
| B120001.3217 |  | DH 1500/Corridor 1000F // Install Overhead Cable Ladder / 36" Cable Tray - TFO |  | 5d | 2026-10-19 | 2026-10-23 | DH.150012085 |  |  |  | 13.88d | 0d | 1181 |  |  | COR |  |  |
| B120001.3218 |  | DH 1500/Corridor 1000F // Install Overhead HAC - TFO |  | 5d | 2026-10-26 | 2026-10-30 | B120001.3217 |  |  |  | 13.88d | 0d | 1181 |  |  | COR |  |  |
| DH.150012082 |  | DH 1500/Corridor 1000F // MEPF Overhead Hangers |  | 5d | 2026-11-02 | 2026-11-06 | B120001.3218, DH.150012092 |  |  |  | 13.88d | 0d | 1495 | DH1500 | 2 | COR | HELIX | ALOO |
| DH.150012083 |  | DH 1500/Corridor 1000F // Frame walls |  | 3d | 2026-11-03 | 2026-11-05 | DH.150012069 |  |  |  | 27.88d | 0d | 1499 | DH1500 | 2 | COR |  |  |
| DH.150012086 |  | DH 1500/Corridor 1000F // MEP rough in walls |  | 3d | 2026-11-06 | 2026-11-10 | DH.150012083, DH.150012085 |  |  |  | 27.88d | 0d | 1501 | DH1500 | 2 | COR | HELIX | AC |
| DH.150012087 |  | DH 1500/Corridor 1000F // In wall inspection |  | 1d | 2026-11-12 | 2026-11-12 | DH.150012086 |  |  |  | 27.88d | 0d | 1502 | DH1500 | 2 | COR |  |  |
| DH.150012084 |  | DH 1500/Corridor 1000F // Install Top Down Sheetrock |  | 3d | 2026-11-13 | 2026-11-17 | DH.150012087, DH.150012083 SS+3d |  |  |  | 27.88d | 0d | 1498 | DH1500 |  | COR |  |  |
| DH.150012088 |  | DH 1500/Corridor 1000F // Install Balance of Sheetrock on Walls |  | 5d | 2026-11-13 | 2026-11-19 | DH.150012084 SS |  |  |  | 27.88d | 0d | 1503 | DH1500 | 2 | COR |  |  |
| DH.150012089 |  | DH 1500/Corridor 1000F // Tape and finish walls |  | 8d | 2026-11-20 | 2026-12-02 | DH.150012088 |  |  |  | 27.88d | 0d | 1504 | DH1500 | 2 | COR |  |  |
| DH.150012090 |  | DH 1500/Corridor 1000F // Install wall door frames |  | 3d | 2026-12-03 | 2026-12-07 | DH.150012083 SS+1d, DH.150012089 |  |  |  | 27.88d | 0d | 1500 | DH1500 | 2 | COR |  |  |
| DH.150012091 |  | DH 1500/Corridor 1000F // Prime and Paint first coat walls |  | 3d | 2026-12-03 | 2026-12-07 | DH.150012089 |  |  |  | 27.88d | 0d | 1493 | DH1500 | 2 | COR |  |  |
| DH.150012093 |  | DH 1500/Corridor 1000F // Install lights and exit signs |  | 3d | 2026-12-08 | 2026-12-10 | DH.150012091, DH.150012090 |  |  |  | 27.88d | 0d | 1492 | DH1500 | 2 | COR | HELIX | AC |
| DH.150012094 |  | DH 1500/Corridor 1000F // Final Coat Paint & Touchup Walls |  | 4d | 2026-12-11 | 2026-12-16 | DH.150012093 |  |  |  | 27.88d | 0d | 1506 | DH1500 | 2 | COR |  |  |
| DH.150012095 |  | DH 1500/Corridor 1000F // Install MEP Devices and Trim |  | 2d | 2026-12-17 | 2026-12-18 | DH.150012094 |  |  |  | 27.88d | 0d | 1505 | DH1500 | 2 | COR | HELIX | AC |
| DH.160012161 |  | DH 1500/Corridor 1000F // Ready to Receive Equipment | milestone | 0d | 2026-12-18 | 2026-12-18 | DH.150012095 FF |  |  |  | 27.88d | 60d | 1505 | DH1500 | 2 | COR | HELIX | TBD |

| ID | WBS | Activity | Type | Duration | Start | Finish | Predecessors | Complete | Planned start | Planned finish | Total float | Free float | MSP Activity ID | QTS - AREA | QTS - DASH | QTS - Subcontractor | QTS - Resp |
| --- | --- | --- | --- | --- | --- | --- | --- | --- | --- | --- | --- | --- | --- | --- | --- | --- | --- |
|  | 10 | **Flex 1000F1** |  |  | 2026-10-05 | 2027-01-19 |  |  |  |  |  |  |  |  |  |  |  |
| DH.1500..1000 |  | DH 1500/Flex 1000F1 // Seal Concrete |  | 2d | 2026-10-05 A | 2026-10-06 A | DH.150012092 | 100% | 2026-10-08 | 2026-10-09 |  |  | 1508 | DH1500 | OR |  |  |
| DH.1500..1010 |  | DH 1500/Flex 1000F1 // MEPF Layout of Overhead Supports |  | 2d | 2026-11-09 | 2026-11-10 | DH.1500..1000, DH.150012082 |  |  |  | 13.88d | 0d | 1509 | DH1500 | OR | HELIX | AC |
| DH.1500..1020 |  | DH 1500/Flex 1000F1 // MEPF Install High Overhead Systems |  | 6d | 2026-11-12 | 2026-11-19 | DH.1500..1010 |  |  |  | 13.88d | 0d | 1510 | DH1500 | OR | HELIX | AC |
| DH.1500..1040 |  | DH 1500/Flex 1000F1 // Frame Walls including Backing |  | 4d | 2026-11-20 | 2026-11-25 | DH.1500..1020, DH.1500..1010 |  |  |  | 13.88d | 0d | 1511 | DH1500 | OR |  |  |
| DH.1500..1060 |  | DH 1500/Flex 1000F1 // MEPF Install Rough Wall |  | 2d | 2026-11-27 | 2026-11-30 | DH.1500..1020, DH.1500..1040 |  |  |  | 13.88d | 0d | 1513 | DH1500 | OR | HELIX | AC |
| DH.1500..1080 |  | DH 1500/Flex 1000F1 // Rough Wall Inspspection (Approval to Close up) |  | 1d | 2026-12-01 | 2026-12-01 | DH.1500..1060 |  |  |  | 13.88d | 0d | 1515 | DH1500 | OR |  |  |
| DH.1500..1070 |  | DH 1500/Flex 1000F1 // Install Top Down Sheet Rock |  | 5d | 2026-12-02 | 2026-12-08 | DH.1500..1080 |  |  |  | 13.88d | 0d | 1514 | DH1500 | OR |  |  |
| DH.1500..1090 |  | DH 1500/Flex 1000F1 // Install Balance of Sheetrock |  | 3d | 2026-12-09 | 2026-12-11 | DH.1500..1070 |  |  |  | 13.88d | 0d | 1516 | DH1500 | OR |  |  |
| DH.1500..1100 |  | DH 1500/Flex 1000F1 // Tape and Finish Walls |  | 6d | 2026-12-14 | 2026-12-21 | DH.1500..1090 |  |  |  | 13.88d | 0d | 1517 | DH1500 | OR |  |  |
| DH.1500..1110 |  | DH 1500/Flex 1000F1 // Prime and First Coat of Paint |  | 2d | 2026-12-22 | 2026-12-23 | DH.1500..1100 |  |  |  | 13.88d | 0d | 1519 | DH1500 | OR |  |  |
| DH.1500..1120 |  | DH 1500/Flex 1000F1 // Install MEPF Overhead Ceiling Rough |  | 3d | 2026-12-24 | 2026-12-29 | DH.1500..1110 |  |  |  | 13.88d | 0d | 1520 | DH1500 | OR | HELIX | AC |
| DH.1500..1130 |  | DH 1500/Flex 1000F1 // Install Lighting, Fire Alarm & Fire Protection |  | 2d | 2026-12-30 | 2026-12-31 | DH.1500..1120 |  |  |  | 13.88d | 0d | 1521 | DH1500 | OR | HELIX | AC |
| DH.1500..1140 |  | DH 1500/Flex 1000F1 // Wall Touch up Final Coat of Paint |  | 3d | 2027-01-04 | 2027-01-06 | DH.1500..1130 |  |  |  | 13.88d | 0d | 1522 | DH1500 | OR |  |  |
| DH.1500..1050 |  | DH 1500/Flex 1000F1 // Install Door Frames |  | 1d | 2027-01-07 | 2027-01-07 | DH.1500..1140, DH.1500..1040 FF |  |  |  | 52.88d | 2d | 1518 | DH1500 | OR |  |  |
| DH.1500..1150 |  | DH 1500/Flex 1000F1 // Install Wall Base, Trim, and Devices |  | 3d | 2027-01-07 | 2027-01-11 | DH.1500..1140 |  |  |  | 13.88d | 0d | 1523 | DH1500 | OR |  |  |
| DH.1500..1161 |  | DH 1500/Flex 1000F1 // Ready to Receive Equipment | milestone | 0d | 2027-01-11 | 2027-01-11 | DH.1500..1150 FF |  |  |  | 13.88d | 0d | 1523 | DH1500 | OR | HELIX | TBD |
| DH.1500..1160 |  | DH 1500/Flex 1000F1 // Suffolk Pre Punch |  | 5d | 2027-01-12 | 2027-01-19 | DH.1500..1161, DH.1500..1050 |  |  |  | 50.88d | 78d | 1524 | DH1500 | OR |  |  |
|  | 11 | **IDF 1000F2 (Missing Activities)** |  |  |  |  |  |  |  |  |  |  |  |  |  |  |  |
|  | 1 | **Loading Dock 1050** |  |  | 2026-10-19 | 2026-12-16 |  |  |  |  |  |  |  |  |  |  |  |
| DH1500.LD.1981 |  | DH 1500 / Loading Dock #1050// Overhead Fire Protection |  | 5d | 2026-10-19 | 2026-10-23 | DH.150012071 |  |  |  | 71.88d | 0d |  |  |  |  |  |
| DH1500.LD.1982 |  | DH 1500 / Loading Dock #1050// Overhead Mechanical Piping |  | 5d | 2026-10-26 | 2026-10-30 | DH1500.LD.1981 |  |  |  | 85.88d | 0d |  |  |  |  |  |
| DH1500.LD.1985 |  | DH 1500 / Loading Dock #1050// In-Wall Electrical Rough |  | 2d | 2026-10-26 | 2026-10-27 | DH1500.LD.1981 |  |  |  | 71.88d | 0d |  |  |  |  |  |
| DH1500.LD.1994 |  | DH 1500 / Loading Dock #1050// Install Fire Sprinkler Heads |  | 5d | 2026-10-26 | 2026-10-30 | DH1500.LD.1981 |  |  |  | 97.88d | 26d |  |  |  |  |  |
| DH1500.LD.1986 |  | DH 1500 / Loading Dock #1050// Top of Wall Fire Stop |  | 2d | 2026-10-28 | 2026-10-29 | DH1500.LD.1985 |  |  |  | 91.88d | 16d |  |  |  |  |  |
| DH1500.LD.1987 |  | DH 1500 / Loading Dock #1050// In-Wall Inspection |  | 1d | 2026-10-28 | 2026-10-28 | DH1500.LD.1985 |  |  |  | 71.88d | 0d |  |  |  |  |  |
| DH1500.LD.1989 |  | DH 1500 / Loading Dock #1050// Hang, Tape, & Finish Drywall |  | 14d | 2026-10-29 | 2026-11-18 | DH1500.LD.1987 |  |  |  | 71.88d | 0d |  |  |  |  |  |
| DH1500.LD.1983 |  | DH 1500 / Loading Dock #1050// OH Electrical Rough |  | 5d | 2026-11-02 | 2026-11-06 | DH1500.LD.1982 |  |  |  | 92.88d | 21d |  |  |  |  |  |
| DH1500.LD.1984 |  | DH 1500 / Loading Dock #1050// Overhead Mechanical Duct |  | 5d | 2026-11-02 | 2026-11-06 | DH1500.LD.1982 |  |  |  | 85.88d | 0d |  |  |  |  |  |
| DH1500.LD.1998 |  | DH 1500 / Loading Dock #1050// Install Dock Levelers |  | 2d | 2026-11-09 | 2026-11-10 | DH1500.LD.1984 |  |  |  | 88.88d | 13d |  |  |  |  |  |
| DH1500.LD.1990 |  | DH 1500 / Loading Dock #1050// Paint Walls |  | 3d | 2026-11-19 | 2026-11-23 | DH1500.LD.1989 |  |  |  | 71.88d | 0d |  |  |  |  |  |
| DH1500.LD.1992 |  | DH 1500 / Loading Dock #1050// Install Fire Alarm |  | 5d | 2026-11-24 | 2026-12-01 | DH1500.LD.1986, DH1500.LD.1984, DH1500.LD.1990 |  |  |  | 75.88d | 0d |  |  |  |  |  |
| DH1500.LD.1995 |  | DH 1500 / Loading Dock #1050// Pull, Test, & Terminate |  | 6d | 2026-11-24 | 2026-12-02 | DH1500.LD.1990 |  |  |  | 71.88d | 0d |  |  |  |  |  |
| DH1500.LD.1999 |  | DH 1500 / Loading Dock #1050// Install Overhead Door - 1050.2 |  | 1d | 2026-12-02 | 2026-12-02 | DH1500.LD.1992, DH1500.LD.1998 |  |  |  | 75.88d | 0d |  |  |  |  |  |
| DH1500.LD.1996 |  | DH 1500 / Loading Dock #1050// Install Overhead Lighting Fixtures |  | 5d | 2026-12-03 | 2026-12-09 | DH1500.LD.1995 |  |  |  | 71.88d | 0d |  |  |  |  |  |
| DH1500.LD.2010 |  | DH 1500 / Loading Dock #1050// Install Overhead Door - 1050.3 |  | 1d | 2026-12-03 | 2026-12-03 | DH1500.LD.1999 |  |  |  | 75.88d | 0d |  |  |  |  |  |
| DH1500.LD.2011 |  | DH 1500 / Loading Dock #1050// Loading Dock Operational |  | 0d | 2026-12-04 | 2026-12-04 | DH1500.LD.2010 |  |  |  | 75.88d | 4d |  |  |  |  |  |
| DH1500.LD.1997 |  | DH 1500 / Loading Dock #1050// Electrical Trim |  | 5d | 2026-12-10 | 2026-12-16 | DH1500.LD.2011, DH1500.LD.1983, DH1500.LD.2010, DH1500.LD.1994, DH1500.LD.1996, DH1500.LD.1990 |  |  |  | 71.88d | 104d |  |  |  |  |  |

| ID | WBS | Activity | Duration | Start | Finish | Predecessors | Complete | Planned start | Planned finish | Total float | Free float | MSP Activity ID | QTS - AREA | 05 -SUFFOLK - Building Phase | QTS - DASH | QTS - Subcontractor | QTS - Resp |
| --- | --- | --- | --- | --- | --- | --- | --- | --- | --- | --- | --- | --- | --- | --- | --- | --- | --- |
|  | 12 | **Preaction 1000F3 (Missing Activities)** |  |  |  |  |  |  |  |  |  |  |  |  |  |  |  |
|  | 13 | **Restroom-Dock & Janitor** |  | 2026-09-29 | 2026-12-28 |  |  |  |  |  |  |  |  |  |  |  |  |
| DH.1500000 |  | DH 1500/Restroom-Dock & Janitor // Seal concrete | 5d | 2026-09-29 A | 2026-10-05 A | DH.1500..1000 | 100% | 2026-10-13 | 2026-10-19 |  |  | 1560 | DH1500 | 2 | OR |  |  |
| DH.1500010 |  | DH 1500/Restroom-Dock & Janitor // MEPF overhead layout | 5d | 2026-10-14 | 2026-10-20 | DH.1500000 |  |  |  | 22.88d | 0d | 1561 | DH1500 | 2 | OR | HELIX | AC |
| DH.1500020 |  | DH 1500/Restroom-Dock & Janitor // Layout walls | 5d | 2026-10-21 | 2026-10-27 | DH.1500010 |  |  |  | 22.88d | 0d | 1562 | DH1500 | 2 | OR |  |  |
| DH.1500030 |  | DH 1500/Restroom-Dock & Janitor // Frame walls | 5d | 2026-10-28 | 2026-11-03 | DH.1500020 |  |  |  | 22.88d | 0d | 1565 | DH1500 | 2 | OR |  |  |
| DH.1500040 |  | DH 1500/Restroom-Dock & Janitor // Install wall door frames | 3d | 2026-10-29 | 2026-11-02 | DH.1500030 SS+1d |  |  |  | 22.88d | 0d | 1566 | DH1500 | 2 | OR |  |  |
| DH.1500060 |  | DH 1500/Restroom-Dock & Janitor // MEP rough in walls | 3d | 2026-11-03 | 2026-11-05 | DH.1500040 |  |  |  | 22.88d | 0d | 1567 | DH1500 | 2 | OR | HELIX | AC |
| DH.1500070 |  | DH 1500/Restroom-Dock & Janitor // In wall inspection | 1d | 2026-11-06 | 2026-11-06 | DH.1500060 |  |  |  | 22.88d | 0d | 1568 | DH1500 | 2 | OR |  |  |
| DH.1500050 |  | DH 1500/Restroom-Dock & Janitor // Install Top Down Sheetrock | 5d | 2026-11-09 | 2026-11-16 | DH.1500070, DH.1500030 SS+3d |  |  |  | 22.88d | 0d | 1564 | DH1500 |  | OR |  |  |
| DH.1500080 |  | DH 1500/Restroom-Dock & Janitor // MEPF high overhead install | 3d | 2026-11-17 | 2026-11-19 | DH.1500050 |  |  |  | 22.88d | 0d | 1563 | DH1500 | 2 | OR | HELIX | AC |
| DH.1500090 |  | DH 1500/Restroom-Dock & Janitor // Install Balance of Sheetrock on Walls | 5d | 2026-11-20 | 2026-11-27 | DH.1500080, DH.1500050 SS |  |  |  | 22.88d | 0d | 1569 | DH1500 | 2 | OR |  |  |
| DH.1500100 |  | DH 1500/Restroom-Dock & Janitor // Tape and finish walls | 8d | 2026-11-30 | 2026-12-09 | DH.1500090 |  |  |  | 22.88d | 0d | 1570 | DH1500 | 2 | OR |  |  |
| DH.1500110 |  | DH 1500/Restroom-Dock & Janitor // Prime and Paint first coat walls | 3d | 2026-12-10 | 2026-12-14 | DH.1500100 |  |  |  | 22.88d | 0d | 1559 | DH1500 | 2 | OR |  |  |
| DH.1500120 |  | DH 1500/Restroom-Dock & Janitor // Install lights and exit signs | 3d | 2026-12-15 | 2026-12-17 | DH.1500110 |  |  |  | 22.88d | 0d | 1558 | DH1500 | 2 | OR | HELIX | AC |
| DH.1500130 |  | DH 1500/Restroom-Dock & Janitor // Final Coat Paint & Touchup Walls | 4d | 2026-12-18 | 2026-12-23 | DH.1500120 |  |  |  | 22.88d | 0d | 1572 | DH1500 | 2 | OR |  |  |
| DH.1500140 |  | DH 1500/Restroom-Dock & Janitor // Install MEP Devices and Trim | 2d | 2026-12-24 | 2026-12-28 | DH.1500130 |  |  |  | 22.88d | 55d | 1571 | DH1500 | 2 | OR | HELIX | AC |
|  | 5 | **1500 Energization, Start-up & Commissioning** |  | 2027-03-19 | 2027-06-24 |  |  |  |  |  |  |  |  |  |  |  |  |
|  | 1 | **Energization & L3 Prefunctional Testing** |  | 2027-03-19 | 2027-05-18 |  |  |  |  |  |  |  |  |  |  |  |  |
| DH1500.L3CX.99 |  | DH1500 L3 Start | 0d | 2027-03-19 | 2027-03-19 | DH.1500140, DH.1500..1161, DH.160012161, DH.150012095, DH.160012160, DH.150012081, DH1500-009, DH1500-006, DH1500-002, DH.1500B-EQP-196, DH.1500B-EQP-198, DH.160012158, DH1500.MG.A110.8692, DH1500.MG.A110.8689, DH1500.MG.A110.8685, DH.1500A-EQP-218, DH.1500A-EQP-220, DH.1500A-EQP-215, DH.160012157, DH.15000.1712, DH.15000.1110, DH.160012156, DH.1500.3055, DH.1500.3056, DH.1500.3054, DH.1500.3053, DH.1500.3040, DH.1400.3071, DH.1400.3065, DH.1300.3066, DH.1500.1330, DH.1500.1310, DH.1500.1240, DH.1500.1300, ER.5101.3108, DH.1500.1180, DH.1400.3037, DH.1300.3040, DH.1500.3057 |  |  |  | -32.12d | 0d |  | DH1500 |  |  | HELIX |  |
| DH1500.L3CX.BMS.41 |  | DH1500 L3 PTPs & SOOs – BMS | 40d | 2027-03-19 | 2027-05-13 | DH1500.L3CX.ELEC.123 SS |  |  |  | -32.12d | 0d |  | DH1500 |  |  |  |  |
| DH1500.L3CX.ELEC.123 |  | DH1500 L3 FTEs | 5d | 2027-03-19 | 2027-03-25 | DH1500.L3CX.99 SS |  |  |  | -32.12d | 0d |  | DH1500 |  |  |  |  |
| DH1500.L3CX.MECH.123 |  | DH1500 L3 Startup / Pre-Functional – MECHANICAL | 20d | 2027-03-24 | 2027-04-20 | DH1500.L3CX.ELEC.123 SS+3d |  |  |  | -25.12d | 7d |  | DH1500 |  |  |  |  |
| DH1500.L3CX.ELEC.113 |  | DH1500 L3 Startup / Pre-Functional – ELECTRICAL | 15d | 2027-03-26 | 2027-04-15 | DH1500.L3CX.ELEC.123 |  |  |  | -20.12d | 12d |  | DH1500 |  |  |  |  |
| DH1500.L3CX.MECH.133 |  | DH1500 L3 TAB (Air, Water and Reports) – MECHANICAL | 10d | 2027-04-30 | 2027-05-13 | DH1500.L3CX.MECH.123, DH1500.L3CX.BMS.41 FF |  |  |  | -32.12d | 0d |  | DH1500 |  |  |  |  |
| DH1500.L3CX.MECH.143 |  | DH1500 L3 FLS – MECHANICAL | 10d | 2027-05-04 | 2027-05-17 | DH1500.L3CX.MECH.133 FF+2d, DH1500.L3CX.MECH.123, DH1500.L3CX.ELEC.113 |  |  |  | -32.12d | 0d |  | DH1500 |  |  |  |  |
| DH1500.L3CX.89 |  | DH1500 L3 Cx Complete | 0d | 2027-05-18 | 2027-05-18 | DH1500.LD.1997 FF, DH1500.L3CX.MECH.133 FF, DH1500.L3CX.MECH.143 FF |  |  |  | -32.12d | 0d |  | DH1500 |  |  |  |  |

| ID | WBS | Activity | Duration | Start | Finish | Predecessors | Complete | Planned start | Planned finish | Total float | Free float | QTS - AREA | QTS - DASH | MSP Activity ID | 12 - SUFFOLK - Export_to_Procore | QTS - Subcontractor | QTS - Resp |
| --- | --- | --- | --- | --- | --- | --- | --- | --- | --- | --- | --- | --- | --- | --- | --- | --- | --- |
|  | 2 | **L4 Function Testing** |  | 2027-04-21 | 2027-05-25 |  |  |  |  |  |  |  |  |  |  |  |  |
| DH1500.L4CX.COMM.170 |  | DH1500 L4 Cx | 25d | 2027-04-21 | 2027-05-25 | DH1500.L3CX.89 FF+6d |  |  |  | -23d | 0d | DH1500 |  |  |  |  |  |
|  | 3 | **L5 Integrated System Testing (IST)** |  | 2027-05-06 | 2027-06-24 |  |  |  |  |  |  |  |  |  |  |  |  |
| DH1500.L5CX.COMM.280 |  | DH1500 L5 Integrated Systems Testing - IST | 20d | 2027-05-06 | 2027-06-03 | DH1500.L4CX.COMM.170 FF+6d |  |  |  | -23d | 0d | DH1500 |  |  |  |  |  |
| DH1500.A2110.CO |  | DH1500– Phase Closeout Period O&M / TRAINING/ CLOSEOUT DOCS | 15d | 2027-06-04 | 2027-06-24 | DH1500.L5CX.COMM.290 |  |  |  | 0d |  | DH1500 | Cx |  |  |  |  |
| DH1500.L5CX.COMM.290 |  | DH1500 – IST / L5 Cx Complete | 0d | 2027-06-04 | 2027-06-04 | DH1500.L5CX.COMM.280 |  |  |  | -23d | 0d | DH1500 |  |  |  |  |  |
|  | 2 | **Commissioning & Start Up** |  |  |  |  |  |  |  |  |  |  |  |  |  |  |  |
|  | 3 | **Data Hall 1200** |  | 2026-05-11 | 2027-02-23 |  |  |  |  |  |  |  |  |  |  |  |  |
|  | 10 | **Exterior Build Out** |  | 2026-05-11 | 2026-11-25 |  |  |  |  |  |  |  |  |  |  |  |  |
|  | 9 | **Electrical Yard** |  | 2026-07-16 | 2026-08-31 |  |  |  |  |  |  |  |  |  |  |  |  |
|  | 3 | **Electrical** |  | 2026-07-16 | 2026-08-31 |  |  |  |  |  |  |  |  |  |  |  |  |
|  | 1 | **Underground** |  | 2026-07-16 | 2026-08-12 |  |  |  |  |  |  |  |  |  |  |  |  |
|  | 1 | **Column Line 2.0-2.9** |  | 2026-07-16 | 2026-08-05 |  |  |  |  |  |  |  |  |  |  |  |  |
| B1200 |  | DH1200/Electrical Yard-Underground // Excavate From MVG-B1-02 to Transformers | 10d | 2026-07-16 A | 2026-07-22 A | A3170, A2920, FDN.1080, A5661 | 100% | 2026-07-24 | 2026-08-06 |  |  | DH1200 | EY | 1048 | Y |  |  |
| B5700 |  | DH1200/Electrical Yard-Underground // Install Raceway from MVG-B1-02 to Transformers | 10d | 2026-07-23 A | 2026-07-29 A | B1200 | 100% | 2026-08-07 | 2026-08-20 |  |  | DH1200 | EY | 1050 | Y | HELIX | D18A |
| B5701 |  | DH1200/Electrical Yard-Underground // Backfill Raceways from MVG-B1-02 to Transformers | 5d | 2026-07-30 A | 2026-08-05 A | B5700 FF, B5700 | 100% | 2026-08-21 | 2026-08-27 |  |  | DH1200 | EY | 1051 | Y | HELIX | D18A |
|  | 2 | **Column Line 2.0 - 2.9** |  | 2026-07-16 | 2026-08-05 |  |  |  |  |  |  |  |  |  |  |  |  |
| B1200373 |  | DH1200/Electrical Yard-Underground // Excavate From MVG-A1-02 to Transformers | 5d | 2026-07-16 A | 2026-07-22 A | B5701, B1200 SS | 100% | 2026-08-28 | 2026-09-03 |  |  | DH1200 | EY | 1048 | Y |  |  |
| B1200374 |  | DH1200/Electrical Yard-Underground // Install Raceway from MVG-A1-02 to Transformers | 5d | 2026-07-23 A | 2026-07-29 A | B1200373 | 100% | 2026-09-04 | 2026-09-11 |  |  | DH1200 | EY | 1050 | Y | HELIX | D18A |
| B1200375 |  | DH1200/Electrical Yard-Underground // Backfill Raceways from MVG-A1-02 to Transformers | 3d | 2026-07-30 A | 2026-08-05 A | B1200374 FF, B1200374 | 100% | 2026-09-14 | 2026-09-16 |  |  | DH1200 | EY | 1051 | Y | HELIX | D18A |
|  | 3 | **Column Line 2.0 - to 2.9 XFMR** |  | 2026-07-21 | 2026-08-12 |  |  |  |  |  |  |  |  |  |  |  |  |
| A5871 |  | DH1200/Electrical Yard-Underground // Excavate A120 - F120 XFMR Pads (A-Side) | 1d | 2026-07-21 A | 2026-07-21 A | PS870 | 100% | 2026-07-24 | 2026-07-24 |  |  | DH1200 |  |  |  |  |  |
| A5872 |  | DH1200/Electrical Yard-Underground // Run Conduit A120 - F120 XFMR Pads (A-Side) | 2d | 2026-07-23 A | 2026-07-24 A | A5871 | 100% | 2026-07-24 | 2026-07-27 |  |  | DH1200 |  |  |  |  |  |
| A5874 |  | DH1200/Electrical Yard-Underground // Excavate G120 - R120 XFMR Pads (A-Side) | 1d | 2026-07-23 A | 2026-07-23 A | A5873 | 100% | 2026-07-24 | 2026-07-24 |  |  | DH1200 |  |  |  |  |  |
| A5875 |  | DH1200/Electrical Yard-Underground // Run Conduit G120 - R120 XFMR Pads (A-Side) | 2d | 2026-07-27 A | 2026-07-28 A | A5874 | 100% | 2026-07-24 | 2026-07-27 |  |  | DH1200 |  |  |  |  |  |
| A5873 |  | DH1200/Electrical Yard-Underground // Backfill A120 - F120 XFMR Pads (A-Side) | 1d | 2026-07-29 A | 2026-07-31 A | A5872 | 100% | 2026-07-24 | 2026-07-24 |  |  | DH1200 |  |  |  |  |  |
| A5876 |  | DH1200/Electrical Yard-Underground // Backfill G120 - R120 XFMR Pads (A-Side) | 1d | 2026-07-31 A | 2026-07-31 A | A5875 | 100% | 2026-07-24 | 2026-07-24 |  |  | DH1200 |  |  |  |  |  |
| PS931 |  | DH1200/Electrical Yard-Underground // Excavate A120 - F120 XFMR Pads (P-Side) | 1d | 2026-08-03 A | 2026-08-03 A | A5876 | 100% | 2026-07-24 | 2026-07-24 |  |  | DH1200 |  |  |  |  |  |
| PS932 |  | DH1200/Electrical Yard-Underground // Run Conduit A120 - F120 XFMR Pads (P-Side) | 2d | 2026-08-04 A | 2026-08-05 A | PS931 | 100% | 2026-07-24 | 2026-07-27 |  |  | DH1200 |  |  |  |  |  |
| PS933 |  | DH1200/Electrical Yard-Underground // Backfill A120 - F120 XFMR Pads (P-Side) | 1d | 2026-08-06 A | 2026-08-06 A | PS932 | 100% | 2026-07-24 | 2026-07-24 |  |  | DH1200 |  |  |  |  |  |
| PS934 |  | DH1200/Electrical Yard-Underground // Excavate G120 - R120 XFMR Pads (P-Side) | 1d | 2026-08-07 A | 2026-08-07 A | PS933 | 100% | 2026-07-24 | 2026-07-24 |  |  | DH1200 |  |  |  |  |  |
| PS935 |  | DH1200/Electrical Yard-Underground // Run Conduit G120 - R120 XFMR Pads (P-Side) | 2d | 2026-08-10 A | 2026-08-11 A | PS934 | 100% | 2026-07-24 | 2026-07-27 |  |  | DH1200 |  |  |  |  |  |
| PS936 |  | DH1200/Electrical Yard-Underground // Backfill G120 - R120 XFMR Pads (P-Side) | 1d | 2026-08-12 A | 2026-08-12 A | PS935 | 100% | 2026-07-24 | 2026-07-24 |  |  | DH1200 |  |  |  |  |  |

| ID | WBS | Activity | Duration | Start | Finish | Predecessors | Complete | Planned start | Planned finish | MSP Activity ID | QTS - AREA | 12 - SUFFOLK - Export_to_Procore | QTS - DASH | QTS - Subcontractor | QTS - Resp |
| --- | --- | --- | --- | --- | --- | --- | --- | --- | --- | --- | --- | --- | --- | --- | --- |
|  | 2 | **Pads** |  | 2026-08-12 | 2026-08-26 |  |  |  |  |  |  |  |  |  |  |
| B120020 |  | DH1200/Electrical Yard-Pads // Excavate / Form / Rebar /-Finish XFMR Pads | 5d | 2026-08-12 A | 2026-08-19 A | B1200375, PS936 | 100% | 2026-08-28 | 2026-09-03 | 1065 | DH1200 | Y | EY |  |  |
| B120000 |  | DH1200/Electrical Yard-Pads // Pad Strip and Cure | 1d | 2026-08-20 A | 2026-08-20 A | B120020 | 100% | 2026-09-04 | 2026-09-04 | 1067 | DH1200 | Y | EY |  |  |
| B120030 |  | DH1200/Electrical Yard-Pads // Pour-Finish Pads (16 Xfmrs) | 5d | 2026-08-20 A | 2026-08-26 A | B120020 | 100% | 2026-09-04 | 2026-09-11 | 1066 | DH1200 | Y | EY |  |  |
|  | 3 | **Equipment** |  | 2026-08-27 | 2026-08-31 |  |  |  |  |  |  |  |  |  |  |
|  | 1 | **A120** |  | 2026-08-27 | 2026-08-27 |  |  |  |  |  |  |  |  |  |  |
| B1200351 |  | DH1200/Electrical Yard // Set XFMR - XFMR-A120a | 1d | 2026-08-27 A | 2026-08-27 A | B120020, B120000, B120030 | 100% | 2026-10-14 | 2026-10-14 | 537 | DH1200 | Y | EY | HELIX | D18A |
| B1200352 |  | DH1200/Electrical Yard // Set XFMR - XFMR-A120p | 1d | 2026-08-27 A | 2026-08-27 A | B1200351 SS | 100% | 2026-10-14 | 2026-10-14 | 537 | DH1200 |  | EY | HELIX | D18A |
|  | 2 | **B120** |  | 2026-08-27 | 2026-08-27 |  |  |  |  |  |  |  |  |  |  |
| B1200353 |  | DH1200/Electrical Yard // Set XFMR - XFMR-B120a | 1d | 2026-08-27 A | 2026-08-27 A | B1200352 SS | 100% | 2026-10-15 | 2026-10-15 | 537 | DH1200 |  | EY | HELIX | D18A |
| B1200354 |  | DH1200/Electrical Yard // Set XFMR - XFMR-B120p | 1d | 2026-08-27 A | 2026-08-27 A | B1200353 SS | 100% | 2026-10-15 | 2026-10-15 | 537 | DH1200 |  | EY | HELIX | D18A |
|  | 3 | **C120** |  | 2026-08-27 | 2026-08-27 |  |  |  |  |  |  |  |  |  |  |
| B1200355 |  | DH1200/Electrical Yard // Set XFMR - XFMR-C120a | 1d | 2026-08-27 A | 2026-08-27 A | B1200354 SS | 100% | 2026-10-16 | 2026-10-16 | 537 | DH1200 |  | EY | HELIX | D18A |
| B1200356 |  | DH1200/Electrical Yard // Set XFMR - XFMR-C120p | 1d | 2026-08-27 A | 2026-08-27 A | B1200355 SS | 100% | 2026-10-16 | 2026-10-16 | 537 | DH1200 |  | EY | HELIX | D18A |
|  | 4 | **D120** |  | 2026-08-27 | 2026-08-27 |  |  |  |  |  |  |  |  |  |  |
| B1200357 |  | DH1200/Electrical Yard // Set XFMR - XFMR-D120a | 1d | 2026-08-27 A | 2026-08-27 A | B1200356 SS | 100% | 2026-10-16 | 2026-10-16 | 537 | DH1200 |  | EY | HELIX | D18A |
| B1200358 |  | DH1200/Electrical Yard // Set XFMR - XFMR-D120p | 1d | 2026-08-27 A | 2026-08-27 A | B1200357 SS | 100% | 2026-10-16 | 2026-10-16 | 537 | DH1200 |  | EY | HELIX | D18A |
|  | 5 | **E120** |  | 2026-08-27 | 2026-08-27 |  |  |  |  |  |  |  |  |  |  |
| B1200359 |  | DH1200/Electrical Yard // Set XFMR - XFMR-E120a | 1d | 2026-08-27 A | 2026-08-27 A | B1200358 SS | 100% | 2026-10-16 | 2026-10-16 | 537 | DH1200 |  | EY | HELIX | D18A |
| B1200360 |  | DH1200/Electrical Yard // Set XFMR - XFMR-E120p | 1d | 2026-08-27 A | 2026-08-27 A | B1200359 | 100% | 2026-10-19 | 2026-10-19 | 537 | DH1200 |  | EY | HELIX | D18A |
|  | 6 | **F120** |  | 2026-08-28 | 2026-08-28 |  |  |  |  |  |  |  |  |  |  |
| B1200361 |  | DH1200/Electrical Yard // Set XFMR - XFMR-F120a | 1d | 2026-08-28 A | 2026-08-28 A | B1200360 | 100% | 2026-10-20 | 2026-10-20 | 537 | DH1200 |  | EY | HELIX | D18A |
| B1200362 |  | DH1200/Electrical Yard // Set XFMR - XFMR-F120p | 1d | 2026-08-28 A | 2026-08-28 A | B1200361 | 100% | 2026-10-21 | 2026-10-21 | 537 | DH1200 |  | EY | HELIX | D18A |
|  | 7 | **G120** |  | 2026-08-28 | 2026-08-28 |  |  |  |  |  |  |  |  |  |  |
| B1200363 |  | DH1200/Electrical Yard // Set XFMR - XFMR-G120a | 1d | 2026-08-28 A | 2026-08-28 A | B1200362 SS | 100% | 2026-10-22 | 2026-10-22 | 537 | DH1200 |  | EY | HELIX | D18A |
| B1200364 |  | DH1200/Electrical Yard // Set XFMR - XFMR-G120p | 1d | 2026-08-28 A | 2026-08-28 A | B1200363 | 100% | 2026-10-23 | 2026-10-23 | 537 | DH1200 |  | EY | HELIX | D18A |

| ID | WBS | Activity | Duration | Start | Finish | Predecessors | Complete | Planned start | Planned finish | Total float | Free float | Constraint | MSP Activity ID | QTS - Subcontractor | QTS - AREA | QTS - Resp | QTS - DASH | 12 - SUFFOLK - Export_to_Procore |
| --- | --- | --- | --- | --- | --- | --- | --- | --- | --- | --- | --- | --- | --- | --- | --- | --- | --- | --- |
|  | 8 | **H120** |  | 2026-08-28 | 2026-08-28 |  |  |  |  |  |  |  |  |  |  |  |  |  |
| B1200365 |  | DH1200/Electrical Yard // Set XFMR - XFMR-H120a | 1d | 2026-08-28 A | 2026-08-28 A | B1200364 SS | 100% | 2026-10-26 | 2026-10-26 |  |  |  | 537 | HELIX | DH1200 | D18A | EY |  |
| B1200366 |  | DH1200/Electrical Yard // Set XFMR - XFMR-H120p | 1d | 2026-08-28 A | 2026-08-28 A | B1200365 | 100% | 2026-10-27 | 2026-10-27 |  |  |  | 537 | HELIX | DH1200 | D18A | EY |  |
|  | 9 | **J120** |  | 2026-08-31 | 2026-08-31 |  |  |  |  |  |  |  |  |  |  |  |  |  |
| B1200367 |  | DH1200/Electrical Yard // Set XFMR - XFMR-J120a | 1d | 2026-08-31 A | 2026-08-31 A | B1200366 | 100% | 2026-10-28 | 2026-10-28 |  |  |  | 537 | HELIX | DH1200 | D18A | EY |  |
| B1200368 |  | DH1200/Electrical Yard // Set XFMR - XFMR-J120p | 1d | 2026-08-31 A | 2026-08-31 A | B1200367 | 100% | 2026-10-29 | 2026-10-29 |  |  |  | 537 | HELIX | DH1200 | D18A | EY |  |
|  | 10 | **K120** |  | 2026-08-31 | 2026-08-31 |  |  |  |  |  |  |  |  |  |  |  |  |  |
| B1200369 |  | DH1200/Electrical Yard // Set XFMR - XFMR-K120a | 1d | 2026-08-31 A | 2026-08-31 A | B1200368 SS | 100% | 2026-10-29 | 2026-10-29 |  |  |  | 537 | HELIX | DH1200 | D18A | EY |  |
| B1200370 |  | DH1200/Electrical Yard // Set XFMR - XFMR-K120p | 1d | 2026-08-31 A | 2026-08-31 A | B1200369 | 100% | 2026-10-30 | 2026-10-30 |  |  |  | 537 | HELIX | DH1200 | D18A | EY |  |
|  | 11 | **R120** |  | 2026-08-31 | 2026-08-31 |  |  |  |  |  |  |  |  |  |  |  |  |  |
| B1200371 |  | DH1200/Electrical Yard // Set XFMR - XFMR-R120a | 1d | 2026-08-31 A | 2026-08-31 A | B1200370 | 100% | 2026-11-02 | 2026-11-02 |  |  |  | 537 | HELIX | DH1200 | D18A | EY |  |
| B1200372 |  | DH1200/Electrical Yard // Set XFMR - XFMR-R120p | 1d | 2026-08-31 A | 2026-08-31 A | B1200371 | 100% | 2026-11-03 | 2026-11-03 |  |  |  | 537 | HELIX | DH1200 | D18A | EY |  |
|  | 1 | **Mechanical Yard** |  | 2026-05-11 | 2026-11-23 |  |  |  |  |  |  |  |  |  |  |  |  |  |
|  | 1 | **Pads** |  | 2026-05-11 | 2026-08-14 |  |  |  |  |  |  |  |  |  |  |  |  |  |
| A5700 |  | DH1200/Mechanical Yard-Pads // Excavate / Form / Rebar / Pour Chiller Pads | 8d | 2026-05-11 A | 2026-05-20 A | A3210, FDN.1080 | 100% |  |  |  |  |  | 1074 |  | DH1200 |  | MY | Y |
| A5702 |  | DH1200/Mechanical Yard-Pads // Excavate / Form / Rebar / Pour Support and TES Pads | 5d | 2026-06-10 A | 2026-06-16 A | A5700 | 100% | 2026-07-24 | 2026-07-30 |  |  |  | 1079 |  | DH1200 |  | MY | Y |
| A5704 |  | DH1200/Mechanical Yard-Pads // Excavate / Form / Rebar / Pour Support and TES Pads (Column Lines 1.3 to 1.6) | 5d | 2026-08-03 A | 2026-08-07 A | A5702, A5700 SS | 100% | 2026-07-31 | 2026-08-06 |  |  |  | 1080 |  | DH1200 |  | MY | Y |
| A5705 |  | DH1200/Mechanical Yard-Pads // Excavate / Form / Rebar / Pour Support and TES Pads (Column Lines 1.6 to 1.9) | 5d | 2026-08-10 A | 2026-08-14 A | A5704 | 100% | 2026-08-07 | 2026-08-13 |  |  |  | 1081 |  | DH1200 |  | MY | Y |
|  | 5 | **Equipment** |  | 2026-08-24 | 2026-10-28 |  |  |  |  |  |  |  |  |  |  |  |  |  |
| A5880 |  | DH1200/Mechanical Yard - OFCI Chiller Delivery Date (10/19/26 through 10/20/26) | 0d | 2026-10-19 | 2026-10-19 | A5700 |  |  |  | 26d | 0d | finish on or after 2026-10-19 |  |  |  |  |  |  |
|  | 1 | **A120** |  | 2026-08-24 | 2026-10-19 |  |  |  |  |  |  |  |  |  |  |  |  |  |
| B12000.12023 |  | DH1200/Mechanical Yard-A120 // Install CHWP | 1d | 2026-08-24 A | 2026-08-24 A | STRUCTURE.6860 | 100% | 2026-08-04 | 2026-08-04 |  |  |  | 1083 |  | DH1200 |  | MY | Y |
| B12000.12024 |  | DH1200/Mechanical Yard-A120 // Install Mechanical Piping Mains (Building -to Line) | 1d | 2026-09-08 A | 2026-09-08 A | B12000.12023 | 100% | 2026-08-05 | 2026-08-05 |  |  |  | 1083 |  | DH1200 |  | MY | Y |
| B12000.12002 |  | DH1200/Mechanical Yard-A120 // Set TES tank - TES-1CY40-A120 | 1d | 2026-10-01 A | 2026-10-08 A | A5702 | 100% | 2026-10-01 | 2026-10-01 |  |  |  | 1083 |  | DH1200 |  | MY | Y |
| B12000.12025 |  | DH1200/Mechanical Yard-A120 // Install Mechanical Chiller to Mains | 1d | 2026-10-14 | 2026-10-14 | B12000.12002, B12000.12024 |  |  |  | 43d | 0d |  | 1083 |  | DH1200 |  | MY | Y |
| B12000.12001 |  | DH1200/Mechanical Yard-A120 // Set Chiller - CHLR-1CY40-A120 | 1d | 2026-10-19 | 2026-10-19 | A5880, STRUCTURE.6860, A5702 |  |  |  | 26d | 0d |  | 1083 |  | DH1200 |  | MY | Y |

| ID | WBS | Activity | Duration | Start | Finish | Predecessors | Complete | Planned start | Planned finish | Total float | Free float | MSP Activity ID | QTS - AREA | 12 - SUFFOLK - Export_to_Procore | QTS - DASH |
| --- | --- | --- | --- | --- | --- | --- | --- | --- | --- | --- | --- | --- | --- | --- | --- |
|  | 2 | **B120** |  | 2026-08-24 | 2026-10-19 |  |  |  |  |  |  |  |  |  |  |
| B12000.12026 |  | DH1200/Mechanical Yard-B120 // Install CHWP | 1d | 2026-08-24 A | 2026-08-24 A | B12000.12023 SS | 100% | 2026-08-05 | 2026-08-05 |  |  | 1083 | DH1200 | Y | MY |
| B12000.12027 |  | DH1200/Mechanical Yard-B120 // Install Mechanical Piping Mains (Building -to Line) | 1d | 2026-09-08 A | 2026-09-08 A | B12000.12026 | 100% | 2026-08-06 | 2026-08-06 |  |  | 1083 | DH1200 | Y | MY |
| B12000.12004 |  | DH1200/Mechanical Yard-B120 // Set TES tank - TES-1CY40-B120 | 1d | 2026-10-02 A | 2026-10-08 A | A5702 | 100% | 2026-10-02 | 2026-10-02 |  |  | 1083 | DH1200 | Y | MY |
| B12000.12028 |  | DH1200/Mechanical Yard-B120 // Install Mechanical Chiller to Mains | 1d | 2026-10-14 | 2026-10-14 | B12000.12004, B12000.12027 |  |  |  | 43d | 0d | 1083 | DH1200 | Y | MY |
| B12000.12003 |  | DH1200/Mechanical Yard-B120 // Set Chiller - CHLR-1CY40-B120 | 1d | 2026-10-19 | 2026-10-19 | A5880, B12000.12001 SS |  |  |  | 26d | 0d | 1083 | DH1200 | Y | MY |
|  | 3 | **C120** |  | 2026-08-24 | 2026-10-19 |  |  |  |  |  |  |  |  |  |  |
| B12000.12029 |  | DH1200/Mechanical Yard-C120 // Install CHWP | 1d | 2026-08-24 A | 2026-08-24 A | B12000.12026 SS | 100% | 2026-08-06 | 2026-08-06 |  |  | 1083 | DH1200 | Y | MY |
| B12000.12030 |  | DH1200/Mechanical Yard-C120 // Install Mechanical Piping Mains (Building -to Line) | 1d | 2026-09-08 A | 2026-09-08 A | B12000.12029 | 100% | 2026-08-07 | 2026-08-07 |  |  | 1083 | DH1200 | Y | MY |
| B12000.12006 |  | DH1200/Mechanical Yard-C120 // Set TES tank - TES-1CY40-C120 | 1d | 2026-10-05 A | 2026-10-08 A | A5702 | 100% | 2026-10-05 | 2026-10-05 |  |  | 1083 | DH1200 | Y | MY |
| B12000.12031 |  | DH1200/Mechanical Yard-C120 // Install Mechanical Chiller to Mains | 1d | 2026-10-14 | 2026-10-14 | B12000.12006, B12000.12030 |  |  |  | 43d | 0d | 1083 | DH1200 | Y | MY |
| B12000.12005 |  | DH1200/Mechanical Yard-C120 // Set Chiller - CHLR-1CY40-C120 | 1d | 2026-10-19 | 2026-10-19 | A5880, B12000.12003 SS |  |  |  | 26d | 0d | 1083 | DH1200 | Y | MY |
|  | 4 | **D120** |  | 2026-08-25 | 2026-10-19 |  |  |  |  |  |  |  |  |  |  |
| B12000.12032 |  | DH1200/Mechanical Yard-D120 // Install CHWP | 1d | 2026-08-25 A | 2026-08-25 A | B12000.12029 | 100% | 2026-08-07 | 2026-08-07 |  |  | 1083 | DH1200 | Y | MY |
| B12000.12033 |  | DH1200/Mechanical Yard-D120 // Install Mechanical Piping Mains (Building -to Line) | 1d | 2026-09-08 A | 2026-09-08 A | B12000.12032 | 100% | 2026-08-10 | 2026-08-10 |  |  | 1083 | DH1200 | Y | MY |
| B12000.12008 |  | DH1200/Mechanical Yard-D120 // Set TES tank - TES-1CY40-D120 | 1d | 2026-10-06 A | 2026-10-08 A | A5704 | 100% | 2026-10-06 | 2026-10-06 |  |  | 1083 | DH1200 | Y | MY |
| B12000.12034 |  | DH1200/Mechanical Yard-D120 // Install Mechanical Chiller to Mains | 1d | 2026-10-14 | 2026-10-14 | B12000.12008, B12000.12033 |  |  |  | 43d | 0d | 1083 | DH1200 | Y | MY |
| B12000.12007 |  | DH1200/Mechanical Yard-D120 // Set Chiller - CHLR-1CY40-D120 | 1d | 2026-10-19 | 2026-10-19 | A5880, B12000.12005 SS |  |  |  | 26d | 0d | 1083 | DH1200 | Y | MY |
|  | 5 | **E120** |  | 2026-08-25 | 2026-10-19 |  |  |  |  |  |  |  |  |  |  |
| B12000.12035 |  | DH1200/Mechanical Yard-E120 // Install CHWP | 1d | 2026-08-25 A | 2026-08-25 A | B12000.12032 SS | 100% | 2026-08-10 | 2026-08-10 |  |  | 1083 | DH1200 | Y | MY |
| B12000.12036 |  | DH1200/Mechanical Yard-E120 // Install Mechanical Piping Mains (Building -to Line) | 1d | 2026-09-08 A | 2026-09-08 A | B12000.12035 | 100% | 2026-08-11 | 2026-08-11 |  |  | 1083 | DH1200 | Y | MY |
| B12000.12010 |  | DH1200/Mechanical Yard-E120 // Set TES tank - TES-1CY40-E120 | 1d | 2026-10-07 A | 2026-10-08 A | A5704 | 100% | 2026-10-07 | 2026-10-07 |  |  | 1083 | DH1200 | Y | MY |
| B12000.12037 |  | DH1200/Mechanical Yard-E120 // Install Mechanical Chiller to Mains | 1d | 2026-10-14 | 2026-10-14 | B12000.12010, B12000.12036 |  |  |  | 43d | 0d | 1083 | DH1200 | Y | MY |
| B12000.12009 |  | DH1200/Mechanical Yard-E120 // Set Chiller - CHLR-1CY40-E120 | 1d | 2026-10-19 | 2026-10-19 | A5880, B12000.12007 SS |  |  |  | 26d | 0d | 1083 | DH1200 | Y | MY |

| ID | WBS | Activity | Duration | Start | Finish | Predecessors | Complete | Planned start | Planned finish | Total float | Free float | MSP Activity ID | QTS - AREA | 12 - SUFFOLK - Export_to_Procore | QTS - DASH |
| --- | --- | --- | --- | --- | --- | --- | --- | --- | --- | --- | --- | --- | --- | --- | --- |
|  | 6 | **F120** |  | 2026-08-26 | 2026-10-20 |  |  |  |  |  |  |  |  |  |  |
| B12000.12038 |  | DH1200/Mechanical Yard-F120 // Install CHWP | 1d | 2026-08-26 A | 2026-08-26 A | B12000.12035 | 100% | 2026-08-11 | 2026-08-11 |  |  | 1083 | DH1200 | Y | MY |
| B12000.12039 |  | DH1200/Mechanical Yard-F120 // Install Mechanical Piping Mains (Building -to Line) | 1d | 2026-09-08 A | 2026-09-08 A | B12000.12038 | 100% | 2026-08-12 | 2026-08-12 |  |  | 1083 | DH1200 | Y | MY |
| B12000.12012 |  | DH1200/Mechanical Yard-F120 // Set TES tank - TES-1CY40-F120 | 1d | 2026-10-08 A | 2026-10-08 A | A5704 | 100% |  |  |  |  | 1083 | DH1200 | Y | MY |
| B12000.12040 |  | DH1200/Mechanical Yard-F120 // Install Mechanical Chiller to Mains | 1d | 2026-10-14 | 2026-10-14 | B12000.12012, B12000.12038, B12000.12039 |  |  |  | 43d | 0d | 1083 | DH1200 | Y | MY |
| B12000.12011 |  | DH1200/Mechanical Yard-F120 // Set Chiller - CHLR-1CY40-F120 | 1d | 2026-10-20 | 2026-10-20 | B12000.12009 |  |  |  | 26d | 0d | 1083 | DH1200 | Y | MY |
|  | 7 | **G120** |  | 2026-08-26 | 2026-10-20 |  |  |  |  |  |  |  |  |  |  |
| B12000.12041 |  | DH1200/Mechanical Yard-G120 // Install CHWP | 1d | 2026-08-26 A | 2026-08-26 A | B12000.12038 | 100% | 2026-08-12 | 2026-08-12 |  |  | 1083 | DH1200 | Y | MY |
| B12000.12042 |  | DH1200/Mechanical Yard-G120 // Install Mechanical Piping Mains (Building -to Line) | 1d | 2026-09-08 A | 2026-09-08 A | B12000.12041 | 100% | 2026-08-13 | 2026-08-13 |  |  | 1083 | DH1200 | Y | MY |
| B12000.12014 |  | DH1200/Mechanical Yard-G120 // Set TES tank - TES-1CY40-G120 | 1d | 2026-10-08 A | 2026-10-08 A | A5704 | 100% | 2026-10-09 | 2026-10-09 |  |  | 1083 | DH1200 | Y | MY |
| B12000.12043 |  | DH1200/Mechanical Yard-G120 // Install Mechanical Chiller to Mains | 1d | 2026-10-14 | 2026-10-14 | B12000.12014, B12000.12042 |  |  |  | 43d | 0d | 1083 | DH1200 | Y | MY |
| B12000.12013 |  | DH1200/Mechanical Yard-G120 // Set Chiller - CHLR-1CY40-G120 | 1d | 2026-10-20 | 2026-10-20 | B12000.12011 SS |  |  |  | 26d | 0d | 1083 | DH1200 | Y | MY |
|  | 8 | **H120** |  | 2026-08-27 | 2026-10-20 |  |  |  |  |  |  |  |  |  |  |
| B12000.12044 |  | DH1200/Mechanical Yard-H120 // Install CHWP | 1d | 2026-08-27 A | 2026-08-27 A | B12000.12041 | 100% | 2026-08-13 | 2026-08-13 |  |  | 1083 | DH1200 | Y | MY |
| B12000.12045 |  | DH1200/Mechanical Yard-H120 // Install Mechanical Piping Mains (Building -to Line) | 1d | 2026-09-08 A | 2026-09-08 A | B12000.12044 | 100% | 2026-08-14 | 2026-08-14 |  |  | 1083 | DH1200 | Y | MY |
| B12000.12016 |  | DH1200/Mechanical Yard-H120 // Set TES tank - TES-1CY40-H120 | 1d | 2026-10-08 A | 2026-10-08 A | A5705 | 100% | 2026-10-13 | 2026-10-13 |  |  | 1083 | DH1200 | Y | MY |
| B12000.12046 |  | DH1200/Mechanical Yard-H120 // Install Mechanical Chiller to Mains | 1d | 2026-10-14 | 2026-10-14 | B12000.12016, B12000.12045 |  |  |  | 43d | 0d | 1083 | DH1200 | Y | MY |
| B12000.12015 |  | DH1200/Mechanical Yard-H120 // Set Chiller - CHLR-1CY40-H120 | 1d | 2026-10-20 | 2026-10-20 | B12000.12013 SS |  |  |  | 26d | 0d | 1083 | DH1200 | Y | MY |
|  | 9 | **J120** |  | 2026-08-27 | 2026-10-20 |  |  |  |  |  |  |  |  |  |  |
| B12000.12047 |  | DH1200/Mechanical Yard-J120 // Install CHWP | 1d | 2026-08-27 A | 2026-08-27 A | B12000.12044 SS | 100% | 2026-08-14 | 2026-08-14 |  |  | 1083 | DH1200 | Y | MY |
| B12000.12048 |  | DH1200/Mechanical Yard-J120 // Install Mechanical Piping Mains (Building -to Line) | 1d | 2026-09-08 A | 2026-09-08 A | B12000.12047 | 100% | 2026-08-17 | 2026-08-17 |  |  | 1083 | DH1200 | Y | MY |
| B12000.12018 |  | DH1200/Mechanical Yard-J120 // Set TES tank - TES-1CY40-J120 | 1d | 2026-10-08 A | 2026-10-08 A | A5705 | 100% | 2026-10-14 | 2026-10-14 |  |  | 1083 | DH1200 | Y | MY |
| B12000.12049 |  | DH1200/Mechanical Yard-J120 // Install Mechanical Chiller to Mains | 1d | 2026-10-14 | 2026-10-14 | B12000.12018, B12000.12048 |  |  |  | 43d | 0d | 1083 | DH1200 | Y | MY |
| B12000.12017 |  | DH1200/Mechanical Yard-J120 // Set Chiller - CHLR-1CY40-J120 | 1d | 2026-10-20 | 2026-10-20 | B12000.12015 SS |  |  |  | 26d | 0d | 1083 | DH1200 | Y | MY |

| ID | WBS | Activity | Duration | Start | Finish | Predecessors | Complete | Planned start | Planned finish | Total float | Free float | MSP Activity ID | QTS - AREA | 12 - SUFFOLK - Export_to_Procore | QTS - DASH | QTS - Subcontractor | QTS - Resp |
| --- | --- | --- | --- | --- | --- | --- | --- | --- | --- | --- | --- | --- | --- | --- | --- | --- | --- |
|  | 10 | **K120** |  | 2026-08-28 | 2026-10-20 |  |  |  |  |  |  |  |  |  |  |  |  |
| B12000.12050 |  | DH1200/Mechanical Yard-K120 // Install CHWP | 1d | 2026-08-28 A | 2026-08-28 A | B12000.12047 SS | 100% | 2026-08-17 | 2026-08-17 |  |  | 1083 | DH1200 | Y | MY |  |  |
| B12000.12051 |  | DH1200/Mechanical Yard-K120 // Install Mechanical Piping Mains (Building -to Line) | 1d | 2026-09-08 A | 2026-09-08 A | B12000.12050 | 100% | 2026-08-18 | 2026-08-18 |  |  | 1083 | DH1200 | Y | MY |  |  |
| B12000.12020 |  | DH1200/Mechanical Yard-K120 // Set TES tank - TES-1CY40-K120 | 1d | 2026-10-08 A | 2026-10-08 A | A5705 | 100% | 2026-10-15 | 2026-10-15 |  |  | 1083 | DH1200 | Y | MY |  |  |
| B12000.12052 |  | DH1200/Mechanical Yard-K120 // Install Mechanical Chiller to Mains | 1d | 2026-10-14 | 2026-10-14 | B12000.12020, B12000.12051 |  |  |  | 43d | 0d | 1083 | DH1200 | Y | MY |  |  |
| B12000.12019 |  | DH1200/Mechanical Yard-K120 // Set Chiller - CHLR-1CY40-K120 | 1d | 2026-10-20 | 2026-10-20 | B12000.12017 SS |  |  |  | 26d | 0d | 1083 | DH1200 | Y | MY |  |  |
|  | 11 | **R120** |  | 2026-08-28 | 2026-10-20 |  |  |  |  |  |  |  |  |  |  |  |  |
| B12000.12053 |  | DH1200/Mechanical Yard-R120 // Install CHWP | 1d | 2026-08-28 A | 2026-08-28 A | B12000.12050 SS | 100% | 2026-08-18 | 2026-08-18 |  |  | 1083 | DH1200 | Y | MY |  |  |
| B12000.12054 |  | DH1200/Mechanical Yard-R120 // Install Mechanical Piping Mains (Building -to Line) | 1d | 2026-09-08 A | 2026-09-08 A | B12000.12053 | 100% | 2026-08-19 | 2026-08-19 |  |  | 1083 | DH1200 | Y | MY |  |  |
| B12000.12022 |  | DH1200/Mechanical Yard-R120 // Set TES tank - TES-1CY40-R120 | 1d | 2026-10-08 A | 2026-10-08 A | A5705 | 100% | 2026-10-16 | 2026-10-16 |  |  | 1083 | DH1200 | Y | MY |  |  |
| B12000.12055 |  | DH1200/Mechanical Yard-R120 // Install Mechanical Chiller to Mains | 1d | 2026-10-14 | 2026-10-14 | B12000.12022, B12000.12054 |  |  |  | 43d | 0d | 1083 | DH1200 | Y | MY |  |  |
| B12000.12021 |  | DH1200/Mechanical Yard-R120 // Set Chiller - CHLR-1CY40-R120 | 1d | 2026-10-20 | 2026-10-20 | B12000.12019 SS |  |  |  | 26d | 0d | 1083 | DH1200 | Y | MY |  |  |
|  | 12 | **Test & Flushing** |  | 2026-10-15 | 2026-10-28 |  |  |  |  |  |  |  |  |  |  |  |  |
| A5733 |  | DH1200/Mechanical Yard-Test & Flushing // Line Test & Checking | 2d | 2026-10-15 | 2026-10-16 | B12000.12025, B12000.12028, B12000.12031, B12000.12034, B12000.12037, B12000.12040, B12000.12043, B12000.12046, B12000.12049, B12000.12052, B12000.12055 |  |  |  | 43d | 0d |  | DH1200 | Y | MY |  |  |
| A5735 |  | DH1200/Mechanical Yard-Test & Flushing // Electrical & Controls Testing / Checking | 3d | 2026-10-19 | 2026-10-21 | A5733 |  |  |  | 43d | 0d |  | DH1200 | Y | MY | HELIX | TBD |
| A5734 |  | DH1200/Mechanical Yard-Test & Flushing // Fill, Flush & Purge | 5d | 2026-10-22 | 2026-10-28 | A5735 |  |  |  | 43d | 51d |  | DH1200 | Y | MY |  |  |
|  | 2 | **Electrical & Controls** |  | 2026-06-10 | 2026-11-23 |  |  |  |  |  |  |  |  |  |  |  |  |
| A5706 |  | DH1200/Electrical & Controls // Excavate Raceways from Building to Chiller Pad | 8d | 2026-06-10 A | 2026-06-19 A | FDN.1070, A5700 | 100% | 2026-11-04 | 2026-11-16 |  |  | 1095 | DH1200 |  | MY | HELIX | PRICE |
| A5707 |  | DH1200/Electrical & Controls // Install Raceway from Building To Chiller Pad | 8d | 2026-06-19 A | 2026-06-30 A | A5706 SS+4d | 100% | 2026-11-10 | 2026-11-20 |  |  | 1096 | DH1200 |  | MY | HELIX | PRICE |
| A5708 |  | DH1200/Electrical & Controls // Backfill Chiller Raceways from Building to Chiller Pad | 8d | 2026-07-28 A | 2026-08-07 A | A5706 | 100% | 2026-11-17 | 2026-11-27 |  |  | 1075 | DH1200 |  | MY | HELIX | PRICE |
| A5718 |  | DH1200/Electrical & Controls // Mechanical CWP Support Caisson Footings | 10d | 2026-09-11 A | 2026-09-24 A | A5708 | 100% | 2026-12-10 | 2026-12-23 |  |  | 1103 | DH1200 |  | MY | HELIX | PRICE |
| A5712 |  | DH1200/Electrical & Controls // Raceway connections to Chiller units | 6d | 2026-10-21 | 2026-10-28 | B12000.12001, B12000.12003, B12000.12005, B12000.12007, B12000.12009, B12000.12011, B12000.12013, B12000.12015, B12000.12017, B12000.12019, B12000.12021, A5708 SS, A5707 |  |  |  | 26d | 0d | 1099 | DH1200 |  | MY | HELIX | PRICE |
| A5713 |  | DH1200/Electrical & Controls // Install Panels and Raceways to CHWP | 10d | 2026-10-21 | 2026-11-03 | A5712 SS |  |  |  | 26d | 0d | 1101 | DH1200 |  | MY | HELIX | PRICE |
| A5715 |  | DH1200/Electrical & Controls // Install Controls conduits and wire to Chiller units | 12d | 2026-10-21 | 2026-11-05 | A5713 SS |  |  |  | 26d | 0d | 1103 | DH1200 |  | MY | HELIX | PRICE |
| A5722 |  | DH1200/Electrical & Controls // Pull and Terminate Feeders to Chiller units | 6d | 2026-10-29 | 2026-11-05 | A5708 SS, A5712 |  |  |  | 26d | 0d | 1105 | DH1200 |  | MY | HELIX | PRICE |
| A5723 |  | DH1200/Electrical & Controls // Chiller units Ready to Energize | 6d | 2026-11-06 | 2026-11-16 | A5713, A5715, A5722 |  |  |  | 26d | 0d | 1112 | DH1200 |  | MY | HELIX | PRICE |
| A5719 |  | DH1200/Electrical & Controls // Fine Grade Install Landscape Fabric & Install Rock | 5d | 2026-11-17 | 2026-11-23 | A5723, A5715, A5718 |  |  |  | 26d | 34d | 1103 | DH1200 |  | MY | HELIX | PRICE |

| ID | WBS | Activity | Type | Duration | Start | Finish | Predecessors | Complete | Planned start | Planned finish | Total float | Free float | MSP Activity ID | QTS - AREA | 05 -SUFFOLK - Building Phase | 12 - SUFFOLK - Export_to_Procore | QTS - Subcontractor | QTS - Resp | QTS - DASH |
| --- | --- | --- | --- | --- | --- | --- | --- | --- | --- | --- | --- | --- | --- | --- | --- | --- | --- | --- | --- |
|  | 2 | **Roof - RTUs** |  |  | 2026-08-03 | 2026-11-25 |  |  |  |  |  |  |  |  |  |  |  |  |  |
|  | 1 | **Column Lines 1.2 thru 2.0** |  |  | 2026-08-03 | 2026-11-25 |  |  |  |  |  |  |  |  |  |  |  |  |  |
| B12000.12058 |  | DH1200/Roof - RTUs // - RTU-RT05-01 |  | 1d | 2026-08-03 A | 2026-08-03 A | DH1100.12064 | 100% | 2026-07-29 | 2026-07-29 |  |  | 1120 | DH1200 | 2 | Y |  |  |  |
| B12000.12057 |  | DH1200/Roof - RTUs // - RTU-RT- 06 |  | 1d | 2026-08-05 A | 2026-08-05 A | B12000.12058 SS+2d | 100% | 2026-07-31 | 2026-07-31 |  |  | 1119 | DH1200 | 2 | Y |  |  |  |
| B12000.12064 |  | DH1200/Roof - RTUs // - RTU-RT- 07 |  | 1d | 2026-08-06 A | 2026-08-06 A | B12000.12057 | 100% | 2026-08-03 | 2026-08-03 |  |  | 1119 | DH1200 | 2 | Y |  |  |  |
| B12000.12059 |  | DH1200/Roof - RTUs // Install Mechanical Piping |  | 15d | 2026-10-14 | 2026-11-03 | B12000.12058, B12000.12064 |  |  |  | 24d | 0d | 1117 | DH1200 | 2 | Y |  |  |  |
| B12000.12056 |  | DH1200/Roof - RTUs // Install heat trace system |  | 15d | 2026-11-04 | 2026-11-25 | B12000.12059 |  |  |  | 24d | 32d | 1116 | DH1200 | 2 |  | HELIX | JT |  |
| B12000.7841 |  | DH1200/Roof - RTUs // Install Electrical Conduit and Controls Piping |  | 15d | 2026-11-04 | 2026-11-25 | B12000.12059, B12000.12064 |  |  |  | 24d | 32d | 1118 | DH1200 | 2 |  | HELIX | JT |  |
|  | 1 | **Interior Build Out** |  |  | 2026-07-27 | 2027-02-23 |  |  |  |  |  |  |  |  |  |  |  |  |  |
|  | 9 | **Flex 1000B10** |  |  | 2026-07-27 | 2026-11-30 |  |  |  |  |  |  |  |  |  |  |  |  |  |
| B12000A.1000 |  | DH1200/Flex 1000B10 // Seal Concrete |  | 2d | 2026-07-27 A | 2026-07-28 A | SOG.1448 | 100% | 2026-07-24 | 2026-07-27 |  |  | 66 | DH1200 |  | Y |  |  | OR |
| B12000A.1010 |  | DH1200/Flex 1000B10 // MEPF Layout of Overhead Supports |  | 2d | 2026-08-03 A | 2026-08-04 A | B12000A.1000, SOG.1448, STRUCTURE.7420 | 100% | 2026-07-28 | 2026-07-29 |  |  | 1153 | DH1200 |  | Y | HELIX | ALOO | OR |
| B12000A.1040 |  | DH1200/Flex 1000B10 // Frame Walls including Backing |  | 4d | 2026-08-05 A | 2026-08-10 A | SOG.1448, B12000A.1010 | 100% | 2026-08-06 | 2026-08-11 |  |  | 1155 | DH1200 |  | Y |  |  | OR |
| B12000A.1020 |  | DH1200/Flex 1000B10 // MEPF Install High Overhead Systems |  | 5d | 2026-08-20 A | 2026-09-02 A | B12000A.1010 | 100% | 2026-07-30 | 2026-08-05 |  |  | 1154 | DH1200 |  | Y | HELIX | ALOO | OR |
| B12000A.1060 |  | DH1200/Flex 1000B10 // MEPF Install Rough Wall |  | 2d | 2026-08-20 A | 2026-09-01 A | B12000A.1040 | 100% | 2026-08-12 | 2026-08-13 |  |  | 1156 | DH1200 |  | Y | HELIX | AC | OR |
| B12000A.1080 |  | DH1200/Flex 1000B10 // Rough Wall Inspspection (Approval to Close up) |  | 1d | 2026-09-30 A | 2026-10-08 A | B12000A.1060 | 100% | 2026-09-30 | 2026-09-30 |  |  | 1158 | DH1200 |  |  |  |  | OR |
| B12000A.1070 |  | DH1200/Flex 1000B10 // Install Top Down Sheet Rock |  | 5d | 2026-10-14 | 2026-10-20 | B12000A.1040 SS+2d |  |  |  | 22d | 0d | 1157 | DH1200 |  | Y |  |  | OR |
| B12000A.1090 |  | DH1200/Flex 1000B10 // Install Balance of Sheetrock |  | 3d | 2026-10-21 | 2026-10-23 | B12000A.1070, B12000A.1080 |  |  |  | 22d | 0d | 1159 | DH1200 |  |  |  |  | OR |
| B12000A.1100 |  | DH1200/Flex 1000B10 // Tape and Finish Walls |  | 6d | 2026-10-26 | 2026-11-02 | B12000A.1090 |  |  |  | 22d | 0d | 1160 | DH1200 |  |  |  |  | OR |
| B12000A.1110 |  | DH1200/Flex 1000B10 // Prime and First Coat of Paint |  | 2d | 2026-11-03 | 2026-11-04 | B12000A.1100 |  |  |  | 22d | 0d | 1162 | DH1200 |  |  |  |  | OR |
| B12000A.1120 |  | DH1200/Flex 1000B10 // Install MEPF Overhead Ceiling Rough |  | 3d | 2026-11-05 | 2026-11-09 | B12000A.1110, B12000A.1020 |  |  |  | 22d | 0d | 1163 | DH1200 |  |  | HELIX | AC | OR |
| B12000A.1130 |  | DH1200/Flex 1000B10 // Install Lighting, Fire Alarm & Fire Protection |  | 2d | 2026-11-10 | 2026-11-12 | B12000A.1120 |  |  |  | 22d | 0d | 1164 | DH1200 |  |  | HELIX | AC | OR |
| B12000A.1050 |  | DH1200/Flex 1000B10 // Install Door Frames |  | 1d | 2026-11-13 | 2026-11-13 | B12000A.1130, B12000A.1040 FF |  |  |  | 24d | 2d | 1161 | DH1200 |  |  |  |  | OR |
| B12000A.1140 |  | DH1200/Flex 1000B10 // Wall Touch up Final Coat of Paint |  | 3d | 2026-11-13 | 2026-11-17 | B12000A.1130 |  |  |  | 22d | 0d | 1165 | DH1200 |  |  |  |  | OR |
| B12000A.1150 |  | DH1200/Flex 1000B10 // Install Wall Base, Trim, and Devices |  | 3d | 2026-11-18 | 2026-11-20 | B12000A.1050, B12000A.1140 |  |  |  | 22d | 0d | 1166 | DH1200 |  |  |  |  | OR |
| B12000A.1161 |  | DH1200/Flex 1000B10 // Ready to Receive Equipment | milestone | 0d | 2026-11-20 | 2026-11-20 | B12000A.1150 FF |  |  |  | 22d | 0d | 1166 | DH1200 |  |  | HELIX | TBD | OR |
| B12000A.1160 |  | DH1200/Flex 1000B10 // Suffolk Pre Punch |  | 5d | 2026-11-23 | 2026-11-30 | B12000A.1161 |  |  |  | 22d | 30d | 1167 | DH1200 |  |  |  |  | OR |

| ID | WBS | Activity | Type | Duration | Start | Finish | Predecessors | Complete | Planned start | Planned finish | Total float | Free float | Constraint | MSP Activity ID | QTS - AREA | 12 - SUFFOLK - Export_to_Procore | QTS - DASH | QTS - Subcontractor | QTS - Resp |
| --- | --- | --- | --- | --- | --- | --- | --- | --- | --- | --- | --- | --- | --- | --- | --- | --- | --- | --- | --- |
|  | 7 | **Electrical Room #5201** |  |  | 2026-07-27 | 2026-12-01 |  |  |  |  |  |  |  |  |  |  |  |  |  |
| B120001.1000 |  | DH1200/Electrical Room #5201 // Seal Concrete |  | 2d | 2026-07-27 A | 2026-07-28 A | B12000A.1000 FF | 100% | 2026-07-28 | 2026-07-29 |  |  |  | 1169 | DH1200 | Y | ER |  |  |
| B120001.1010 |  | DH1200/Electrical Room #5201 // MEPF Layout of Overhead Supports |  | 2d | 2026-08-03 A | 2026-08-04 A | B120001.1000, B12000A.1010 SS | 100% | 2026-07-30 | 2026-07-31 |  |  |  | 1170 | DH1200 | Y | ER | HELIX | ALOO |
| B120001.1040 |  | DH1200/Electrical Room #5201 // Frame Walls including Backing |  | 4d | 2026-08-05 A | 2026-08-10 A | B120001.1010, B12000A.1040 FF | 100% | 2026-08-12 | 2026-08-17 |  |  |  | 1172 | DH1200 | Y | ER |  |  |
| B120001.1020 |  | DH1200/Electrical Room #5201 // MEPF Install High Overhead Systems |  | 6d | 2026-08-21 A | 2026-09-03 A | B120001.1010 | 100% | 2026-08-03 | 2026-08-10 |  |  |  | 1171 | DH1200 | Y | ER | HELIX | ALOO |
| B120001.1060 |  | DH1200/Electrical Room #5201 // MEPF Install Rough Wall |  | 2d | 2026-08-27 A | 2026-09-10 A | B120001.1040 | 100% | 2026-08-18 | 2026-08-19 |  |  |  | 1174 | DH1200 |  | ER | HELIX | AC |
| B120001.3111 |  | DH1200/Electrical Room #5201 // Install Overhead Cable Ladder / 36" Cable Tray - TFO |  | 5d | 2026-09-08 A | 2026-09-14 A | A5662, B120001.1020 | 100% | 2026-08-11 | 2026-08-17 |  |  |  | 1181 |  | Y | ER |  |  |
| B120001.1070 |  | DH1200/Electrical Room #5201 // Install Top Down Sheet Rock |  | 5d | 2026-09-10 A | 2026-09-16 A | B120001.1040 SS+2d | 100% | 2026-08-14 | 2026-08-20 |  |  |  | 1175 | DH1200 |  | ER |  |  |
| B120001.1080 |  | DH1200/Electrical Room #5201 // Rough Wall Inspspection (Approval to Close up) |  | 1d | 2026-09-17 A | 2026-09-17 A | B120001.1060 | 100% | 2026-08-20 | 2026-08-20 |  |  |  | 1176 | DH1200 |  | ER |  |  |
| B120001.1090 |  | DH1200/Electrical Room #5201 // Install Balance of Sheetrock |  | 3d | 2026-09-18 A | 2026-09-22 A | B120001.1070 SS+3d, B120001.1080 | 100% | 2026-08-21 | 2026-08-25 |  |  |  | 1177 | DH1200 |  | ER |  |  |
| F.1000A.1191 |  | DH1200/Electrical Room #5201 // Rough-In Security |  | 2d | 2026-09-18 A | 2026-09-18 A | B120001.1020 | 100% | 2026-08-18 | 2026-08-19 |  |  |  | 1156 | DH1200 |  | ER | HELIX | AC |
| F.1000A.1385 |  | DH1200/Electrical Room #5201 // BMS & EPMS Rough-In |  | 2d | 2026-09-18 A | 2026-09-21 A | F.1000A.1191 SS, F.1000A.1191 FF | 100% | 2026-09-30 | 2026-10-01 |  |  |  |  | DH1200 |  |  |  |  |
| B120001.1100 |  | DH1200/Electrical Room #5201 // Tape and Finish Walls |  | 6d | 2026-09-24 A | 2026-10-01 A | B120001.1090 | 100% | 2026-08-26 | 2026-09-02 |  |  |  | 1178 | DH1200 |  | ER |  |  |
| B120001.1120 |  | DH1200/Electrical Room #5201 // Install MEPF Overhead Ceiling Rough |  | 3d | 2026-09-25 A | 2026-10-08 A | B120001.1090 | 100% | 2026-08-28 | 2026-09-01 |  |  |  | 1181 | DH1200 |  | ER | HELIX | AC |
| B120001.1180 |  | DH1200/Electrical Room #5201 // Install Cable Tray |  | 3d | 2026-09-25 A | 2026-10-07 A | B120001.1070 | 100% | 2026-08-25 | 2026-08-27 |  |  |  | 1182 | DH1200 |  | ER | HELIX | OO |
| B120001.1110 |  | DH1200/Electrical Room #5201 // Prime and First Coat of Paint |  | 2d | 2026-09-30 A | 2026-10-01 A | B120001.1100 FF | 100% | 2026-09-03 | 2026-09-04 |  |  |  | 1180 | DH1200 |  | ER |  |  |
| B120001.3230 |  | DH1200/Electrical Room #5201 // DH1200 - OFCI Skid Delivery Date (010/13/2026) 2nd Shipment |  | 0d | 2026-09-30 A | 2026-10-13 A | B120001.3110 FF | 100% | 2026-09-30 | 2026-09-30 |  |  | finish on or after 2026-10-13 |  |  |  |  |  |  |
| B120001.1170 |  | DH1200/Electrical Room #5201 // Install Overhead Buss duct |  | 2d | 2026-09-30 A | 2026-10-09 A | B120001.1070, B120001.1020 | 100% | 2026-09-30 | 2026-10-01 |  |  |  | 1188 | DH1200 |  | ER | HELIX | AL |
| B120001.3112 |  | DH1200/Electrical Room #5201 // Install Overhead HAC - TFO |  | 5d | 2026-09-30 A | 2026-10-13 A | B120001.1170 SS, B120001.3111 | 100% | 2026-09-30 | 2026-10-06 |  |  |  | 1181 |  |  | ER |  |  |
| B120001.3110 |  | DH1200/Electrical Room #5201 // Room Ready to Receive Equipment | milestone | 0d | 2026-10-02 A | 2026-10-02 A | B120001.1110 | 100% | 2026-10-08 | 2026-10-08 |  |  |  | 1180 | DH1200 |  | ER | HELIX | TBD |
| B120001.1250 |  | DH1200/Electrical Room #5201 // Set CRAH-ER5201- 01 |  | 1d | 2026-10-06 A | 2026-10-08 A | ER.5101.3049, B120001.1110 | 100% | 2026-10-14 | 2026-10-14 |  |  |  | 1194 | DH1200 |  | ER |  |  |
| B120001.3031 |  | DH1200/Electrical Room #5201 // Set CRAH-ER5201- 02 |  | 1d | 2026-10-06 A | 2026-10-08 A | B120001.1180 SS | 100% | 2026-10-15 | 2026-10-15 |  |  |  | 1194 | DH1200 |  | ER |  |  |
| B120001.3032 |  | DH1200/Electrical Room #5201 // Set CRAH-ER5201- 03 |  | 1d | 2026-10-06 A | 2026-10-08 A | B120001.3031 FF | 100% | 2026-10-16 | 2026-10-16 |  |  |  | 1194 | DH1200 |  | ER |  |  |
| B120001.3033 |  | DH1200/Electrical Room #5201 // Set CRAH-ER5201- 04 |  | 1d | 2026-10-06 A | 2026-10-08 A | B120001.3032 FF | 100% | 2026-10-19 | 2026-10-19 |  |  |  | 1194 | DH1200 |  | ER |  |  |
| B120001.3034 |  | DH1200/Electrical Room #5201 // Set CRAH-ER5201- 05 |  | 1d | 2026-10-06 A | 2026-10-08 A | B120001.3033 FF | 100% | 2026-10-20 | 2026-10-20 |  |  |  | 1194 | DH1200 |  | ER |  |  |
| B120001.3035 |  | DH1200/Electrical Room #5201 // Set CRAH-ER5201- 06 |  | 1d | 2026-10-06 A | 2026-10-08 A | B120001.3034 FF | 100% | 2026-10-21 | 2026-10-21 |  |  |  | 1194 | DH1200 |  | ER |  |  |
| ER.5101.3045 |  | DH1200/Electrical Room #5201 // Set Skid - SKID-A120 |  | 1d | 2026-10-12 A | 2026-10-13 A | B120001.3219, B120001.3110 SS | 100% | 2026-10-13 | 2026-10-13 |  |  |  | 1107 | DH1200 |  | ER | HELIX | TBD |
| ER.5101.3046 |  | DH1200/Electrical Room #5201 // Set Skid - SKID-B120 |  | 1d | 2026-10-12 A | 2026-10-13 A | B120001.3219, ER.5101.3045 SS | 100% | 2026-10-13 | 2026-10-13 |  |  |  | 1107 | DH1200 |  | ER | HELIX | TBD |
| ER.5101.3047 |  | DH1200/Electrical Room #5201 // Set Skid - SKID-C120 |  | 1d | 2026-10-12 A | 2026-10-13 A | B120001.3219, ER.5101.3046 SS | 100% | 2026-10-13 | 2026-10-13 |  |  |  | 1107 | DH1200 |  | ER | HELIX | TBD |
| B120001.3219 |  | DH1200/Electrical Room #5201 // DH1200 - OFCI Skid Ship Date (09/30/2026) First Shipment | milestone | 0d | 2026-10-13 A | 2026-10-13 A | B120001.3110 | 100% |  |  |  |  | finish on or after 2026-10-12 | 1180 |  |  | ER |  |  |
| ER.5101.3048 |  | DH1200/Electrical Room #5201 // Set Skid - SKID-D120 |  | 1d | 2026-10-13 A | 2026-10-13 A | B120001.3230, ER.5101.3047 | 100% |  |  |  |  |  | 1107 | DH1200 |  | ER | HELIX | TBD |
| ER.5101.3049 |  | DH1200/Electrical Room #5201 // Set Skid - SKID-E120 |  | 1d | 2026-10-13 A | 2026-10-13 A | B120001.3230, ER.5101.3048 SS | 100% |  |  |  |  |  | 1107 | DH1200 |  | ER | HELIX | TBD |
| B120001.1200 |  | DH1200/Electrical Room #5201 // Install Cable Buss From Exterior |  | 3d | 2026-10-14 | 2026-10-16 | B120001.1180, ER.5101.3049 |  |  |  | -2d | 0d |  | 1189 | DH1200 |  | ER | HELIX | TBD |
| B120001.1220 |  | DH1200/Electrical Room #5201 // Pull Cable Tray Feeders (CRAHU/CDU) |  | 10d | 2026-10-14 | 2026-10-27 | B120001.1180 |  |  |  | -5d | 0d |  | 1191 | DH1200 |  | ER | HELIX | OO |
| B120001.1290 |  | DH1200/Electrical Room #5201 // Pull Misc Feeder and Branch Circuits |  | 10d | 2026-10-14 | 2026-10-27 | B120001.1120 |  |  |  | -5d | 0d |  | 1198 | DH1200 |  | ER | HELIX | AL |
| B120001.1320 |  | DH1200/Electrical Room #5201 // Buss Duct Tie In to Elect Gear |  | 3d | 2026-10-14 | 2026-10-16 | B120001.1170, ER.5101.3049 |  |  |  | 7d | 12d |  | 1200 | DH1200 |  | ER | HELIX | TBD |
| ER.5101.3096 |  | DH1200/Electrical Room #5201 // Set PDU - PDU-R120-01 |  | 1d | 2026-10-14 | 2026-10-14 | B120001.1180 |  |  |  | 0d |  |  | 1107 | DH1200 |  | ER | HELIX | TBD |
| F.1000A.1192 |  | DH1200/Electrical Room #5201 // Pull & Test Security Cable |  | 3d | 2026-10-14 | 2026-10-16 | F.1000A.1191 |  |  |  | 37d | 0d |  | 1156 | DH1200 |  | ER |  |  |
| ER.5101.3102 |  | DH1200/Electrical Room #5201 // Set UPS - UPS-R120 |  | 1d | 2026-10-15 | 2026-10-15 | ER.5101.3096 |  |  |  | 0d |  |  | 1107 | DH1200 |  | ER | HELIX | TBD |
| B120001.1260 |  | DH1200/Electrical Room #5201 // Mechanical Connections to CRAHU |  | 5d | 2026-10-16 | 2026-10-22 | ER.5101.3102, B120001.1250, B120001.3035 |  |  |  | 0d |  |  | 1195 | DH1200 |  | ER |  |  |
| B120001.1210 |  | DH1200/Electrical Room #5201 // Pull Cable Buss Feeders |  | 6d | 2026-10-19 | 2026-10-26 | B120001.1200, ER.5101.3049 |  |  |  | -2d | 0d |  | 1190 | DH1200 |  | ER | HELIX | TBD |
| F.1000A.1193 |  | DH1200/Electrical Room #5201 // Install Security Devices |  | 2d | 2026-10-19 | 2026-10-20 | F.1000A.1192 |  |  |  | 37d | 12d |  | 1156 | DH1200 |  | ER |  |  |
| B120001.1240 |  | DH1200/Electrical Room #5201 // Land and Terminate Cabel Tray Feeders In Gear |  | 10d | 2026-10-21 | 2026-11-03 | B120001.3112, B120001.1220 SS+5d |  |  |  | -5d | 0d |  | 1193 | DH1200 |  | ER | HELIX | TBD |
| B120001.1300 |  | DH1200/Electrical Room #5201 // Land and Terminate Misc Feeder and Branch Circuits |  | 10d | 2026-10-21 | 2026-11-03 | B120001.1290 SS+5d |  |  |  | -5d | 0d |  | 1184 | DH1200 |  | ER | HELIX | TBD |
| B120001.1270 |  | DH1200/Electrical Room #5201 // Install Condensate lines from CRAHU's |  | 2d | 2026-10-23 | 2026-10-26 | B120001.1260 |  |  |  | 1d | 6d |  | 1196 | DH1200 |  | ER |  |  |
| B120001.1280 |  | DH1200/Electrical Room #5201 // Install Elec Feeders to CRAHU's |  | 3d | 2026-10-23 | 2026-10-27 | B120001.1180, B120001.1260 |  |  |  | 0d | 5d |  | 1197 | DH1200 |  | ER | HELIX | OO |
| B120001.1230 |  | DH1200/Electrical Room #5201 // Terminate Cable Buss Feeders |  | 3d | 2026-10-27 | 2026-10-29 | B120001.1210 |  |  |  | -2d | 3d |  | 1192 | DH1200 |  | ER | HELIX | TBD |
| B120001.1050 |  | DH1200/Electrical Room #5201 // Install Door Frames |  | 1d | 2026-11-04 | 2026-11-04 | B120001.1240, B120001.1040 FF |  |  |  | 22d | 1d |  | 1179 | DH1200 |  | ER |  |  |
| B120001.1130 |  | DH1200/Electrical Room #5201 // Install Lighting, Fire Alarm & Fire Protection |  | 2d | 2026-11-04 | 2026-11-05 | B120001.1300, B120001.1120 |  |  |  | 21d | 0d |  | 1183 | DH1200 |  | ER | HELIX | WAC |
| B120001.1310 |  | DH1200/Electrical Room #5201 // Final FOD Check of all Panels |  | 2d | 2026-11-04 | 2026-11-05 | B120001.1300, B120001.1320, B120001.1240, B120001.1230 |  |  |  | -5d | 3d |  | 1199 | DH1200 |  | ER | HELIX | QC |
| B120001.1330 |  | DH1200/Electrical Room #5201 // Mechanical Equipment Pre-Start up |  | 2d | 2026-11-04 | 2026-11-05 | B120001.1240, B120001.1260, B120001.1270, B120001.1280 |  |  |  | -5d | 3d |  | 1201 | DH1200 |  | ER |  |  |
| B120001.1140 |  | DH1200/Electrical Room #5201 // Wall Touch up Final Coat of Paint |  | 3d | 2026-11-06 | 2026-11-10 | B120001.1050, B120001.1130 |  |  |  | 21d | 0d |  | 1185 | DH1200 |  | ER |  |  |
| F.1000A.1194 |  | DH1200/Electrical Room #5201 // Mount & Terminate Security Devices |  | 5d | 2026-11-06 | 2026-11-13 | B120001.1130, F.1000A.1193 |  |  |  | 25d | 4d |  | 1156 | DH1200 |  | ER |  |  |
| B120001.1150 |  | DH1200/Electrical Room #5201 // Install Wall Base, Trim, and Devices |  | 3d | 2026-11-12 | 2026-11-16 | B120001.1140 |  |  |  | 21d | 0d |  | 1186 | DH1200 |  | ER |  |  |
| F.1000A.1195 |  | DH1200/Electrical Room #5201 // Test Security Devices |  | 2d | 2026-11-20 | 2026-11-23 | B120001.1150 FS+3d, F.1000A.1194, F.1000A.1385 FF |  |  |  | 21d | 0d |  | 1156 | DH1200 |  | ER |  |  |
| B120001.1160 |  | DH1200/Electrical Room #5201 // Suffolk Pre Punch |  | 5d | 2026-11-24 | 2026-12-01 | F.1000A.1195, B120001.1150 |  |  |  | 21d | 29d |  | 1187 | DH1200 |  | ER |  |  |

| ID | WBS | Activity | Type | Duration | Start | Finish | Predecessors | Complete | Planned start | Planned finish | Total float | Free float | Constraint | MSP Activity ID | QTS - AREA | 12 - SUFFOLK - Export_to_Procore | QTS - DASH | QTS - Subcontractor | QTS - Resp |
| --- | --- | --- | --- | --- | --- | --- | --- | --- | --- | --- | --- | --- | --- | --- | --- | --- | --- | --- | --- |
|  | 2 | **Electrcal Room #5204** |  |  | 2026-07-27 | 2026-11-24 |  |  |  |  |  |  |  |  |  |  |  |  |  |
| B120004.1000 |  | DH1200/Electrical Room #5204 // Seal Concrete |  | 2d | 2026-07-27 A | 2026-07-28 A | B120001.1000 | 100% | 2026-07-30 | 2026-07-31 |  |  |  | 1271 | DH1200 | Y | ER |  |  |
| B120004.1010 |  | DH1200/Electrical Room #5204 // MEPF Layout of Overhead Supports |  | 2d | 2026-08-03 A | 2026-08-04 A | B120004.1000, B120001.1010 SS | 100% |  |  |  |  |  | 1272 | DH1200 | Y | ER | HELIX | ALOO |
| B120004.1040 |  | DH1200/Electrical Room #5204 // Frame Walls including Backing |  | 4d | 2026-08-05 A | 2026-08-10 A | B120004.1010 | 100% |  |  |  |  |  | 1274 | DH1200 | Y | ER |  |  |
| B120004.1060 |  | DH1200/Electrical Room #5204 // MEPF Install Rough Wall |  | 2d | 2026-08-20 A | 2026-09-10 A | B120004.1040 | 100% | 2026-08-11 | 2026-08-12 |  |  |  | 1276 | DH1200 | Y | ER | HELIX | AC |
| B120004.1020 |  | DH1200/Electrical Room #5204 // MEPF Install High Overhead Systems |  | 6d | 2026-08-27 A | 2026-09-10 A | B120004.1010 | 100% | 2026-08-05 | 2026-08-12 |  |  |  | 1273 | DH1200 | Y | ER | HELIX | ALOO |
| B120001.3113 |  | DH1200/Electrical Room #5204 // Install Overhead Cable Ladder / 36" Cable Tray - TFO |  | 5d | 2026-09-08 A | 2026-09-14 A | B120004.1010 | 100% | 2026-08-05 | 2026-08-11 |  |  |  | 1181 |  | Y | ER |  |  |
| B120004.1070 |  | DH1200/Electrical Room #5204 // Install Top Down Sheet Rock |  | 5d | 2026-09-10 A | 2026-09-17 A | B120004.1040 | 100% | 2026-08-11 | 2026-08-17 |  |  |  | 1277 | DH1200 | Y | ER |  |  |
| B120004.1090 |  | DH1200/Electrical Room #5204 // Rough Wall Inspspection (Approval to Close up) |  | 1d | 2026-09-17 A | 2026-09-17 A | B120004.1060 | 100% | 2026-08-13 | 2026-08-13 |  |  |  | 1278 | DH1200 | Y | ER |  |  |
| B120004.1130 |  | DH1200/Electrical Room #5204 // Install MEPF Overhead Ceiling Rough |  | 3d | 2026-09-17 A | 2026-09-21 A | B120004.1020 | 100% | 2026-08-19 | 2026-08-21 |  |  |  | 1283 | DH1200 |  | ER | HELIX | AL |
| B120004.1140 |  | DH1200/Electrical Room #5204 // Install Cable Tray |  | 3d | 2026-09-17 A | 2026-09-21 A | B120004.1020 | 100% | 2026-08-19 | 2026-08-21 |  |  |  | 1284 | DH1200 |  | ER | HELIX | OO |
| F.1000A.1196 |  | DH1200/Electrical Room #5204 // Rough-In Security |  | 2d | 2026-09-17 A | 2026-09-18 A | B120004.1020 | 100% | 2026-08-13 | 2026-08-14 |  |  |  | 1156 | DH1200 | Y | ER | HELIX | AC |
| F.1000A.1395 |  | DH1200/Electrical Room #5204 // BMS & EPMS Rough-In |  | 2d | 2026-09-17 A | 2026-09-18 A | F.1000A.1196 SS, F.1000A.1196 FF | 100% | 2026-09-30 | 2026-10-01 |  |  |  |  | DH1200 |  |  |  |  |
| B120004.1080 |  | DH1200/Electrical Room #5204 // Install Overhead Buss duct |  | 2d | 2026-09-22 A | 2026-09-23 A | B120004.1070, B120004.1020 | 100% | 2026-08-18 | 2026-08-19 |  |  |  | 1290 | DH1200 |  | ER | HELIX | AL |
| B120004.1110 |  | DH1200/Electrical Room #5204 // Tape and Finish Walls |  | 6d | 2026-09-25 A | 2026-10-06 A | B120004.1090 | 100% | 2026-08-19 | 2026-08-26 |  |  |  | 1280 | DH1200 |  | ER |  |  |
| B120004.1120 |  | DH1200/Electrical Room #5204 // Prime and First Coat of Paint |  | 2d | 2026-09-29 A | 2026-10-05 A | B120004.1100 FF, B120004.1140, B120004.1110 SS+2d | 100% | 2026-08-27 | 2026-08-28 |  |  |  | 1282 | DH1200 |  | ER |  |  |
| B120004.1100 |  | DH1200/Electrical Room #5204 // Install Balance of Sheetrock |  | 3d | 2026-10-01 A | 2026-10-05 A | B120004.1090 | 100% | 2026-09-30 | 2026-10-02 |  |  |  | 1279 | DH1200 |  | ER |  |  |
| B120004.1150 |  | DH1200/Electrical Room #5204 // Set CRAH-ER5204- 01 |  | 1d | 2026-10-05 A | 2026-10-08 A | B120004.1120 | 100% | 2026-10-05 | 2026-10-05 |  |  |  | 1296 | DH1200 |  | ER |  |  |
| B120004.3031 |  | DH1200/Electrical Room #5204 // Set CRAH-ER5204- 02 |  | 1d | 2026-10-05 A | 2026-10-08 A | B120004.1150 SS | 100% | 2026-10-05 | 2026-10-05 |  |  |  | 1296 | DH1200 |  | ER |  |  |
| B120004.3032 |  | DH1200/Electrical Room #5204 // Set CRAH-ER5204- 03 |  | 1d | 2026-10-05 A | 2026-10-08 A | B120004.3031 SS | 100% | 2026-10-05 | 2026-10-05 |  |  |  | 1296 | DH1200 |  | ER |  |  |
| B120004.3033 |  | DH1200/Electrical Room #5204 // Set CRAH-ER5204- 04 |  | 1d | 2026-10-05 A | 2026-10-08 A | B120004.3032 SS | 100% | 2026-10-05 | 2026-10-05 |  |  |  | 1296 | DH1200 |  | ER |  |  |
| B120004.3034 |  | DH1200/Electrical Room #5204 // Set CRAH-ER5204- 05 |  | 1d | 2026-10-05 A | 2026-10-08 A | B120004.3033 SS | 100% | 2026-10-05 | 2026-10-05 |  |  |  | 1296 | DH1200 |  | ER |  |  |
| B120004.3035 |  | DH1200/Electrical Room #5204 // Set CRAH-ER5204- 06 |  | 1d | 2026-10-05 A | 2026-10-08 A | B120004.3034 SS | 100% | 2026-10-05 | 2026-10-05 |  |  |  | 1296 | DH1200 |  | ER |  |  |
| B120004.3036 |  | DH1200/Electrical Room #5204 // Ready to Receive Equipment | milestone | 0d | 2026-10-06 A | 2026-10-06 A | B120004.1120 FF | 100% | 2026-10-02 | 2026-10-02 |  |  |  | 1284 | DH1200 |  | ER | HELIX | TBD |
| ER.5101.3050 |  | DH1200/Electrical Room #5204 // Set Skid - SKID-F120 |  | 1d | 2026-10-13 A | 2026-10-13 A | B120001.3230, ER.5101.3049 SS | 100% | 2026-10-14 | 2026-10-14 |  |  |  | 1107 | DH1200 |  | ER | HELIX | TBD |
| ER.5101.3051 |  | DH1200/Electrical Room #5204 // Set Skid - SKID-G120 |  | 1d | 2026-10-13 A | 2026-10-13 A | B120001.3230, ER.5101.3050 SS | 100% | 2026-10-14 | 2026-10-14 |  |  |  | 1107 | DH1200 |  | ER | HELIX | TBD |
| B120001.3114 |  | DH1200/Electrical Room #5204 // Install Overhead HAC - TFO |  | 5d | 2026-10-14 | 2026-10-20 | B120001.3113 FF |  |  |  | -5d | 0d |  | 1181 |  | Y | ER |  |  |
| B120001.3220 |  | DH1200/Electrical Room #5204 // DH1200 - OFCI Skid Ship Date (10/06/2026) 2ND Shipment | milestone | 0d | 2026-10-14 | 2026-10-14 | B120004.3036 FF |  |  |  | -3d | 0d | finish on or after 2026-10-06 | 1180 |  |  | ER |  |  |
| B120004.1160 |  | DH1200/Electrical Room #5204 // Mechanical Connections to CRAHU |  | 5d | 2026-10-14 | 2026-10-20 | B120004.3035 |  |  |  | -3d | 0d |  | 1297 | DH1200 |  | ER |  |  |
| B120004.1180 |  | DH1200/Electrical Room #5204 // Pull Misc Feeder and Branch Circuits |  | 4d | 2026-10-14 | 2026-10-19 | B120004.1130 |  |  |  | 0d |  |  | 1300 | DH1200 |  | ER | HELIX | AL |
| B120004.1200 |  | DH1200/Electrical Room #5204 // Pull Cable Tray Feeders (CRAHU/CDU) |  | 10d | 2026-10-14 | 2026-10-27 | B120004.1140 |  |  |  | -8d | 0d |  | 1293 | DH1200 |  | ER | HELIX | OO |
| ER.5101.3052 |  | DH1200/Electrical Room #5204 // Set Skid - SKID-H120 |  | 1d | 2026-10-14 | 2026-10-14 | B120001.3220, ER.5101.3051 |  |  |  | -3d | 0d |  | 1107 | DH1200 |  | ER | HELIX | TBD |
| ER.5101.3053 |  | DH1200/Electrical Room #5204 // Set Skid - SKID-J120 |  | 1d | 2026-10-14 | 2026-10-14 | B120001.3220, ER.5101.3052 SS |  |  |  | -3d | 0d |  | 1107 | DH1200 |  | ER | HELIX | TBD |
| ER.5101.3054 |  | DH1200/Electrical Room #5204 // Set Skid - SKID-K120 |  | 1d | 2026-10-14 | 2026-10-14 | B120001.3220, ER.5101.3053 SS |  |  |  | -3d | 0d |  | 1107 | DH1200 |  | ER | HELIX | TBD |
| F.1000A.1197 |  | DH1200/Electrical Room #5204 // Pull & Test Security Cable |  | 3d | 2026-10-14 | 2026-10-16 | F.1000A.1196 |  |  |  | 61d | 0d |  | 1156 | DH1200 |  | ER |  |  |
| B120004.1190 |  | DH1200/Electrical Room #5204 // Install Cable Buss From Exterior |  | 3d | 2026-10-15 | 2026-10-19 | B120004.1140, ER.5101.3054 |  |  |  | -3d | 0d |  | 1291 | DH1200 |  | ER | HELIX | TBD |
| B120004.1230 |  | DH1200/Electrical Room #5204 // Buss Duct Tie In to Elect Gear |  | 3d | 2026-10-15 | 2026-10-19 | B120004.1140, B120004.1080, ER.5101.3054 |  |  |  | 6d | 11d |  | 1302 | DH1200 |  | ER | HELIX | TBD |
| B120004.1280 |  | DH1200/Electrical Room #5204 // Land and Terminate Cabel Tray Feeders In Gear |  | 10d | 2026-10-19 | 2026-10-30 | B120004.3035, B120004.1200 FF+3d |  |  |  | -8d | 0d |  | 1295 | DH1200 |  | ER | HELIX | TBD |
| F.1000A.1198 |  | DH1200/Electrical Room #5204 // Install Security Devices |  | 2d | 2026-10-19 | 2026-10-20 | F.1000A.1197 |  |  |  | 61d | 12d |  | 1156 | DH1200 |  | ER |  |  |
| B120004.1240 |  | DH1200/Electrical Room #5204 // Pull Cable Buss Feeders |  | 6d | 2026-10-20 | 2026-10-27 | B120004.1190, ER.5101.3054 |  |  |  | -3d | 0d |  | 1292 | DH1200 |  | ER | HELIX | TBD |
| B120004.3046 |  | DH1200/Electrical Room #5204 // Pull Misc Feeder and Branch Circuits |  | 6d | 2026-10-20 | 2026-10-27 | ER.5101.3054, B120004.1180 |  |  |  | 0d | 5d |  |  | DH1200 |  |  | HELIX |  |
| B120004.1210 |  | DH1200/Electrical Room #5204 // Install Condensate lines from CRAHU's |  | 2d | 2026-10-21 | 2026-10-22 | B120004.1160 |  |  |  | -2d | 6d |  | 1298 | DH1200 |  | ER |  |  |
| B120004.1220 |  | DH1200/Electrical Room #5204 // Install Elec Feeders to CRAHU's |  | 3d | 2026-10-21 | 2026-10-23 | B120004.1140, B120004.1160 |  |  |  | -3d | 5d |  | 1299 | DH1200 |  | ER | HELIX | OO |
| B120004.1260 |  | DH1200/Electrical Room #5204 // Land and Terminate Misc Feeder and Branch Circuits |  | 10d | 2026-10-21 | 2026-11-03 | B120001.3114 |  |  |  | -5d | 0d |  | 1286 | DH1200 |  | ER | HELIX | TBD |
| B120004.1270 |  | DH1200/Electrical Room #5204 // Terminate Cable Buss Feeders |  | 3d | 2026-10-28 | 2026-10-30 | B120004.1240, PS936 |  |  |  | -3d | 2d |  | 1294 | DH1200 |  | ER | HELIX | TBD |
| B120004.1250 |  | DH1200/Electrical Room #5204 // Mechanical Equipment Pre-Start up |  | 7d | 2026-11-02 | 2026-11-10 | B120004.1280, B120004.1160, B120004.1210, B120004.1220 |  |  |  | -8d | 0d |  | 1303 | DH1200 |  | ER |  |  |
| B120004.1290 |  | DH1200/Electrical Room #5204 // Install Lighting, Fire Alarm & Fire Protection |  | 2d | 2026-11-04 | 2026-11-05 | B120004.1260, B120004.1130 |  |  |  | 25d | 0d |  | 1285 | DH1200 |  | ER | HELIX | WAC |
| B120004.1310 |  | DH1200/Electrical Room #5204 // Final FOD Check of all Panels |  | 2d | 2026-11-04 | 2026-11-05 | B120004.3046, B120004.1260, B120004.1230, B120004.1280, B120004.1270 |  |  |  | -5d | 3d |  | 1301 | DH1200 |  | ER | HELIX | QC |
| B120004.1050 |  | DH1200/Electrical Room #5204 // Install Door Frames |  | 1d | 2026-11-06 | 2026-11-06 | B120004.3035, B120004.1290, B120004.1040 FF |  |  |  | 25d | 0d |  | 1281 | DH1200 |  | ER |  |  |
| F.1000A.1199 |  | DH1200/Electrical Room #5204 // Mount & Terminate Security Devices |  | 5d | 2026-11-06 | 2026-11-13 | B120004.1290, F.1000A.1198 |  |  |  | 49d | 2d |  | 1156 | DH1200 |  | ER |  |  |
| B120004.1300 |  | DH1200/Electrical Room #5204 // Wall Touch up Final Coat of Paint |  | 3d | 2026-11-09 | 2026-11-12 | B120004.1050 |  |  |  | 25d | 0d |  | 1287 | DH1200 |  | ER |  |  |
| B120004.1320 |  | DH1200/Electrical Room #5204 // Install Wall Base, Trim, and Devices |  | 3d | 2026-11-13 | 2026-11-17 | B120004.1300 |  |  |  | 25d | 0d |  | 1288 | DH1200 |  | ER |  |  |
| B120004.1330 |  | DH1200/Electrical Room #5204 // Suffolk Pre Punch |  | 5d | 2026-11-18 | 2026-11-24 | B120004.1320 |  |  |  | 25d | 33d |  | 1289 | DH1200 |  | ER |  |  |
| F.1000A.1200 |  | DH1200/Electrical Room #5204 // Test Security Devices |  | 2d | 2026-11-18 | 2026-11-19 | B120004.1320, F.1000A.1199, F.1000A.1395 FF |  |  |  | 47d | 9d |  | 1156 | DH1200 |  | ER |  |  |

| ID | WBS | Activity | Type | Duration | Start | Finish | Predecessors | Complete | Remaining | Planned start | Planned finish | Total float | Free float | MSP Activity ID | QTS - Subcontractor | QTS - AREA | QTS - Resp | 05 -SUFFOLK - Building Phase | 12 - SUFFOLK - Export_to_Procore | QTS - DASH |
| --- | --- | --- | --- | --- | --- | --- | --- | --- | --- | --- | --- | --- | --- | --- | --- | --- | --- | --- | --- | --- |
|  | 3 | **Data Hall 1200** |  |  | 2026-08-04 | 2026-11-25 |  |  |  |  |  |  |  |  |  |  |  |  |  |  |
| B12000.6270 |  | DH 1200 // MEPF overhead layout |  | 3d | 2026-08-04 A | 2026-08-06 A | B120004.1010 | 100% |  | 2026-08-05 | 2026-08-07 |  |  | 1380 | HELIX | DH1200 | ACOO | 2 | Y | DH |
| B12000.6300 |  | DH 1200 // Frame walls |  | 10d | 2026-08-04 A | 2026-08-17 A | B12000.6270 SS | 100% |  | 2026-08-05 | 2026-08-18 |  |  | 1383 |  | DH1200 |  | 2 | Y | DH |
| B12000.6290 |  | DH 1200 // MEPF high overhead install |  | 10d | 2026-09-01 A | 2026-09-15 A | B12000.6270 | 100% |  | 2026-08-10 | 2026-08-21 |  |  | 1382 | HELIX | DH1200 | ACOO | 2 | Y | DH |
| B12000.12067 |  | DH 1200 // Install 1-Side Sheet Rock (DH-Side) |  | 3d | 2026-09-10 A | 2026-09-17 A | B12000.6300 | 100% |  | 2026-08-19 | 2026-08-21 |  |  | 1385 |  | DH1200 |  | 2 |  | DH |
| B12000.6320 |  | DH 1200 // MEP rough in walls |  | 5d | 2026-09-10 A | 2026-09-16 A | B12000.6300 | 100% |  | 2026-08-19 | 2026-08-25 |  |  | 1386 | HELIX | DH1200 | AC | 2 |  | DH |
| F.1000A.1405 |  | DH 1200 // BMS & EPMS Rough-In |  | 2d | 2026-09-10 A | 2026-09-11 A | B12000.6300 | 100% |  | 2026-10-15 | 2026-10-16 |  |  |  |  | DH1200 |  |  |  |  |
| B12000.6260 |  | DH 1200 // Polish concrete |  | 5d | 2026-09-11 A | 2026-09-18 A | B12000.6300 | 100% |  | 2026-09-17 | 2026-09-23 |  |  | 1378 |  | DH1200 |  | 2 |  | DH |
| B12000.6360 |  | DH 1200 // Tape and finish walls |  | 15d | 2026-09-18 A | 2026-10-06 A | B12000.6300 SS, B12000.12067, B12000.6320 | 100% |  | 2026-08-26 | 2026-09-16 |  |  | 1390 |  | DH1200 |  | 2 |  | DH |
| B120001.3115 |  | DH 1200 // Install Overhead Cable Ladder / 36" Cable Tray - TFO |  | 5d | 2026-09-24 A | 2026-10-09 A | B12000.6290 | 100% |  | 2026-08-24 | 2026-08-28 |  |  | 1181 |  |  |  |  |  | DH |
| B12000.6310 |  | DH 1200 // Install wall door frames |  | 3d | 2026-09-28 A | 2026-10-05 A | B12000.6300 FF | 100% |  | 2026-09-23 | 2026-09-25 |  |  | 1385 |  | DH1200 |  | 2 |  | DH |
| B12000.6250 |  | DH 1200 // Install overhead MEP and lighting |  | 5d | 2026-09-29 A | 2026-10-14 | B12000.6290 | 100% | 0d | 2026-09-11 | 2026-09-17 | 53d | 8d | 1377 | HELIX | DH1200 | AC | 2 |  | DH |
| B12000.6410 |  | DH 1200 // Prime and 1st coat of Paint |  | 5d | 2026-10-14 | 2026-10-20 | B12000.6310, B12000.6260, B12000.6360 |  |  |  |  | 51d | 7d | 1391 |  | DH1200 |  | 2 |  | DH |
| B12000.7800 |  | DH 1200 // Install Ceiling supports (rods/wires) no grid |  | 5d | 2026-10-14 | 2026-10-20 | B12000.6290, B12000.6300 SS |  |  |  |  | 43d | 0d | 1375 |  | DH1200 |  | 2 |  | DH |
| B120001.3116 |  | DH 1200 // Install Overhead HAC - TFO |  | 5d | 2026-10-14 | 2026-10-20 | B120001.3115 |  |  |  |  | 49d | 0d | 1181 |  |  |  |  |  | DH |
| B12000.6220 |  | DH 1200 // Install ceiling grid system |  | 8d | 2026-10-21 | 2026-10-30 | B12000.7800 |  |  |  |  | 43d | 0d | 1374 |  | DH1200 |  | 2 |  | DH |
| F.1000A.1201 |  | DH 1200 // Rough-In Security |  | 2d | 2026-10-21 | 2026-10-22 | B120001.3116, B12000.6290 |  |  |  |  | 49d | 0d | 1156 | HELIX | DH1200 | AC |  |  | DH |
| F.1000A.1202 |  | DH 1200 // Pull & Test Security Cable |  | 3d | 2026-10-23 | 2026-10-27 | F.1000A.1201 |  |  |  |  | 49d | 0d | 1156 |  | DH1200 |  |  |  | DH |
| B12000.6240 |  | DH 1200 // Install ceiling grid tiles |  | 3d | 2026-10-26 | 2026-10-28 | B12000.6250, B12000.6220 SS+3d |  |  |  |  | 45d | 2d | 1376 |  | DH1200 |  | 2 |  | DH |
| F.1000A.1203 |  | DH 1200 // Install Security Devices |  | 2d | 2026-10-28 | 2026-10-29 | F.1000A.1202 |  |  |  |  | 49d | 0d | 1156 |  | DH1200 |  |  |  | DH |
| F.1000A.1204 |  | DH 1200 // Mount & Terminate Security Devices |  | 5d | 2026-10-30 | 2026-11-05 | B12000.6410, F.1000A.1203 |  |  |  |  | 49d | 6d | 1156 |  | DH1200 |  |  |  | DH |
| B12000.7790 |  | DH 1200 // Final Paint & Touch up walls |  | 5d | 2026-11-02 | 2026-11-06 | B12000.6240, B12000.6220, B12000.6410 |  |  |  |  | 43d | 0d | 1392 |  | DH1200 |  | 2 |  | DH |
| B12000.7810 |  | DH 1200 // Install MEPF Trim and Finishes |  | 5d | 2026-11-09 | 2026-11-16 | B12000.7790 |  |  |  |  | 43d | 0d | 1394 | HELIX | DH1200 | AC | 2 |  | DH |
| B12000.12096 |  | DH 1200 // Ready to Receive Equipment | milestone | 0d | 2026-11-16 | 2026-11-16 | B12000.7810 |  |  |  |  | 45d | 2d | 1394 | HELIX | DH1200 | TBD | 2 |  | DH |
| F.1000A.1205 |  | DH 1200 // Test Security Devices |  | 2d | 2026-11-17 | 2026-11-18 | B12000.7810, F.1000A.1204, F.1000A.1405 FF |  |  |  |  | 43d | 0d | 1156 |  | DH1200 |  |  |  | DH |
| B12000.7820 |  | DH 1200 // Suffolk Pre Punch |  | 5d | 2026-11-19 | 2026-11-25 | F.1000A.1205, B12000.12096 |  |  |  |  | 43d | 44d | 1395 |  | DH1200 |  | 2 |  | DH |

| ID | WBS | Activity | Type | Duration | Start | Finish | Predecessors | Complete | Remaining | Planned start | Planned finish | Total float | Free float | MSP Activity ID | QTS - Subcontractor | QTS - AREA | QTS - Resp | 05 -SUFFOLK - Building Phase | 12 - SUFFOLK - Export_to_Procore | QTS - DASH |
| --- | --- | --- | --- | --- | --- | --- | --- | --- | --- | --- | --- | --- | --- | --- | --- | --- | --- | --- | --- | --- |
|  | 15 | **PDU Gallery** |  |  | 2026-08-06 | 2026-10-16 |  |  |  |  |  |  |  |  |  |  |  |  |  |  |
| B1200100.1010 |  | DH1200/PDU Gallery // MEPF overhead layout |  | 5d | 2026-08-06 A | 2026-08-12 A | B12000.6270 | 100% |  | 2026-08-10 | 2026-08-14 |  |  | 1398 | HELIX | DH1200 | ACOO | 2 | Y | GR |
| B1200100.1040 |  | DH1200/PDU Gallery // Frame walls |  | 5d | 2026-08-12 A | 2026-08-18 A | B1200100.1010 | 100% |  | 2026-08-17 | 2026-08-21 |  |  | 1401 |  | DH1200 |  | 2 |  | GR |
| B1200100.1000 |  | DH1200/PDU Gallery // Seal concrete |  | 5d | 2026-09-04 A | 2026-09-11 A | B1200100.1030 SS, B1200100.1090 SS | 100% |  | 2026-10-15 | 2026-10-21 |  |  | 1397 |  | DH1200 |  | 2 |  | GR |
| B1200100.1050 |  | DH1200/PDU Gallery // Install wall door frames |  | 1d | 2026-09-10 A | 2026-09-10 A | B1200100.1040 | 100% |  | 2026-08-24 | 2026-08-24 |  |  | 1402 |  | DH1200 |  | 2 |  | GR |
| B1200100.1060 |  | DH1200/PDU Gallery // Install Sheetrock Top Down |  | 3d | 2026-09-11 A | 2026-09-14 A | B1200100.1040 SS, B1200100.1050 | 100% |  | 2026-08-25 | 2026-08-27 |  |  | 1403 |  | DH1200 |  | 2 |  | GR |
| B1200100.1711 |  | DH1200/PDU Gallery // MEP rough in walls |  | 3d | 2026-09-25 A | 2026-10-01 A | B1200100.1060 | 100% |  | 2026-08-28 | 2026-09-01 |  |  | 1403 | HELIX | DH1200 | AC | 2 |  | GR |
| B1200100.1080 |  | DH1200/PDU Gallery // Install sheetrock on walls |  | 5d | 2026-09-28 A | 2026-10-15 | B1200100.1070 FF | 100% | 0d | 2026-10-06 | 2026-10-13 | 9d | 0d | 1405 |  | DH1200 |  | 2 |  | GR |
| B1200100.1030 |  | DH1200/PDU Gallery // MEPF high overhead install |  | 3d | 2026-09-29 A | 2026-10-16 | B1200100.1010 SS, B1200100.1060 |  | 3d | 2026-09-16 | 2026-09-18 | 52d | 1d | 1400 | HELIX | DH1200 | ACOO | 2 |  | GR |
| B1200100.1090 |  | DH1200/PDU Gallery // Tape and finish walls |  | 1d | 2026-10-02 A | 2026-10-15 | B1200100.1080 SS | 100% | 0d | 2026-10-14 | 2026-10-14 | 9d | 0d | 1406 |  | DH1200 |  | 2 |  | GR |
| B1200100.1070 |  | DH1200/PDU Gallery // In wall inspection |  | 1d | 2026-10-14 | 2026-10-14 | B1200100.1711, B1200100.1060 |  |  |  |  | 9d | 0d | 1404 |  | DH1200 |  | 2 |  | GR |
| B1200100.1100 |  | DH1200/PDU Gallery // Paint walls |  | 2d | 2026-10-15 | 2026-10-16 | B1200100.1000, B1200100.1090 |  |  |  |  | 51d | 0d | 1407 |  | DH1200 |  | 2 |  | GR |
| B1200100.1110 |  | DH1200/PDU Gallery // Install Cable Tray (From Elec Rm 5201 to CRAHU Gallery) |  | 2d | 2026-10-15 | 2026-10-16 | B120001.1180, B1200100.1090 |  |  |  |  | 9d | 17d | 1408 | HELIX | DH1200 | OO |  |  | GR |
| B1200100.1712 |  | DH1200/PDU Gallery // Ready to Receive Equipment | milestone | 0d | 2026-10-16 | 2026-10-16 | B1200100.1100 FF |  |  |  |  | 51d | 59d | 1407 | HELIX | DH1200 | TBD | 2 |  | GR |
|  | 14 | **CRAH/CDU Galleries** |  |  | 2026-07-28 | 2026-11-17 |  |  |  |  |  |  |  |  |  |  |  |  |  |  |
|  | 2 | **Gallery 1202** |  |  | 2026-07-29 | 2026-11-17 |  |  |  |  |  |  |  |  |  |  |  |  |  |  |
|  | 4 | **Architectural** |  |  | 2026-07-29 | 2026-11-05 |  |  |  |  |  |  |  |  |  |  |  |  |  |  |
| B1200.4660 |  | DH 1200/Gallery 1202 // Seal concrete |  | 2d | 2026-07-29 A | 2026-07-30 A | B120004.1000 SS | 100% |  | 2026-07-30 | 2026-07-31 |  |  | 1379 |  | DH1200 |  | 2 | Y | GR |
| B1200.4670 |  | DH 1200/Gallery 1202 // MEPF overhead layout |  | 5d | 2026-08-03 A | 2026-08-07 A | B1200.4660 | 100% |  |  |  |  |  | 1412 | HELIX | DH1200 | ACOO | 2 | Y | GR |
| B1200.4700 |  | DH 1200/Gallery 1202 // Frame walls |  | 6d | 2026-08-10 A | 2026-08-17 A | B1200.4670 | 100% |  |  |  |  |  | 1415 |  | DH1200 |  | 2 | Y | GR |
| B1200.4690 |  | DH 1200/Gallery 1202 // MEPF high overhead install |  | 10d | 2026-09-14 A | 2026-09-23 A | B1200.4670, B1200.4720 SS | 100% |  | 2026-08-21 | 2026-09-03 |  |  | 1414 | HELIX | DH1200 | ACOO | 2 |  | GR |
| B1200.4720 |  | DH 1200/Gallery 1202 // Install Sheetrock Top Down |  | 6d | 2026-09-14 A | 2026-09-21 A | B1200.4700 | 100% |  | 2026-08-13 | 2026-08-20 |  |  | 1420 |  | DH1200 |  |  | Y | GR |
| B1200.4710 |  | DH 1200/Gallery 1202 // Install wall door frames |  | 1d | 2026-09-16 A | 2026-09-16 A | B1200.4700, B1200.4670 | 100% |  | 2026-09-25 | 2026-09-25 |  |  | 1416 |  | DH1200 |  | 2 |  | GR |
| B1200.4750 |  | DH 1200/Gallery 1202 // Install Balance of Sheetrock on walls |  | 6d | 2026-09-16 A | 2026-09-23 A | B1200.4690 SS+2d | 100% |  | 2026-09-04 | 2026-09-14 |  |  | 1419 |  | DH1200 |  | 2 |  | GR |
| B1200.4770 |  | DH 1200/Gallery 1202 // Tape and finish walls |  | 8d | 2026-09-16 A | 2026-09-23 A | B1200.4750 FF | 100% |  | 2026-09-15 | 2026-09-24 |  |  | 1421 |  | DH1200 |  | 2 |  | GR |
| F.1000A.1415 |  | DH 1200/Gallery 1202 // BMS & EPMS Rough-In |  | 2d | 2026-09-17 A | 2026-09-18 A | B1200.4700 | 100% |  | 2026-10-07 | 2026-10-08 |  |  |  |  | DH1200 |  |  |  |  |
| B1200.4730 |  | DH 1200/Gallery 1202 // MEP rough in walls |  | 4d | 2026-09-24 A | 2026-09-29 A | B1200.4720, B1200.4750 | 100% |  | 2026-09-04 | 2026-09-10 |  |  | 1417 | HELIX | DH1200 | AC | 2 |  | GR |
| B120001.3117 |  | DH 1200/Gallery 1202 // Install Overhead Cable Ladder / 36" Cable Tray - TFO |  | 5d | 2026-09-24 A | 2026-10-12 A | B1200.4670 | 100% |  | 2026-08-10 | 2026-08-14 |  |  | 1181 |  |  |  |  | Y | GR |
| B120001.3118 |  | DH 1200/Gallery 1202 // Install Overhead HAC - TFO |  | 5d | 2026-09-24 A | 2026-10-09 A | B120001.3117 FF | 100% |  | 2026-08-17 | 2026-08-21 |  |  | 1181 |  |  |  |  |  | GR |
| F.1000A.1206 |  | DH 1200/Gallery 1202 // Rough-In Security |  | 2d | 2026-09-28 A | 2026-09-29 A | B120001.3118, B1200.4670 | 100% |  | 2026-10-07 | 2026-10-08 |  |  | 1156 | HELIX | DH1200 | AC |  |  | GR |
| B1200.4740 |  | DH 1200/Gallery 1202 // In wall inspection |  | 1d | 2026-09-29 A | 2026-09-29 A | B1200.4730 FF | 100% |  | 2026-10-06 | 2026-10-06 |  |  | 1418 |  | DH1200 |  | 2 |  | GR |
| B1200.4790 |  | DH 1200/Gallery 1202 // Prime and Paint walls |  | 4d | 2026-10-07 A | 2026-10-12 A | B1200.4770, B1200.4740 | 100% |  | 2026-10-07 | 2026-10-13 |  |  | 1422 |  | DH1200 |  | 2 |  | GR |
| B1200.4821 |  | DH 1200/Gallery 1202 // Ready to Receive Equipment | milestone | 0d | 2026-10-12 A | 2026-10-12 A | B1200.4790 | 100% |  | 2026-10-14 | 2026-10-14 |  |  | 1424 | HELIX | DH1200 | TBD |  |  | GR |
| B1200.4800 |  | DH 1200/Gallery 1202 // Touch up Walls and Fianl Paint |  | 5d | 2026-10-14 | 2026-10-20 | B1200.4790 FF, B1200.4710 |  |  |  |  | 42d | 0d | 1423 |  | DH1200 |  | 2 |  | GR |
| F.1000A.1207 |  | DH 1200/Gallery 1202 // Pull & Test Security Cable |  | 3d | 2026-10-14 | 2026-10-16 | F.1000A.1206 |  |  |  |  | 37d | 0d | 1156 |  | DH1200 |  |  |  | GR |
| B1200.4810 |  | DH 1200/Gallery 1202 // Install Trim and Devices |  | 2d | 2026-10-19 | 2026-10-20 | B1200.4800 FF |  |  |  |  | 42d | 5d | 1424 | HELIX | DH1200 | AC |  |  | GR |
| F.1000A.1208 |  | DH 1200/Gallery 1202 // Install Security Devices |  | 2d | 2026-10-19 | 2026-10-20 | F.1000A.1207 |  |  |  |  | 37d | 0d | 1156 |  | DH1200 |  |  |  | GR |
| F.1000A.1209 |  | DH 1200/Gallery 1202 // Mount & Terminate Security Devices |  | 5d | 2026-10-21 | 2026-10-27 | B1200.4790, F.1000A.1208 |  |  |  |  | 37d | 0d | 1156 |  | DH1200 |  |  |  | GR |
| F.1000A.1210 |  | DH 1200/Gallery 1202 // Test Security Devices |  | 2d | 2026-10-28 | 2026-10-29 | B1200.4810, F.1000A.1209, F.1000A.1415 FF |  |  |  |  | 37d | 0d | 1156 |  | DH1200 |  |  |  | GR |
| B1200.4820 |  | DH 1200/Gallery 1202 // Suffolk Pre Punch |  | 5d | 2026-10-30 | 2026-11-05 | F.1000A.1210, B1200.4821 SS |  |  |  |  | 37d | 45d | 1425 |  | DH1200 |  |  |  | GR |

| ID | WBS | Activity | Duration | Start | Finish | Predecessors | Total float | Free float | MSP Activity ID | QTS - AREA | QTS - DASH | QTS - Subcontractor | QTS - Resp |
| --- | --- | --- | --- | --- | --- | --- | --- | --- | --- | --- | --- | --- | --- |
|  | 16 | **Raceway** |  |  |  |  |  |  |  |  |  |  |  |
|  | 3 | **Equipment Line-Ups** |  | 2026-10-14 | 2026-11-17 |  |  |  |  |  |  |  |  |
|  | 1 | **A120** |  | 2026-10-14 | 2026-11-16 |  |  |  |  |  |  |  |  |
| B12000-A-EQP-1 |  | Gallery 1202 - A120/Line-Ups // Set CRAH-DH1200- 23 | 1d | 2026-10-14 | 2026-10-14 | B12000.6360, B1200.4821 SS | -8d | 0d | 1433 | DH1200 | GR |  |  |
| B12000-A-EQP-3 |  | Gallery 1202 - A120/Line-Ups // Set CRAH-DH1200- 24 | 1d | 2026-10-14 | 2026-10-14 | B12000-A-EQP-1 SS | -8d | 0d | 1434 | DH1200 | GR |  |  |
| B12000-A-EQP-5 |  | Gallery 1202 - A120/Line-Ups // Set MOD-A120-01 | 1d | 2026-10-14 | 2026-10-14 | B12000-A-EQP-3 FF | 38d | 0d | 1437 | DH1200 | GR | HELIX | TBD |
| B12000-A-EQP-6 |  | Gallery 1202 - A120/Line-Ups // Set MOD-A120-02 | 1d | 2026-10-14 | 2026-10-14 | B12000-A-EQP-5 SS | 38d | 0d | 1437 | DH1200 | GR | HELIX | TBD |
| B12000-A-EQP-10 |  | Gallery 1202 - A120/Line-Ups // Pull Cable Tray Feed from MOD to CRAHU's | 5d | 2026-10-15 | 2026-10-21 | B12000-A-EQP-6 | 39d | 0d | 1438 | DH1200 | GR | HELIX | OO |
| B12000-A-EQP-12 |  | Gallery 1202 - A120/Line-Ups // Mount Electrial Gear for Chiller Controls | 5d | 2026-10-15 | 2026-10-21 | B12000-A-EQP-6 | 38d | 0d | 1443 | DH1200 | GR | HELIX | AC |
| B12000-A-EQP-7 |  | Gallery 1202 - A120/Line-Ups // Set CDU-DH1200- 21 | 1d | 2026-10-15 | 2026-10-15 | B12000-A-EQP-1 | 33d | 0d | 1434 | DH1200 | GR |  |  |
| B12000-A-EQP-9 |  | Gallery 1202 - A120/Line-Ups // Pull Feeder from SWD to MOD | 1d | 2026-10-15 | 2026-10-15 | B12000-A-EQP-6 | 49d | 9d | 1439 | DH1200 | GR | HELIX | OO |
| B12000-A-EQP-8 |  | Gallery 1202 - A120/Line-Ups // Set CDU-DH1200- 22 | 1d | 2026-10-16 | 2026-10-16 | B12000-A-EQP-7, B12000-A-EQP-3 | 33d | 0d | 1434 | DH1200 | GR |  |  |
| B12000-A-EQP-4 |  | Gallery 1202 - A120/Line-Ups // Condensate connections to Floor Drains | 10d | 2026-10-19 | 2026-10-30 | B12000-A-EQP-3, B12000-A-EQP-7, B12000-A-EQP-8 | 33d | 2d | 1436 | DH1200 | GR |  |  |
| B12000-A-EQP-11 |  | Gallery 1202 - A120/Line-Ups // Mechanical Connections to CRAHU Units | 5d | 2026-10-21 | 2026-10-27 | B12000-A-EQP-3 SS+5d | 31d | 0d | 1448 | DH1200 | GR |  |  |
| B12000-A-EQP-17 |  | Gallery 1202 - A120/Line-Ups // Pull Feeder and Branch circuits to MIsc equipment and Chiller controls | 5d | 2026-10-21 | 2026-10-27 | B12000-A-EQP-12 SS+4d | 38d | 0d | 1444 | DH1200 | GR | HELIX | AC |
| B12000-A-EQP-13 |  | Gallery 1202 - A120/Line-Ups // Pull Cable Tray Feed from MOD to CRAHU's | 5d | 2026-10-22 | 2026-10-28 | B12000-A-EQP-10 | 39d | 0d | 1441 | DH1200 | GR | HELIX | OO |
| B12000-A-EQP-16 |  | Gallery 1202 - A120/Line-Ups // Terminate CRAHU Electrical Connections | 5d | 2026-10-26 | 2026-10-30 | B12000-A-EQP-13 SS+2d, B12000-A-EQP-10 | 39d | 1d | 1442 | DH1200 | GR | HELIX | OO |
| B12000-A-EQP-19 |  | Gallery 1202 - A120/Line-Ups // Teminate all Misc Equipment and Chiller Controls | 5d | 2026-10-27 | 2026-11-02 | B12000-A-EQP-17 SS+4d | 38d | 0d | 1445 | DH1200 | GR |  |  |
| B12000-A-EQP-14 |  | Gallery 1202 - A120/Line-Ups // Condensate connections to Floor Drains | 10d | 2026-10-28 | 2026-11-10 | B12000-A-EQP-11 SS+5d, B12000-A-EQP-4 SS+5d | 31d | 0d | 1449 | DH1200 | GR |  |  |
| B12000-A-EQP-15 |  | Gallery 1202 - A120/Line-Ups // Terminate Mod Panels | 1d | 2026-10-29 | 2026-10-29 | B12000-A-EQP-13, B12000-A-EQP-10, B12000-A-EQP-9 | 40d | 2d | 1440 | DH1200 | GR | HELIX | OO |
| B12000-A-EQP-20 |  | Gallery 1202 - A120/Line-Ups // Electrical Gear FOD Inspection Pre-Start Up | 2d | 2026-11-03 | 2026-11-04 | B12000-A-EQP-16, B12000-A-EQP-19, B12000-A-EQP-15, B1200352 | 38d | 46d | 1446 | DH1200 | GR | HELIX | QC |
| B12000-A-EQP-18 |  | Gallery 1202 - A120/Line-Ups // Mechanical Gear FOD Inspection Pre-Start Up | 3d | 2026-11-12 | 2026-11-16 | B12000-A-EQP-3, B12000-A-EQP-14, B12000-A-EQP-4, B12000-A-EQP-11 | 31d | 39d | 1447 | DH1200 | GR |  |  |
|  | 2 | **B120** |  | 2026-10-14 | 2026-11-16 |  |  |  |  |  |  |  |  |
| B12000-A-EQP-21 |  | Gallery 1202 - B120/Line-Ups // Set CRAH-DH1200- 25 | 1d | 2026-10-14 | 2026-10-14 | B12000-A-EQP-3 SS | -8d | 0d | 1433 | DH1200 | GR |  |  |
| B12000-A-EQP-23 |  | Gallery 1202 - B120/Line-Ups // Set CRAH-DH1200- 26 | 1d | 2026-10-14 | 2026-10-14 | B12000-A-EQP-21 SS | -8d | 0d | 1434 | DH1200 | GR |  |  |
| B12000-A-EQP-25 |  | Gallery 1202 - B120/Line-Ups // Set MOD-B120-01 | 1d | 2026-10-14 | 2026-10-14 | B12000-A-EQP-23 FF | 33d | 0d | 1437 | DH1200 | GR | HELIX | TBD |
| B12000-A-EQP-26 |  | Gallery 1202 - B120/Line-Ups // Set MOD-B120-02 | 1d | 2026-10-14 | 2026-10-14 | B12000-A-EQP-25 SS | 33d | 0d | 1437 | DH1200 | GR | HELIX | TBD |
| B12000-A-EQP-27 |  | Gallery 1202 - B120/Line-Ups // Set CDU-DH1200- 23 | 1d | 2026-10-15 | 2026-10-15 | B12000-A-EQP-21 | 33d | 0d | 1434 | DH1200 | GR |  |  |
| B12000-A-EQP-29 |  | Gallery 1202 - B120/Line-Ups // Pull Feeder from SWD to MOD | 1d | 2026-10-15 | 2026-10-15 | B12000-A-EQP-26 | 49d | 9d | 1439 | DH1200 | GR | HELIX | OO |
| B12000-A-EQP-30 |  | Gallery 1202 - B120/Line-Ups // Pull Cable Tray Feed from MOD to CRAHU's | 5d | 2026-10-15 | 2026-10-21 | B12000-A-EQP-26 | 39d | 0d | 1438 | DH1200 | GR | HELIX | OO |
| B12000-A-EQP-32 |  | Gallery 1202 - B120/Line-Ups // Mount Electrial Gear for Chiller Controls | 10d | 2026-10-15 | 2026-10-28 | B12000-A-EQP-26 | 33d | 0d | 1443 | DH1200 | GR | HELIX | AC |
| B12000-A-EQP-28 |  | Gallery 1202 - B120/Line-Ups // Set CDU-DH1200- 24 | 1d | 2026-10-16 | 2026-10-16 | B12000-A-EQP-27, B12000-A-EQP-23 | 33d | 0d | 1434 | DH1200 | GR |  |  |
| B12000-A-EQP-24 |  | Gallery 1202 - B120/Line-Ups // Condensate connections to Floor Drains | 10d | 2026-10-19 | 2026-10-30 | B12000-A-EQP-23, B12000-A-EQP-27, B12000-A-EQP-28 | 33d | 2d | 1436 | DH1200 | GR |  |  |
| B12000-A-EQP-31 |  | Gallery 1202 - B120/Line-Ups // Mechanical Connections to CRAHU Units | 10d | 2026-10-21 | 2026-11-03 | B12000-A-EQP-23 SS+5d | 31d | 0d | 1448 | DH1200 | GR |  |  |
| B12000-A-EQP-37 |  | Gallery 1202 - B120/Line-Ups // Pull Feeder and Branch circuits to MIsc equipment and Chiller controls | 10d | 2026-10-21 | 2026-11-03 | B12000-A-EQP-32 SS+4d | 33d | 0d | 1444 | DH1200 | GR | HELIX | AC |
| B12000-A-EQP-33 |  | Gallery 1202 - B120/Line-Ups // Pull Cable Tray Feed from MOD to CRAHU's | 5d | 2026-10-22 | 2026-10-28 | B12000-A-EQP-30 | 39d | 0d | 1441 | DH1200 | GR | HELIX | OO |
| B12000-A-EQP-36 |  | Gallery 1202 - B120/Line-Ups // Terminate CRAHU Electrical Connections | 5d | 2026-10-26 | 2026-10-30 | B12000-A-EQP-33 SS+2d, B12000-A-EQP-30 | 39d | 6d | 1442 | DH1200 | GR | HELIX | OO |
| B12000-A-EQP-39 |  | Gallery 1202 - B120/Line-Ups // Teminate all Misc Equipment and Chiller Controls | 10d | 2026-10-27 | 2026-11-09 | B12000-A-EQP-37 SS+4d | 33d | 0d | 1445 | DH1200 | GR |  |  |
| B12000-A-EQP-34 |  | Gallery 1202 - B120/Line-Ups // Condensate connections to Floor Drains | 10d | 2026-10-28 | 2026-11-10 | B12000-A-EQP-31 SS+5d, B12000-A-EQP-24 SS+5d | 31d | 0d | 1449 | DH1200 | GR |  |  |
| B12000-A-EQP-35 |  | Gallery 1202 - B120/Line-Ups // Terminate Mod Panels | 1d | 2026-10-29 | 2026-10-29 | B12000-A-EQP-33, B12000-A-EQP-30, B12000-A-EQP-29 | 40d | 7d | 1440 | DH1200 | GR | HELIX | OO |
| B12000-A-EQP-40 |  | Gallery 1202 - B120/Line-Ups // Electrical Gear FOD Inspection Pre-Start Up | 2d | 2026-11-10 | 2026-11-12 | B12000-A-EQP-36, B12000-A-EQP-39, B12000-A-EQP-35, B1200354 | 33d | 41d | 1446 | DH1200 | GR | HELIX | QC |
| B12000-A-EQP-38 |  | Gallery 1202 - B120/Line-Ups // Mechanical Gear FOD Inspection Pre-Start Up | 3d | 2026-11-12 | 2026-11-16 | B12000-A-EQP-23, B12000-A-EQP-34, B12000-A-EQP-24, B12000-A-EQP-31 | 31d | 39d | 1447 | DH1200 | GR |  |  |

| ID | WBS | Activity | Duration | Start | Finish | Predecessors | Total float | Free float | MSP Activity ID | QTS - AREA | QTS - DASH | QTS - Subcontractor | QTS - Resp |
| --- | --- | --- | --- | --- | --- | --- | --- | --- | --- | --- | --- | --- | --- |
|  | 3 | **C120** |  | 2026-10-14 | 2026-11-16 |  |  |  |  |  |  |  |  |
| B12000-A-EQP-41 |  | Gallery 1202 - C120/Line-Ups // Set CRAH-DH1200- 27 | 1d | 2026-10-14 | 2026-10-14 | B12000-A-EQP-23 SS | -8d | 0d | 1433 | DH1200 | GR |  |  |
| B12000-A-EQP-43 |  | Gallery 1202 - C120/Line-Ups // Set CRAH-DH1200- 28 | 1d | 2026-10-14 | 2026-10-14 | B12000-A-EQP-41 SS | -8d | 0d | 1434 | DH1200 | GR |  |  |
| B12000-A-EQP-45 |  | Gallery 1202 - C120/Line-Ups // Set MOD-C120-01 | 1d | 2026-10-14 | 2026-10-14 | B12000-A-EQP-43 FF | 33d | 0d | 1437 | DH1200 | GR | HELIX | TBD |
| B12000-A-EQP-46 |  | Gallery 1202 - C120/Line-Ups // Set MOD-C120-02 | 1d | 2026-10-14 | 2026-10-14 | B12000-A-EQP-45 SS | 33d | 0d | 1437 | DH1200 | GR | HELIX | TBD |
| B12000-A-EQP-47 |  | Gallery 1202 - C120/Line-Ups // Set CDU-DH1200- 25 | 1d | 2026-10-15 | 2026-10-15 | B12000-A-EQP-41 | 33d | 0d | 1434 | DH1200 | GR |  |  |
| B12000-A-EQP-49 |  | Gallery 1202 - C120/Line-Ups // Pull Feeder from SWD to MOD | 1d | 2026-10-15 | 2026-10-15 | B12000-A-EQP-46 | 49d | 9d | 1439 | DH1200 | GR | HELIX | OO |
| B12000-A-EQP-50 |  | Gallery 1202 - C120/Line-Ups // Pull Cable Tray Feed from MOD to CRAHU's | 5d | 2026-10-15 | 2026-10-21 | B12000-A-EQP-46 | 39d | 0d | 1438 | DH1200 | GR | HELIX | OO |
| B12000-A-EQP-52 |  | Gallery 1202 - C120/Line-Ups // Mount Electrial Gear for Chiller Controls | 10d | 2026-10-15 | 2026-10-28 | B12000-A-EQP-46 | 33d | 0d | 1443 | DH1200 | GR | HELIX | AC |
| B12000-A-EQP-48 |  | Gallery 1202 - C120/Line-Ups // Set CDU-DH1200- 26 | 1d | 2026-10-16 | 2026-10-16 | B12000-A-EQP-47, B12000-A-EQP-43 | 33d | 0d | 1434 | DH1200 | GR |  |  |
| B12000-A-EQP-44 |  | Gallery 1202 - C120/Line-Ups // Condensate connections to Floor Drains | 10d | 2026-10-19 | 2026-10-30 | B12000-A-EQP-43, B12000-A-EQP-47, B12000-A-EQP-48 | 33d | 2d | 1436 | DH1200 | GR |  |  |
| B12000-A-EQP-51 |  | Gallery 1202 - C120/Line-Ups // Mechanical Connections to CRAHU Units | 10d | 2026-10-21 | 2026-11-03 | B12000-A-EQP-43 SS+5d | 31d | 0d | 1448 | DH1200 | GR |  |  |
| B12000-A-EQP-57 |  | Gallery 1202 - C120/Line-Ups // Pull Feeder and Branch circuits to MIsc equipment and Chiller controls | 10d | 2026-10-21 | 2026-11-03 | B12000-A-EQP-52 SS+4d | 33d | 0d | 1444 | DH1200 | GR | HELIX | AC |
| B12000-A-EQP-53 |  | Gallery 1202 - C120/Line-Ups // Pull Cable Tray Feed from MOD to CRAHU's | 5d | 2026-10-22 | 2026-10-28 | B12000-A-EQP-50 | 39d | 0d | 1441 | DH1200 | GR | HELIX | OO |
| B12000-A-EQP-56 |  | Gallery 1202 - C120/Line-Ups // Terminate CRAHU Electrical Connections | 5d | 2026-10-26 | 2026-10-30 | B12000-A-EQP-53 SS+2d, B12000-A-EQP-50 | 39d | 6d | 1442 | DH1200 | GR | HELIX | OO |
| B12000-A-EQP-59 |  | Gallery 1202 - C120/Line-Ups // Teminate all Misc Equipment and Chiller Controls | 10d | 2026-10-27 | 2026-11-09 | B12000-A-EQP-57 SS+4d | 33d | 0d | 1445 | DH1200 | GR |  |  |
| B12000-A-EQP-54 |  | Gallery 1202 - C120/Line-Ups // Condensate connections to Floor Drains | 10d | 2026-10-28 | 2026-11-10 | B12000-A-EQP-51 SS+5d, B12000-A-EQP-44 SS+5d | 31d | 0d | 1449 | DH1200 | GR |  |  |
| B12000-A-EQP-55 |  | Gallery 1202 - C120/Line-Ups // Terminate Mod Panels | 1d | 2026-10-29 | 2026-10-29 | B12000-A-EQP-53, B12000-A-EQP-50, B12000-A-EQP-49 | 40d | 7d | 1440 | DH1200 | GR | HELIX | OO |
| B12000-A-EQP-60 |  | Gallery 1202 - C120/Line-Ups // Electrical Gear FOD Inspection Pre-Start Up | 2d | 2026-11-10 | 2026-11-12 | B12000-A-EQP-56, B12000-A-EQP-59, B12000-A-EQP-55, B1200356 | 33d | 41d | 1446 | DH1200 | GR | HELIX | QC |
| B12000-A-EQP-58 |  | Gallery 1202 - C120/Line-Ups // Mechanical Gear FOD Inspection Pre-Start Up | 3d | 2026-11-12 | 2026-11-16 | B12000-A-EQP-43, B12000-A-EQP-54, B12000-A-EQP-44, B12000-A-EQP-51 | 31d | 39d | 1447 | DH1200 | GR |  |  |
|  | 4 | **D120** |  | 2026-10-15 | 2026-11-17 |  |  |  |  |  |  |  |  |
| B12000-A-EQP-61 |  | Gallery 1202 - D120/Line-Ups // Set CRAH-DH1200- 28 | 1d | 2026-10-15 | 2026-10-15 | B12000-A-EQP-43 | -8d | 0d | 1433 | DH1200 | GR |  |  |
| B12000-A-EQP-63 |  | Gallery 1202 - D120/Line-Ups // Set CRAH-DH1200- 29 | 1d | 2026-10-15 | 2026-10-15 | B12000-A-EQP-61 SS | -8d | 0d | 1434 | DH1200 | GR |  |  |
| B12000-A-EQP-65 |  | Gallery 1202 - D120/Line-Ups // Set MOD-D120-01 | 1d | 2026-10-15 | 2026-10-15 | B12000-A-EQP-63 FF | 32d | 0d | 1437 | DH1200 | GR | HELIX | TBD |
| B12000-A-EQP-66 |  | Gallery 1202 - D120/Line-Ups // Set MOD-D120-02 | 1d | 2026-10-15 | 2026-10-15 | B12000-A-EQP-65 SS | 32d | 0d | 1437 | DH1200 | GR | HELIX | TBD |
| B12000-A-EQP-67 |  | Gallery 1202 - D120/Line-Ups // Set CDU-DH1200- 27 | 1d | 2026-10-16 | 2026-10-16 | B12000-A-EQP-61 | 32d | 0d | 1434 | DH1200 | GR |  |  |
| B12000-A-EQP-69 |  | Gallery 1202 - D120/Line-Ups // Pull Feeder from SWD to MOD | 1d | 2026-10-16 | 2026-10-16 | B12000-A-EQP-66 | 48d | 9d | 1439 | DH1200 | GR | HELIX | OO |
| B12000-A-EQP-70 |  | Gallery 1202 - D120/Line-Ups // Pull Cable Tray Feed from MOD to CRAHU's | 5d | 2026-10-16 | 2026-10-22 | B12000-A-EQP-66 | 38d | 0d | 1438 | DH1200 | GR | HELIX | OO |
| B12000-A-EQP-72 |  | Gallery 1202 - D120/Line-Ups // Mount Electrial Gear for Chiller Controls | 10d | 2026-10-16 | 2026-10-29 | B12000-A-EQP-66 | 32d | 0d | 1443 | DH1200 | GR | HELIX | AC |
| B12000-A-EQP-68 |  | Gallery 1202 - D120/Line-Ups // Set CDU-DH1200- 28 | 1d | 2026-10-19 | 2026-10-19 | B12000-A-EQP-67, B12000-A-EQP-63 | 32d | 0d | 1434 | DH1200 | GR |  |  |
| B12000-A-EQP-64 |  | Gallery 1202 - D120/Line-Ups // Condensate connections to Floor Drains | 10d | 2026-10-20 | 2026-11-02 | B12000-A-EQP-63, B12000-A-EQP-67, B12000-A-EQP-68 | 32d | 2d | 1436 | DH1200 | GR |  |  |
| B12000-A-EQP-71 |  | Gallery 1202 - D120/Line-Ups // Mechanical Connections to CRAHU Units | 10d | 2026-10-22 | 2026-11-04 | B12000-A-EQP-63 SS+5d | 30d | 0d | 1448 | DH1200 | GR |  |  |
| B12000-A-EQP-77 |  | Gallery 1202 - D120/Line-Ups // Pull Feeder and Branch circuits to MIsc equipment and Chiller controls | 10d | 2026-10-22 | 2026-11-04 | B12000-A-EQP-72 SS+4d | 32d | 0d | 1444 | DH1200 | GR | HELIX | AC |
| B12000-A-EQP-73 |  | Gallery 1202 - D120/Line-Ups // Pull Cable Tray Feed from MOD to CRAHU's | 5d | 2026-10-23 | 2026-10-29 | B12000-A-EQP-70 | 38d | 0d | 1441 | DH1200 | GR | HELIX | OO |
| B12000-A-EQP-76 |  | Gallery 1202 - D120/Line-Ups // Terminate CRAHU Electrical Connections | 5d | 2026-10-27 | 2026-11-02 | B12000-A-EQP-73 SS+2d, B12000-A-EQP-70 | 38d | 6d | 1442 | DH1200 | GR | HELIX | OO |
| B12000-A-EQP-79 |  | Gallery 1202 - D120/Line-Ups // Teminate all Misc Equipment and Chiller Controls | 10d | 2026-10-28 | 2026-11-10 | B12000-A-EQP-77 SS+4d | 32d | 0d | 1445 | DH1200 | GR |  |  |
| B12000-A-EQP-74 |  | Gallery 1202 - D120/Line-Ups // Condensate connections to Floor Drains | 10d | 2026-10-29 | 2026-11-12 | B12000-A-EQP-71 SS+5d, B12000-A-EQP-64 SS+5d | 30d | 0d | 1449 | DH1200 | GR |  |  |
| B12000-A-EQP-75 |  | Gallery 1202 - D120/Line-Ups // Terminate Mod Panels | 1d | 2026-10-30 | 2026-10-30 | B12000-A-EQP-73, B12000-A-EQP-70, B12000-A-EQP-69 | 39d | 7d | 1440 | DH1200 | GR | HELIX | OO |
| B12000-A-EQP-80 |  | Gallery 1202 - D120/Line-Ups // Electrical Gear FOD Inspection Pre-Start Up | 2d | 2026-11-12 | 2026-11-13 | B12000-A-EQP-76, B12000-A-EQP-79, B12000-A-EQP-75, B1200358 | 32d | 40d | 1446 | DH1200 | GR | HELIX | QC |
| B12000-A-EQP-78 |  | Gallery 1202 - D120/Line-Ups // Mechanical Gear FOD Inspection Pre-Start Up | 3d | 2026-11-13 | 2026-11-17 | B12000-A-EQP-63, B12000-A-EQP-74, B12000-A-EQP-64, B12000-A-EQP-71 | 30d | 38d | 1447 | DH1200 | GR |  |  |

| ID | WBS | Activity | Duration | Start | Finish | Predecessors | Total float | Free float | MSP Activity ID | QTS - AREA | QTS - DASH | QTS - Subcontractor | QTS - Resp |
| --- | --- | --- | --- | --- | --- | --- | --- | --- | --- | --- | --- | --- | --- |
|  | 5 | **E120** |  | 2026-10-15 | 2026-11-17 |  |  |  |  |  |  |  |  |
| B12000-A-EQP-81 |  | Gallery 1202 - D120/Line-Ups // Set CRAH-DH1200- 30 | 1d | 2026-10-15 | 2026-10-15 | B12000-A-EQP-63 SS | -8d | 0d | 1433 | DH1200 | GR |  |  |
| B12000-A-EQP-83 |  | Gallery 1202 - D120/Line-Ups // Set CRAH-DH1200- 31 | 1d | 2026-10-15 | 2026-10-15 | B12000-A-EQP-81 SS | -8d | 0d | 1434 | DH1200 | GR |  |  |
| B12000-A-EQP-85 |  | Gallery 1202 - D120/Line-Ups // Set MOD-E120-01 | 1d | 2026-10-15 | 2026-10-15 | B12000-A-EQP-83 FF | 32d | 0d | 1437 | DH1200 | GR | HELIX | TBD |
| B12000-A-EQP-86 |  | Gallery 1202 - D120/Line-Ups // Set MOD-E120-02 | 1d | 2026-10-15 | 2026-10-15 | B12000-A-EQP-85 SS | 32d | 0d | 1437 | DH1200 | GR | HELIX | TBD |
| B12000-A-EQP-87 |  | Gallery 1202 - D120/Line-Ups // Set CDU-DH1200- 29 | 1d | 2026-10-16 | 2026-10-16 | B12000-A-EQP-81 | 32d | 0d | 1434 | DH1200 | GR |  |  |
| B12000-A-EQP-89 |  | Gallery 1202 - D120/Line-Ups // Pull Feeder from SWD to MOD | 1d | 2026-10-16 | 2026-10-16 | B12000-A-EQP-86 | 48d | 9d | 1439 | DH1200 | GR | HELIX | OO |
| B12000-A-EQP-90 |  | Gallery 1202 - D120/Line-Ups // Pull Cable Tray Feed from MOD to CRAHU's | 5d | 2026-10-16 | 2026-10-22 | B12000-A-EQP-86 | 38d | 0d | 1438 | DH1200 | GR | HELIX | OO |
| B12000-A-EQP-92 |  | Gallery 1202 - D120/Line-Ups // Mount Electrial Gear for Chiller Controls | 10d | 2026-10-16 | 2026-10-29 | B12000-A-EQP-86 | 32d | 0d | 1443 | DH1200 | GR | HELIX | AC |
| B12000-A-EQP-88 |  | Gallery 1202 - D120/Line-Ups // Set CDU-DH1200- 30 | 1d | 2026-10-19 | 2026-10-19 | B12000-A-EQP-87, B12000-A-EQP-83 | 32d | 0d | 1434 | DH1200 | GR |  |  |
| B12000-A-EQP-84 |  | Gallery 1202 - D120/Line-Ups // Condensate connections to Floor Drains | 10d | 2026-10-20 | 2026-11-02 | B12000-A-EQP-83, B12000-A-EQP-87, B12000-A-EQP-88 | 32d | 2d | 1436 | DH1200 | GR |  |  |
| B12000-A-EQP-91 |  | Gallery 1202 - D120/Line-Ups // Mechanical Connections to CRAHU Units | 10d | 2026-10-22 | 2026-11-04 | B12000-A-EQP-83 SS+5d | 30d | 0d | 1448 | DH1200 | GR |  |  |
| B12000-A-EQP-97 |  | Gallery 1202 - D120/Line-Ups // Pull Feeder and Branch circuits to MIsc equipment and Chiller controls | 10d | 2026-10-22 | 2026-11-04 | B12000-A-EQP-92 SS+4d | 32d | 0d | 1444 | DH1200 | GR | HELIX | AC |
| B12000-A-EQP-93 |  | Gallery 1202 - D120/Line-Ups // Pull Cable Tray Feed from MOD to CRAHU's | 5d | 2026-10-23 | 2026-10-29 | B12000-A-EQP-90 | 38d | 0d | 1441 | DH1200 | GR | HELIX | OO |
| B12000-A-EQP-96 |  | Gallery 1202 - D120/Line-Ups // Terminate CRAHU Electrical Connections | 5d | 2026-10-27 | 2026-11-02 | B12000-A-EQP-93 SS+2d, B12000-A-EQP-90 | 38d | 6d | 1442 | DH1200 | GR | HELIX | OO |
| B12000-A-EQP-99 |  | Gallery 1202 - D120/Line-Ups // Teminate all Misc Equipment and Chiller Controls | 10d | 2026-10-28 | 2026-11-10 | B12000-A-EQP-97 SS+4d | 32d | 0d | 1445 | DH1200 | GR |  |  |
| B12000-A-EQP-94 |  | Gallery 1202 - D120/Line-Ups // Condensate connections to Floor Drains | 10d | 2026-10-29 | 2026-11-12 | B12000-A-EQP-91 SS+5d, B12000-A-EQP-84 SS+5d | 30d | 0d | 1449 | DH1200 | GR |  |  |
| B12000-A-EQP-95 |  | Gallery 1202 - D120/Line-Ups // Terminate Mod Panels | 1d | 2026-10-30 | 2026-10-30 | B12000-A-EQP-93, B12000-A-EQP-90, B12000-A-EQP-89 | 39d | 7d | 1440 | DH1200 | GR | HELIX | OO |
| B12000-A-EQP-100 |  | Gallery 1202 - D120/Line-Ups // Electrical Gear FOD Inspection Pre-Start Up | 2d | 2026-11-12 | 2026-11-13 | B12000-A-EQP-96, B12000-A-EQP-99, B12000-A-EQP-95, B1200360 | 32d | 40d | 1446 | DH1200 | GR | HELIX | QC |
| B12000-A-EQP-98 |  | Gallery 1202 - D120/Line-Ups // Mechanical Gear FOD Inspection Pre-Start Up | 3d | 2026-11-13 | 2026-11-17 | B12000-A-EQP-83, B12000-A-EQP-94, B12000-A-EQP-84, B12000-A-EQP-91 | 30d | 38d | 1447 | DH1200 | GR |  |  |
|  | 6 | **F120** |  | 2026-10-15 | 2026-11-17 |  |  |  |  |  |  |  |  |
| B12000-A-EQP-101 |  | Gallery 1202 - F120/Line-Ups // Set CRAH-DH1200- 32 | 1d | 2026-10-15 | 2026-10-15 | B12000-A-EQP-83 SS | -8d | 0d | 1433 | DH1200 | GR |  |  |
| B12000-A-EQP-103 |  | Gallery 1202 - F120/Line-Ups // Set CRAH-DH1200- 33 | 1d | 2026-10-15 | 2026-10-15 | B12000-A-EQP-101 SS | -8d | 0d | 1434 | DH1200 | GR |  |  |
| B12000-A-EQP-105 |  | Gallery 1202 - F120/Line-Ups // Set MOD-F120-01 | 1d | 2026-10-15 | 2026-10-15 | B12000-A-EQP-103 FF | 32d | 0d | 1437 | DH1200 | GR | HELIX | TBD |
| B12000-A-EQP-106 |  | Gallery 1202 - F120/Line-Ups // Set MOD-F120-02 | 1d | 2026-10-15 | 2026-10-15 | B12000-A-EQP-105 SS | 32d | 0d | 1437 | DH1200 | GR | HELIX | TBD |
| B12000-A-EQP-107 |  | Gallery 1202 - F120/Line-Ups // Set CDU-DH1200- 31 | 1d | 2026-10-16 | 2026-10-16 | B12000-A-EQP-101 | 32d | 0d | 1434 | DH1200 | GR |  |  |
| B12000-A-EQP-109 |  | Gallery 1202 - F120/Line-Ups // Pull Feeder from SWD to MOD | 1d | 2026-10-16 | 2026-10-16 | B12000-A-EQP-106 | 48d | 9d | 1439 | DH1200 | GR | HELIX | OO |
| B12000-A-EQP-110 |  | Gallery 1202 - F120/Line-Ups // Pull Cable Tray Feed from MOD to CRAHU's | 5d | 2026-10-16 | 2026-10-22 | B12000-A-EQP-106 | 38d | 0d | 1438 | DH1200 | GR | HELIX | OO |
| B12000-A-EQP-112 |  | Gallery 1202 - F120/Line-Ups // Mount Electrial Gear for Chiller Controls | 10d | 2026-10-16 | 2026-10-29 | B12000-A-EQP-106 | 32d | 0d | 1443 | DH1200 | GR | HELIX | AC |
| B12000-A-EQP-108 |  | Gallery 1202 - F120/Line-Ups // Set CDU-DH1200- 32 | 1d | 2026-10-19 | 2026-10-19 | B12000-A-EQP-107, B12000-A-EQP-103 | 32d | 0d | 1434 | DH1200 | GR |  |  |
| B12000-A-EQP-104 |  | Gallery 1202 - F120/Line-Ups // Condensate connections to Floor Drains | 10d | 2026-10-20 | 2026-11-02 | B12000-A-EQP-103, B12000-A-EQP-107, B12000-A-EQP-108 | 32d | 2d | 1436 | DH1200 | GR |  |  |
| B12000-A-EQP-111 |  | Gallery 1202 - F120/Line-Ups // Mechanical Connections to CRAHU Units | 10d | 2026-10-22 | 2026-11-04 | B12000-A-EQP-103 SS+5d | 30d | 0d | 1448 | DH1200 | GR |  |  |
| B12000-A-EQP-117 |  | Gallery 1202 - F120/Line-Ups // Pull Feeder and Branch circuits to MIsc equipment and Chiller controls | 10d | 2026-10-22 | 2026-11-04 | B12000-A-EQP-112 SS+4d | 32d | 0d | 1444 | DH1200 | GR | HELIX | AC |
| B12000-A-EQP-113 |  | Gallery 1202 - F120/Line-Ups // Pull Cable Tray Feed from MOD to CRAHU's | 5d | 2026-10-23 | 2026-10-29 | B12000-A-EQP-110 | 38d | 0d | 1441 | DH1200 | GR | HELIX | OO |
| B12000-A-EQP-116 |  | Gallery 1202 - F120/Line-Ups // Terminate CRAHU Electrical Connections | 5d | 2026-10-27 | 2026-11-02 | B12000-A-EQP-113 SS+2d, B12000-A-EQP-110 | 38d | 6d | 1442 | DH1200 | GR | HELIX | OO |
| B12000-A-EQP-119 |  | Gallery 1202 - F120/Line-Ups // Teminate all Misc Equipment and Chiller Controls | 10d | 2026-10-28 | 2026-11-10 | B12000-A-EQP-117 SS+4d | 32d | 0d | 1445 | DH1200 | GR |  |  |
| B12000-A-EQP-114 |  | Gallery 1202 - F120/Line-Ups // Condensate connections to Floor Drains | 10d | 2026-10-29 | 2026-11-12 | B12000-A-EQP-111 SS+5d, B12000-A-EQP-104 SS+5d | 30d | 0d | 1449 | DH1200 | GR |  |  |
| B12000-A-EQP-115 |  | Gallery 1202 - F120/Line-Ups // Terminate Mod Panels | 1d | 2026-10-30 | 2026-10-30 | B12000-A-EQP-113, B12000-A-EQP-110, B12000-A-EQP-109 | 39d | 7d | 1440 | DH1200 | GR | HELIX | OO |
| B12000-A-EQP-120 |  | Gallery 1202 - F120/Line-Ups // Electrical Gear FOD Inspection Pre-Start Up | 2d | 2026-11-12 | 2026-11-13 | B12000-A-EQP-116, B12000-A-EQP-119, B12000-A-EQP-115, B1200362 | 32d | 40d | 1446 | DH1200 | GR | HELIX | QC |
| B12000-A-EQP-118 |  | Gallery 1202 - F120/Line-Ups // Mechanical Gear FOD Inspection Pre-Start Up | 3d | 2026-11-13 | 2026-11-17 | B12000-A-EQP-103, B12000-A-EQP-114, B12000-A-EQP-104, B12000-A-EQP-111 | 30d | 38d | 1447 | DH1200 | GR |  |  |

| ID | WBS | Activity | Duration | Start | Finish | Predecessors | Total float | Free float | MSP Activity ID | QTS - AREA | QTS - DASH | QTS - Subcontractor | QTS - Resp |
| --- | --- | --- | --- | --- | --- | --- | --- | --- | --- | --- | --- | --- | --- |
|  | 7 | **G120** |  | 2026-10-15 | 2026-11-17 |  |  |  |  |  |  |  |  |
| B12000-A-EQP-121 |  | Gallery 1202 - G120/Line-Ups // Set CRAH-DH1200- 33 | 1d | 2026-10-15 | 2026-10-15 | B12000-A-EQP-103 SS | -8d | 0d | 1433 | DH1200 | GR |  |  |
| B12000-A-EQP-123 |  | Gallery 1202 - G120/Line-Ups // Set CRAH-DH1200- 34 | 1d | 2026-10-15 | 2026-10-15 | B12000-A-EQP-121 SS | -8d | 0d | 1434 | DH1200 | GR |  |  |
| B12000-A-EQP-125 |  | Gallery 1202 - G120/Line-Ups // Set MOD-G120-01 | 1d | 2026-10-15 | 2026-10-15 | B12000-A-EQP-123 FF | 32d | 0d | 1437 | DH1200 | GR | HELIX | TBD |
| B12000-A-EQP-126 |  | Gallery 1202 - G120/Line-Ups // Set MOD-G120-02 | 1d | 2026-10-15 | 2026-10-15 | B12000-A-EQP-125 SS | 32d | 0d | 1437 | DH1200 | GR | HELIX | TBD |
| B12000-A-EQP-127 |  | Gallery 1202 - G120/Line-Ups // Set CDU-DH1200- 33 | 1d | 2026-10-16 | 2026-10-16 | B12000-A-EQP-121 | 32d | 0d | 1434 | DH1200 | GR |  |  |
| B12000-A-EQP-129 |  | Gallery 1202 - G120/Line-Ups // Pull Feeder from SWD to MOD | 1d | 2026-10-16 | 2026-10-16 | B12000-A-EQP-126 | 48d | 9d | 1439 | DH1200 | GR | HELIX | OO |
| B12000-A-EQP-130 |  | Gallery 1202 - G120/Line-Ups // Pull Cable Tray Feed from MOD to CRAHU's | 5d | 2026-10-16 | 2026-10-22 | B12000-A-EQP-126 | 38d | 0d | 1438 | DH1200 | GR | HELIX | OO |
| B12000-A-EQP-132 |  | Gallery 1202 - G120/Line-Ups // Mount Electrial Gear for Chiller Controls | 10d | 2026-10-16 | 2026-10-29 | B12000-A-EQP-126 | 32d | 0d | 1443 | DH1200 | GR | HELIX | AC |
| B12000-A-EQP-128 |  | Gallery 1202 - G120/Line-Ups // Set CDU-DH1200- 34 | 1d | 2026-10-19 | 2026-10-19 | B12000-A-EQP-127, B12000-A-EQP-123 | 32d | 0d | 1434 | DH1200 | GR |  |  |
| B12000-A-EQP-124 |  | Gallery 1202 - G120/Line-Ups // Condensate connections to Floor Drains | 10d | 2026-10-20 | 2026-11-02 | B12000-A-EQP-123, B12000-A-EQP-127, B12000-A-EQP-128 | 32d | 2d | 1436 | DH1200 | GR |  |  |
| B12000-A-EQP-131 |  | Gallery 1202 - G120/Line-Ups // Mechanical Connections to CRAHU Units | 10d | 2026-10-22 | 2026-11-04 | B12000-A-EQP-123 SS+5d | 30d | 0d | 1448 | DH1200 | GR |  |  |
| B12000-A-EQP-137 |  | Gallery 1202 - G120/Line-Ups // Pull Feeder and Branch circuits to MIsc equipment and Chiller controls | 10d | 2026-10-22 | 2026-11-04 | B12000-A-EQP-132 SS+4d | 32d | 0d | 1444 | DH1200 | GR | HELIX | AC |
| B12000-A-EQP-133 |  | Gallery 1202 - G120/Line-Ups // Pull Cable Tray Feed from MOD to CRAHU's | 5d | 2026-10-23 | 2026-10-29 | B12000-A-EQP-130 | 38d | 0d | 1441 | DH1200 | GR | HELIX | OO |
| B12000-A-EQP-136 |  | Gallery 1202 - G120/Line-Ups // Terminate CRAHU Electrical Connections | 5d | 2026-10-27 | 2026-11-02 | B12000-A-EQP-133 SS+2d, B12000-A-EQP-130 | 38d | 6d | 1442 | DH1200 | GR | HELIX | OO |
| B12000-A-EQP-139 |  | Gallery 1202 - G120/Line-Ups // Teminate all Misc Equipment and Chiller Controls | 10d | 2026-10-28 | 2026-11-10 | B12000-A-EQP-137 SS+4d | 32d | 0d | 1445 | DH1200 | GR |  |  |
| B12000-A-EQP-134 |  | Gallery 1202 - G120/Line-Ups // Condensate connections to Floor Drains | 10d | 2026-10-29 | 2026-11-12 | B12000-A-EQP-131 SS+5d, B12000-A-EQP-124 SS+5d | 30d | 0d | 1449 | DH1200 | GR |  |  |
| B12000-A-EQP-135 |  | Gallery 1202 - G120/Line-Ups // Terminate Mod Panels | 1d | 2026-10-30 | 2026-10-30 | B12000-A-EQP-133, B12000-A-EQP-130, B12000-A-EQP-129 | 39d | 7d | 1440 | DH1200 | GR | HELIX | OO |
| B12000-A-EQP-140 |  | Gallery 1202 - G120/Line-Ups // Electrical Gear FOD Inspection Pre-Start Up | 2d | 2026-11-12 | 2026-11-13 | B12000-A-EQP-136, B12000-A-EQP-139, B12000-A-EQP-135, B1200364 | 32d | 40d | 1446 | DH1200 | GR | HELIX | QC |
| B12000-A-EQP-138 |  | Gallery 1202 - G120/Line-Ups // Mechanical Gear FOD Inspection Pre-Start Up | 3d | 2026-11-13 | 2026-11-17 | B12000-A-EQP-123, B12000-A-EQP-134, B12000-A-EQP-124, B12000-A-EQP-131 | 30d | 38d | 1447 | DH1200 | GR |  |  |
|  | 8 | **H120** |  | 2026-10-15 | 2026-11-17 |  |  |  |  |  |  |  |  |
| B12000-A-EQP-141 |  | Gallery 1202 - H120/Line-Ups // Set CRAH-DH1200- 35 | 1d | 2026-10-15 | 2026-10-15 | B12000-A-EQP-123 SS | -8d | 0d | 1433 | DH1200 | GR |  |  |
| B12000-A-EQP-143 |  | Gallery 1202 - H120/Line-Ups // Set CRAH-DH1200- 36 | 1d | 2026-10-15 | 2026-10-15 | B12000-A-EQP-141 SS | -8d | 0d | 1434 | DH1200 | GR |  |  |
| B12000-A-EQP-145 |  | Gallery 1202 - H120/Line-Ups // Set MOD-H120-01 | 1d | 2026-10-15 | 2026-10-15 | B12000-A-EQP-143 FF | 32d | 0d | 1437 | DH1200 | GR | HELIX | TBD |
| B12000-A-EQP-146 |  | Gallery 1202 - H120/Line-Ups // Set MOD-H120-02 | 1d | 2026-10-15 | 2026-10-15 | B12000-A-EQP-145 SS | 32d | 0d | 1437 | DH1200 | GR | HELIX | TBD |
| B12000-A-EQP-147 |  | Gallery 1202 - H120/Line-Ups // Set CDU-DH1200- 35 | 1d | 2026-10-16 | 2026-10-16 | B12000-A-EQP-141 | 32d | 0d | 1434 | DH1200 | GR |  |  |
| B12000-A-EQP-149 |  | Gallery 1202 - H120/Line-Ups // Pull Feeder from SWD to MOD | 1d | 2026-10-16 | 2026-10-16 | B12000-A-EQP-146 | 48d | 9d | 1439 | DH1200 | GR | HELIX | OO |
| B12000-A-EQP-150 |  | Gallery 1202 - H120/Line-Ups // Pull Cable Tray Feed from MOD to CRAHU's | 5d | 2026-10-16 | 2026-10-22 | B12000-A-EQP-146 | 38d | 0d | 1438 | DH1200 | GR | HELIX | OO |
| B12000-A-EQP-152 |  | Gallery 1202 - H120/Line-Ups // Mount Electrial Gear for Chiller Controls | 10d | 2026-10-16 | 2026-10-29 | B12000-A-EQP-146 | 32d | 0d | 1443 | DH1200 | GR | HELIX | AC |
| B12000-A-EQP-148 |  | Gallery 1202 - H120/Line-Ups // Set CDU-DH1200- 36 | 1d | 2026-10-19 | 2026-10-19 | B12000-A-EQP-147, B12000-A-EQP-143 | 32d | 0d | 1434 | DH1200 | GR |  |  |
| B12000-A-EQP-144 |  | Gallery 1202 - H120/Line-Ups // Condensate connections to Floor Drains | 10d | 2026-10-20 | 2026-11-02 | B12000-A-EQP-143, B12000-A-EQP-147, B12000-A-EQP-148 | 32d | 2d | 1436 | DH1200 | GR |  |  |
| B12000-A-EQP-151 |  | Gallery 1202 - H120/Line-Ups // Mechanical Connections to CRAHU Units | 10d | 2026-10-22 | 2026-11-04 | B12000-A-EQP-143 SS+5d | 30d | 0d | 1448 | DH1200 | GR |  |  |
| B12000-A-EQP-157 |  | Gallery 1202 - H120/Line-Ups // Pull Feeder and Branch circuits to MIsc equipment and Chiller controls | 10d | 2026-10-22 | 2026-11-04 | B12000-A-EQP-152 SS+4d | 32d | 0d | 1444 | DH1200 | GR | HELIX | AC |
| B12000-A-EQP-153 |  | Gallery 1202 - H120/Line-Ups // Pull Cable Tray Feed from MOD to CRAHU's | 5d | 2026-10-23 | 2026-10-29 | B12000-A-EQP-150 | 38d | 0d | 1441 | DH1200 | GR | HELIX | OO |
| B12000-A-EQP-156 |  | Gallery 1202 - H120/Line-Ups // Terminate CRAHU Electrical Connections | 5d | 2026-10-27 | 2026-11-02 | B12000-A-EQP-153 SS+2d, B12000-A-EQP-150 | 38d | 6d | 1442 | DH1200 | GR | HELIX | OO |
| B12000-A-EQP-159 |  | Gallery 1202 - H120/Line-Ups // Teminate all Misc Equipment and Chiller Controls | 10d | 2026-10-28 | 2026-11-10 | B12000-A-EQP-157 SS+4d | 32d | 0d | 1445 | DH1200 | GR |  |  |
| B12000-A-EQP-154 |  | Gallery 1202 - H120/Line-Ups // Condensate connections to Floor Drains | 10d | 2026-10-29 | 2026-11-12 | B12000-A-EQP-151 SS+5d, B12000-A-EQP-144 SS+5d | 30d | 0d | 1449 | DH1200 | GR |  |  |
| B12000-A-EQP-155 |  | Gallery 1202 - H120/Line-Ups // Terminate Mod Panels | 1d | 2026-10-30 | 2026-10-30 | B12000-A-EQP-153, B12000-A-EQP-150, B12000-A-EQP-149 | 39d | 7d | 1440 | DH1200 | GR | HELIX | OO |
| B12000-A-EQP-160 |  | Gallery 1202 - H120/Line-Ups // Electrical Gear FOD Inspection Pre-Start Up | 2d | 2026-11-12 | 2026-11-13 | B12000-A-EQP-156, B12000-A-EQP-159, B12000-A-EQP-155, B1200366 | 32d | 40d | 1446 | DH1200 | GR | HELIX | QC |
| B12000-A-EQP-158 |  | Gallery 1202 - H120/Line-Ups // Mechanical Gear FOD Inspection Pre-Start Up | 3d | 2026-11-13 | 2026-11-17 | B12000-A-EQP-143, B12000-A-EQP-154, B12000-A-EQP-144, B12000-A-EQP-151 | 30d | 38d | 1447 | DH1200 | GR |  |  |

| ID | WBS | Activity | Duration | Start | Finish | Predecessors | Total float | Free float | MSP Activity ID | QTS - AREA | QTS - DASH | QTS - Subcontractor | QTS - Resp |
| --- | --- | --- | --- | --- | --- | --- | --- | --- | --- | --- | --- | --- | --- |
|  | 9 | **J120** |  | 2026-10-15 | 2026-11-17 |  |  |  |  |  |  |  |  |
| B12000-A-EQP-161 |  | Gallery 1202 - J120/Line-Ups // Set CRAH-DH1200- 37 | 1d | 2026-10-15 | 2026-10-15 | B12000-A-EQP-143 SS | -8d | 0d | 1433 | DH1200 | GR |  |  |
| B12000-A-EQP-163 |  | Gallery 1202 - J120/Line-Ups // Set CRAH-DH1200- 38 | 1d | 2026-10-15 | 2026-10-15 | B12000-A-EQP-161 SS | -8d | 0d | 1434 | DH1200 | GR |  |  |
| B12000-A-EQP-165 |  | Gallery 1202 - J120/Line-Ups // Set MOD-J120-01 | 1d | 2026-10-15 | 2026-10-15 | B12000-A-EQP-163 FF | 32d | 0d | 1437 | DH1200 | GR | HELIX | TBD |
| B12000-A-EQP-166 |  | Gallery 1202 - J120/Line-Ups // Set MOD-J120-02 | 1d | 2026-10-15 | 2026-10-15 | B12000-A-EQP-165 SS | 32d | 0d | 1437 | DH1200 | GR | HELIX | TBD |
| B12000-A-EQP-167 |  | Gallery 1202 - J120/Line-Ups // Set CDU-DH1200- 37 | 1d | 2026-10-16 | 2026-10-16 | B12000-A-EQP-161 | 32d | 0d | 1434 | DH1200 | GR |  |  |
| B12000-A-EQP-169 |  | Gallery 1202 - J120/Line-Ups // Pull Feeder from SWD to MOD | 1d | 2026-10-16 | 2026-10-16 | B12000-A-EQP-166 | 48d | 9d | 1439 | DH1200 | GR | HELIX | OO |
| B12000-A-EQP-170 |  | Gallery 1202 - J120/Line-Ups // Pull Cable Tray Feed from MOD to CRAHU's | 5d | 2026-10-16 | 2026-10-22 | B12000-A-EQP-166 | 38d | 0d | 1438 | DH1200 | GR | HELIX | OO |
| B12000-A-EQP-172 |  | Gallery 1202 - J120/Line-Ups // Mount Electrial Gear for Chiller Controls | 10d | 2026-10-16 | 2026-10-29 | B12000-A-EQP-166 | 32d | 0d | 1443 | DH1200 | GR | HELIX | AC |
| B12000-A-EQP-168 |  | Gallery 1202 - J120/Line-Ups // Set CDU-DH1200- 38 | 1d | 2026-10-19 | 2026-10-19 | B12000-A-EQP-167, B12000-A-EQP-163 | 32d | 0d | 1434 | DH1200 | GR |  |  |
| B12000-A-EQP-164 |  | Gallery 1202 - J120/Line-Ups // Condensate connections to Floor Drains | 10d | 2026-10-20 | 2026-11-02 | B12000-A-EQP-163, B12000-A-EQP-167, B12000-A-EQP-168 | 32d | 2d | 1436 | DH1200 | GR |  |  |
| B12000-A-EQP-171 |  | Gallery 1202 - J120/Line-Ups // Mechanical Connections to CRAHU Units | 10d | 2026-10-22 | 2026-11-04 | B12000-A-EQP-163 SS+5d | 30d | 0d | 1448 | DH1200 | GR |  |  |
| B12000-A-EQP-177 |  | Gallery 1202 - J120/Line-Ups // Pull Feeder and Branch circuits to MIsc equipment and Chiller controls | 10d | 2026-10-22 | 2026-11-04 | B12000-A-EQP-172 SS+4d | 32d | 0d | 1444 | DH1200 | GR | HELIX | AC |
| B12000-A-EQP-173 |  | Gallery 1202 - J120/Line-Ups // Pull Cable Tray Feed from MOD to CRAHU's | 5d | 2026-10-23 | 2026-10-29 | B12000-A-EQP-170 | 38d | 0d | 1441 | DH1200 | GR | HELIX | OO |
| B12000-A-EQP-176 |  | Gallery 1202 - J120/Line-Ups // Terminate CRAHU Electrical Connections | 5d | 2026-10-27 | 2026-11-02 | B12000-A-EQP-173 SS+2d, B12000-A-EQP-170 | 38d | 6d | 1442 | DH1200 | GR | HELIX | OO |
| B12000-A-EQP-179 |  | Gallery 1202 - J120/Line-Ups // Teminate all Misc Equipment and Chiller Controls | 10d | 2026-10-28 | 2026-11-10 | B12000-A-EQP-177 SS+4d | 32d | 0d | 1445 | DH1200 | GR |  |  |
| B12000-A-EQP-174 |  | Gallery 1202 - J120/Line-Ups // Condensate connections to Floor Drains | 10d | 2026-10-29 | 2026-11-12 | B12000-A-EQP-171 SS+5d, B12000-A-EQP-164 SS+5d | 30d | 0d | 1449 | DH1200 | GR |  |  |
| B12000-A-EQP-175 |  | Gallery 1202 - J120/Line-Ups // Terminate Mod Panels | 1d | 2026-10-30 | 2026-10-30 | B12000-A-EQP-173, B12000-A-EQP-170, B12000-A-EQP-169 | 39d | 7d | 1440 | DH1200 | GR | HELIX | OO |
| B12000-A-EQP-180 |  | Gallery 1202 - J120/Line-Ups // Electrical Gear FOD Inspection Pre-Start Up | 2d | 2026-11-12 | 2026-11-13 | B12000-A-EQP-176, B12000-A-EQP-179, B12000-A-EQP-175, B1200368 | 32d | 40d | 1446 | DH1200 | GR | HELIX | QC |
| B12000-A-EQP-178 |  | Gallery 1202 - J120/Line-Ups // Mechanical Gear FOD Inspection Pre-Start Up | 3d | 2026-11-13 | 2026-11-17 | B12000-A-EQP-163, B12000-A-EQP-174, B12000-A-EQP-164, B12000-A-EQP-171 | 30d | 38d | 1447 | DH1200 | GR |  |  |
|  | 10 | **K120** |  | 2026-10-15 | 2026-11-17 |  |  |  |  |  |  |  |  |
| B12000-A-EQP-181 |  | Gallery 1202 - K120/Line-Ups // Set CRAH-DH1200- 39 | 1d | 2026-10-15 | 2026-10-15 | B12000-A-EQP-163 SS | -8d | 0d | 1433 | DH1200 | GR |  |  |
| B12000-A-EQP-183 |  | Gallery 1202 - K120/Line-Ups // Set CRAH-DH1200- 40 | 1d | 2026-10-15 | 2026-10-15 | B12000-A-EQP-181 SS | -8d | 0d | 1434 | DH1200 | GR |  |  |
| B12000-A-EQP-185 |  | Gallery 1202 - K120/Line-Ups // Set MOD-K120-01 | 1d | 2026-10-15 | 2026-10-15 | B12000-A-EQP-183 FF | 32d | 0d | 1437 | DH1200 | GR | HELIX | TBD |
| B12000-A-EQP-186 |  | Gallery 1202 - K120/Line-Ups // Set MOD-K120-02 | 1d | 2026-10-15 | 2026-10-15 | B12000-A-EQP-185 SS | 32d | 0d | 1437 | DH1200 | GR | HELIX | TBD |
| B12000-A-EQP-187 |  | Gallery 1202 - K120/Line-Ups // Set CDU-DH1200- 39 | 1d | 2026-10-16 | 2026-10-16 | B12000-A-EQP-181 | 32d | 0d | 1434 | DH1200 | GR |  |  |
| B12000-A-EQP-189 |  | Gallery 1202 - K120/Line-Ups // Pull Feeder from SWD to MOD | 1d | 2026-10-16 | 2026-10-16 | B12000-A-EQP-186 | 48d | 9d | 1439 | DH1200 | GR | HELIX | OO |
| B12000-A-EQP-190 |  | Gallery 1202 - K120/Line-Ups // Pull Cable Tray Feed from MOD to CRAHU's | 5d | 2026-10-16 | 2026-10-22 | B12000-A-EQP-186 | 38d | 0d | 1438 | DH1200 | GR | HELIX | OO |
| B12000-A-EQP-192 |  | Gallery 1202 - K120/Line-Ups // Mount Electrial Gear for Chiller Controls | 10d | 2026-10-16 | 2026-10-29 | B12000-A-EQP-186 | 32d | 0d | 1443 | DH1200 | GR | HELIX | AC |
| B12000-A-EQP-188 |  | Gallery 1202 - K120/Line-Ups // Set CDU-DH1200- 40 | 1d | 2026-10-19 | 2026-10-19 | B12000-A-EQP-187, B12000-A-EQP-183 | 32d | 0d | 1434 | DH1200 | GR |  |  |
| B12000-A-EQP-184 |  | Gallery 1202 - K120/Line-Ups // Condensate connections to Floor Drains | 10d | 2026-10-20 | 2026-11-02 | B12000-A-EQP-183, B12000-A-EQP-187, B12000-A-EQP-188 | 32d | 2d | 1436 | DH1200 | GR |  |  |
| B12000-A-EQP-191 |  | Gallery 1202 - K120/Line-Ups // Mechanical Connections to CRAHU Units | 10d | 2026-10-22 | 2026-11-04 | B12000-A-EQP-183 SS+5d | 30d | 0d | 1448 | DH1200 | GR |  |  |
| B12000-A-EQP-197 |  | Gallery 1202 - K120/Line-Ups // Pull Feeder and Branch circuits to MIsc equipment and Chiller controls | 10d | 2026-10-22 | 2026-11-04 | B12000-A-EQP-192 SS+4d | 32d | 0d | 1444 | DH1200 | GR | HELIX | AC |
| B12000-A-EQP-193 |  | Gallery 1202 - K120/Line-Ups // Pull Cable Tray Feed from MOD to CRAHU's | 5d | 2026-10-23 | 2026-10-29 | B12000-A-EQP-190 | 38d | 0d | 1441 | DH1200 | GR | HELIX | OO |
| B12000-A-EQP-196 |  | Gallery 1202 - K120/Line-Ups // Terminate CRAHU Electrical Connections | 5d | 2026-10-27 | 2026-11-02 | B12000-A-EQP-193 SS+2d, B12000-A-EQP-190 | 38d | 6d | 1442 | DH1200 | GR | HELIX | OO |
| B12000-A-EQP-199 |  | Gallery 1202 - K120/Line-Ups // Teminate all Misc Equipment and Chiller Controls | 10d | 2026-10-28 | 2026-11-10 | B12000-A-EQP-197 SS+4d | 32d | 0d | 1445 | DH1200 | GR |  |  |
| B12000-A-EQP-194 |  | Gallery 1202 - K120/Line-Ups // Condensate connections to Floor Drains | 10d | 2026-10-29 | 2026-11-12 | B12000-A-EQP-191 SS+5d, B12000-A-EQP-184 SS+5d | 30d | 0d | 1449 | DH1200 | GR |  |  |
| B12000-A-EQP-195 |  | Gallery 1202 - K120/Line-Ups // Terminate Mod Panels | 1d | 2026-10-30 | 2026-10-30 | B12000-A-EQP-193, B12000-A-EQP-190, B12000-A-EQP-189 | 39d | 7d | 1440 | DH1200 | GR | HELIX | OO |
| B12000-A-EQP-200 |  | Gallery 1202 - K120/Line-Ups // Electrical Gear FOD Inspection Pre-Start Up | 2d | 2026-11-12 | 2026-11-13 | B12000-A-EQP-196, B12000-A-EQP-199, B12000-A-EQP-195, B1200370 | 32d | 40d | 1446 | DH1200 | GR | HELIX | QC |
| B12000-A-EQP-198 |  | Gallery 1202 - K120/Line-Ups // Mechanical Gear FOD Inspection Pre-Start Up | 3d | 2026-11-13 | 2026-11-17 | B12000-A-EQP-183, B12000-A-EQP-194, B12000-A-EQP-184, B12000-A-EQP-191 | 30d | 38d | 1447 | DH1200 | GR |  |  |

| ID | WBS | Activity | Duration | Start | Finish | Predecessors | Total float | Free float | MSP Activity ID | QTS - AREA | QTS - DASH | QTS - Subcontractor | QTS - Resp | MBTA: Work Type |
| --- | --- | --- | --- | --- | --- | --- | --- | --- | --- | --- | --- | --- | --- | --- |
|  | 11 | **R120** |  | 2026-10-15 | 2026-11-17 |  |  |  |  |  |  |  |  |  |
| B12000-A-EQP-201 |  | Gallery 1202 - R120/Line-Ups // Set CRAH-DH1200- 41 | 1d | 2026-10-15 | 2026-10-15 | B12000-A-EQP-183 SS | -8d | 0d | 1433 | DH1200 | GR |  |  |  |
| B12000-A-EQP-203 |  | Gallery 1202 - R120/Line-Ups // Set CRAH-DH1200- 42 | 1d | 2026-10-15 | 2026-10-15 | B12000-A-EQP-201 SS | -8d | 0d | 1434 | DH1200 | GR |  |  |  |
| B12000-A-EQP-205 |  | Gallery 1202 - R120/Line-Ups // Set MOD-R120-01 | 1d | 2026-10-15 | 2026-10-15 | B12000-A-EQP-203 FF | -8d | 0d | 1437 | DH1200 | GR | HELIX | TBD |  |
| B12000-A-EQP-206 |  | Gallery 1202 - R120/Line-Ups // Set MOD-R120-02 | 1d | 2026-10-15 | 2026-10-15 | B12000-A-EQP-205 SS | -8d | 0d | 1437 | DH1200 | GR | HELIX | TBD |  |
| B12000-A-EQP-207 |  | Gallery 1202 - R120/Line-Ups // Set CDU-DH1200- 41 | 1d | 2026-10-16 | 2026-10-16 | B12000-A-EQP-201 | 0d |  | 1434 | DH1200 | GR |  |  |  |
| B12000-A-EQP-210 |  | Gallery 1202 - R120/Line-Ups // Pull Cable Tray Feed from MOD to CRAHU's | 5d | 2026-10-16 | 2026-10-22 | B12000-A-EQP-206 | -8d | 0d | 1438 | DH1200 | GR | HELIX | OO |  |
| B12000-A-EQP-212 |  | Gallery 1202 - R120/Line-Ups // Mount Electrial Gear for Chiller Controls | 10d | 2026-10-16 | 2026-10-29 | B12000-A-EQP-206 | -6d | 0d | 1443 | DH1200 | GR | HELIX | AC |  |
| B12000-A-EQP-217 |  | Gallery 1202 - R120/Line-Ups // Pull Feeder and Branch circuits to MIsc equipment and Chiller controls | 10d | 2026-10-16 | 2026-10-29 | B12000-A-EQP-212 FF | -6d | 0d | 1444 | DH1200 | GR | HELIX | AC |  |
| B12000-A-EQP-208 |  | Gallery 1202 - R120/Line-Ups // Set CDU-DH1200- 42 | 1d | 2026-10-19 | 2026-10-19 | B12000-A-EQP-207, B12000-A-EQP-203 | 0d |  | 1434 | DH1200 | GR |  |  |  |
| B12000-A-EQP-204 |  | Gallery 1202 - R120/Line-Ups // Condensate connections to Floor Drains | 10d | 2026-10-20 | 2026-11-02 | B12000-A-EQP-203, B12000-A-EQP-207, B12000-A-EQP-208 | 0d | 2d | 1436 | DH1200 | GR |  |  |  |
| B12000-A-EQP-221 |  | Gallery 1202 - R120/Line-Ups // Set SWD-R120 | 1d | 2026-10-20 | 2026-10-20 | B12000-A-EQP-208 | 4d | 0d | 1437 | DH1200 | GR |  |  |  |
| B12000-A-EQP-222 |  | Gallery 1202 - R120/Line-Ups // Set SWD-TIE-R120 | 1d | 2026-10-21 | 2026-10-21 | B12000-A-EQP-221 | 4d | 0d | 1437 | DH1200 | GR |  |  |  |
| B12000-A-EQP-209 |  | Gallery 1202 - R120/Line-Ups // Pull Feeder from SWD to MOD | 1d | 2026-10-22 | 2026-10-22 | B12000-A-EQP-222, B12000-A-EQP-206 | 4d | 5d | 1439 | DH1200 | GR | HELIX | OO |  |
| B12000-A-EQP-211 |  | Gallery 1202 - R120/Line-Ups // Mechanical Connections to CRAHU Units | 10d | 2026-10-22 | 2026-11-04 | B12000-A-EQP-203 SS+5d | -2d | 0d | 1448 | DH1200 | GR |  |  |  |
| B12000-A-EQP-219 |  | Gallery 1202 - R120/Line-Ups // Teminate all Misc Equipment and Chiller Controls | 10d | 2026-10-22 | 2026-11-04 | B12000-A-EQP-217 SS+4d | 11d | 0d | 1445 | DH1200 | GR |  |  |  |
| B12000-A-EQP-213 |  | Gallery 1202 - R120/Line-Ups // Pull Cable Tray Feed from MOD to CRAHU's | 5d | 2026-10-23 | 2026-10-29 | B12000-A-EQP-210 | -8d | 0d | 1441 | DH1200 | GR | HELIX | OO |  |
| B12000-A-EQP-216 |  | Gallery 1202 - R120/Line-Ups // Terminate CRAHU Electrical Connections | 5d | 2026-10-27 | 2026-11-02 | B12000-A-EQP-213 SS+2d, B12000-A-EQP-210 | 13d | 2d | 1442 | DH1200 | GR | HELIX | OO |  |
| B12000-A-EQP-214 |  | Gallery 1202 - R120/Line-Ups // Condensate connections to Floor Drains | 10d | 2026-10-29 | 2026-11-12 | B12000-A-EQP-211 SS+5d, B12000-A-EQP-204 SS+5d | -2d | 0d | 1449 | DH1200 | GR |  |  |  |
| B12000-A-EQP-215 |  | Gallery 1202 - R120/Line-Ups // Terminate Mod Panels | 1d | 2026-10-30 | 2026-10-30 | B12000-A-EQP-213, B12000-A-EQP-210, B12000-A-EQP-209 | -1d | 3d | 1440 | DH1200 | GR | HELIX | OO |  |
| B12000-A-EQP-220 |  | Gallery 1202 - R120/Line-Ups // Electrical Gear FOD Inspection Pre-Start Up | 2d | 2026-11-05 | 2026-11-06 | B12000-A-EQP-216, B12000-A-EQP-219, B12000-A-EQP-215, B1200372, B1200375 | 11d | 7d | 1446 | DH1200 | GR | HELIX | QC |  |
| B12000-A-EQP-218 |  | Gallery 1202 - R120/Line-Ups // Mechanical Gear FOD Inspection Pre-Start Up | 3d | 2026-11-13 | 2026-11-17 | B12000-A-EQP-203, B12000-A-EQP-214, B12000-A-EQP-204, B12000-A-EQP-211 | -2d | 0d | 1447 | DH1200 | GR |  |  |  |
|  | 12 | **Equipment Connections** |  | 2026-10-23 | 2026-11-10 |  |  |  |  |  |  |  |  |  |
|  | 1 | **CRAH** |  | 2026-10-30 | 2026-11-10 |  |  |  |  |  |  |  |  |  |
| DH1200.MG.A110.8687 |  | Gallery 1202 // DH 1200 / Elec Room // CRAH Duct Work Termination | 2d | 2026-10-30 | 2026-11-02 | B12000-A-EQP-213 | -8d | 0d | 7037 | DH1200 | GR |  |  | Con/Install |
| DH1200.MG.A110.8686 |  | Gallery 1202 // DH 1200 / Elec Room // CRAH Chilled Water | 2d | 2026-11-03 | 2026-11-04 | DH1200.MG.A110.8687 | -8d | 0d | 7035 | DH1200 | GR |  |  | Con/Install |
| DH1200.MG.A110.8684 |  | Gallery 1202 // DH 1200 / Elec Room // CRAH Power Connections | 2d | 2026-11-05 | 2026-11-06 | DH1200.MG.A110.8686 | -8d | 0d | 7034 | DH1200 | GR | HELIX | OO | Con/Install |
| DH1200.MG.A110.8685 |  | Gallery 1202 // DH 1200 / Elec Room // CRAH LV Connections | 2d | 2026-11-09 | 2026-11-10 | DH1200.MG.A110.8684 | -8d | 0d | 7036 | DH1200 | GR |  |  | Con/Install |

| ID | WBS | Activity | Type | Duration | Start | Finish | Predecessors | Complete | Remaining | Planned start | Planned finish | Total float | Free float | MSP Activity ID | QTS - AREA | MBTA: Work Type | QTS - DASH | QTS - Subcontractor | QTS - Resp | 05 -SUFFOLK - Building Phase | 12 - SUFFOLK - Export_to_Procore |
| --- | --- | --- | --- | --- | --- | --- | --- | --- | --- | --- | --- | --- | --- | --- | --- | --- | --- | --- | --- | --- | --- |
|  | 2 | **CDU** |  |  | 2026-10-30 | 2026-11-06 |  |  |  |  |  |  |  |  |  |  |  |  |  |  |  |
| DH1200.MG.A110.8690 |  | Gallery 1202 // DH 1200 / Elec Room // CDU Chilled Water Connections |  | 2d | 2026-10-30 | 2026-11-02 | B12000-A-EQP-217 |  |  |  |  | -6d | 0d | 7040 | DH1200 | Con/Install | GR |  |  |  |  |
| DH1200.MG.A110.8688 |  | Gallery 1202 // DH 1200 /Elec Room // CDU Power Connections |  | 2d | 2026-11-03 | 2026-11-04 | DH1200.MG.A110.8690 |  |  |  |  | -6d | 0d | 7039 | DH1200 | Con/Install | GR | HELIX | OO |  |  |
| DH1200.MG.A110.8689 |  | Gallery 1202 // DH 1200 / Elec Room // CDU Controls Connections |  | 2d | 2026-11-05 | 2026-11-06 | DH1200.MG.A110.8688 |  |  |  |  | -6d | 2d | 7041 | DH1200 | Con/Install | GR |  |  |  |  |
|  | 3 | **MOD** |  |  | 2026-10-23 | 2026-10-28 |  |  |  |  |  |  |  |  |  |  |  |  |  |  |  |
| DH1200.MG.A110.8691 |  | Gallery 1202 // DH 1200 / Elec Room // MOD Power Connections |  | 2d | 2026-10-23 | 2026-10-26 | B12000-A-EQP-210 |  |  |  |  | 1d | 0d | 7043 | DH1200 | Con/Install | GR | HELIX | OO |  |  |
| DH1200.MG.A110.8692 |  | Gallery 1202 // DH 1200 / Elec Room // MOD LV Connections |  | 2d | 2026-10-27 | 2026-10-28 | DH1200.MG.A110.8691 |  |  |  |  | 1d | 9d | 7044 | DH1200 | Con/Install | GR | HELIX | AC |  |  |
|  | 4 | **Gallery 1203** |  |  | 2026-07-28 | 2026-11-16 |  |  |  |  |  |  |  |  |  |  |  |  |  |  |  |
|  | 1 | **Architectural** |  |  | 2026-07-28 | 2026-11-09 |  |  |  |  |  |  |  |  |  |  |  |  |  |  |  |
| B12003.1000 |  | DH 1200/Gallery 1203 // Seal concrete |  | 2d | 2026-07-28 A | 2026-07-29 A | B1200.4660 SS | 100% |  | 2026-07-30 | 2026-07-31 |  |  | 1452 | DH1200 |  | GR |  |  | 2 | Y |
| B12003.1010 |  | DH 1200/Gallery 1203 // MEPF overhead layout |  | 5d | 2026-08-10 A | 2026-08-14 A | B12003.1000, B1200.4670 FF | 100% |  | 2026-08-03 | 2026-08-07 |  |  | 1453 | DH1200 |  | GR | HELIX | ACOO | 2 | Y |
| B12003.1040 |  | DH 1200/Gallery 1203 // Frame walls |  | 6d | 2026-08-10 A | 2026-08-17 A | B1200.4700 SS | 100% |  |  |  |  |  | 1456 | DH1200 |  | GR |  |  | 2 | Y |
| B12003.1050 |  | DH 1200/Gallery 1203 // Install Sheetrock Top Down |  | 6d | 2026-08-12 A | 2026-08-19 A | B12003.1040 SS | 100% |  | 2026-08-10 | 2026-08-17 |  |  | 1461 | DH1200 |  | GR |  |  |  | Y |
| B12003.1030 |  | DH 1200/Gallery 1203 // MEPF high overhead install |  | 5d | 2026-09-01 A | 2026-09-03 A | B12003.1010 SS, B12003.1050 | 100% |  | 2026-08-18 | 2026-08-24 |  |  | 1455 | DH1200 |  | GR | HELIX | ACOO | 2 |  |
| B12003.1070 |  | DH 1200/Gallery 1203 // MEP rough in walls |  | 4d | 2026-09-10 A | 2026-09-15 A | B12003.1040, B12003.1090 SS, B12003.1050 | 100% |  | 2026-08-25 | 2026-08-28 |  |  | 1458 | DH1200 |  | GR | HELIX | AC | 2 |  |
| B12003.1090 |  | DH 1200/Gallery 1203 // Install Balance of Sheetrock on walls |  | 6d | 2026-09-10 A | 2026-09-17 A | B12003.1030 | 100% |  | 2026-08-25 | 2026-09-01 |  |  | 1460 | DH1200 |  | GR |  |  | 2 |  |
| B12003.1080 |  | DH 1200/Gallery 1203 // In wall inspection |  | 1d | 2026-09-16 A | 2026-09-16 A | B12003.1070 | 100% |  | 2026-08-31 | 2026-08-31 |  |  | 1459 | DH1200 |  | GR |  |  | 2 |  |
| B120001.3119 |  | DH 1200/Gallery 1203 // Install Overhead Cable Ladder / 36" Cable Tray - TFO |  | 5d | 2026-09-17 A | 2026-09-23 A | B12003.1010 | 100% |  | 2026-08-10 | 2026-08-14 |  |  | 1181 |  |  | GR |  |  |  | Y |
| B12003.1100 |  | DH 1200/Gallery 1203 // Tape and finish walls |  | 8d | 2026-09-17 A | 2026-10-02 A | B12003.1090, B12003.1080 | 100% |  | 2026-09-02 | 2026-09-14 |  |  | 1462 | DH1200 |  | GR |  |  | 2 |  |
| F.1000A.1425 |  | DH 1200/Gallery 1203 // BMS & EPMS Rough-In |  | 2d | 2026-09-17 A | 2026-09-18 A | B12003.1040 | 100% |  | 2026-10-07 | 2026-10-08 |  |  |  | DH1200 |  |  |  |  |  |  |
| B12003.1060 |  | DH 1200/Gallery 1203 // Install wall door frames |  | 2d | 2026-09-29 A | 2026-10-14 | B12003.1090 | 50% | 1d | 2026-09-15 | 2026-09-16 | 41d | 0d | 1457 | DH1200 |  | GR |  |  | 2 |  |
| B120001.3120 |  | DH 1200/Gallery 1203 // Install Overhead HAC - TFO |  | 5d | 2026-10-01 A | 2026-10-06 A | B120001.3119 | 100% |  | 2026-09-30 | 2026-10-06 |  |  | 1181 |  |  | GR |  |  |  |  |
| B12003.1110 |  | DH 1200/Gallery 1203 // Prime and Paint walls |  | 4d | 2026-10-05 A | 2026-10-07 A | B12003.1050, B12003.1100 | 100% |  | 2026-10-05 | 2026-10-08 |  |  | 1463 | DH1200 |  | GR |  |  | 2 |  |
| B12003.1141 |  | DH 1200/Gallery 1203 // Ready to Receive Equipment | milestone | 0d | 2026-10-07 A | 2026-10-07 A | B12003.1110 FF | 100% |  | 2026-10-13 | 2026-10-13 |  |  | 1465 | DH1200 |  | GR | HELIX | TBD |  |  |
| F.1000A.1211 |  | DH 1200/Gallery 1203 // Rough-In Security |  | 2d | 2026-10-14 | 2026-10-15 | B120001.3120, B12003.1010 |  |  |  |  | 35d | 0d | 1156 | DH1200 |  | GR | HELIX | AC |  |  |
| B12003.1120 |  | DH 1200/Gallery 1203 // Touch up Walls and Fianl Paint |  | 5d | 2026-10-15 | 2026-10-21 | B12003.1060, B12003.1110 FS+2d |  |  |  |  | 41d | 0d | 1464 | DH1200 |  | GR |  |  | 2 |  |
| F.1000A.1212 |  | DH 1200/Gallery 1203 // Pull & Test Security Cable |  | 3d | 2026-10-16 | 2026-10-20 | F.1000A.1211 |  |  |  |  | 35d | 0d | 1156 | DH1200 |  | GR |  |  |  |  |
| B12003.1130 |  | DH 1200/Gallery 1203 // Install Trim and Devices |  | 2d | 2026-10-20 | 2026-10-21 | B12003.1120 FF |  |  |  |  | 41d | 6d | 1465 | DH1200 |  | GR | HELIX | AC |  |  |
| F.1000A.1213 |  | DH 1200/Gallery 1203 // Install Security Devices |  | 2d | 2026-10-21 | 2026-10-22 | F.1000A.1212 |  |  |  |  | 35d | 0d | 1156 | DH1200 |  | GR |  |  |  |  |
| F.1000A.1214 |  | DH 1200/Gallery 1203 // Mount & Terminate Security Devices |  | 5d | 2026-10-23 | 2026-10-29 | B12003.1110, F.1000A.1213 |  |  |  |  | 35d | 0d | 1156 | DH1200 |  | GR |  |  |  |  |
| F.1000A.1215 |  | DH 1200/Gallery 1203 // Test Security Devices |  | 2d | 2026-10-30 | 2026-11-02 | B12003.1130, F.1000A.1214, F.1000A.1425 FF |  |  |  |  | 35d | 0d | 1156 | DH1200 |  | GR |  |  |  |  |
| B12003.1140 |  | DH 1200/Gallery 1203 // Suffolk Pre Punch |  | 5d | 2026-11-03 | 2026-11-09 | F.1000A.1215, B12003.1141 |  |  |  |  | 35d | 43d | 1466 | DH1200 |  | GR |  |  |  |  |

| ID | WBS | Activity | Duration | Start | Finish | Predecessors | Complete | Remaining | Planned start | Planned finish | Total float | Free float | MSP Activity ID | QTS - AREA | QTS - DASH | QTS - Subcontractor | QTS - Resp |
| --- | --- | --- | --- | --- | --- | --- | --- | --- | --- | --- | --- | --- | --- | --- | --- | --- | --- |
|  | 16 | **Raceway** |  |  |  |  |  |  |  |  |  |  |  |  |  |  |  |
|  | 3 | **Equipment Line-Ups** |  | 2026-10-06 | 2026-11-16 |  |  |  |  |  |  |  |  |  |  |  |  |
|  | 1 | **A120** |  | 2026-10-06 | 2026-11-10 |  |  |  |  |  |  |  |  |  |  |  |  |
| B12000-B-EQP-1 |  | Gallery 1203 - A120/Line-Ups // Set CRAH-DH1200- 12 | 1d | 2026-10-06 A | 2026-10-07 A | B12003.1141 FF, B12000.6360 | 100% |  | 2026-10-14 | 2026-10-14 |  |  | 1474 | DH1200 | GR |  |  |
| B12000-B-EQP-199 |  | Gallery 1203 - A120/Line-Ups // Set CDU-DH1200-11 | 1d | 2026-10-06 A | 2026-10-14 | B12000-B-EQP-4 |  | 1d | 2026-10-15 | 2026-10-15 | 37d | 3d | 1478 | DH1200 | GR |  |  |
| B12000-B-EQP-200 |  | Gallery 1203 - A120/Line-Ups // Set CDU-DH1200-12 | 1d | 2026-10-06 A | 2026-10-14 | B12000-B-EQP-4 |  | 1d | 2026-10-16 | 2026-10-16 | 37d | 3d | 1478 | DH1200 | GR |  |  |
| B12000-B-EQP-4 |  | Gallery 1203 - A120/Line-Ups // Set CRAH-DH1200- 13 | 1d | 2026-10-06 A | 2026-10-07 A | B12000-B-EQP-1 SS, B12000-B-EQP-1 FF | 100% |  | 2026-10-14 | 2026-10-14 |  |  | 1475 | DH1200 | GR |  |  |
| B12000-B-EQP-10 |  | Gallery 1203 - A120/Line-Ups // Mount Electrial Gear for Chiller Controls | 10d | 2026-10-14 | 2026-10-27 | B12000-B-EQP-4 |  |  |  |  | 34d | 0d | 1484 | DH1200 | GR | HELIX | AC |
| B12000-B-EQP-14 |  | Gallery 1203 - A120/Line-Ups // Terminate Electrical Connections - CRAHU | 3d | 2026-10-14 | 2026-10-16 | B12000-B-EQP-1 |  |  |  |  | 49d | 15d | 1483 | DH1200 | GR | HELIX | OO |
| B12000-B-EQP-3 |  | Gallery 1203 - A120/Line-Ups // Condensate connections to Floor Drains | 10d | 2026-10-14 | 2026-10-27 | B12000-B-EQP-1 SS, B12000-B-EQP-4 |  |  |  |  | 36d | 0d | 1477 | DH1200 | GR |  |  |
| B12000-B-EQP-9 |  | Gallery 1203 - A120/Line-Ups // Mechanical Connections to CRAHU Units | 5d | 2026-10-14 | 2026-10-20 | B12000-B-EQP-4 SS+5d |  |  |  |  | 36d | 0d | 1489 | DH1200 | GR |  |  |
| B12000-B-EQP-15 |  | Gallery 1203 - A120/Line-Ups // Pull Feeder and Branch circuits to MIsc equipment and Chiller controls | 10d | 2026-10-20 | 2026-11-02 | B12000-B-EQP-200, B12000-B-EQP-199, B12000-B-EQP-10 SS+4d |  |  |  |  | 34d | 0d | 1485 | DH1200 | GR | HELIX | AC |
| B12000-B-EQP-12 |  | Gallery 1203 - A120/Line-Ups // Condensate connections to Floor Drains | 10d | 2026-10-21 | 2026-11-03 | B12000-B-EQP-9 SS+5d, B12000-B-EQP-3 SS+5d |  |  |  |  | 36d | 0d | 1490 | DH1200 | GR |  |  |
| B12000-B-EQP-17 |  | Gallery 1203 - A120/Line-Ups // Teminate all Misc Equipment and Chiller Controls | 10d | 2026-10-26 | 2026-11-06 | B12000-B-EQP-15 SS+4d |  |  |  |  | 34d | 0d | 1486 | DH1200 | GR |  |  |
| B12000-B-EQP-16 |  | Gallery 1203 - A120/Line-Ups // Mechanical Gear FOD Inspection Pre-Start Up | 3d | 2026-11-04 | 2026-11-06 | B12000-B-EQP-12, B12000-B-EQP-3, B12000-B-EQP-9, B12000-B-EQP-1 SS, B12000-B-EQP-4 |  |  |  |  | 36d | 44d | 1488 | DH1200 | GR |  |  |
| B12000-B-EQP-18 |  | Gallery 1203 - A120/Line-Ups // Electrical Gear FOD Inspection Pre-Start Up | 2d | 2026-11-09 | 2026-11-10 | B12000-B-EQP-14, B12000-B-EQP-17 |  |  |  |  | 34d | 42d | 1487 | DH1200 | GR | HELIX | QC |
|  | 2 | **B120** |  | 2026-10-06 | 2026-11-16 |  |  |  |  |  |  |  |  |  |  |  |  |
| B12000-B-EQP-19 |  | Gallery 1203 - B120/Line-Ups // Set CRAH-DH1200- 14 | 1d | 2026-10-06 A | 2026-10-07 A | B12000-B-EQP-4 SS | 100% |  | 2026-10-14 | 2026-10-14 |  |  | 1474 | DH1200 | GR |  |  |
| B12000-B-EQP-22 |  | Gallery 1203 - B120/Line-Ups // Set CRAH-DH1200- 15 | 1d | 2026-10-06 A | 2026-10-07 A | B12000-B-EQP-19 SS, B12000-B-EQP-19 FF | 100% |  | 2026-10-14 | 2026-10-14 |  |  | 1475 | DH1200 | GR |  |  |
| B12000-B-EQP-20 |  | Gallery 1203 - B120/Line-Ups // Connect CRAH units | 10d | 2026-10-14 | 2026-10-27 | B12000-B-EQP-19 SS+5d, B12000-B-EQP-22 |  |  |  |  | 31d | 0d | 1476 | DH1200 | GR |  |  |
| B12000-B-EQP-201 |  | Gallery 1203 - B120/Line-Ups // Set CDU-DH1200-13 | 1d | 2026-10-14 | 2026-10-14 | B12000-B-EQP-22 |  |  |  |  | 37d | 3d | 1478 | DH1200 | GR |  |  |
| B12000-B-EQP-202 |  | Gallery 1203 - B120/Line-Ups // Set CDU-DH1200-14 | 1d | 2026-10-14 | 2026-10-14 | B12000-B-EQP-22 |  |  |  |  | 37d | 3d | 1478 | DH1200 | GR |  |  |
| B12000-B-EQP-27 |  | Gallery 1203 - B120/Line-Ups // Mechanical Connections to CRAHU Units | 10d | 2026-10-14 | 2026-10-27 | B12000-B-EQP-22 SS+5d |  |  |  |  | 36d | 5d | 1489 | DH1200 | GR |  |  |
| B12000-B-EQP-28 |  | Gallery 1203 - B120/Line-Ups // Mount Electrial Gear for Chiller Controls | 10d | 2026-10-14 | 2026-10-27 | B12000-B-EQP-22 |  |  |  |  | 34d | 0d | 1484 | DH1200 | GR | HELIX | AC |
| B12000-B-EQP-32 |  | Gallery 1203 - B120/Line-Ups // Terminate CRAHU Electrical Connections | 5d | 2026-10-14 | 2026-10-20 | B12000-B-EQP-19 |  |  |  |  | 47d | 13d | 1483 | DH1200 | GR | HELIX | OO |
| B12000-B-EQP-33 |  | Gallery 1203 - B120/Line-Ups // Pull Feeder and Branch circuits to MIsc equipment and Chiller controls | 10d | 2026-10-20 | 2026-11-02 | B12000-B-EQP-202, B12000-B-EQP-201, B12000-B-EQP-28 SS+4d |  |  |  |  | 34d | 0d | 1485 | DH1200 | GR | HELIX | AC |
| B12000-B-EQP-21 |  | Gallery 1203 - B120/Line-Ups // Condensate connections to Floor Drains | 10d | 2026-10-21 | 2026-11-03 | B12000-B-EQP-20 SS+5d |  |  |  |  | 31d | 0d | 1477 | DH1200 | GR |  |  |
| B12000-B-EQP-35 |  | Gallery 1203 - B120/Line-Ups // Teminate all Misc Equipment and Chiller Controls | 10d | 2026-10-26 | 2026-11-06 | B12000-B-EQP-33 SS+4d |  |  |  |  | 34d | 0d | 1486 | DH1200 | GR |  |  |
| B12000-B-EQP-30 |  | Gallery 1203 - B120/Line-Ups // Condensate connections to Floor Drains | 10d | 2026-10-28 | 2026-11-10 | B12000-B-EQP-27 SS+5d, B12000-B-EQP-21 SS+5d |  |  |  |  | 31d | 0d | 1490 | DH1200 | GR |  |  |
| B12000-B-EQP-36 |  | Gallery 1203 - B120/Line-Ups // Electrical Gear FOD Inspection Pre-Start Up | 2d | 2026-11-09 | 2026-11-10 | B12000-B-EQP-32, B12000-B-EQP-35 |  |  |  |  | 34d | 42d | 1487 | DH1200 | GR | HELIX | QC |
| B12000-B-EQP-34 |  | Gallery 1203 - B120/Line-Ups // Mechanical Gear FOD Inspection Pre-Start Up | 3d | 2026-11-12 | 2026-11-16 | B12000-B-EQP-30, B12000-B-EQP-21, B12000-B-EQP-27, B12000-B-EQP-20 |  |  |  |  | 31d | 39d | 1488 | DH1200 | GR |  |  |

| ID | WBS | Activity | Duration | Start | Finish | Predecessors | Complete | Planned start | Planned finish | Total float | Free float | MSP Activity ID | QTS - AREA | QTS - DASH | QTS - Subcontractor | QTS - Resp |
| --- | --- | --- | --- | --- | --- | --- | --- | --- | --- | --- | --- | --- | --- | --- | --- | --- |
|  | 3 | **C120** |  | 2026-10-06 | 2026-11-16 |  |  |  |  |  |  |  |  |  |  |  |
| B12000-B-EQP-37 |  | Gallery 1203 - C120/Line-Ups // Set CRAH-DH1200- 16 | 1d | 2026-10-06 A | 2026-10-07 A | B12000-B-EQP-22 SS | 100% | 2026-10-14 | 2026-10-14 |  |  | 1474 | DH1200 | GR |  |  |
| B12000-B-EQP-40 |  | Gallery 1203 - C120/Line-Ups // Set CRAH-DH1200- 17 | 1d | 2026-10-06 A | 2026-10-07 A | B12000-B-EQP-37 SS, B12000-B-EQP-37 FF | 100% | 2026-10-14 | 2026-10-14 |  |  | 1475 | DH1200 | GR |  |  |
| B12000-B-EQP-203 |  | Gallery 1203 - C120/Line-Ups // Set CDU-DH1200-27 | 1d | 2026-10-14 | 2026-10-14 | B12000-B-EQP-40 |  |  |  | 37d | 3d | 1478 | DH1200 | GR |  |  |
| B12000-B-EQP-204 |  | Gallery 1203 - C120/Line-Ups // Set CDU-DH1200-28 | 1d | 2026-10-14 | 2026-10-14 | B12000-B-EQP-40 |  |  |  | 37d | 3d | 1478 | DH1200 | GR |  |  |
| B12000-B-EQP-38 |  | Gallery 1203 - C120/Line-Ups // Connect CRAH units | 10d | 2026-10-14 | 2026-10-27 | B12000-B-EQP-37 SS+5d, B12000-B-EQP-40 |  |  |  | 31d | 0d | 1476 | DH1200 | GR |  |  |
| B12000-B-EQP-45 |  | Gallery 1203 - C120/Line-Ups // Mechanical Connections to CRAHU Units | 10d | 2026-10-14 | 2026-10-27 | B12000-B-EQP-40 SS+5d |  |  |  | 36d | 5d | 1489 | DH1200 | GR |  |  |
| B12000-B-EQP-46 |  | Gallery 1203 - C120/Line-Ups // Mount Electrial Gear for Chiller Controls | 10d | 2026-10-14 | 2026-10-27 | B12000-B-EQP-40 |  |  |  | 34d | 0d | 1484 | DH1200 | GR | HELIX | AC |
| B12000-B-EQP-50 |  | Gallery 1203 - C120/Line-Ups // Terminate CRAHU Electrical Connections | 5d | 2026-10-14 | 2026-10-20 | B12000-B-EQP-37 |  |  |  | 47d | 13d | 1483 | DH1200 | GR | HELIX | OO |
| B12000-B-EQP-51 |  | Gallery 1203 - C120/Line-Ups // Pull Feeder and Branch circuits to MIsc equipment and Chiller controls | 10d | 2026-10-20 | 2026-11-02 | B12000-B-EQP-203, B12000-B-EQP-204, B12000-B-EQP-46 SS+4d |  |  |  | 34d | 0d | 1485 | DH1200 | GR | HELIX | AC |
| B12000-B-EQP-39 |  | Gallery 1203 - C120/Line-Ups // Condensate connections to Floor Drains | 10d | 2026-10-21 | 2026-11-03 | B12000-B-EQP-38 SS+5d |  |  |  | 31d | 0d | 1477 | DH1200 | GR |  |  |
| B12000-B-EQP-53 |  | Gallery 1203 - C120/Line-Ups // Teminate all Misc Equipment and Chiller Controls | 10d | 2026-10-26 | 2026-11-06 | B12000-B-EQP-51 SS+4d |  |  |  | 34d | 0d | 1486 | DH1200 | GR |  |  |
| B12000-B-EQP-48 |  | Gallery 1203 - C120/Line-Ups // Condensate connections to Floor Drains | 10d | 2026-10-28 | 2026-11-10 | B12000-B-EQP-45 SS+5d, B12000-B-EQP-39 SS+5d |  |  |  | 31d | 0d | 1490 | DH1200 | GR |  |  |
| B12000-B-EQP-54 |  | Gallery 1203 - C120/Line-Ups // Electrical Gear FOD Inspection Pre-Start Up | 2d | 2026-11-09 | 2026-11-10 | B12000-B-EQP-50, B12000-B-EQP-53 |  |  |  | 34d | 42d | 1487 | DH1200 | GR | HELIX | QC |
| B12000-B-EQP-52 |  | Gallery 1203 - C120/Line-Ups // Mechanical Gear FOD Inspection Pre-Start Up | 3d | 2026-11-12 | 2026-11-16 | B12000-B-EQP-48, B12000-B-EQP-39, B12000-B-EQP-45, B12000-B-EQP-38 |  |  |  | 31d | 39d | 1488 | DH1200 | GR |  |  |
|  | 4 | **D120** |  | 2026-10-06 | 2026-11-16 |  |  |  |  |  |  |  |  |  |  |  |
| B12000-B-EQP-55 |  | Gallery 1203 - D120/Line-Ups // Set CRAH-DH1200- 29 | 1d | 2026-10-06 A | 2026-10-07 A | B12000-B-EQP-40 SS | 100% | 2026-10-15 | 2026-10-15 |  |  | 1474 | DH1200 | GR |  |  |
| B12000-B-EQP-58 |  | Gallery 1203 - D120/Line-Ups // Set CRAH-DH1200-30 | 1d | 2026-10-06 A | 2026-10-07 A | B12000-B-EQP-55 SS, B12000-B-EQP-55 FF | 100% | 2026-10-15 | 2026-10-15 |  |  | 1475 | DH1200 | GR |  |  |
| B12000-B-EQP-205 |  | Gallery 1203 - D120/Line-Ups // Set CDU-DH1200-29 | 1d | 2026-10-14 | 2026-10-14 | B12000-B-EQP-58 |  |  |  | 37d | 3d | 1478 | DH1200 | GR |  |  |
| B12000-B-EQP-206 |  | Gallery 1203 - D120/Line-Ups // Set CDU-DH1200-30 | 1d | 2026-10-14 | 2026-10-14 | B12000-B-EQP-58 |  |  |  | 37d | 3d | 1478 | DH1200 | GR |  |  |
| B12000-B-EQP-56 |  | Gallery 1203 - D120/Line-Ups // Connect CRAH units | 10d | 2026-10-14 | 2026-10-27 | B12000-B-EQP-55 SS+5d, B12000-B-EQP-58 |  |  |  | 31d | 0d | 1476 | DH1200 | GR |  |  |
| B12000-B-EQP-63 |  | Gallery 1203 - D120/Line-Ups // Mechanical Connections to CRAHU Units | 10d | 2026-10-14 | 2026-10-27 | B12000-B-EQP-58 SS+5d |  |  |  | 36d | 5d | 1489 | DH1200 | GR |  |  |
| B12000-B-EQP-64 |  | Gallery 1203 - D120/Line-Ups // Mount Electrial Gear for Chiller Controls | 10d | 2026-10-14 | 2026-10-27 | B12000-B-EQP-58 |  |  |  | 34d | 0d | 1484 | DH1200 | GR | HELIX | AC |
| B12000-B-EQP-68 |  | Gallery 1203 - D120/Line-Ups // Terminate CRAHU Electrical Connections | 5d | 2026-10-14 | 2026-10-20 | B12000-B-EQP-55 |  |  |  | 47d | 13d | 1483 | DH1200 | GR | HELIX | OO |
| B12000-B-EQP-69 |  | Gallery 1203 - D120/Line-Ups // Pull Feeder and Branch circuits to MIsc equipment and Chiller controls | 10d | 2026-10-20 | 2026-11-02 | B12000-B-EQP-206, B12000-B-EQP-205, B12000-B-EQP-64 SS+4d |  |  |  | 34d | 0d | 1485 | DH1200 | GR | HELIX | AC |
| B12000-B-EQP-57 |  | Gallery 1203 - D120/Line-Ups // Condensate connections to Floor Drains | 10d | 2026-10-21 | 2026-11-03 | B12000-B-EQP-56 SS+5d |  |  |  | 31d | 0d | 1477 | DH1200 | GR |  |  |
| B12000-B-EQP-71 |  | Gallery 1203 - D120/Line-Ups // Teminate all Misc Equipment and Chiller Controls | 10d | 2026-10-26 | 2026-11-06 | B12000-B-EQP-69 SS+4d |  |  |  | 34d | 0d | 1486 | DH1200 | GR |  |  |
| B12000-B-EQP-66 |  | Gallery 1203 - D120/Line-Ups // Condensate connections to Floor Drains | 10d | 2026-10-28 | 2026-11-10 | B12000-B-EQP-63 SS+5d, B12000-B-EQP-57 SS+5d |  |  |  | 31d | 0d | 1490 | DH1200 | GR |  |  |
| B12000-B-EQP-72 |  | Gallery 1203 - D120/Line-Ups // Electrical Gear FOD Inspection Pre-Start Up | 2d | 2026-11-09 | 2026-11-10 | B12000-B-EQP-68, B12000-B-EQP-71 |  |  |  | 34d | 42d | 1487 | DH1200 | GR | HELIX | QC |
| B12000-B-EQP-70 |  | Gallery 1203 - D120/Line-Ups // Mechanical Gear FOD Inspection Pre-Start Up | 3d | 2026-11-12 | 2026-11-16 | B12000-B-EQP-66, B12000-B-EQP-57, B12000-B-EQP-63, B12000-B-EQP-56 |  |  |  | 31d | 39d | 1488 | DH1200 | GR |  |  |

| ID | WBS | Activity | Duration | Start | Finish | Predecessors | Complete | Planned start | Planned finish | Total float | Free float | MSP Activity ID | QTS - AREA | QTS - DASH | QTS - Subcontractor | QTS - Resp |
| --- | --- | --- | --- | --- | --- | --- | --- | --- | --- | --- | --- | --- | --- | --- | --- | --- |
|  | 5 | **E120** |  | 2026-10-06 | 2026-11-16 |  |  |  |  |  |  |  |  |  |  |  |
| B12000-B-EQP-73 |  | Gallery 1203 - E120/Line-Ups // Set CRAH-DH1200- 31 | 1d | 2026-10-06 A | 2026-10-07 A | B12000-B-EQP-58 SS | 100% | 2026-10-15 | 2026-10-15 |  |  | 1474 | DH1200 | GR |  |  |
| B12000-B-EQP-76 |  | Gallery 1203 - E120/Line-Ups // Set CRAH-DH1200-32 | 1d | 2026-10-06 A | 2026-10-07 A | B12000-B-EQP-73 SS, B12000-B-EQP-73 FF | 100% | 2026-10-15 | 2026-10-15 |  |  | 1475 | DH1200 | GR |  |  |
| B12000-B-EQP-207 |  | Gallery 1203 - E120/Line-Ups // Set CDU-DH1200-31 | 1d | 2026-10-14 | 2026-10-14 | B12000-B-EQP-76 |  |  |  | 37d | 3d | 1478 | DH1200 | GR |  |  |
| B12000-B-EQP-208 |  | Gallery 1203 - E120/Line-Ups // Set CDU-DH1200-32 | 1d | 2026-10-14 | 2026-10-14 | B12000-B-EQP-76 |  |  |  | 37d | 3d | 1478 | DH1200 | GR |  |  |
| B12000-B-EQP-74 |  | Gallery 1203 - E120/Line-Ups // Connect CRAH units | 10d | 2026-10-14 | 2026-10-27 | B12000-B-EQP-73 SS+5d, B12000-B-EQP-76 |  |  |  | 31d | 0d | 1476 | DH1200 | GR |  |  |
| B12000-B-EQP-81 |  | Gallery 1203 - E120/Line-Ups // Mechanical Connections to CRAHU Units | 10d | 2026-10-14 | 2026-10-27 | B12000-B-EQP-76 SS+5d |  |  |  | 36d | 5d | 1489 | DH1200 | GR |  |  |
| B12000-B-EQP-82 |  | Gallery 1203 - E120/Line-Ups // Mount Electrial Gear for Chiller Controls | 10d | 2026-10-14 | 2026-10-27 | B12000-B-EQP-76 |  |  |  | 34d | 0d | 1484 | DH1200 | GR | HELIX | AC |
| B12000-B-EQP-86 |  | Gallery 1203 - E120/Line-Ups // Terminate CRAHU Electrical Connections | 5d | 2026-10-14 | 2026-10-20 | B12000-B-EQP-73 |  |  |  | 47d | 13d | 1483 | DH1200 | GR | HELIX | OO |
| B12000-B-EQP-87 |  | Gallery 1203 - E120/Line-Ups // Pull Feeder and Branch circuits to MIsc equipment and Chiller controls | 10d | 2026-10-20 | 2026-11-02 | B12000-B-EQP-208, B12000-B-EQP-207, B12000-B-EQP-82 SS+4d |  |  |  | 34d | 0d | 1485 | DH1200 | GR | HELIX | AC |
| B12000-B-EQP-75 |  | Gallery 1203 - E120/Line-Ups // Condensate connections to Floor Drains | 10d | 2026-10-21 | 2026-11-03 | B12000-B-EQP-74 SS+5d |  |  |  | 31d | 0d | 1477 | DH1200 | GR |  |  |
| B12000-B-EQP-89 |  | Gallery 1203 - E120/Line-Ups // Teminate all Misc Equipment and Chiller Controls | 10d | 2026-10-26 | 2026-11-06 | B12000-B-EQP-87 SS+4d |  |  |  | 34d | 0d | 1486 | DH1200 | GR |  |  |
| B12000-B-EQP-84 |  | Gallery 1203 - E120/Line-Ups // Condensate connections to Floor Drains | 10d | 2026-10-28 | 2026-11-10 | B12000-B-EQP-81 SS+5d, B12000-B-EQP-75 SS+5d |  |  |  | 31d | 0d | 1490 | DH1200 | GR |  |  |
| B12000-B-EQP-90 |  | Gallery 1203 - E120/Line-Ups // Electrical Gear FOD Inspection Pre-Start Up | 2d | 2026-11-09 | 2026-11-10 | B12000-B-EQP-86, B12000-B-EQP-89 |  |  |  | 34d | 42d | 1487 | DH1200 | GR | HELIX | QC |
| B12000-B-EQP-88 |  | Gallery 1203 - E120/Line-Ups // Mechanical Gear FOD Inspection Pre-Start Up | 3d | 2026-11-12 | 2026-11-16 | B12000-B-EQP-84, B12000-B-EQP-75, B12000-B-EQP-81, B12000-B-EQP-74 |  |  |  | 31d | 39d | 1488 | DH1200 | GR |  |  |
|  | 6 | **F120** |  | 2026-10-06 | 2026-11-16 |  |  |  |  |  |  |  |  |  |  |  |
| B12000-B-EQP-91 |  | Gallery 1203 - F120/Line-Ups // Set CRAH-DH1200-33 | 1d | 2026-10-06 A | 2026-10-07 A | B12000-B-EQP-76 SS | 100% | 2026-10-15 | 2026-10-15 |  |  | 1474 | DH1200 | GR |  |  |
| B12000-B-EQP-94 |  | Gallery 1203 - F120/Line-Ups // Set CRAH-DH1200-34 | 1d | 2026-10-06 A | 2026-10-07 A | B12000-B-EQP-91 SS, B12000-B-EQP-91 FF | 100% | 2026-10-15 | 2026-10-15 |  |  | 1475 | DH1200 | GR |  |  |
| B12000-B-EQP-100 |  | Gallery 1203 - F120/Line-Ups // Mount Electrial Gear for Chiller Controls | 10d | 2026-10-14 | 2026-10-27 | B12000-B-EQP-94 |  |  |  | 34d | 0d | 1484 | DH1200 | GR | HELIX | AC |
| B12000-B-EQP-104 |  | Gallery 1203 - F120/Line-Ups // Terminate CRAHU Electrical Connections | 5d | 2026-10-14 | 2026-10-20 | B12000-B-EQP-91 |  |  |  | 47d | 13d | 1483 | DH1200 | GR | HELIX | OO |
| B12000-B-EQP-209 |  | Gallery 1203 - F120/Line-Ups // Set CDU-DH1200-33 | 1d | 2026-10-14 | 2026-10-14 | B12000-B-EQP-94 |  |  |  | 37d | 3d | 1478 | DH1200 | GR |  |  |
| B12000-B-EQP-210 |  | Gallery 1203 - F120/Line-Ups // Set CDU-DH1200-34 | 1d | 2026-10-14 | 2026-10-14 | B12000-B-EQP-94 |  |  |  | 37d | 3d | 1478 | DH1200 | GR |  |  |
| B12000-B-EQP-92 |  | Gallery 1203 - F120/Line-Ups // Connect CRAH units | 10d | 2026-10-14 | 2026-10-27 | B12000-B-EQP-91 SS+5d, B12000-B-EQP-94 |  |  |  | 31d | 0d | 1476 | DH1200 | GR |  |  |
| B12000-B-EQP-99 |  | Gallery 1203 - F120/Line-Ups // Mechanical Connections to CRAHU Units | 10d | 2026-10-14 | 2026-10-27 | B12000-B-EQP-94 SS+5d |  |  |  | 36d | 5d | 1489 | DH1200 | GR |  |  |
| B12000-B-EQP-105 |  | Gallery 1203 - F120/Line-Ups // Pull Feeder and Branch circuits to MIsc equipment and Chiller controls | 10d | 2026-10-20 | 2026-11-02 | B12000-B-EQP-210, B12000-B-EQP-209, B12000-B-EQP-100 SS+4d |  |  |  | 34d | 0d | 1485 | DH1200 | GR | HELIX | AC |
| B12000-B-EQP-93 |  | Gallery 1203 - F120/Line-Ups // Condensate connections to Floor Drains | 10d | 2026-10-21 | 2026-11-03 | B12000-B-EQP-92 SS+5d |  |  |  | 31d | 0d | 1477 | DH1200 | GR |  |  |
| B12000-B-EQP-107 |  | Gallery 1203 - F120/Line-Ups // Teminate all Misc Equipment and Chiller Controls | 10d | 2026-10-26 | 2026-11-06 | B12000-B-EQP-105 SS+4d |  |  |  | 34d | 0d | 1486 | DH1200 | GR |  |  |
| B12000-B-EQP-102 |  | Gallery 1203 - F120/Line-Ups // Condensate connections to Floor Drains | 10d | 2026-10-28 | 2026-11-10 | B12000-B-EQP-99 SS+5d, B12000-B-EQP-93 SS+5d |  |  |  | 31d | 0d | 1490 | DH1200 | GR |  |  |
| B12000-B-EQP-108 |  | Gallery 1203 - F120/Line-Ups // Electrical Gear FOD Inspection Pre-Start Up | 2d | 2026-11-09 | 2026-11-10 | B12000-B-EQP-104, B12000-B-EQP-107 |  |  |  | 34d | 42d | 1487 | DH1200 | GR | HELIX | QC |
| B12000-B-EQP-106 |  | Gallery 1203 - F120/Line-Ups // Mechanical Gear FOD Inspection Pre-Start Up | 3d | 2026-11-12 | 2026-11-16 | B12000-B-EQP-102, B12000-B-EQP-93, B12000-B-EQP-99, B12000-B-EQP-92 |  |  |  | 31d | 39d | 1488 | DH1200 | GR |  |  |

| ID | WBS | Activity | Duration | Start | Finish | Predecessors | Complete | Planned start | Planned finish | Total float | Free float | MSP Activity ID | QTS - AREA | QTS - DASH | QTS - Subcontractor | QTS - Resp |
| --- | --- | --- | --- | --- | --- | --- | --- | --- | --- | --- | --- | --- | --- | --- | --- | --- |
|  | 7 | **G120** |  | 2026-10-06 | 2026-11-16 |  |  |  |  |  |  |  |  |  |  |  |
| B12000-B-EQP-109 |  | Gallery 1203 - G120/Line-Ups // Set CRAH-DH1200-35 | 1d | 2026-10-06 A | 2026-10-07 A | B12000-B-EQP-94 SS | 100% | 2026-10-16 | 2026-10-16 |  |  | 1474 | DH1200 | GR |  |  |
| B12000-B-EQP-112 |  | Gallery 1203 - G120/Line-Ups // Set CRAH-DH1200-36 | 1d | 2026-10-06 A | 2026-10-07 A | B12000-B-EQP-109 SS, B12000-B-EQP-109 FF | 100% | 2026-10-16 | 2026-10-16 |  |  | 1475 | DH1200 | GR |  |  |
| B12000-B-EQP-110 |  | Gallery 1203 - G120/Line-Ups // Connect CRAH units | 10d | 2026-10-14 | 2026-10-27 | B12000-B-EQP-109 SS+5d, B12000-B-EQP-112 |  |  |  | 31d | 0d | 1476 | DH1200 | GR |  |  |
| B12000-B-EQP-117 |  | Gallery 1203 - G120/Line-Ups // Mechanical Connections to CRAHU Units | 10d | 2026-10-14 | 2026-10-27 | B12000-B-EQP-112 SS+5d |  |  |  | 36d | 5d | 1489 | DH1200 | GR |  |  |
| B12000-B-EQP-118 |  | Gallery 1203 - G120/Line-Ups // Mount Electrial Gear for Chiller Controls | 10d | 2026-10-14 | 2026-10-27 | B12000-B-EQP-112 |  |  |  | 34d | 0d | 1484 | DH1200 | GR | HELIX | AC |
| B12000-B-EQP-122 |  | Gallery 1203 - G120/Line-Ups // Terminate CRAHU Electrical Connections | 5d | 2026-10-14 | 2026-10-20 | B12000-B-EQP-109 |  |  |  | 47d | 13d | 1483 | DH1200 | GR | HELIX | OO |
| B12000-B-EQP-211 |  | Gallery 1203 - G120/Line-Ups // Set CDU-DH1200-35 | 1d | 2026-10-14 | 2026-10-14 | B12000-B-EQP-112 |  |  |  | 37d | 3d | 1478 | DH1200 | GR |  |  |
| B12000-B-EQP-212 |  | Gallery 1203 - G120/Line-Ups // Set CDU-DH1200-36 | 1d | 2026-10-14 | 2026-10-14 | B12000-B-EQP-112 |  |  |  | 37d | 3d | 1478 | DH1200 | GR |  |  |
| B12000-B-EQP-123 |  | Gallery 1203 - G120/Line-Ups // Pull Feeder and Branch circuits to MIsc equipment and Chiller controls | 10d | 2026-10-20 | 2026-11-02 | B12000-B-EQP-212, B12000-B-EQP-211, B12000-B-EQP-118 SS+4d |  |  |  | 34d | 0d | 1485 | DH1200 | GR | HELIX | AC |
| B12000-B-EQP-111 |  | Gallery 1203 - G120/Line-Ups // Condensate connections to Floor Drains | 10d | 2026-10-21 | 2026-11-03 | B12000-B-EQP-110 SS+5d |  |  |  | 31d | 0d | 1477 | DH1200 | GR |  |  |
| B12000-B-EQP-125 |  | Gallery 1203 - G120/Line-Ups // Teminate all Misc Equipment and Chiller Controls | 10d | 2026-10-26 | 2026-11-06 | B12000-B-EQP-123 SS+4d |  |  |  | 34d | 0d | 1486 | DH1200 | GR |  |  |
| B12000-B-EQP-120 |  | Gallery 1203 - G120/Line-Ups // Condensate connections to Floor Drains | 10d | 2026-10-28 | 2026-11-10 | B12000-B-EQP-117 SS+5d, B12000-B-EQP-111 SS+5d |  |  |  | 31d | 0d | 1490 | DH1200 | GR |  |  |
| B12000-B-EQP-126 |  | Gallery 1203 - G120/Line-Ups // Electrical Gear FOD Inspection Pre-Start Up | 2d | 2026-11-09 | 2026-11-10 | B12000-B-EQP-122, B12000-B-EQP-125 |  |  |  | 34d | 42d | 1487 | DH1200 | GR | HELIX | QC |
| B12000-B-EQP-124 |  | Gallery 1203 - G120/Line-Ups // Mechanical Gear FOD Inspection Pre-Start Up | 3d | 2026-11-12 | 2026-11-16 | B12000-B-EQP-120, B12000-B-EQP-111, B12000-B-EQP-117, B12000-B-EQP-110 |  |  |  | 31d | 39d | 1488 | DH1200 | GR |  |  |
|  | 8 | **H120** |  | 2026-10-06 | 2026-11-16 |  |  |  |  |  |  |  |  |  |  |  |
| B12000-B-EQP-127 |  | Gallery 1203 - H120/Line-Ups // Set CRAH-DH1200-37 | 1d | 2026-10-06 A | 2026-10-07 A | B12000-B-EQP-112 SS | 100% | 2026-10-16 | 2026-10-16 |  |  | 1474 | DH1200 | GR |  |  |
| B12000-B-EQP-130 |  | Gallery 1203 - H120/Line-Ups // Set CRAH-DH1200-38 | 1d | 2026-10-06 A | 2026-10-07 A | B12000-B-EQP-127 SS, B12000-B-EQP-127 FF | 100% | 2026-10-16 | 2026-10-16 |  |  | 1475 | DH1200 | GR |  |  |
| B12000-B-EQP-128 |  | Gallery 1203 - H120/Line-Ups // Connect CRAH units | 10d | 2026-10-14 | 2026-10-27 | B12000-B-EQP-127 SS+5d, B12000-B-EQP-130 |  |  |  | 31d | 0d | 1476 | DH1200 | GR |  |  |
| B12000-B-EQP-135 |  | Gallery 1203 - H120/Line-Ups // Mechanical Connections to CRAHU Units | 10d | 2026-10-14 | 2026-10-27 | B12000-B-EQP-130 SS+5d |  |  |  | 36d | 5d | 1489 | DH1200 | GR |  |  |
| B12000-B-EQP-136 |  | Gallery 1203 - H120/Line-Ups // Mount Electrial Gear for Chiller Controls | 10d | 2026-10-14 | 2026-10-27 | B12000-B-EQP-130 |  |  |  | 34d | 0d | 1484 | DH1200 | GR | HELIX | AC |
| B12000-B-EQP-140 |  | Gallery 1203 - H120/Line-Ups // Terminate CRAHU Electrical Connections | 5d | 2026-10-14 | 2026-10-20 | B12000-B-EQP-127 |  |  |  | 47d | 13d | 1483 | DH1200 | GR | HELIX | OO |
| B12000-B-EQP-213 |  | Gallery 1203 - H120/Line-Ups // Set CDU-DH1200-37 | 1d | 2026-10-14 | 2026-10-14 | B12000-B-EQP-130 |  |  |  | 37d | 3d | 1478 | DH1200 | GR |  |  |
| B12000-B-EQP-214 |  | Gallery 1203 - H120/Line-Ups // Set CDU-DH1200-38 | 1d | 2026-10-14 | 2026-10-14 | B12000-B-EQP-130 |  |  |  | 37d | 3d | 1478 | DH1200 | GR |  |  |
| B12000-B-EQP-141 |  | Gallery 1203 - H120/Line-Ups // Pull Feeder and Branch circuits to MIsc equipment and Chiller controls | 10d | 2026-10-20 | 2026-11-02 | B12000-B-EQP-213, B12000-B-EQP-214, B12000-B-EQP-136 SS+4d |  |  |  | 34d | 0d | 1485 | DH1200 | GR | HELIX | AC |
| B12000-B-EQP-129 |  | Gallery 1203 - H120/Line-Ups // Condensate connections to Floor Drains | 10d | 2026-10-21 | 2026-11-03 | B12000-B-EQP-128 SS+5d |  |  |  | 31d | 0d | 1477 | DH1200 | GR |  |  |
| B12000-B-EQP-143 |  | Gallery 1203 - H120/Line-Ups // Teminate all Misc Equipment and Chiller Controls | 10d | 2026-10-26 | 2026-11-06 | B12000-B-EQP-141 SS+4d |  |  |  | 34d | 0d | 1486 | DH1200 | GR |  |  |
| B12000-B-EQP-138 |  | Gallery 1203 - H120/Line-Ups // Condensate connections to Floor Drains | 10d | 2026-10-28 | 2026-11-10 | B12000-B-EQP-135 SS+5d, B12000-B-EQP-129 SS+5d |  |  |  | 31d | 0d | 1490 | DH1200 | GR |  |  |
| B12000-B-EQP-144 |  | Gallery 1203 - H120/Line-Ups // Electrical Gear FOD Inspection Pre-Start Up | 2d | 2026-11-09 | 2026-11-10 | B12000-B-EQP-140, B12000-B-EQP-143 |  |  |  | 34d | 42d | 1487 | DH1200 | GR | HELIX | QC |
| B12000-B-EQP-142 |  | Gallery 1203 - H120/Line-Ups // Mechanical Gear FOD Inspection Pre-Start Up | 3d | 2026-11-12 | 2026-11-16 | B12000-B-EQP-138, B12000-B-EQP-129, B12000-B-EQP-135, B12000-B-EQP-128 |  |  |  | 31d | 39d | 1488 | DH1200 | GR |  |  |

| ID | WBS | Activity | Duration | Start | Finish | Predecessors | Complete | Planned start | Planned finish | Total float | Free float | MSP Activity ID | QTS - AREA | QTS - DASH | QTS - Subcontractor | QTS - Resp |
| --- | --- | --- | --- | --- | --- | --- | --- | --- | --- | --- | --- | --- | --- | --- | --- | --- |
|  | 9 | **J120** |  | 2026-10-06 | 2026-11-16 |  |  |  |  |  |  |  |  |  |  |  |
| B12000-B-EQP-145 |  | Gallery 1203 - J120/Line-Ups // Set CRAH-DH1200-39 | 1d | 2026-10-06 A | 2026-10-07 A | B12000-B-EQP-130 SS | 100% | 2026-10-16 | 2026-10-16 |  |  | 1474 | DH1200 | GR |  |  |
| B12000-B-EQP-148 |  | Gallery 1203 - J120/Line-Ups // Set CRAH-DH1200-40 | 1d | 2026-10-06 A | 2026-10-07 A | B12000-B-EQP-145 SS | 100% | 2026-10-19 | 2026-10-19 |  |  | 1475 | DH1200 | GR |  |  |
| B12000-B-EQP-146 |  | Gallery 1203 - J120/Line-Ups // Connect CRAH units | 10d | 2026-10-14 | 2026-10-27 | B12000-B-EQP-145 SS+5d, B12000-B-EQP-148 |  |  |  | 31d | 0d | 1476 | DH1200 | GR |  |  |
| B12000-B-EQP-153 |  | Gallery 1203 - J120/Line-Ups // Mechanical Connections to CRAHU Units | 10d | 2026-10-14 | 2026-10-27 | B12000-B-EQP-148 SS+5d |  |  |  | 36d | 5d | 1489 | DH1200 | GR |  |  |
| B12000-B-EQP-154 |  | Gallery 1203 - J120/Line-Ups // Mount Electrial Gear for Chiller Controls | 10d | 2026-10-14 | 2026-10-27 | B12000-B-EQP-148 |  |  |  | 34d | 0d | 1484 | DH1200 | GR | HELIX | AC |
| B12000-B-EQP-158 |  | Gallery 1203 - J120/Line-Ups // Terminate CRAHU Electrical Connections | 5d | 2026-10-14 | 2026-10-20 | B12000-B-EQP-145 |  |  |  | 47d | 13d | 1483 | DH1200 | GR | HELIX | OO |
| B12000-B-EQP-215 |  | Gallery 1203 - J120/Line-Ups // Set CDU-DH1200-39 | 1d | 2026-10-14 | 2026-10-14 | B12000-B-EQP-148 |  |  |  | 37d | 3d | 1478 | DH1200 | GR |  |  |
| B12000-B-EQP-216 |  | Gallery 1203 - J120/Line-Ups // Set CDU-DH1200-40 | 1d | 2026-10-14 | 2026-10-14 | B12000-B-EQP-148 |  |  |  | 37d | 3d | 1478 | DH1200 | GR |  |  |
| B12000-B-EQP-159 |  | Gallery 1203 - J120/Line-Ups // Pull Feeder and Branch circuits to MIsc equipment and Chiller controls | 10d | 2026-10-20 | 2026-11-02 | B12000-B-EQP-216, B12000-B-EQP-215, B12000-B-EQP-154 SS+4d |  |  |  | 34d | 0d | 1485 | DH1200 | GR | HELIX | AC |
| B12000-B-EQP-147 |  | Gallery 1203 - J120/Line-Ups // Condensate connections to Floor Drains | 10d | 2026-10-21 | 2026-11-03 | B12000-B-EQP-146 SS+5d |  |  |  | 31d | 0d | 1477 | DH1200 | GR |  |  |
| B12000-B-EQP-161 |  | Gallery 1203 - J120/Line-Ups // Teminate all Misc Equipment and Chiller Controls | 10d | 2026-10-26 | 2026-11-06 | B12000-B-EQP-159 SS+4d |  |  |  | 34d | 0d | 1486 | DH1200 | GR |  |  |
| B12000-B-EQP-156 |  | Gallery 1203 - J120/Line-Ups // Condensate connections to Floor Drains | 10d | 2026-10-28 | 2026-11-10 | B12000-B-EQP-153 SS+5d, B12000-B-EQP-147 SS+5d |  |  |  | 31d | 0d | 1490 | DH1200 | GR |  |  |
| B12000-B-EQP-162 |  | Gallery 1203 - J120/Line-Ups // Electrical Gear FOD Inspection Pre-Start Up | 2d | 2026-11-09 | 2026-11-10 | B12000-B-EQP-158, B12000-B-EQP-161 |  |  |  | 34d | 42d | 1487 | DH1200 | GR | HELIX | QC |
| B12000-B-EQP-160 |  | Gallery 1203 - J120/Line-Ups // Mechanical Gear FOD Inspection Pre-Start Up | 3d | 2026-11-12 | 2026-11-16 | B12000-B-EQP-156, B12000-B-EQP-147, B12000-B-EQP-153, B12000-B-EQP-146 |  |  |  | 31d | 39d | 1488 | DH1200 | GR |  |  |
|  | 10 | **K120** |  | 2026-10-06 | 2026-11-16 |  |  |  |  |  |  |  |  |  |  |  |
| B12000-B-EQP-163 |  | Gallery 1203 - K120/Line-Ups // Set CRAH-DH1200-41 | 1d | 2026-10-06 A | 2026-10-07 A | B12000-B-EQP-148 SS | 100% | 2026-10-19 | 2026-10-19 |  |  | 1474 | DH1200 | GR |  |  |
| B12000-B-EQP-166 |  | Gallery 1203 - K120/Line-Ups // Set CRAH-DH1200-42 | 1d | 2026-10-06 A | 2026-10-07 A | B12000-B-EQP-163 SS, B12000-B-EQP-163 FF | 100% | 2026-10-19 | 2026-10-19 |  |  | 1475 | DH1200 | GR |  |  |
| B12000-B-EQP-164 |  | Gallery 1203 - K120/Line-Ups // Connect CRAH units | 10d | 2026-10-14 | 2026-10-27 | B12000-B-EQP-163 SS+5d, B12000-B-EQP-166 |  |  |  | 31d | 0d | 1476 | DH1200 | GR |  |  |
| B12000-B-EQP-171 |  | Gallery 1203 - K120/Line-Ups // Mechanical Connections to CRAHU Units | 10d | 2026-10-14 | 2026-10-27 | B12000-B-EQP-166 SS+5d |  |  |  | 36d | 5d | 1489 | DH1200 | GR |  |  |
| B12000-B-EQP-172 |  | Gallery 1203 - K120/Line-Ups // Mount Electrial Gear for Chiller Controls | 10d | 2026-10-14 | 2026-10-27 | B12000-B-EQP-166 |  |  |  | 34d | 0d | 1484 | DH1200 | GR | HELIX | AC |
| B12000-B-EQP-176 |  | Gallery 1203 - K120/Line-Ups // Terminate CRAHU Electrical Connections | 5d | 2026-10-14 | 2026-10-20 | B12000-B-EQP-163 |  |  |  | 47d | 13d | 1483 | DH1200 | GR | HELIX | OO |
| B12000-B-EQP-177 |  | Gallery 1203 - K120/Line-Ups // Pull Feeder and Branch circuits to MIsc equipment and Chiller controls | 10d | 2026-10-20 | 2026-11-02 | B12000-B-EQP-172 SS+4d |  |  |  | 34d | 0d | 1485 | DH1200 | GR | HELIX | AC |
| B12000-B-EQP-165 |  | Gallery 1203 - K120/Line-Ups // Condensate connections to Floor Drains | 10d | 2026-10-21 | 2026-11-03 | B12000-B-EQP-164 SS+5d |  |  |  | 31d | 0d | 1477 | DH1200 | GR |  |  |
| B12000-B-EQP-179 |  | Gallery 1203 - K120/Line-Ups // Teminate all Misc Equipment and Chiller Controls | 10d | 2026-10-26 | 2026-11-06 | B12000-B-EQP-177 SS+4d |  |  |  | 34d | 0d | 1486 | DH1200 | GR |  |  |
| B12000-B-EQP-174 |  | Gallery 1203 - K120/Line-Ups // Condensate connections to Floor Drains | 10d | 2026-10-28 | 2026-11-10 | B12000-B-EQP-171 SS+5d, B12000-B-EQP-165 SS+5d |  |  |  | 31d | 0d | 1490 | DH1200 | GR |  |  |
| B12000-B-EQP-180 |  | Gallery 1203 - K120/Line-Ups // Electrical Gear FOD Inspection Pre-Start Up | 2d | 2026-11-09 | 2026-11-10 | B12000-B-EQP-176, B12000-B-EQP-179 |  |  |  | 34d | 42d | 1487 | DH1200 | GR | HELIX | QC |
| B12000-B-EQP-178 |  | Gallery 1203 - K120/Line-Ups // Mechanical Gear FOD Inspection Pre-Start Up | 3d | 2026-11-12 | 2026-11-16 | B12000-B-EQP-174, B12000-B-EQP-165, B12000-B-EQP-171, B12000-B-EQP-164 |  |  |  | 31d | 39d | 1488 | DH1200 | GR |  |  |

| ID | WBS | Activity | Duration | Start | Finish | Predecessors | Complete | Remaining | Planned start | Planned finish | Total float | Free float | MSP Activity ID | QTS - AREA | QTS - DASH | QTS - Subcontractor | QTS - Resp | MBTA: Work Type |
| --- | --- | --- | --- | --- | --- | --- | --- | --- | --- | --- | --- | --- | --- | --- | --- | --- | --- | --- |
|  | 11 | **R120** |  | 2026-10-06 | 2026-11-16 |  |  |  |  |  |  |  |  |  |  |  |  |  |
| B12000-B-EQP-181 |  | Gallery 1203 - R120/Line-Ups // Set CRAH-DH1200-43 | 1d | 2026-10-06 A | 2026-10-07 A | B12000-B-EQP-166 SS | 100% |  | 2026-10-19 | 2026-10-19 |  |  | 1474 | DH1200 | GR |  |  |  |
| B12000-B-EQP-184 |  | Gallery 1203 - R120/Line-Ups // Set CRAH-DH1200-44 | 1d | 2026-10-06 A | 2026-10-07 A | B12000-B-EQP-181 SS, B12000-B-EQP-181 FF | 100% |  | 2026-10-19 | 2026-10-19 |  |  | 1475 | DH1200 | GR |  |  |  |
| B12000-B-EQP-182 |  | Gallery 1203 - R120/Line-Ups // Connect CRAH units | 10d | 2026-10-14 | 2026-10-27 | B12000-B-EQP-181 SS+5d, B12000-B-EQP-184 |  |  |  |  | -1d | 0d | 1476 | DH1200 | GR |  |  |  |
| B12000-B-EQP-189 |  | Gallery 1203 - R120/Line-Ups // Mechanical Connections to CRAHU Units | 10d | 2026-10-14 | 2026-10-27 | B12000-B-EQP-184 SS+5d |  |  |  |  | 4d | 5d | 1489 | DH1200 | GR |  |  |  |
| B12000-B-EQP-190 |  | Gallery 1203 - R120/Line-Ups // Mount Electrial Gear for Chiller Controls | 10d | 2026-10-14 | 2026-10-27 | B12000-B-EQP-184 |  |  |  |  | -4d | 0d | 1484 | DH1200 | GR | HELIX | AC |  |
| B12000-B-EQP-194 |  | Gallery 1203 - R120/Line-Ups // Terminate CRAHU Electrical Connections | 5d | 2026-10-14 | 2026-10-20 | B12000-B-EQP-181 |  |  |  |  | 22d | 5d | 1483 | DH1200 | GR | HELIX | OO |  |
| B12000-B-EQP-195 |  | Gallery 1203 - R120/Line-Ups // Pull Feeder and Branch circuits to MIsc equipment and Chiller controls | 10d | 2026-10-14 | 2026-10-27 | B12000-B-EQP-190 SS |  |  |  |  | -4d | 0d | 1485 | DH1200 | GR | HELIX | AC |  |
| B12000-B-EQP-197 |  | Gallery 1203 - R120/Line-Ups // Teminate all Misc Equipment and Chiller Controls | 10d | 2026-10-14 | 2026-10-27 | B12000-B-EQP-195 SS |  |  |  |  | 17d | 0d | 1486 | DH1200 | GR |  |  |  |
| B12000-B-EQP-183 |  | Gallery 1203 - R120/Line-Ups // Condensate connections to Floor Drains | 10d | 2026-10-21 | 2026-11-03 | B12000-B-EQP-182 SS+5d |  |  |  |  | -1d | 0d | 1477 | DH1200 | GR |  |  |  |
| B12000-B-EQP-192 |  | Gallery 1203 - R120/Line-Ups // Condensate connections to Floor Drains | 10d | 2026-10-28 | 2026-11-10 | B12000-B-EQP-189 SS+5d, B12000-B-EQP-183 SS+5d |  |  |  |  | -1d | 0d | 1490 | DH1200 | GR |  |  |  |
| B12000-B-EQP-198 |  | Gallery 1203 - R120/Line-Ups // Electrical Gear FOD Inspection Pre-Start Up | 2d | 2026-10-28 | 2026-10-29 | B12000-B-EQP-194, B12000-B-EQP-197 |  |  |  |  | 17d | 13d | 1487 | DH1200 | GR | HELIX | QC |  |
| B12000-B-EQP-196 |  | Gallery 1203 - R120/Line-Ups // Mechanical Gear FOD Inspection Pre-Start Up | 3d | 2026-11-12 | 2026-11-16 | B12000-B-EQP-192, B12000-B-EQP-183, B12000-B-EQP-189, B12000-B-EQP-182 |  |  |  |  | -1d | 1d | 1488 | DH1200 | GR |  |  |  |
|  | 12 | **Equipment Connections** |  | 2026-10-13 | 2026-11-04 |  |  |  |  |  |  |  |  |  |  |  |  |  |
|  | 1 | **CRAH** |  | 2026-10-13 | 2026-10-23 |  |  |  |  |  |  |  |  |  |  |  |  |  |
| DH1200-004 |  | Gallery 1203 // DH 1200 / Elec Room // CRAH Duct Work Termination | 2d | 2026-10-13 A | 2026-10-15 | B12000-B-EQP-184 |  | 2d | 2026-10-07 | 2026-10-08 | 4d | 0d | 7037 | DH1200 | GR |  |  | Con/Install |
| DH1200-003 |  | Gallery 1203 // DH 1200 / Elec Room // CRAH Chilled Water | 2d | 2026-10-16 | 2026-10-19 | DH1200-004 |  |  |  |  | 4d | 0d | 7035 | DH1200 | GR |  |  | Con/Install |
| DH1200-001 |  | Gallery 1203 // DH 1200 / Elec Room // CRAH Power Connections | 2d | 2026-10-20 | 2026-10-21 | DH1200-003 |  |  |  |  | 4d | 0d | 7034 | DH1200 | GR | HELIX | OO | Con/Install |
| DH1200-002 |  | Gallery 1203 // DH 1200 / Elec Room // CRAH LV Connections | 2d | 2026-10-22 | 2026-10-23 | DH1200-001 |  |  |  |  | 4d | 12d | 7036 | DH1200 | GR |  |  | Con/Install |
|  | 2 | **CDU** |  | 2026-10-28 | 2026-11-04 |  |  |  |  |  |  |  |  |  |  |  |  |  |
| DH1200-007 |  | Gallery 1203 // DH 1200 / Elec Room // CDU Chilled Water Connections | 2d | 2026-10-28 | 2026-10-29 | B12000-B-EQP-195 |  |  |  |  | -4d | 0d | 7040 | DH1200 | GR |  |  | Con/Install |
| DH1200-005 |  | Gallery 1203 // DH 1200 /Elec Room // CDU Power Connections | 2d | 2026-10-30 | 2026-11-02 | DH1200-007 |  |  |  |  | -4d | 0d | 7039 | DH1200 | GR | HELIX | OO | Con/Install |
| DH1200-006 |  | Gallery 1203 // DH 1200 / Elec Room // CDU Controls Connections | 2d | 2026-11-03 | 2026-11-04 | DH1200-005 |  |  |  |  | -4d | 4d | 7041 | DH1200 | GR |  |  | Con/Install |
|  | 3 | **MOD** |  | 2026-10-28 | 2026-11-02 |  |  |  |  |  |  |  |  |  |  |  |  |  |
| DH1200-008 |  | Gallery 1203 // DH 1200 / Elec Room // MOD Power Connections | 2d | 2026-10-28 | 2026-10-29 | B12000-B-EQP-195 |  |  |  |  | -2d | 0d | 7043 | DH1200 | GR | HELIX | OO | Con/Install |
| DH1200-009 |  | Gallery 1203 // DH 1200 / Elec Room // MOD LV Connections | 2d | 2026-10-30 | 2026-11-02 | DH1200-008 |  |  |  |  | -2d | 6d | 7044 | DH1200 | GR | HELIX | OO | Con/Install |

| ID | WBS | Activity | Type | Duration | Start | Finish | Predecessors | Complete | Remaining | Planned start | Planned finish | Total float | Free float | MSP Activity ID | QTS - AREA | 05 -SUFFOLK - Building Phase | QTS - DASH | QTS - Subcontractor | QTS - Resp | 12 - SUFFOLK - Export_to_Procore |
| --- | --- | --- | --- | --- | --- | --- | --- | --- | --- | --- | --- | --- | --- | --- | --- | --- | --- | --- | --- | --- |
|  | 6 | **Corridors** |  |  | 2026-08-19 | 2026-11-06 |  |  |  |  |  |  |  |  |  |  |  |  |  |  |
|  | 1 | **Corridor 1000A (No apply)** |  |  |  |  |  |  |  |  |  |  |  |  |  |  |  |  |  |  |
|  | 3 | **Corridor 1000** |  |  | 2026-08-19 | 2026-11-02 |  |  |  |  |  |  |  |  |  |  |  |  |  |  |
| B12000.12069 |  | DH 1200/Corridor 1000 // Frame walls |  | 3d | 2026-08-19 A | 2026-08-20 A | B1200100.1040 | 100% |  | 2026-08-27 | 2026-08-31 |  |  | 1499 | DH1200 | 2 | COR |  |  |  |
| B12000.12070 |  | DH 1200/Corridor 1000 // Install Top Down Sheetrock |  | 3d | 2026-08-21 A | 2026-08-31 A | B12000.12069 | 100% |  | 2026-09-08 | 2026-09-10 |  |  | 1498 | DH1200 |  | COR |  |  |  |
| B12000.12071 |  | DH 1200/Corridor 1000 // MEPF high overhead install |  | 3d | 2026-08-21 A | 2026-09-11 A | B12000.12069 | 100% |  | 2026-07-28 | 2026-07-30 |  |  | 1497 | DH1200 | 2 | COR | HELIX | ALOO | Y |
| B12000.12072 |  | DH 1200/Corridor 1000 // MEP rough in walls |  | 3d | 2026-08-24 A | 2026-09-04 A | B12000.12068 SS, B12000.12069, B12000.12071 SS | 100% |  | 2026-09-01 | 2026-09-03 |  |  | 1501 | DH1200 | 2 | COR | HELIX | AC |  |
| B12000.12074 |  | DH 1200/Corridor 1000 // Install Balance of Sheetrock on Walls |  | 5d | 2026-08-24 A | 2026-09-02 A | B12000.12070 SS | 100% |  | 2026-09-08 | 2026-09-14 |  |  | 1503 | DH1200 | 2 | COR |  |  |  |
| B12000.12078 |  | DH 1200/Corridor 1000 // Seal concrete |  | 1d | 2026-08-24 A | 2026-08-24 A | B12003.1000 | 100% |  | 2026-07-27 | 2026-07-27 |  |  | 1494 | DH1200 | 2 | COR |  |  | Y |
| B12000.12068 |  | DH 1200/Corridor 1000 // MEPF Overhead Hangers |  | 5d | 2026-08-26 A | 2026-09-15 A | B12000.12071 SS | 100% |  | 2026-08-20 | 2026-08-26 |  |  | 1495 | DH1200 | 2 | COR | HELIX | ALOO |  |
| B12000.12073 |  | DH 1200/Corridor 1000 // In wall inspection |  | 1d | 2026-09-08 A | 2026-09-08 A | B12000.12072 | 100% |  | 2026-09-04 | 2026-09-04 |  |  | 1502 | DH1200 | 2 | COR |  |  |  |
| B12000.12075 |  | DH 1200/Corridor 1000 // Tape and finish walls |  | 8d | 2026-09-10 A | 2026-09-21 A | B12000.12074, B12000.12073, B12000.12070 | 100% |  | 2026-09-15 | 2026-09-24 |  |  | 1504 | DH1200 | 2 | COR |  |  |  |
| B12000.12077 |  | DH 1200/Corridor 1000 // Prime and Paint first coat walls |  | 3d | 2026-09-22 A | 2026-09-23 A | B12000.12075 | 100% |  | 2026-09-25 | 2026-09-29 |  |  | 1493 | DH1200 | 2 | COR |  |  |  |
| B120001.3123 |  | DH 1200/Corridor 1000 // Install Overhead Cable Ladder / 36" Cable Tray - TFO |  | 5d | 2026-09-30 A | 2026-10-13 A | B12000.12071 | 100% |  | 2026-09-30 | 2026-10-06 |  |  | 1181 |  |  | COR |  |  | Y |
| B12000.12076 |  | DH 1200/Corridor 1000 // Install wall door frames |  | 3d | 2026-10-01 A | 2026-10-07 A | B12000.12069 SS+1d, B12000.12075 | 100% |  | 2026-09-30 | 2026-10-02 |  |  | 1500 | DH1200 | 2 | COR |  |  |  |
| B12000.12079 |  | DH 1200/Corridor 1000 // Install lights and exit signs |  | 3d | 2026-10-06 A | 2026-10-16 | B12000.12077, B12000.12076 FF |  | 3d | 2026-10-05 | 2026-10-07 | 3d | 0d | 1492 | DH1200 | 2 | COR | HELIX | AC |  |
| B120001.3124 |  | DH 1200/Corridor 1000 // Install Overhead HAC - TFO |  | 5d | 2026-10-14 | 2026-10-20 | B120001.3123 |  |  |  |  | -2d | 0d | 1181 |  |  | COR |  |  | Y |
| B12000.12080 |  | DH 1200/Corridor 1000 // Final Coat Paint & Touchup Walls |  | 4d | 2026-10-19 | 2026-10-22 | B12000.12079 |  |  |  |  | 3d | 5d | 1506 | DH1200 | 2 | COR |  |  |  |
| B12000.12100 |  | DH 1200/Corridor 1000 // Electrical Equipment Install |  | 7d | 2026-10-21 | 2026-10-29 | B12000.12080 FF, B120001.3124 |  |  |  |  | -2d | 0d |  | DH1200 |  |  |  |  |  |
| B12000.12081 |  | DH 1200/Corridor 1000 // Install MEP Devices and Trim |  | 2d | 2026-10-30 | 2026-11-02 | B12000.12080, B12000.12100 |  |  |  |  | -2d | 0d | 1505 | DH1200 | 2 | COR | HELIX | AC |  |
| B12000.12098 |  | DH 1200/Corridor 1000 // ready to Receive Equipment | milestone | 0d | 2026-11-02 | 2026-11-02 | B12000.12081 FF |  |  |  |  | -2d | 6d | 1505 | DH1200 | 2 | COR | HELIX | TBD |  |
|  | 2 | **Corridor 1000E** |  |  | 2026-08-31 | 2026-11-06 |  |  |  |  |  |  |  |  |  |  |  |  |  |  |
| B12000.12092 |  | DH 1200/Corridor 1000C // Seal concrete |  | 1d | 2026-08-31 A | 2026-08-31 A | B12000.12078 SS | 100% |  | 2026-07-28 | 2026-07-28 |  |  | 1494 | DH1200 | 2 | COR |  |  | Y |
| B12000.12082 |  | DH 1200/Corridor 1000C // MEPF Overhead Hangers |  | 5d | 2026-09-01 A | 2026-09-08 A | B12000.12092 | 100% |  | 2026-08-17 | 2026-08-21 |  |  | 1495 | DH1200 | 2 | COR | HELIX | ALOO |  |
| B12000.12083 |  | DH 1200/Corridor 1000C // Frame walls |  | 3d | 2026-09-09 A | 2026-09-11 A | B12000.12082, B12000.12069 | 100% |  | 2026-09-01 | 2026-09-03 |  |  | 1499 | DH1200 | 2 | COR |  |  |  |
| B12000.12090 |  | DH 1200/Corridor 1000C // Install wall door frames |  | 3d | 2026-09-14 A | 2026-09-16 A | B12000.12083 SS+1d | 100% |  | 2026-10-05 | 2026-10-07 |  |  | 1500 | DH1200 | 2 | COR |  |  |  |
| B12000.12086 |  | DH 1200/Corridor 1000C // MEP rough in walls |  | 3d | 2026-09-16 A | 2026-09-18 A | B12000.12083 | 100% |  | 2026-09-04 | 2026-09-09 |  |  | 1501 | DH1200 | 2 | COR | HELIX | AC |  |
| B12000.12085 |  | DH 1200/Corridor 1000C // MEPF high overhead install |  | 3d | 2026-09-24 A | 2026-10-16 | B12000.12092 |  | 3d | 2026-07-29 | 2026-07-31 | -3d | 0d | 1497 | DH1200 | 2 | COR | HELIX | ALOO | Y |
| B12000.12084 |  | DH 1200/Corridor 1000C // Install Top Down Sheetrock |  | 3d | 2026-09-29 A | 2026-10-08 A | B12000.12086 | 100% |  | 2026-09-11 | 2026-09-15 |  |  | 1498 | DH1200 |  | COR |  |  |  |
| B12000.12087 |  | DH 1200/Corridor 1000C // In wall inspection |  | 1d | 2026-09-30 A | 2026-10-08 A | B12000.12086 | 100% |  | 2026-09-30 | 2026-09-30 |  |  | 1502 | DH1200 | 2 | COR |  |  |  |
| B12000.12088 |  | DH 1200/Corridor 1000C // Install Balance of Sheetrock on Walls |  | 5d | 2026-10-09 A | 2026-10-20 | B12000.12087, B12000.12084 |  | 5d | 2026-10-05 | 2026-10-09 | -3d | 3d | 1503 | DH1200 | 2 | COR |  |  |  |
| B12000.12089 |  | DH 1200/Corridor 1000C // Tape and finish walls |  | 8d | 2026-10-09 A | 2026-10-23 | B12000.12084 |  | 8d | 2026-10-13 | 2026-10-22 | -6d | 0d | 1504 | DH1200 | 2 | COR |  |  |  |
| B120001.3125 |  | DH 1200/Corridor 1000C // Install Overhead Cable Ladder / 36" Cable Tray - TFO |  | 5d | 2026-10-19 | 2026-10-23 | B12000.12085 |  |  |  |  | -3d | 0d | 1181 |  |  | COR |  |  | Y |
| B12000.12091 |  | DH 1200/Corridor 1000C // Prime and Paint first coat walls |  | 3d | 2026-10-26 | 2026-10-28 | B12000.12088, B12000.12089 |  |  |  |  | -6d | 0d | 1493 | DH1200 | 2 | COR |  |  |  |
| B120001.3126 |  | DH 1200/Corridor 1000C // Install Overhead HAC - TFO |  | 5d | 2026-10-26 | 2026-10-30 | B120001.3125 |  |  |  |  | -3d | 3d | 1181 |  |  | COR |  |  | Y |
| B12000.12093 |  | DH 1200/Corridor 1000C // Install lights and exit signs |  | 3d | 2026-10-29 | 2026-11-02 | B12000.12091, B12000.12090 |  |  |  |  | -6d | 0d | 1492 | DH1200 | 2 | COR | HELIX | AC |  |
| B12000.12101 |  | DH 1200/Corridor 1000C // Electrical Equipment Install |  | 7d | 2026-10-29 | 2026-11-06 | B12000.12094 FF |  |  |  |  | -6d | 0d |  | DH1200 |  |  |  |  |  |
| B12000.12094 |  | DH 1200/Corridor 1000C // Final Coat Paint & Touchup Walls |  | 4d | 2026-11-03 | 2026-11-06 | B12000.12093 |  |  |  |  | -6d | 0d | 1506 | DH1200 | 2 | COR |  |  |  |
| B12000.12095 |  | DH 1200/Corridor 1000C // Install MEP Devices and Trim |  | 2d | 2026-11-05 | 2026-11-06 | B12000.12094 FF, B12000.12101 FF, B120001.3126 |  |  |  |  | -6d | 0d | 1505 | DH1200 | 2 | COR | HELIX | AC |  |
| B12000.12099 |  | DH 1200/Corridor 1000C // Ready to Receive Equipment | milestone | 0d | 2026-11-06 | 2026-11-06 | B12000.12095 FF |  |  |  |  | -6d | 2d | 1505 | DH1200 | 2 | COR | HELIX | TBD |  |

| ID | WBS | Activity | Type | Duration | Start | Finish | Predecessors | Complete | Remaining | Planned start | Planned finish | Total float | Free float | MSP Activity ID | QTS - AREA | 05 -SUFFOLK - Building Phase | 12 - SUFFOLK - Export_to_Procore | QTS - DASH | QTS - Subcontractor | QTS - Resp |
| --- | --- | --- | --- | --- | --- | --- | --- | --- | --- | --- | --- | --- | --- | --- | --- | --- | --- | --- | --- | --- |
|  | 10 | **Loading Dock 1030** |  |  |  |  |  |  |  |  |  |  |  |  |  |  |  |  |  |  |
|  | 11 | **IDF 1034** |  |  | 2026-09-01 | 2026-11-04 |  |  |  |  |  |  |  |  |  |  |  |  |  |  |
| B12002.1000 |  | DH 1200/IDF 1034 // Seal concrete |  | 2d | 2026-09-01 A | 2026-09-02 A | B12000.12092 | 100% |  | 2026-07-28 | 2026-07-29 |  |  | 1528 | DH1200 | 2 | Y | OR |  |  |
| B12002.1010 |  | DH 1200/IDF 1034 // MEPF overhead layout |  | 5d | 2026-09-08 A | 2026-10-15 | B12002.1000 FF, B12002.1000 | 60% | 2d | 2026-07-30 | 2026-08-05 | -4d | 0d | 1529 | DH1200 | 2 | Y | OR | HELIX | AC |
| B12002.1030 |  | DH 1200/IDF 1034 // Frame walls |  | 5d | 2026-09-09 A | 2026-09-15 A | B12002.1010 SS | 100% |  | 2026-08-06 | 2026-08-12 |  |  | 1533 | DH1200 | 2 | Y | OR |  |  |
| B12002.1040 |  | DH 1200/IDF 1034 // Install wall door frames |  | 3d | 2026-09-24 A | 2026-09-28 A | B12002.1030 SS+1d | 100% |  | 2026-08-07 | 2026-08-11 |  |  | 1534 | DH1200 | 2 | Y | OR |  |  |
| B12002.1060 |  | DH 1200/IDF 1034 // MEP rough in walls |  | 3d | 2026-09-24 A | 2026-09-28 A | B12002.1040 | 100% |  | 2026-08-12 | 2026-08-14 |  |  | 1535 | DH1200 | 2 | Y | OR | HELIX | AC |
| B12002.1080 |  | DH 1200/IDF 1034 // MEPF high overhead install |  | 3d | 2026-09-25 A | 2026-09-29 A | B12002.1060 | 100% |  | 2026-08-18 | 2026-08-20 |  |  | 1531 | DH1200 | 2 |  | OR | HELIX | AC |
| B12002.1070 |  | DH 1200/IDF 1034 // In wall inspection |  | 1d | 2026-09-30 A | 2026-10-08 A | B12002.1060 | 100% |  | 2026-09-30 | 2026-09-30 |  |  | 1536 | DH1200 | 2 |  | OR |  |  |
| B12002.1050 |  | DH 1200/IDF 1034 // Install Top Down Sheetrock |  | 5d | 2026-10-08 A | 2026-10-20 | B12002.1030 SS+3d |  | 5d | 2026-09-30 | 2026-10-06 | -4d | 0d | 1532 | DH1200 |  | Y | OR |  |  |
| B12002.1090 |  | DH 1200/IDF 1034 // Install Balance of Sheetrock on Walls |  | 5d | 2026-10-09 A | 2026-10-20 | B12002.1080, B12002.1050 SS, B12002.1070 |  | 5d | 2026-10-01 | 2026-10-07 | -2d | 2d | 1537 | DH1200 | 2 |  | OR |  |  |
| B12002.1100 |  | DH 1200/IDF 1034 // Tape and finish walls |  | 8d | 2026-10-13 A | 2026-10-23 | B12002.1050 SS+3d |  | 8d | 2026-10-08 | 2026-10-20 | -4d | 0d | 1538 | DH1200 | 2 |  | OR |  |  |
| B12002.1110 |  | DH 1200/IDF 1034 // Prime and Paint first coat walls |  | 3d | 2026-10-13 A | 2026-10-26 | B12002.1090 FF+2d, B12002.1100 FF+1d |  | 3d | 2026-10-16 | 2026-10-20 | -4d | 0d | 1527 | DH1200 | 2 |  | OR |  |  |
| B12002.1120 |  | DH 1200/IDF 1034 // Install lights and exit signs |  | 3d | 2026-10-27 | 2026-10-29 | B12002.1110 |  |  |  |  | -4d | 0d | 1526 | DH1200 | 2 |  | OR | HELIX | AC |
| B12002.1130 |  | DH 1200/IDF 1034 // Final Coat Paint & Touchup Walls |  | 4d | 2026-10-30 | 2026-11-04 | B12002.1120 |  |  |  |  | -4d | 0d | 1540 | DH1200 | 2 |  | OR |  |  |
| B12002.1140 |  | DH 1200/IDF 1034 // Install MEP Devices and Trim |  | 2d | 2026-11-03 | 2026-11-04 | B12002.1130 FF |  |  |  |  | -4d | 0d | 1539 | DH1200 | 2 |  | OR | HELIX | AC |
| B12002.1141 |  | DH 1200/IDF 1034 // ready to Receive Equipment | milestone | 0d | 2026-11-04 | 2026-11-04 | B12002.1140 FF |  |  |  |  | -4d | 4d | 1539 | DH1200 | 2 |  | OR | HELIX | TBD |
|  | 12 | **Preaction 1033** |  |  | 2026-09-03 | 2026-11-05 |  |  |  |  |  |  |  |  |  |  |  |  |  |  |
| PRE.C3.1151 |  | DH 1200/Preaction 1033 // Preaction Seal concrete |  | 2d | 2026-09-03 A | 2026-09-04 A | B12002.1000 FF, B12002.1000 | 100% |  | 2026-07-30 | 2026-07-31 |  |  | 1544 | DH1200 | 2 | Y | OR |  |  |
| PRE.C3.1141 |  | DH 1200/Preaction 1033 // Preaction MEPF overhead layout |  | 5d | 2026-09-08 A | 2026-10-15 | PRE.C3.1151 | 60% | 2d | 2026-08-03 | 2026-08-07 | -2d | 0d | 1545 | DH1200 | 2 | Y | OR | HELIX | AC |
| PRE.C3.1143 |  | DH 1200/Preaction 1033 // Preaction Frame walls |  | 5d | 2026-09-09 A | 2026-09-15 A | PRE.C3.1141 SS | 100% |  | 2026-08-10 | 2026-08-14 |  |  | 1549 | DH1200 | 2 | Y | OR |  |  |
| PRE.C3.1142 |  | DH 1200/Preaction 1033 // Preaction Install wall door frames |  | 3d | 2026-09-24 A | 2026-09-28 A | PRE.C3.1143 SS+1d | 100% |  | 2026-08-11 | 2026-08-13 |  |  | 1550 | DH1200 | 2 | Y | OR |  |  |
| PRE.C3.1144 |  | DH 1200/Preaction 1033 // Preaction MEP rough in walls |  | 3d | 2026-09-25 A | 2026-09-29 A | PRE.C3.1142 | 100% |  | 2026-08-14 | 2026-08-18 |  |  | 1551 | DH1200 | 2 |  | OR | HELIX | AC |
| PRE.C3.1146 |  | DH 1200/Preaction 1033 // Preaction Install Top Down Sheetrock |  | 5d | 2026-09-28 A | 2026-10-02 A | PRE.C3.1143 SS+3d | 100% |  | 2026-09-30 | 2026-10-06 |  |  | 1548 | DH1200 |  | Y | OR |  |  |
| PRE.C3.1147 |  | DH 1200/Preaction 1033 // Preaction MEPF high overhead install |  | 3d | 2026-09-29 A | 2026-10-16 | PRE.C3.1141 SS |  | 3d | 2026-08-20 | 2026-08-24 | 0d | 2d | 1547 | DH1200 | 2 |  | OR | HELIX | AC |
| PRE.C3.1145 |  | DH 1200/Preaction 1033 // Preaction In wall inspection |  | 1d | 2026-09-30 A | 2026-09-30 A | PRE.C3.1144 | 100% |  |  |  |  |  | 1552 | DH1200 | 2 |  | OR |  |  |
| PRE.C3.1148 |  | DH 1200/Preaction 1033 // Preaction Install Balance of Sheetrock on Walls |  | 5d | 2026-10-01 A | 2026-10-20 | PRE.C3.1147 FF, PRE.C3.1146 SS, PRE.C3.1145 |  | 5d | 2026-10-05 | 2026-10-09 | -2d | 3d | 1553 | DH1200 | 2 |  | OR |  |  |
| PRE.C3.1149 |  | DH 1200/Preaction 1033 // Preaction Tape and finish walls |  | 8d | 2026-10-05 A | 2026-10-23 | PRE.C3.1148 FF |  | 8d | 2026-10-13 | 2026-10-22 | -5d | 0d | 1554 | DH1200 | 2 |  | OR |  |  |
| PRE.C3.1150 |  | DH 1200/Preaction 1033 // Preaction Prime and Paint first coat walls |  | 3d | 2026-10-13 A | 2026-10-27 | PRE.C3.1149 FF+2d |  | 3d | 2026-10-23 | 2026-10-27 | -5d | 0d | 1543 | DH1200 | 2 |  | OR |  |  |
| PRE.C3.1152 |  | DH 1200/Preaction 1033 // Preaction Install lights and exit signs |  | 3d | 2026-10-28 | 2026-10-30 | PRE.C3.1150 |  |  |  |  | -5d | 0d | 1542 | DH1200 | 2 |  | OR | HELIX | AC |
| PRE.C3.1153 |  | DH 1200/Preaction 1033 // Preaction Final Coat Paint & Touchup Walls |  | 4d | 2026-11-02 | 2026-11-05 | PRE.C3.1152 |  |  |  |  | -5d | 0d | 1556 | DH1200 | 2 |  | OR |  |  |
| PRE.C3.1154 |  | DH 1200/Preaction 1033 // Preaction Install MEP Devices and Trim |  | 2d | 2026-11-04 | 2026-11-05 | PRE.C3.1153 FF |  |  |  |  | -5d | 0d | 1555 | DH1200 | 2 |  | OR | HELIX | AC |
| PRE.C3.1156 |  | DH 1200/Preaction 1033 // Ready to Receive Equipment | milestone | 0d | 2026-11-05 | 2026-11-05 | PRE.C3.1154 FF |  |  |  |  | -5d | 3d | 1555 | DH1200 | 2 |  | OR | HELIX | TBD |

| ID | WBS | Activity | Duration | Start | Finish | Predecessors | Complete | Remaining | Planned start | Planned finish | Total float | Free float | MSP Activity ID | QTS - AREA | 05 -SUFFOLK - Building Phase | 12 - SUFFOLK - Export_to_Procore | QTS - DASH | QTS - Subcontractor | QTS - Resp |
| --- | --- | --- | --- | --- | --- | --- | --- | --- | --- | --- | --- | --- | --- | --- | --- | --- | --- | --- | --- |
|  | 13 | **Restroom-Dock & Janitor** |  | 2026-09-14 | 2026-11-10 |  |  |  |  |  |  |  |  |  |  |  |  |  |  |
| B1200.1020 |  | DH 1200/Restroom-Dock & Janitor // RR-Doc-Jan Layout walls | 5d | 2026-09-14 A | 2026-09-18 A | PRE.C3.1143 SS+4d | 100% |  | 2026-08-12 | 2026-08-18 |  |  | 1562 | DH1200 | 2 | Y | OR |  |  |
| B1200.1030 |  | DH 1200/Restroom-Dock & Janitor // RR-Doc-Jan Frame walls | 5d | 2026-09-21 A | 2026-09-25 A | B1200.1020 | 100% |  | 2026-08-19 | 2026-08-25 |  |  | 1565 | DH1200 | 2 |  | OR |  |  |
| B1200.1060 |  | DH 1200/Restroom-Dock & Janitor // RR-Doc-Jan MEP rough in walls | 3d | 2026-09-24 A | 2026-09-28 A | B1200.1040 | 100% |  | 2026-09-30 | 2026-10-02 |  |  | 1567 | DH1200 | 2 |  | OR | HELIX | AC |
| B1200.1040 |  | DH 1200/Restroom-Dock & Janitor // RR-Doc-Jan Install wall door frames | 3d | 2026-09-25 A | 2026-09-29 A | B1200.1030 SS+1d | 100% |  | 2026-08-20 | 2026-08-24 |  |  | 1566 | DH1200 | 2 |  | OR |  |  |
| B1200.1010 |  | DH 1200/Restroom-Dock & Janitor // RR-Doc-Jan MEPF overhead layout | 5d | 2026-09-28 A | 2026-10-02 A | B1200.1030 | 100% |  | 2026-08-05 | 2026-08-11 |  |  | 1561 | DH1200 | 2 | Y | OR | HELIX | AC |
| B1200.1050 |  | DH 1200/Restroom-Dock & Janitor // RR-Doc-Jan Install Top Down Sheetrock | 5d | 2026-09-28 A | 2026-09-30 A | B1200.1030 SS+3d | 100% |  | 2026-09-30 | 2026-10-06 |  |  | 1564 | DH1200 |  |  | OR |  |  |
| B1200.1070 |  | DH 1200/Restroom-Dock & Janitor // RR-Doc-Jan In wall inspection | 1d | 2026-09-29 A | 2026-09-29 A | B1200.1060 | 100% |  | 2026-10-05 | 2026-10-05 |  |  | 1568 | DH1200 | 2 |  | OR |  |  |
| B1200.1090 |  | DH 1200/Restroom-Dock & Janitor // RR-Doc-Jan Install Balance of Sheetrock on Walls | 5d | 2026-09-30 A | 2026-10-20 | B1200.1080 FF, B1200.1050 SS, B1200.1070 |  | 5d | 2026-10-13 | 2026-10-19 | 37d | 3d | 1569 | DH1200 | 2 |  | OR |  |  |
| B1200.1080 |  | DH 1200/Restroom-Dock & Janitor // RR-Doc-Jan MEPF high overhead install | 3d | 2026-10-02 A | 2026-10-16 | B1200.1010, B1200.1050 |  | 3d | 2026-10-07 | 2026-10-09 | 39d | 2d | 1563 | DH1200 | 2 |  | OR | HELIX | AC |
| B1200.1100 |  | DH 1200/Restroom-Dock & Janitor // RR-Doc-Jan Tape and finish walls | 8d | 2026-10-13 A | 2026-10-23 | B1200.1050 |  | 8d | 2026-10-20 | 2026-10-29 | 34d | 0d | 1570 | DH1200 | 2 |  | OR |  |  |
| B1200.1000 |  | DH 1200/Restroom-Dock & Janitor // RR-Doc-Jan Seal concrete | 2d | 2026-10-26 | 2026-10-27 | B1200.1100, PRE.C3.1151 |  |  |  |  | 35d | 1d | 1560 | DH1200 | 2 | Y | OR |  |  |
| B1200.1110 |  | DH 1200/Restroom-Dock & Janitor // RR-Doc-Jan Prime and Paint first coat walls | 3d | 2026-10-26 | 2026-10-28 | B1200.1090, B1200.1000 FF, B1200.1100 |  |  |  |  | 34d | 0d | 1559 | DH1200 | 2 |  | OR |  |  |
| B1200.1120 |  | DH 1200/Restroom-Dock & Janitor // RR-Doc-Jan Install lights and exit signs | 3d | 2026-10-29 | 2026-11-02 | B1200.1110 |  |  |  |  | 34d | 0d | 1558 | DH1200 | 2 |  | OR | HELIX | AC |
| B1200.1130 |  | DH 1200/Restroom-Dock & Janitor // RR-Doc-Jan Final Coat Paint & Touchup Walls | 4d | 2026-11-03 | 2026-11-06 | B1200.1120 |  |  |  |  | 34d | 0d | 1572 | DH1200 | 2 |  | OR |  |  |
| B1200.1140 |  | DH 1200/Restroom-Dock & Janitor // RR-Doc-Jan Install MEP Devices and Trim | 2d | 2026-11-09 | 2026-11-10 | B1200.1130 |  |  |  |  | 34d | 42d | 1571 | DH1200 | 2 |  | OR | HELIX | AC |
|  | 1 | **1200 Energization, Start-up & Commissioning** |  | 2026-11-12 | 2027-02-23 |  |  |  |  |  |  |  |  |  |  |  |  |  |  |
|  | 1 | **Energization & L3 Prefunctional Testing** |  | 2026-11-12 | 2027-01-14 |  |  |  |  |  |  |  |  |  |  |  |  |  |  |
| DH1200.L3CX.39 |  | DH1200 L3 Start | 0d | 2026-11-12 | 2026-11-12 | B12003.1141, PRE.C3.1156, B12002.1141, B12000.12099, B12000.12098, PRE.C3.1154, B12002.1140, B12000.12095, B12000.12081, DH1200-009, DH1200-006, DH1200-002, DH1200.MG.A110.8692, DH1200.MG.A110.8689, DH1200.MG.A110.8685, B12000-A-EQP-215, B1200100.1110, B120004.1250, B120004.1310, B120004.1280, B120004.1260, B120004.1140, B120001.1330, B120001.1310, B120001.1300, B120001.1240, B120001.3110, B120001.1180 |  |  |  |  | -8d | 0d |  | DH1200 |  |  |  | HELIX |  |
| DH1200.L3CX.BMS.11 |  | DH1200 L3 PTPs & SOOs – BMS | 40d | 2026-11-12 | 2027-01-11 | DH1200.L3CX.ELEC.63 SS |  |  |  |  | -8d | 0d |  | DH1200 |  |  |  |  |  |
| DH1200.L3CX.ELEC.63 |  | DH1200 L3 FTEs | 5d | 2026-11-12 | 2026-11-18 | DH1200.L3CX.39 SS |  |  |  |  | -8d | 0d |  | DH1200 |  |  |  |  |  |
| DH1200.L3CX.MECH.33 |  | DH1200 L3 Startup / Pre-Functional – MECHANICAL | 20d | 2026-11-18 | 2026-12-16 | B120001.1330, B12000-B-EQP-196, B12000-A-EQP-218, B120001.1180, DH1200.L3CX.ELEC.63 SS+3d |  |  |  |  | -2d | 6d |  | DH1200 |  |  |  |  |  |
| DH1200.L3CX.ELEC.53 |  | DH1200 L3 Startup / Pre-Functional – ELECTRICAL | 15d | 2026-11-19 | 2026-12-10 | B12000-B-EQP-198, B12000-A-EQP-220, B120004.1310, DH1200.L3CX.ELEC.63 |  |  |  |  | 4d | 12d |  | DH1200 |  |  |  |  |  |
| DH1200.L3CX.MECH.43 |  | DH1200 L3 TAB (Air, Water and Reports) – MECHANICAL | 10d | 2026-12-28 | 2027-01-11 | DH1200.L3CX.MECH.33, DH1200.L3CX.BMS.11 FF |  |  |  |  | -8d | 0d |  | DH1200 |  |  |  |  |  |
| DH1200.L3CX.MECH.53 |  | DH1200 L3 FLS – MECHANICAL | 10d | 2026-12-30 | 2027-01-13 | DH1200.L3CX.MECH.43 FF+2d, DH1200.L3CX.MECH.33, DH1200.L3CX.ELEC.53 |  |  |  |  | -8d | 0d |  | DH1200 |  |  |  |  |  |
| DH1200.L3CX.29 |  | DH1200 L3 Cx Complete | 0d | 2027-01-14 | 2027-01-14 | DH1200.L3CX.MECH.43 FF, DH1200.L3CX.MECH.53 FF |  |  |  |  | -8d | 0d |  | DH1200 |  |  |  |  |  |

| ID | WBS | Activity | Duration | Start | Finish | Predecessors | Remaining | Planned start | Planned finish | Total float | Free float | QTS - AREA | QTS - DASH | MSP Activity ID | 12 - SUFFOLK - Export_to_Procore | QTS - Subcontractor | QTS - Resp |
| --- | --- | --- | --- | --- | --- | --- | --- | --- | --- | --- | --- | --- | --- | --- | --- | --- | --- |
|  | 2 | **L4 Function Testing** |  | 2026-12-16 | 2027-01-22 |  |  |  |  |  |  |  |  |  |  |  |  |
| DH1200.L4CX.COMM.140 |  | DH1200 L4 Cx | 25d | 2026-12-16 | 2027-01-22 | DH1200.L3CX.29 FF+6d |  |  |  | -1d | 0d | DH1200 |  |  |  |  |  |
|  | 3 | **L5 Integrated System Testing (IST)** |  | 2027-01-04 | 2027-02-23 |  |  |  |  |  |  |  |  |  |  |  |  |
| DH1200.L5CX.COMM.220 |  | DH1200 L5 Integrated Systems Testing - IST | 20d | 2027-01-04 | 2027-02-01 | DH1200.L4CX.COMM.140 FF+6d |  |  |  | -1d | 0d | DH1200 |  |  |  |  |  |
| DH1200.A2110.CO |  | DH 1200/L5 Integrated System Testing (IST) // DH1200– Phase Closeout Period O&M / TRAINING/ CLOSEOUT DOCS | 15d | 2027-02-02 | 2027-02-23 | DH1200.L5CX.COMM.230 |  |  |  | 71d | 0d | DH1200 | Cx |  |  |  |  |
| DH1200.L5CX.COMM.230 |  | DH1200 – IST / L5 Cx Complete | 0d | 2027-02-02 | 2027-02-02 | DH1200.L5CX.COMM.220 |  |  |  | -1d | 0d | DH1200 |  |  |  |  |  |
|  | ` | **Commissioning & Start Up** |  |  |  |  |  |  |  |  |  |  |  |  |  |  |  |
|  | 8 | **Data Hall 1400** |  | 2026-05-27 | 2027-04-22 |  |  |  |  |  |  |  |  |  |  |  |  |
|  | 10 | **Exterior Build Out** |  | 2026-05-27 | 2027-01-04 |  |  |  |  |  |  |  |  |  |  |  |  |
|  | 9 | **Electrical Yard** |  | 2026-09-24 | 2027-01-04 |  |  |  |  |  |  |  |  |  |  |  |  |
|  | 3 | **Electrical** |  | 2026-09-24 | 2027-01-04 |  |  |  |  |  |  |  |  |  |  |  |  |
|  | 1 | **Underground** |  | 2026-09-24 | 2026-11-19 |  |  |  |  |  |  |  |  |  |  |  |  |
|  | 1 | **Column Line 4.0 - 4.9** |  | 2026-09-24 | 2026-11-19 |  |  |  |  |  |  |  |  |  |  |  |  |
| DH.1400 |  | DH1400/Electrical Yard-Underground // Excavate From MVG to Transformers | 10d | 2026-09-24 A | 2026-10-27 | DH.1300, FDN.1244 | 10d | 2026-08-21 | 2026-09-03 | -6d | 0d | DH1400 | EY | 1048 | Y |  |  |
| B1200378 |  | DH1400/Electrical Yard-Underground // Install Raceway from MVG to Transformers | 10d | 2026-10-28 | 2026-11-10 | DH.1400 |  |  |  | -6d | 0d | DH1400 | EY | 1050 | Y | HELIX | D18A |
| B1200379 |  | DH1400/Electrical Yard-Underground // Backfill Raceways from MVG to Transformers | 6d | 2026-11-12 | 2026-11-19 | B1200378 FF, B1200378 |  |  |  | -6d | 0d | DH1400 | EY | 1051 | Y | HELIX | D18A |
|  | 2 | **Column-Line 4.0 - 4.9** |  |  |  |  |  |  |  |  |  |  |  |  |  |  |  |
|  | 2 | **Pads** |  | 2026-11-20 | 2026-12-10 |  |  |  |  |  |  |  |  |  |  |  |  |
| B1200388 |  | DH1400/Electrical Yard-Pads // Excavate / Form / Rebar /pour-Finish Pads (House Gen & (9) Xfmr) 0.1 to 1.4 Line | 6d | 2026-11-20 | 2026-11-30 | B1200379, B1200386 |  |  |  | -6d | 0d | DH1400 | EY | 1065 | Y |  |  |
| B1200389 |  | DH1400/Electrical Yard-Pads // Pad Strip and Cure (House Gen & (9) Xfmr) 0.1 to 1.4 Line | 1d | 2026-12-01 | 2026-12-01 | B1200388 |  |  |  | -6d | 0d | DH1400 | EY | 1067 | Y |  |  |
| B1200390 |  | DH1400/Electrical Yard-Pads // Excavate / Form / Rebar /pour-Finish Pads (16 Xfmrs) 1.4 to 1.8 Line | 6d | 2026-12-02 | 2026-12-09 | B1200389, B1200388 |  |  |  | -6d | 0d | DH1400 | EY | 1066 | Y |  |  |
| B1200391 |  | DH1400/Electrical Yard-Pads // Pad Strip and Cure (16 Xfmrs) 1.4 to 1.8 Line | 1d | 2026-12-10 | 2026-12-10 | B1200390 |  |  |  | -6d | 0d | DH1400 | EY | 1068 | Y |  |  |
|  | 3 | **Equipment** |  | 2026-12-11 | 2027-01-04 |  |  |  |  |  |  |  |  |  |  |  |  |
|  | 1 | **A140** |  | 2026-12-11 | 2026-12-14 |  |  |  |  |  |  |  |  |  |  |  |  |
| DH.14001 |  | DH1400/Electrical Yard // Set XFMR - XFMR-A140a | 1d | 2026-12-11 | 2026-12-11 | B1200391, STRUCTURE.6940 |  |  |  | -6d | 0d | DH1400 | EY | 537 | Y | HELIX | D18A |
| DH.14002 |  | DH1400/Electrical Yard // Set XFMR - XFMR-A140p | 1d | 2026-12-14 | 2026-12-14 | DH.14001 |  |  |  | -6d | 0d | DH1400 | EY | 537 | Y | HELIX | D18A |

| ID | WBS | Activity | Duration | Start | Finish | Predecessors | Total float | Free float | MSP Activity ID | QTS - Subcontractor | QTS - AREA | QTS - Resp | 12 - SUFFOLK - Export_to_Procore | QTS - DASH |
| --- | --- | --- | --- | --- | --- | --- | --- | --- | --- | --- | --- | --- | --- | --- |
|  | 2 | **B140** |  | 2026-12-15 | 2026-12-16 |  |  |  |  |  |  |  |  |  |
| DH.14003 |  | DH1400/Electrical Yard // Set XFMR - XFMR-B140a | 1d | 2026-12-15 | 2026-12-15 | DH.14002 | -6d | 0d | 537 | HELIX | DH1400 | D18A | Y | EY |
| DH.14004 |  | DH1400/Electrical Yard // Set XFMR - XFMR-B140p | 1d | 2026-12-16 | 2026-12-16 | DH.14003 | -6d | 0d | 537 | HELIX | DH1400 | D18A | Y | EY |
|  | 3 | **C140** |  | 2026-12-17 | 2026-12-18 |  |  |  |  |  |  |  |  |  |
| DH.14005 |  | DH1400/Electrical Yard // Set XFMR - XFMR-C140a | 1d | 2026-12-17 | 2026-12-17 | DH.14004 | -6d | 0d | 537 | HELIX | DH1400 | D18A | Y | EY |
| DH.14006 |  | DH1400/Electrical Yard // Set XFMR - XFMR-C140p | 1d | 2026-12-18 | 2026-12-18 | DH.14005 | -6d | 0d | 537 | HELIX | DH1400 | D18A | Y | EY |
|  | 4 | **D140** |  | 2026-12-21 | 2026-12-22 |  |  |  |  |  |  |  |  |  |
| DH.14007 |  | DH1400/Electrical Yard // Set XFMR - XFMR-D140a | 1d | 2026-12-21 | 2026-12-21 | DH.14006 | -6d | 0d | 537 | HELIX | DH1400 | D18A | Y | EY |
| DH.14008 |  | DH1400/Electrical Yard // Set XFMR - XFMR-D140p | 1d | 2026-12-22 | 2026-12-22 | DH.14007 | -6d | 0d | 537 | HELIX | DH1400 | D18A | Y | EY |
|  | 5 | **E140** |  | 2026-12-23 | 2026-12-24 |  |  |  |  |  |  |  |  |  |
| DH.14009 |  | DH1400/Electrical Yard // Set XFMR - XFMR-E140a | 1d | 2026-12-23 | 2026-12-23 | DH.14008 | -6d | 0d | 537 | HELIX | DH1400 | D18A | Y | EY |
| DH.14000 |  | DH1400/Electrical Yard // Set XFMR - XFMR-E140p | 1d | 2026-12-24 | 2026-12-24 | DH.14009 | -6d | 0d | 537 | HELIX | DH1400 | D18A |  | EY |
|  | 6 | **F140** |  | 2026-12-28 | 2026-12-29 |  |  |  |  |  |  |  |  |  |
| DH.160012108 |  | DH1400/Electrical Yard // Set XFMR - XFMR-F140a | 1d | 2026-12-28 | 2026-12-28 | DH.14000 | -6d | 0d | 537 | HELIX | DH1400 | D18A |  | EY |
| DH.160012109 |  | DH1400/Electrical Yard // Set XFMR - XFMR-F140p | 1d | 2026-12-29 | 2026-12-29 | DH.160012108 | -6d | 0d | 537 | HELIX | DH1400 | D18A |  | EY |
|  | 7 | **G140** |  | 2026-12-30 | 2026-12-31 |  |  |  |  |  |  |  |  |  |
| DH.160012110 |  | DH1400/Electrical Yard // Set XFMR - XFMR-G140a | 1d | 2026-12-30 | 2026-12-30 | DH.160012109 | -6d | 0d | 537 | HELIX | DH1400 | D18A |  | EY |
| DH.160012111 |  | DH1400/Electrical Yard // Set XFMR - XFMR-G140p | 1d | 2026-12-31 | 2026-12-31 | DH.160012110 | -6d | 0d | 537 | HELIX | DH1400 | D18A |  | EY |
|  | 8 | **H140** |  | 2027-01-04 | 2027-01-04 |  |  |  |  |  |  |  |  |  |
| DH.160012112 |  | DH1400/Electrical Yard // Set XFMR - XFMR-H140a | 1d | 2027-01-04 | 2027-01-04 | DH.160012111 | -6d | 0d | 537 | HELIX | DH1400 | D18A |  | EY |
| DH.160012113 |  | DH1400/Electrical Yard // Set XFMR - XFMR-H140p | 1d | 2027-01-04 | 2027-01-04 | DH.160012112 FF | -6d | 0d | 537 | HELIX | DH1400 | D18A |  | EY |
|  | 9 | **J140** |  | 2027-01-04 | 2027-01-04 |  |  |  |  |  |  |  |  |  |
| DH.160012114 |  | DH1400/Electrical Yard // Set XFMR - XFMR-J140a | 1d | 2027-01-04 | 2027-01-04 | DH.160012113 FF | -6d | 0d | 537 | HELIX | DH1400 | D18A |  | EY |
| DH.160012115 |  | DH1400/Electrical Yard // Set XFMR - XFMR-J140p | 1d | 2027-01-04 | 2027-01-04 | DH.160012114 FF | -6d | 0d | 537 | HELIX | DH1400 | D18A |  | EY |

| ID | WBS | Activity | Duration | Start | Finish | Predecessors | Complete | Remaining | Planned start | Planned finish | Total float | Free float | Constraint | MSP Activity ID | QTS - Subcontractor | QTS - AREA | QTS - Resp | QTS - DASH | 12 - SUFFOLK - Export_to_Procore |
| --- | --- | --- | --- | --- | --- | --- | --- | --- | --- | --- | --- | --- | --- | --- | --- | --- | --- | --- | --- |
|  | 10 | **K140** |  | 2027-01-04 | 2027-01-04 |  |  |  |  |  |  |  |  |  |  |  |  |  |  |
| DH.160012116 |  | DH1400/Electrical Yard // Set XFMR - XFMR-K140a | 1d | 2027-01-04 | 2027-01-04 | DH.160012115 FF |  |  |  |  | -6d | 0d |  | 537 | HELIX | DH1400 | D18A | EY |  |
| DH.160012117 |  | DH1400/Electrical Yard // Set XFMR - XFMR-K140p | 1d | 2027-01-04 | 2027-01-04 | DH.160012116 FF |  |  |  |  | -6d | 0d |  | 537 | HELIX | DH1400 | D18A | EY |  |
|  | 11 | **R140** |  | 2027-01-04 | 2027-01-04 |  |  |  |  |  |  |  |  |  |  |  |  |  |  |
| DH.160012118 |  | DH1400/Electrical Yard // Set XFMR - XFMR-R140a | 1d | 2027-01-04 | 2027-01-04 | DH.160012117 FF |  |  |  |  | -6d | 0d |  | 537 | HELIX | DH1400 | D18A | EY |  |
| DH.160012119 |  | DH1400/Electrical Yard // Set XFMR - XFMR-R140p | 1d | 2027-01-04 | 2027-01-04 | DH.160012118 FF |  |  |  |  | -6d | 0d |  | 537 | HELIX | DH1400 | D18A | EY |  |
|  | 1 | **Mechanical Yard** |  | 2026-05-27 | 2026-12-31 |  |  |  |  |  |  |  |  |  |  |  |  |  |  |
|  | 1 | **Pads** |  | 2026-05-27 | 2026-09-11 |  |  |  |  |  |  |  |  |  |  |  |  |  |  |
| A5772 |  | DH1400/Mechanical Yard-Pads // Excavate / Form / Rebar / Pour Chiller Pads | 8d | 2026-05-27 A | 2026-06-05 A | A5748 SS | 100% |  |  |  |  |  |  | 1074 |  | DH1400 |  | MY | Y |
| A5776 |  | DH1400/Mechanical Yard-Pads // Excavate / Form / Rebar / Pour Support and TES Pads (Column Lines 1.3 to 1.6) | 5d | 2026-07-15 A | 2026-07-21 A | A5772 SS, A5772 | 100% |  | 2026-08-14 | 2026-08-20 |  |  |  | 1080 |  | DH1400 |  | MY | Y |
| A5777 |  | DH1400/Mechanical Yard-Pads // Excavate / Form / Rebar / Pour Support and TES Pads (Column Lines 1.6 to 1.9) | 5d | 2026-09-02 A | 2026-09-11 A | A5776 | 100% |  | 2026-08-21 | 2026-08-27 |  |  |  | 1081 |  | DH1400 |  | MY | Y |
|  | 5 | **Equipment** |  | 2026-10-05 | 2026-12-31 |  |  |  |  |  |  |  |  |  |  |  |  |  |  |
| A5900 |  | DH1400/Mechanical Yard - OFCI Chiller Delivery Date (12/09/26 through 12/10/26) | 0d | 2026-12-09 | 2026-12-09 | A5772 |  |  |  |  | -6d | 0d | finish on or after 2026-12-09 |  |  |  |  |  |  |
|  | 1 | **A140** |  | 2026-10-05 | 2026-12-14 |  |  |  |  |  |  |  |  |  |  |  |  |  |  |
| DH.140012024 |  | DH1400/Mechanical Yard-A140 // Install Mechanical Piping Mains (Building -to Line) | 1d | 2026-10-05 A | 2026-12-11 | DH.140012023 FF, A5777 |  | 1d | 2026-10-05 | 2026-10-05 | 38d | 0d |  | 1083 |  | DH1400 |  | MY | Y |
| DH.140012001 |  | DH1400/Mechanical Yard-A140 // Set Chiller - CHLR-1CY40-A140 | 1d | 2026-12-09 | 2026-12-09 | A5900, FDN.1244, STRUCTURE.6940 |  |  |  |  | -6d | 0d |  | 1083 |  | DH1400 |  | MY | Y |
| DH.140012002 |  | DH1400/Mechanical Yard-A140 // Set TES tank - TES-1CY40-A140 | 1d | 2026-12-10 | 2026-12-10 | DH.140012001, A5777 |  |  |  |  | 38d | 0d |  | 1083 |  | DH1400 |  | MY | Y |
| DH.140012023 |  | DH1400/Mechanical Yard-A140 // Install CHWP | 1d | 2026-12-11 | 2026-12-11 | DH.140012002 |  |  |  |  | 38d | 0d |  | 1083 |  | DH1400 |  | MY | Y |
| DH.140012025 |  | DH1400/Mechanical Yard-A140 // Install Mechanical Chiller to Mains | 1d | 2026-12-14 | 2026-12-14 | DH.140012024 |  |  |  |  | 38d | 0d |  | 1083 |  | DH1400 |  | MY | Y |
|  | 2 | **B140** |  | 2026-12-09 | 2026-12-15 |  |  |  |  |  |  |  |  |  |  |  |  |  |  |
| DH.140012003 |  | DH1400/Mechanical Yard-B140 // Set Chiller - CHLR-1CY40-B140 | 1d | 2026-12-09 | 2026-12-09 | A5900, DH.140012001 SS |  |  |  |  | -6d | 0d |  | 1083 |  | DH1400 |  | MY |  |
| DH.140012004 |  | DH1400/Mechanical Yard-B140 // Set TES tank - TES-1CY40-B140 | 1d | 2026-12-10 | 2026-12-10 | DH.140012003 |  |  |  |  | 37d | 0d |  | 1083 |  | DH1400 |  | MY |  |
| DH.140012026 |  | DH1400/Mechanical Yard-B140 // Install CHWP | 1d | 2026-12-11 | 2026-12-11 | DH.140012004 |  |  |  |  | 37d | 0d |  | 1083 |  | DH1400 |  | MY |  |
| DH.140012027 |  | DH1400/Mechanical Yard-B140 // Install Mechanical Piping Mains (Building -to Line) | 1d | 2026-12-14 | 2026-12-14 | DH.140012026 |  |  |  |  | 37d | 0d |  | 1083 |  | DH1400 |  | MY |  |
| DH.140012028 |  | DH1400/Mechanical Yard-B140 // Install Mechanical Chiller to Mains | 1d | 2026-12-15 | 2026-12-15 | DH.140012027 |  |  |  |  | 37d | 0d |  | 1083 |  | DH1400 |  | MY |  |

| ID | WBS | Activity | Duration | Start | Finish | Predecessors | Total float | Free float | MSP Activity ID | QTS - AREA | QTS - DASH |
| --- | --- | --- | --- | --- | --- | --- | --- | --- | --- | --- | --- |
|  | 3 | **C140** |  | 2026-12-09 | 2026-12-15 |  |  |  |  |  |  |
| DH.140012005 |  | DH1400/Mechanical Yard-C140 // Set Chiller - CHLR-1CY40-C140 | 1d | 2026-12-09 | 2026-12-09 | A5900, DH.140012003 SS | -6d | 0d | 1083 | DH1400 | MY |
| DH.140012006 |  | DH1400/Mechanical Yard-C140 // Set TES tank - TES-1CY40-C140 | 1d | 2026-12-10 | 2026-12-10 | DH.140012005 | 37d | 0d | 1083 | DH1400 | MY |
| DH.140012029 |  | DH1400/Mechanical Yard-C140 // Install CHWP | 1d | 2026-12-11 | 2026-12-11 | DH.140012006 | 37d | 0d | 1083 | DH1400 | MY |
| DH.140012030 |  | DH1400/Mechanical Yard-C140 // Install Mechanical Piping Mains (Building -to Line) | 1d | 2026-12-14 | 2026-12-14 | DH.140012029 | 37d | 0d | 1083 | DH1400 | MY |
| DH.140012031 |  | DH1400/Mechanical Yard-C140 // Install Mechanical Chiller to Mains | 1d | 2026-12-15 | 2026-12-15 | DH.140012030 | 37d | 0d | 1083 | DH1400 | MY |
|  | 4 | **D140** |  | 2026-12-09 | 2026-12-15 |  |  |  |  |  |  |
| DH.140012007 |  | DH1400/Mechanical Yard-D140 // Set Chiller - CHLR-1CY40-D140 | 1d | 2026-12-09 | 2026-12-09 | A5900, DH.140012005 SS | -6d | 0d | 1083 | DH1400 | MY |
| DH.140012008 |  | DH1400/Mechanical Yard-D140 // Set TES tank - TES-1CY40-D140 | 1d | 2026-12-10 | 2026-12-10 | DH.140012007 | 37d | 0d | 1083 | DH1400 | MY |
| DH.140012032 |  | DH1400/Mechanical Yard-D140 // Install CHWP | 1d | 2026-12-11 | 2026-12-11 | DH.140012008 | 37d | 0d | 1083 | DH1400 | MY |
| DH.140012033 |  | DH1400/Mechanical Yard-D140 // Install Mechanical Piping Mains (Building -to Line) | 1d | 2026-12-14 | 2026-12-14 | DH.140012032 | 37d | 0d | 1083 | DH1400 | MY |
| DH.140012034 |  | DH1400/Mechanical Yard-D140 // Install Mechanical Chiller to Mains | 1d | 2026-12-15 | 2026-12-15 | DH.140012033 | 37d | 0d | 1083 | DH1400 | MY |
|  | 5 | **E140** |  | 2026-12-09 | 2026-12-15 |  |  |  |  |  |  |
| DH.140012009 |  | DH1400/Mechanical Yard-E140 // Set Chiller - CHLR-1CY40-E140 | 1d | 2026-12-09 | 2026-12-09 | A5900, DH.140012007 SS | -6d | 0d | 1083 | DH1400 | MY |
| DH.140012010 |  | DH1400/Mechanical Yard-E140 // Set TES tank - TES-1CY40-E140 | 1d | 2026-12-10 | 2026-12-10 | DH.140012009 | 37d | 0d | 1083 | DH1400 | MY |
| DH.140012035 |  | DH1400/Mechanical Yard-E140 // Install CHWP | 1d | 2026-12-11 | 2026-12-11 | DH.140012010 | 37d | 0d | 1083 | DH1400 | MY |
| DH.140012036 |  | DH1400/Mechanical Yard-E140 // Install Mechanical Piping Mains (Building -to Line) | 1d | 2026-12-14 | 2026-12-14 | DH.140012035 | 37d | 0d | 1083 | DH1400 | MY |
| DH.140012037 |  | DH1400/Mechanical Yard-E140 // Install Mechanical Chiller to Mains | 1d | 2026-12-15 | 2026-12-15 | DH.140012036 | 37d | 0d | 1083 | DH1400 | MY |
|  | 6 | **F140** |  | 2026-12-09 | 2026-12-15 |  |  |  |  |  |  |
| DH.140012011 |  | DH1400/Mechanical Yard-F140 // Set Chiller - CHLR-1CY40-F140 | 1d | 2026-12-09 | 2026-12-09 | A5900, DH.140012009 SS | -6d | 0d | 1083 | DH1400 | MY |
| DH.140012012 |  | DH1400/Mechanical Yard-F140 // Set TES tank - TES-1CY40-F140 | 1d | 2026-12-10 | 2026-12-10 | DH.140012011 | 37d | 0d | 1083 | DH1400 | MY |
| DH.140012038 |  | DH1400/Mechanical Yard-F140 // Install CHWP | 1d | 2026-12-11 | 2026-12-11 | DH.140012012 | 37d | 0d | 1083 | DH1400 | MY |
| DH.140012039 |  | DH1400/Mechanical Yard-F140 // Install Mechanical Piping Mains (Building -to Line) | 1d | 2026-12-14 | 2026-12-14 | DH.140012038 | 37d | 0d | 1083 | DH1400 | MY |
| DH.140012040 |  | DH1400/Mechanical Yard-F140 // Install Mechanical Chiller to Mains | 1d | 2026-12-15 | 2026-12-15 | DH.140012039 | 37d | 0d | 1083 | DH1400 | MY |

| ID | WBS | Activity | Duration | Start | Finish | Predecessors | Total float | Free float | MSP Activity ID | QTS - AREA | QTS - DASH |
| --- | --- | --- | --- | --- | --- | --- | --- | --- | --- | --- | --- |
|  | 7 | **G140** |  | 2026-12-10 | 2026-12-16 |  |  |  |  |  |  |
| DH.140012013 |  | DH1400/Mechanical Yard-G140 // Set Chiller - CHLR-1CY40-G140 | 1d | 2026-12-10 | 2026-12-10 | DH.140012011 | -6d | 0d | 1083 | DH1400 | MY |
| DH.140012014 |  | DH1400/Mechanical Yard-G140 // Set TES tank - TES-1CY40-G140 | 1d | 2026-12-11 | 2026-12-11 | DH.140012013 | 36d | 0d | 1083 | DH1400 | MY |
| DH.140012041 |  | DH1400/Mechanical Yard-G140 // Install CHWP | 1d | 2026-12-14 | 2026-12-14 | DH.140012014 | 36d | 0d | 1083 | DH1400 | MY |
| DH.140012042 |  | DH1400/Mechanical Yard-G140 // Install Mechanical Piping Mains (Building -to Line) | 1d | 2026-12-15 | 2026-12-15 | DH.140012041 | 36d | 0d | 1083 | DH1400 | MY |
| DH.140012043 |  | DH1400/Mechanical Yard-G140 // Install Mechanical Chiller to Mains | 1d | 2026-12-16 | 2026-12-16 | DH.140012042 | 36d | 0d | 1083 | DH1400 | MY |
|  | 8 | **H140** |  | 2026-12-10 | 2026-12-16 |  |  |  |  |  |  |
| DH.140012015 |  | DH1400/Mechanical Yard-H140 // Set Chiller - CHLR-1CY40-H140 | 1d | 2026-12-10 | 2026-12-10 | DH.140012013 SS | -6d | 0d | 1083 | DH1400 | MY |
| DH.140012016 |  | DH1400/Mechanical Yard-H140 // Set TES tank - TES-1CY40-H140 | 1d | 2026-12-11 | 2026-12-11 | DH.140012015 | 36d | 0d | 1083 | DH1400 | MY |
| DH.140012044 |  | DH1400/Mechanical Yard-H140 // Install CHWP | 1d | 2026-12-14 | 2026-12-14 | DH.140012016 | 36d | 0d | 1083 | DH1400 | MY |
| DH.140012045 |  | DH1400/Mechanical Yard-H140 // Install Mechanical Piping Mains (Building -to Line) | 1d | 2026-12-15 | 2026-12-15 | DH.140012044 | 36d | 0d | 1083 | DH1400 | MY |
| DH.140012046 |  | DH1400/Mechanical Yard-H140 // Install Mechanical Chiller to Mains | 1d | 2026-12-16 | 2026-12-16 | DH.140012045 | 36d | 0d | 1083 | DH1400 | MY |
|  | 9 | **J140** |  | 2026-12-10 | 2026-12-16 |  |  |  |  |  |  |
| DH.140012017 |  | DH1400/Mechanical Yard-J140 // Set Chiller - CHLR-1CY40-J140 | 1d | 2026-12-10 | 2026-12-10 | DH.140012015 SS | -6d | 0d | 1083 | DH1400 | MY |
| DH.140012018 |  | DH1400/Mechanical Yard-J140 // Set TES tank - TES-1CY40-J140 | 1d | 2026-12-11 | 2026-12-11 | DH.140012017 | 36d | 0d | 1083 | DH1400 | MY |
| DH.140012047 |  | DH1400/Mechanical Yard-J140 // Install CHWP | 1d | 2026-12-14 | 2026-12-14 | DH.140012018 | 36d | 0d | 1083 | DH1400 | MY |
| DH.140012048 |  | DH1400/Mechanical Yard-J140 // Install Mechanical Piping Mains (Building -to Line) | 1d | 2026-12-15 | 2026-12-15 | DH.140012047 | 36d | 0d | 1083 | DH1400 | MY |
| DH.140012049 |  | DH1400/Mechanical Yard-J140 // Install Mechanical Chiller to Mains | 1d | 2026-12-16 | 2026-12-16 | DH.140012048 | 36d | 0d | 1083 | DH1400 | MY |
|  | 10 | **K140** |  | 2026-12-10 | 2026-12-16 |  |  |  |  |  |  |
| DH.140012019 |  | DH1400/Mechanical Yard-K140 // Set Chiller - CHLR-1CY40-K140 | 1d | 2026-12-10 | 2026-12-10 | DH.140012017 SS | -6d | 0d | 1083 | DH1400 | MY |
| DH.140012020 |  | DH1400/Mechanical Yard-K140 // Set TES tank - TES-1CY40-K140 | 1d | 2026-12-11 | 2026-12-11 | DH.140012019 | 36d | 0d | 1083 | DH1400 | MY |
| DH.140012050 |  | DH1400/Mechanical Yard-K140 // Install CHWP | 1d | 2026-12-14 | 2026-12-14 | DH.140012020 | 36d | 0d | 1083 | DH1400 | MY |
| DH.140012051 |  | DH1400/Mechanical Yard-K140 // Install Mechanical Piping Mains (Building -to Line) | 1d | 2026-12-15 | 2026-12-15 | DH.140012050 | 36d | 0d | 1083 | DH1400 | MY |
| DH.140012052 |  | DH1400/Mechanical Yard-K140 // Install Mechanical Chiller to Mains | 1d | 2026-12-16 | 2026-12-16 | DH.140012051 | 36d | 0d | 1083 | DH1400 | MY |

| ID | WBS | Activity | Duration | Start | Finish | Predecessors | Complete | Remaining | Planned start | Planned finish | Total float | Free float | MSP Activity ID | QTS - AREA | QTS - DASH | QTS - Subcontractor | QTS - Resp | 12 - SUFFOLK - Export_to_Procore | 05 -SUFFOLK - Building Phase |
| --- | --- | --- | --- | --- | --- | --- | --- | --- | --- | --- | --- | --- | --- | --- | --- | --- | --- | --- | --- |
|  | 11 | **R140** |  | 2026-12-10 | 2026-12-16 |  |  |  |  |  |  |  |  |  |  |  |  |  |  |
| DH.140012021 |  | DH1400/Mechanical Yard-R140 // Set Chiller - CHLR-1CY40-R140 | 1d | 2026-12-10 | 2026-12-10 | DH.140012019 SS |  |  |  |  | -6d | 0d | 1083 | DH1400 | MY |  |  |  |  |
| DH.140012022 |  | DH1400/Mechanical Yard-R140 // Set TES tank - TES-1CY40-R140 | 1d | 2026-12-11 | 2026-12-11 | DH.140012021 |  |  |  |  | -6d | 0d | 1083 | DH1400 | MY |  |  |  |  |
| DH.140012053 |  | DH1400/Mechanical Yard-R140 // Install CHWP | 1d | 2026-12-14 | 2026-12-14 | DH.140012022 |  |  |  |  | -6d | 0d | 1083 | DH1400 | MY |  |  |  |  |
| DH.140012054 |  | DH1400/Mechanical Yard-R140 // Install Mechanical Piping Mains (Building -to Line) | 1d | 2026-12-15 | 2026-12-15 | DH.140012053 |  |  |  |  | -6d | 0d | 1083 | DH1400 | MY |  |  |  |  |
| DH.140012055 |  | DH1400/Mechanical Yard-R140 // Install Mechanical Chiller to Mains | 1d | 2026-12-16 | 2026-12-16 | DH.140012054 |  |  |  |  | -6d | 0d | 1083 | DH1400 | MY |  |  |  |  |
|  | 12 | **Test & Flushing** |  | 2026-12-17 | 2026-12-31 |  |  |  |  |  |  |  |  |  |  |  |  |  |  |
| A5739 |  | DH1400/Mechanical Yard-Test & Flushing // Line Test & Checking | 2d | 2026-12-17 | 2026-12-18 | DH.140012025, DH.140012028, DH.140012031, DH.140012034, DH.140012037, DH.140012040, DH.140012043, DH.140012046, DH.140012049, DH.140012052, DH.140012055 |  |  |  |  | 39d | 0d |  | DH1400 | MY |  |  |  |  |
| A5741 |  | DH1400/Mechanical Yard-Test & Flushing // Electrical & Controls Testing / Checking | 3d | 2026-12-21 | 2026-12-23 | A5739 |  |  |  |  | 39d | 0d |  | DH1400 | MY | HELIX | TBD |  |  |
| A5740 |  | DH1400/Mechanical Yard-Test & Flushing // Fill, Flush & Purge | 5d | 2026-12-24 | 2026-12-31 | A5741 |  |  |  |  | 39d | 50d |  | DH1400 | MY |  |  |  |  |
|  | 2 | **Electrical & Controls** |  | 2026-09-02 | 2026-11-16 |  |  |  |  |  |  |  |  |  |  |  |  |  |  |
| A5778 |  | DH1400/Electrical & Controls // Excavate Raceways from Building to Chiller Pad | 8d | 2026-09-02 A | 2026-09-14 A | A5772 SS, A5772 | 100% |  | 2026-08-28 | 2026-09-09 |  |  | 1095 | DH1400 | MY | HELIX | PRICE | Y |  |
| A5779 |  | DH1400/Electrical & Controls // Install Raceway from Building To Chiller Pad | 8d | 2026-09-08 A | 2026-09-17 A | A5778 SS+4d | 100% |  | 2026-09-03 | 2026-09-15 |  |  | 1096 | DH1400 | MY | HELIX | PRICE |  |  |
| A5791 |  | DH1400/Electrical & Controls // Mechanical CWP Support Caisson Footings | 10d | 2026-09-15 A | 2026-09-28 A | A5778 | 100% |  | 2026-10-02 | 2026-10-16 |  |  | 1103 | DH1400 | MY | HELIX | PRICE |  |  |
| A5780 |  | DH1400/Electrical & Controls // Backfill Chiller Raceways from Building to Chiller Pad | 8d | 2026-09-18 A | 2026-09-23 A | A5778 | 100% |  | 2026-09-10 | 2026-09-21 |  |  | 1075 | DH1400 | MY | HELIX | PRICE |  |  |
| A5783 |  | DH1400/Electrical & Controls // Raceway connections to Chiller units | 6d | 2026-10-14 | 2026-10-21 | A5780 SS, A5779 |  |  |  |  | 70d | 0d | 1099 | DH1400 | MY | HELIX | PRICE |  |  |
| A5785 |  | DH1400/Electrical & Controls // Install Panels and Raceways to CHWP | 10d | 2026-10-14 | 2026-10-27 | A5783 SS |  |  |  |  | 70d | 0d | 1101 | DH1400 | MY | HELIX | PRICE |  |  |
| A5786 |  | DH1400/Electrical & Controls // Install Controls conduits and wire to Chiller units | 12d | 2026-10-14 | 2026-10-29 | A5785 SS |  |  |  |  | 70d | 0d | 1103 | DH1400 | MY | HELIX | PRICE |  |  |
| A5789 |  | DH1400/Electrical & Controls // Pull and Terminate Feeders to Chiller units | 6d | 2026-10-22 | 2026-10-29 | A5780 SS, A5783 |  |  |  |  | 70d | 0d | 1105 | DH1400 | MY | HELIX | PRICE |  |  |
| A5792 |  | DH1400/Electrical & Controls // Chiller units Ready to Energize | 6d | 2026-10-30 | 2026-11-06 | A5785, A5786, A5789 |  |  |  |  | 70d | 0d | 1112 | DH1400 | MY | HELIX | PRICE |  |  |
| A5793 |  | DH1400/Electrical & Controls // Fine Grade Install Landscape Fabric & Install Rock | 5d | 2026-11-09 | 2026-11-16 | A3360, A5789, A5792, A5786, A5791 |  |  |  |  | 70d | 81d | 1103 | DH1400 | MY | HELIX | PRICE |  |  |
|  | 2 | **Roof - RTUs** |  | 2026-08-11 | 2026-11-03 |  |  |  |  |  |  |  |  |  |  |  |  |  |  |
|  | 1 | **Column Lines 1.2 thru 2.0** |  | 2026-08-11 | 2026-11-03 |  |  |  |  |  |  |  |  |  |  |  |  |  |  |
| DH.140012057 |  | DH1400/Roof - RTUs // Set RTU-RT Units - RTU-RT- 012 | 1d | 2026-08-11 A | 2026-08-11 A | DH.140012058 SS+2d | 100% |  | 2026-08-12 | 2026-08-12 |  |  | 1119 | DH1400 |  |  |  |  | 2 |
| DH.140012058 |  | DH1400/Roof - RTUs // Set RTU-RT Units - RTU-RT- 011 | 1d | 2026-08-11 A | 2026-08-11 A | DH.130012064 | 100% |  | 2026-08-10 | 2026-08-10 |  |  | 1120 | DH1400 |  |  |  | Y | 2 |
| DH.140012064 |  | DH1400/Roof - RTUs // Set RTU-RT Units - RTU-RT- 013 | 1d | 2026-08-11 A | 2026-08-11 A | DH.140012057 | 100% |  | 2026-08-13 | 2026-08-13 |  |  | 1119 | DH1400 |  |  |  |  | 2 |
| DH.140012059 |  | DH1400/Roof - RTUs // Install Mechanical Piping | 15d | 2026-09-17 A | 2026-10-14 | DH.140012058, DH.140012064 | 100% | 0d | 2026-08-14 | 2026-09-03 | 65d | 0d | 1117 | DH1400 |  |  |  |  | 2 |
| DH.140012056 |  | DH1400/Roof - RTUs // Install heat trace system | 15d | 2026-10-14 | 2026-11-03 | DH.140012059 |  |  |  |  | 78d | 89d | 1116 | DH1400 |  | HELIX | JT |  | 2 |
| DH.14007841 |  | DH1400/Roof - RTUs // Install Electrical Conduit and Controls Piping | 15d | 2026-10-14 | 2026-11-03 | DH.140012059, DH.140012064 |  |  |  |  | 65d | 27d | 1118 | DH1400 |  | HELIX | JT |  | 2 |

| ID | WBS | Activity | Type | Duration | Start | Finish | Predecessors | Complete | Remaining | Planned start | Planned finish | Total float | Free float | Constraint | MSP Activity ID | QTS - AREA | 12 - SUFFOLK - Export_to_Procore | QTS - DASH | QTS - Subcontractor | QTS - Resp |
| --- | --- | --- | --- | --- | --- | --- | --- | --- | --- | --- | --- | --- | --- | --- | --- | --- | --- | --- | --- | --- |
|  | 1 | **Interior Build Out** |  |  | 2026-08-12 | 2027-04-22 |  |  |  |  |  |  |  |  |  |  |  |  |  |  |
|  | 9 | **Flex 1000D10** |  |  | 2026-08-12 | 2026-12-14 |  |  |  |  |  |  |  |  |  |  |  |  |  |  |
| DH.1400.1000 |  | DH1400/Flex 1000D10 // Seal Concrete |  | 2d | 2026-08-12 A | 2026-08-13 A | SOG.1460 | 100% |  | 2026-08-10 | 2026-08-11 |  |  |  | 66 | DH1400 | Y | OR |  |  |
| DH.1400.1010 |  | DH1400/Flex 1000D10 // MEPF Layout of Overhead Supports |  | 2d | 2026-08-12 A | 2026-08-13 A | DH.1400.1000 | 100% |  |  |  |  |  |  | 1153 | DH1400 | Y | OR | HELIX | ALOO |
| DH.1400.1020 |  | DH1400/Flex 1000D10 // MEPF Install High Overhead Systems |  | 6d | 2026-10-05 A | 2026-10-27 | B120001.3160 FF, DH.1400.1010 |  | 6d | 2026-10-15 | 2026-10-22 | 14d | 0d |  | 1154 | DH1400 |  | OR | HELIX | ALOO |
| DH.1400.1040 |  | DH1400/Flex 1000D10 // Frame Walls including Backing |  | 4d | 2026-10-08 A | 2026-10-20 | DH.1400.1020 SS+3d, DH.1400.1010 | 100% | 0d | 2026-10-23 | 2026-10-28 | 20d | 0d |  | 1155 | DH1400 |  | OR |  |  |
| B120001.3159 |  | DH1400/Flex 1000D10 // Install Overhead Cable Ladder / 36" Cable Tray - TFO |  | 5d | 2026-10-14 | 2026-10-20 | A5676, DH.1400.1010 |  |  |  |  | 14d | 0d |  | 1181 | DH1400 | Y | OR |  |  |
| DH.1400.1060 |  | DH1400/Flex 1000D10 // MEPF Install Rough Wall |  | 2d | 2026-10-20 | 2026-10-21 | DH.1400.1040 |  |  |  |  | 22d | 0d |  | 1156 | DH1400 |  | OR | HELIX | AC |
| B120001.3160 |  | DH1400/Flex 1000D10 // Install Overhead HAC - TFO |  | 5d | 2026-10-21 | 2026-10-27 | B120001.3159 |  |  |  |  | 14d | 0d |  | 1181 | DH1400 |  | OR |  |  |
| DH.1400.1080 |  | DH1400/Flex 1000D10 // Rough Wall Inspspection (Approval to Close up) |  | 1d | 2026-10-22 | 2026-10-22 | DH.1400.1060 |  |  |  |  | 22d | 8d |  | 1158 | DH1400 |  | OR |  |  |
| DH.1400.1070 |  | DH1400/Flex 1000D10 // Install Top Down Sheet Rock |  | 5d | 2026-10-28 | 2026-11-03 | DH.1400.1020, DH.1400.1040 SS+2d |  |  |  |  | 14d | 0d |  | 1157 | DH1400 |  | OR |  |  |
| DH.1400.1090 |  | DH1400/Flex 1000D10 // Install Balance of Sheetrock |  | 3d | 2026-11-04 | 2026-11-06 | DH.1400.1070, DH.1400.1080 |  |  |  |  | 14d | 0d |  | 1159 | DH1400 |  | OR |  |  |
| DH.1400.1100 |  | DH1400/Flex 1000D10 // Tape and Finish Walls |  | 6d | 2026-11-09 | 2026-11-17 | DH.1400.1090 |  |  |  |  | 14d | 0d |  | 1160 | DH1400 |  | OR |  |  |
| DH.1400.1110 |  | DH1400/Flex 1000D10 // Prime and First Coat of Paint |  | 2d | 2026-11-18 | 2026-11-19 | DH.1400.1100 |  |  |  |  | 14d | 0d |  | 1162 | DH1400 |  | OR |  |  |
| DH.1400.1120 |  | DH1400/Flex 1000D10 // Install MEPF Overhead Ceiling Rough |  | 3d | 2026-11-20 | 2026-11-24 | DH.1400.1110 |  |  |  |  | 14d | 0d |  | 1163 | DH1400 |  | OR | HELIX | TBD |
| DH.1400.1130 |  | DH1400/Flex 1000D10 // Install Lighting, Fire Alarm & Fire Protection |  | 2d | 2026-11-25 | 2026-11-27 | DH.1400.1120 |  |  |  |  | 14d | 0d |  | 1164 | DH1400 |  | OR | HELIX | AC |
| DH.1400.1140 |  | DH1400/Flex 1000D10 // Wall Touch up Final Coat of Paint |  | 3d | 2026-11-30 | 2026-12-02 | DH.1400.1130 |  |  |  |  | 14d | 0d |  | 1165 | DH1400 |  | OR |  |  |
| DH.1400.1050 |  | DH1400/Flex 1000D10 // Install Door Frames |  | 1d | 2026-12-03 | 2026-12-03 | DH.1400.1140, DH.1400.1040 FF |  |  |  |  | 53d | 2d |  | 1161 | DH1400 |  | OR |  |  |
| DH.1400.1150 |  | DH1400/Flex 1000D10 // Install Wall Base, Trim, and Devices |  | 3d | 2026-12-03 | 2026-12-07 | DH.1400.1140 |  |  |  |  | 14d | 0d |  | 1166 | DH1400 |  | OR |  |  |
| DH.1400.3069 |  | DH1400/Flex 1000D10 // Ready to Receive Equipment | milestone | 0d | 2026-12-07 | 2026-12-07 | DH.1400.1150 FF |  |  |  |  | 14d | 0d |  | 1166 | DH1400 |  | OR | HELIX | TBD |
| DH.1400.1160 |  | DH1400/Flex 1000D10 // Suffolk Pre Punch |  | 5d | 2026-12-08 | 2026-12-14 | DH.1400.3069, DH.1400.1050 |  |  |  |  | 51d | 62d |  | 1167 | DH1400 |  | OR |  |  |
|  | 7 | **Electrical Room #5401** |  |  | 2026-08-13 | 2027-01-13 |  |  |  |  |  |  |  |  |  |  |  |  |  |  |
| B120001.3048 |  | DH1400/Electrical Room #5401 // MEPF Layout of Overhead Supports |  | 2d | 2026-08-13 A | 2026-08-14 A | STRUCTURE.7480 | 100% |  | 2026-09-16 | 2026-09-17 |  |  |  | 1170 | DH1400 |  | ER | HELIX | ALOO |
| B120001.3049 |  | DH1400/Electrical Room #5401 // Frame Walls including Backing |  | 4d | 2026-09-29 A | 2026-10-19 | DH.14001040 FF, B120001.3048 |  | 4d | 2026-10-08 | 2026-10-14 | 12d | 0d |  | 1172 | DH1400 |  | ER |  |  |
| F.1000A.1485 |  | DH1400/Electrical Room #5401 // BMS & EPMS Rough-In |  | 2d | 2026-10-01 A | 2026-10-02 A | B120001.3049 SS | 100% |  | 2026-10-23 | 2026-10-26 |  |  |  |  | DH1400 |  |  |  |  |
| B120001.3051 |  | DH1400/Electrical Room #5401 // MEPF Install High Overhead Systems |  | 6d | 2026-10-02 A | 2026-10-27 | B120001.3162 FF, B120001.3048 |  | 6d | 2026-10-15 | 2026-10-22 | 25d | 0d |  | 1171 | DH1400 |  | ER | HELIX | ALOO |
| B120001.3050 |  | DH1400/Electrical Room #5401 // Install Door Frames |  | 1d | 2026-10-05 A | 2026-10-14 | B120001.3049 SS, B120001.3048 |  | 1d | 2026-10-15 | 2026-10-15 | 41d | 16d |  | 1179 | DH1400 |  | ER |  |  |
| B120001.3052 |  | DH1400/Electrical Room #5401 // MEPF Install Rough Wall |  | 2d | 2026-10-05 A | 2026-10-21 | B120001.3049 FF+2d |  | 2d | 2026-10-15 | 2026-10-16 | 12d | 0d |  | 1174 | DH1400 |  | ER | HELIX | AC |
| B120001.3053 |  | DH1400/Electrical Room #5401 // Install Top Down Sheet Rock |  | 5d | 2026-10-14 | 2026-10-20 | B120001.3049 SS+2d |  |  |  |  | 14d | 2d |  | 1175 | DH1400 |  | ER |  |  |
| B120001.3161 |  | DH1400/Electrical Room #5401 // Install Overhead Cable Ladder / 36" Cable Tray - TFO |  | 5d | 2026-10-14 | 2026-10-20 | B120001.3048 |  |  |  |  | 25d | 0d |  | 1181 | DH1400 |  | ER |  |  |
| DH.1400.1170 |  | DH1400/Electrical Room #5401 // Install Overhead Buss duct |  | 2d | 2026-10-14 | 2026-10-15 | B120001.3048 |  |  |  |  | 8d | 0d |  | 1188 | DH1400 |  | ER | HELIX | AL |
| DH.1400.1180 |  | DH1400/Electrical Room #5401 // Install Cable Tray |  | 3d | 2026-10-15 | 2026-10-19 | DH.1400.1170 SS+1d |  |  |  |  | 8d | 0d |  | 1182 | DH1400 |  | ER | HELIX | OO |
| DH.1400.1220 |  | DH1400/Electrical Room #5401 // Pull Cable Tray Feeders (CRAHU/CDU) |  | 10d | 2026-10-20 | 2026-11-02 | DH.1400.1180 |  |  |  |  | 8d | 19d |  | 1191 | DH1400 |  | ER | HELIX | OO |
| B120001.3162 |  | DH1400/Electrical Room #5401 // Install Overhead HAC - TFO |  | 5d | 2026-10-21 | 2026-10-27 | B120001.3161 |  |  |  |  | 25d | 0d |  | 1181 | DH1400 |  | ER |  |  |
| B120001.3054 |  | DH1400/Electrical Room #5401 // Rough Wall Inspspection (Approval to Close up) |  | 1d | 2026-10-22 | 2026-10-22 | B120001.3052 |  |  |  |  | 12d | 0d |  | 1176 | DH1400 |  | ER |  |  |
| B120001.3056 |  | DH1400/Electrical Room #5401 // Install Balance of Sheetrock |  | 3d | 2026-10-23 | 2026-10-27 | B120001.3053, B120001.3054 |  |  |  |  | 12d | 0d |  | 1177 | DH1400 |  | ER |  |  |
| DH.1300.3068 |  | DH1400/Electrical Room #5401 // Room Ready to Receive Equipment | milestone | 0d | 2026-10-27 | 2026-10-27 | B120001.3056 FF |  |  |  |  | 12d | 5d |  | 1200 | DH1400 |  | ER | HELIX | TBD |
| DH.1300.3036 |  | DH1400/Electrical Room #5401 // Install Cable Tray |  | 3d | 2026-10-28 | 2026-10-30 | B120001.3051 |  |  |  |  | 30d | 0d |  | 1182 | DH1400 |  | ER | HELIX | OO |
| F.1000A.1231 |  | DH1400/Electrical Room #5401 // Rough-In Security |  | 2d | 2026-10-28 | 2026-10-29 | B120001.3051 |  |  |  |  | 25d | 0d |  | 1156 | DH1400 |  | ER | HELIX | AC |
| F.1000A.1232 |  | DH1400/Electrical Room #5401 // Pull & Test Security Cable |  | 3d | 2026-10-30 | 2026-11-03 | F.1000A.1231 |  |  |  |  | 25d | 0d |  | 1156 | DH1400 |  | ER |  |  |
| DH.1300.3038 |  | DH1400/Electrical Room #5401 // Install Cable Buss From Exterior |  | 3d | 2026-11-02 | 2026-11-04 | DH.1300.3036 |  |  |  |  | 30d | 19d |  | 1189 | DH1400 |  | ER | HELIX | TBD |
| DH.1300.3112 |  | DH1400/Electrical Room #5401 // DH1400 - OFCI CRAH-125 Delivery Date (11/4/2026) First Shipment |  | 0d | 2026-11-04 | 2026-11-04 | DH.1300.3068 |  |  |  |  | 18d | 0d | finish on or after 2026-11-04 |  |  |  |  |  |  |
| DH.1400.1250 |  | DH1400/Electrical Room #5401 // Set CRAH-ER5401- 01 |  | 1d | 2026-11-04 | 2026-11-04 | DH.1300.3112 |  |  |  |  | 18d | 0d |  | 1194 | DH1400 |  | ER |  |  |
| F.1000A.1233 |  | DH1400/Electrical Room #5401 // Install Security Devices |  | 2d | 2026-11-04 | 2026-11-05 | F.1000A.1232 |  |  |  |  | 25d | 0d |  | 1156 | DH1400 |  | ER |  |  |
| DH.1400.3031 |  | DH1400/Electrical Room #5401 // Set CRAH-ER5401- 02 |  | 1d | 2026-11-05 | 2026-11-05 | DH.1300.3112, DH.1400.1250 |  |  |  |  | 18d | 0d |  | 1194 | DH1400 |  | ER |  |  |
| DH.1400.3032 |  | DH1400/Electrical Room #5401 // Set CRAH-ER5401- 03 |  | 1d | 2026-11-06 | 2026-11-06 | DH.1300.3112, DH.1400.3031 |  |  |  |  | 18d | 0d |  | 1194 | DH1400 |  | ER |  |  |
| F.1000A.1234 |  | DH1400/Electrical Room #5401 // Mount & Terminate Security Devices |  | 5d | 2026-11-06 | 2026-11-13 | B120001.3050, F.1000A.1233 |  |  |  |  | 25d | 29d |  | 1156 | DH1400 |  | ER |  |  |
| DH.1400.3033 |  | DH1400/Electrical Room #5401 // Set CRAH-ER5401- 04 |  | 1d | 2026-11-09 | 2026-11-09 | DH.1300.3112, DH.1400.3032 |  |  |  |  | 18d | 0d |  | 1194 | DH1400 |  | ER |  |  |
| DH.1400.3034 |  | DH1400/Electrical Room #5401 // Set CRAH-ER5401- 05 |  | 1d | 2026-11-10 | 2026-11-10 | DH.1300.3112, DH.1400.3033 |  |  |  |  | 18d | 0d |  | 1194 | DH1400 |  | ER |  |  |
| DH.1300.3092 |  | DH1400/Electrical Room #5401 // DH1400 - OFCI Skid Delivery Date (11/12/2026) 2nd Shipment |  | 0d | 2026-11-12 | 2026-11-12 | DH.1300.3068 FF |  |  |  |  | 3d | 14d | finish on or after 2026-11-12 |  |  |  |  |  |  |
| DH.1400.3035 |  | DH1400/Electrical Room #5401 // Set CRAH-ER5401- 06 |  | 1d | 2026-11-12 | 2026-11-12 | DH.1300.3112, DH.1400.3034 |  |  |  |  | 18d | 0d |  | 1194 | DH1400 |  | ER |  |  |
| ER.5101.3098 |  | DH1400/Electrical Room #5401 // Set PDU - PDU-R140-01 |  | 1d | 2026-11-13 | 2026-11-13 | DH.1400.3035 |  |  |  |  | 18d | 0d |  | 1107 | DH1400 |  | ER | HELIX | TBD |
| ER.5101.3104 |  | DH1400/Electrical Room #5401 // Set UPS - UPS-R140 |  | 1d | 2026-11-16 | 2026-11-16 | ER.5101.3098 |  |  |  |  | 18d | 0d |  | 1107 | DH1400 |  | ER | HELIX | TBD |
| DH.1400.1260 |  | DH1400/Electrical Room #5401 // Mechanical Connections to CRAHU |  | 5d | 2026-11-17 | 2026-11-23 | ER.5101.3104, DH.1400.1250, DH.1400.3035 |  |  |  |  | 18d | 0d |  | 1195 | DH1400 |  | ER |  |  |
| DH.1400.1270 |  | DH1400/Electrical Room #5401 // Install Condensate lines from CRAHU's |  | 2d | 2026-11-24 | 2026-11-25 | DH.1400.1260 |  |  |  |  | 19d | 25d |  | 1196 | DH1400 |  | ER |  |  |
| DH.1400.1280 |  | DH1400/Electrical Room #5401 // Install Elec Feeders to CRAHU's |  | 3d | 2026-11-24 | 2026-11-27 | DH.1400.1180, DH.1400.1260 |  |  |  |  | 18d | 24d |  | 1197 | DH1400 |  | ER | HELIX | OO |
| DH.1300.3070 |  | DH1400/Electrical Room #5401 // DH1400 - OFCI Skid Ship Date (12/02/2026) First Shipment | milestone | 0d | 2026-12-02 | 2026-12-02 | DH.1300.3068 FF |  |  |  |  | -11d | 0d | finish on or after 2026-12-02 | 1200 | DH1400 |  | ER |  |  |
| ER.5101.3065 |  | DH1400/Electrical Room #5401 // Set Skid - SKID-A140 |  | 1d | 2026-12-02 | 2026-12-02 | DH.1300.3070, DH.1300.3068, DH.1400.1220 |  |  |  |  | -11d | 0d |  | 1107 | DH1400 |  | ER | HELIX | TBD |
| ER.5101.3066 |  | DH1400/Electrical Room #5401 // Set Skid - SKID-B140 |  | 1d | 2026-12-02 | 2026-12-02 | DH.1300.3070, ER.5101.3065 SS |  |  |  |  | -11d | 0d |  | 1107 | DH1400 |  | ER | HELIX | TBD |
| ER.5101.3067 |  | DH1400/Electrical Room #5401 // Set Skid - SKID-C140 |  | 1d | 2026-12-02 | 2026-12-02 | DH.1300.3070, ER.5101.3066 SS |  |  |  |  | -11d | 0d |  | 1107 | DH1400 |  | ER | HELIX | TBD |
| ER.5101.3068 |  | DH1400/Electrical Room #5401 // Set Skid - SKID-D140 |  | 1d | 2026-12-03 | 2026-12-03 | DH.1300.3092, ER.5101.3067 |  |  |  |  | -11d | 0d |  | 1107 | DH1400 |  | ER | HELIX | TBD |
| DH.1300.3039 |  | DH1400/Electrical Room #5401 // Buss Duct Tie In to Elect Gear |  | 3d | 2026-12-04 | 2026-12-08 | ER.5101.3068, DH.1300.3038, DH.1300.3036, B120001.3053, B120001.3051 |  |  |  |  | 11d | 22d |  | 1200 | DH1400 |  | ER | HELIX | TBD |
| ER.5101.3069 |  | DH1400/Electrical Room #5401 // Set Skid - SKID-E140 |  | 1d | 2026-12-04 | 2026-12-04 | DH.1300.3092, ER.5101.3068 |  |  |  |  | -11d | 0d |  | 1107 | DH1400 |  | ER | HELIX | TBD |
| DH.1400.1200 |  | DH1400/Electrical Room #5401 // Install Cable Buss From Exterior |  | 3d | 2026-12-07 | 2026-12-09 | DH.1400.1180, ER.5101.3069 |  |  |  |  | -11d | 0d |  | 1189 | DH1400 |  | ER | HELIX | TBD |
| DH.1400.1210 |  | DH1400/Electrical Room #5401 // Pull Cable Buss Feeders |  | 6d | 2026-12-10 | 2026-12-17 | B120001.3056, DH.1400.1200, ER.5101.3069 |  |  |  |  | -11d | 0d |  | 1190 | DH1400 |  | ER | HELIX | TBD |
| DH.1400.1230 |  | DH1400/Electrical Room #5401 // Terminate Cable Buss Feeders |  | 3d | 2026-12-18 | 2026-12-22 | DH.1400.1210 |  |  |  |  | -4d | 0d |  | 1192 | DH1400 |  | ER | HELIX | TBD |
| DH.1400.1240 |  | DH1400/Electrical Room #5401 // Land and Terminate Cabel Tray Feeders In Gear |  | 10d | 2026-12-18 | 2027-01-04 | DH.1400.1210, DH.1400.1220 |  |  |  |  | -6d | 0d |  | 1193 | DH1400 |  | ER | HELIX | TBD |
| DH.1400.1290 |  | DH1400/Electrical Room #5401 // Pull Misc Feeder and Branch Circuits |  | 10d | 2026-12-18 | 2027-01-04 | DH.1400.1210 |  |  |  |  | -11d | 0d |  | 1198 | DH1400 |  | ER | HELIX | AL |
| DH.1400.1320 |  | DH1400/Electrical Room #5401 // Buss Duct Tie In to Elect Gear |  | 3d | 2026-12-23 | 2026-12-28 | DH.1400.1230, DH.1400.1180, DH.1400.1170 |  |  |  |  | -4d | 0d |  | 1200 | DH1400 |  | ER | HELIX | TBD |
| DH.1400.1300 |  | DH1400/Electrical Room #5401 // Land and Terminate Misc Feeder and Branch Circuits |  | 10d | 2026-12-28 | 2027-01-11 | DH.1400.1290 SS+5d |  |  |  |  | -11d | 0d |  | 1184 | DH1400 |  | ER | HELIX | TBD |

| ID | WBS | Activity | Type | Duration | Start | Finish | Predecessors | Complete | Remaining | Planned start | Planned finish | Total float | Free float | Constraint | MSP Activity ID | QTS - AREA | QTS - DASH | QTS - Subcontractor | QTS - Resp |
| --- | --- | --- | --- | --- | --- | --- | --- | --- | --- | --- | --- | --- | --- | --- | --- | --- | --- | --- | --- |
| F.1000A.1235 |  | DH1400/Electrical Room #5401 // Test Security Devices |  | 2d | 2026-12-29 | 2026-12-30 | DH.1400.1320, F.1000A.1234, F.1000A.1485 FF |  |  |  |  | -4d | 5d |  | 1156 | DH1400 | ER |  |  |
| DH.1400.1330 |  | DH1400/Electrical Room #5401 // Mechanical Equipment Pre-Start up |  | 2d | 2027-01-05 | 2027-01-06 | DH.1400.1240, DH.1400.1260, DH.1400.1270, DH.1400.1280 |  |  |  |  | -6d | 5d |  | 1201 | DH1400 | ER |  |  |
| DH.1400.1310 |  | DH1400/Electrical Room #5401 // Final FOD Check of all Panels |  | 2d | 2027-01-12 | 2027-01-13 | DH.1300.3039, F.1000A.1235, DH.1400.1300, DH.1400.1320, DH.1400.1240, DH.1400.1230 |  |  |  |  | -11d | 0d |  | 1199 | DH1400 | ER | HELIX | QC |
|  | 2 | **Electrcal Room #5404** |  |  | 2026-08-17 | 2027-01-05 |  |  |  |  |  |  |  |  |  |  |  |  |  |
| B120001.3084 |  | DH1400/Electrical Room #5404 // MEPF Layout of Overhead Supports |  | 2d | 2026-08-17 A | 2026-08-18 A | B120001.3048 | 100% |  | 2026-09-18 | 2026-09-21 |  |  |  | 1170 | DH1400 | ER | HELIX | ALOO |
| B120001.3085 |  | DH1400/Electrical Room #5404 // MEPF Install High Overhead Systems |  | 6d | 2026-10-01 A | 2026-10-21 | B120001.3084 |  | 6d | 2026-09-30 | 2026-10-07 | 32d | 0d |  | 1171 | DH1400 | ER | HELIX | ALOO |
| B120001.3086 |  | DH1400/Electrical Room #5404 // Frame Walls including Backing |  | 4d | 2026-10-01 A | 2026-10-19 | B120001.3084, B120001.3049 SS+2d |  | 4d | 2026-10-20 | 2026-10-23 | 22d | 0d |  | 1172 | DH1400 | ER |  |  |
| B120001.3088 |  | DH1400/Electrical Room #5404 // MEPF Install Rough Wall |  | 2d | 2026-10-09 A | 2026-10-21 | B120001.3086 FF+2d |  | 2d | 2026-10-26 | 2026-10-27 | 22d | 0d |  | 1174 | DH1400 | ER | HELIX | AC |
| B120001.3087 |  | DH1400/Electrical Room #5404 // Install Door Frames |  | 1d | 2026-10-12 A | 2026-10-19 | B120001.3086 FF |  | 1d | 2026-10-23 | 2026-10-23 | 104d | 9d |  | 1179 | DH1400 | ER |  |  |
| B120001.3089 |  | DH1400/Electrical Room #5404 // Install Top Down Sheet Rock |  | 5d | 2026-10-14 | 2026-10-20 | B120001.3086 SS+2d |  |  |  |  | 24d | 2d |  | 1175 | DH1400 | ER |  |  |
| B120001.3163 |  | DH1400/Electrical Room #5404 // Install Overhead Cable Ladder / 36" Cable Tray - TFO |  | 5d | 2026-10-14 | 2026-10-20 | B120001.3084 |  |  |  |  | 10d | 0d |  | 1181 | DH1400 | ER |  |  |
| DH.1400.3043 |  | DH1400/Electrical Room #5404 // Install Overhead Buss duct |  | 2d | 2026-10-14 | 2026-10-15 | B120001.3084 |  |  |  |  | 19d | 9d |  | 1188 | DH1400 | ER | HELIX | AL |
| B120001.3164 |  | DH1400/Electrical Room #5404 // Install Overhead HAC - TFO |  | 5d | 2026-10-21 | 2026-10-27 | B120001.3163 |  |  |  |  | 10d | 0d |  | 1181 | DH1400 | ER |  |  |
| B120001.3090 |  | DH1400/Electrical Room #5404 // Rough Wall Inspspection (Approval to Close up) |  | 1d | 2026-10-22 | 2026-10-22 | B120001.3088 |  |  |  |  | 22d | 0d |  | 1176 | DH1400 | ER |  |  |
| DH.1300.3063 |  | DH1400/Electrical Room #5404 // Install Cable Tray |  | 3d | 2026-10-22 | 2026-10-26 | B120001.3085 |  |  |  |  | 32d | 30d |  | 1182 | DH1400 | ER | HELIX | OO |
| F.1000A.1236 |  | DH1400/Electrical Room #5404 // Rough-In Security |  | 2d | 2026-10-22 | 2026-10-23 | B120001.3085 |  |  |  |  | 95d | 0d |  | 1156 | DH1400 | ER | HELIX | AC |
| F.1000A.1495 |  | DH1400/Electrical Room #5404 // BMS & EPMS Rough-In |  | 2d | 2026-10-22 | 2026-10-23 | F.1000A.1236 SS, F.1000A.1236 FF |  |  |  |  | 107d | 19d |  |  | DH1400 |  |  |  |
| B120001.3091 |  | DH1400/Electrical Room #5404 // Install Balance of Sheetrock |  | 3d | 2026-10-23 | 2026-10-27 | B120001.3089, B120001.3090 |  |  |  |  | 22d | 0d |  | 1177 | DH1400 | ER |  |  |
| F.1000A.1237 |  | DH1400/Electrical Room #5404 // Pull & Test Security Cable |  | 3d | 2026-10-26 | 2026-10-28 | F.1000A.1236 |  |  |  |  | 95d | 0d |  | 1156 | DH1400 | ER |  |  |
| DH.1400.3070 |  | DH1400/Electrical Room #5404 // Room Ready to Receive Equipment | milestone | 0d | 2026-10-27 | 2026-10-27 | B120001.3091 FF |  |  |  |  | 22d | 27d |  | 1190 | DH1400 | ER | HELIX | TBD |
| DH.1400.3044 |  | DH1400/Electrical Room #5404 // Install Cable Tray |  | 3d | 2026-10-28 | 2026-10-30 | B120001.3164, DH.1400.3043 SS+1d |  |  |  |  | 10d | 0d |  | 1182 | DH1400 | ER | HELIX | OO |
| F.1000A.1238 |  | DH1400/Electrical Room #5404 // Install Security Devices |  | 2d | 2026-10-29 | 2026-10-30 | F.1000A.1237 |  |  |  |  | 95d | 0d |  | 1156 | DH1400 | ER |  |  |
| DH.1400.3045 |  | DH1400/Electrical Room #5404 // Install Cable Buss From Exterior |  | 3d | 2026-11-02 | 2026-11-04 | DH.1400.3044 |  |  |  |  | 17d | 22d |  | 1189 | DH1400 | ER | HELIX | TBD |
| DH.1400.3046 |  | DH1400/Electrical Room #5404 // Pull Cable Tray Feeders (CRAHU/CDU) |  | 10d | 2026-11-02 | 2026-11-16 | DH.1400.3044 |  |  |  |  | 10d | 11d |  | 1191 | DH1400 | ER | HELIX | OO |
| DH.1400.3058 |  | DH1400/Electrical Room #5404 // Buss Duct Tie In to Elect Gear |  | 3d | 2026-11-02 | 2026-11-04 | DH.1400.3044, DH.1400.3043 |  |  |  |  | 16d | 21d |  | 1200 | DH1400 | ER | HELIX | TBD |
| F.1000A.1239 |  | DH1400/Electrical Room #5404 // Mount & Terminate Security Devices |  | 5d | 2026-11-02 | 2026-11-06 | B120001.3087, F.1000A.1238 |  |  |  |  | 95d | 7d |  | 1156 | DH1400 | ER |  |  |
| DH.1400.3047 |  | DH1400/Electrical Room #5404 // Set CRAH-ER5404- 01 |  | 1d | 2026-11-05 | 2026-11-05 | DH.1300.3112 FS+1d |  |  |  |  | 24d | 0d |  | 1194 | DH1400 | ER |  |  |
| DH.1400.3048 |  | DH1400/Electrical Room #5404 // Set CRAH-ER5404- 02 |  | 1d | 2026-11-05 | 2026-11-05 | DH.1300.3112 FS+1d, DH.1400.3047 SS |  |  |  |  | 24d | 0d |  | 1194 | DH1400 | ER |  |  |
| DH.1400.3049 |  | DH1400/Electrical Room #5404 // Set CRAH-ER5404- 03 |  | 1d | 2026-11-05 | 2026-11-05 | DH.1300.3112 FS+1d, DH.1400.3048 SS |  |  |  |  | 24d | 0d |  | 1194 | DH1400 | ER |  |  |
| DH.1400.3050 |  | DH1400/Electrical Room #5404 // Set CRAH-ER5404- 04 |  | 1d | 2026-11-05 | 2026-11-05 | DH.1300.3112 FS+1d, DH.1400.3049 SS |  |  |  |  | 24d | 0d |  | 1194 | DH1400 | ER |  |  |
| DH.1400.3051 |  | DH1400/Electrical Room #5404 // Set CRAH-ER5404- 05 |  | 1d | 2026-11-05 | 2026-11-05 | DH.1300.3112 FS+1d, DH.1400.3050 FF |  |  |  |  | 24d | 0d |  | 1194 | DH1400 | ER |  |  |
| DH.1400.3052 |  | DH1400/Electrical Room #5404 // Set CRAH-ER5404- 06 |  | 1d | 2026-11-05 | 2026-11-05 | DH.1300.3112 FS+1d, DH.1400.3051 FF |  |  |  |  | 24d | 0d |  | 1194 | DH1400 | ER |  |  |
| DH.1400.3053 |  | DH1400/Electrical Room #5404 // Mechanical Connections to CRAHU |  | 5d | 2026-11-06 | 2026-11-13 | DH.1400.3047, DH.1400.3052 |  |  |  |  | 24d | 0d |  | 1195 | DH1400 | ER |  |  |
| DH.1400.3054 |  | DH1400/Electrical Room #5404 // Install Condensate lines from CRAHU's |  | 2d | 2026-11-16 | 2026-11-17 | DH.1400.3053 |  |  |  |  | 25d | 30d |  | 1196 | DH1400 | ER |  |  |
| DH.1400.3055 |  | DH1400/Electrical Room #5404 // Install Elec Feeders to CRAHU's |  | 3d | 2026-11-16 | 2026-11-18 | DH.1400.3044, DH.1400.3053 |  |  |  |  | 24d | 0d |  | 1197 | DH1400 | ER | HELIX | OO |
| F.1000A.1240 |  | DH1400/Electrical Room #5404 // Test Security Devices |  | 2d | 2026-11-19 | 2026-11-20 | DH.1400.3055, F.1000A.1239, F.1000A.1495 FF |  |  |  |  | 88d | 31d |  | 1156 | DH1400 | ER |  |  |
| DH.1400.3059 |  | DH1400/Electrical Room #5404 // Land and Terminate Cabel Tray Feeders In Gear |  | 10d | 2026-12-03 | 2026-12-16 | DH.1400.3056 FF, DH.1400.3046 |  |  |  |  | 2d | 0d |  | 1193 | DH1400 | ER | HELIX | TBD |
| DH.1400.3060 |  | DH1400/Electrical Room #5404 // Pull Misc Feeder and Branch Circuits |  | 10d | 2026-12-03 | 2026-12-16 | DH.1400.3056 FF |  |  |  |  | -5d | 0d |  | 1198 | DH1400 | ER | HELIX | AL |
| DH.1300.3072 |  | DH1400/Electrical Room #5404 // DH1400 - OFCI Skid Ship Date (12/08/2026) 2ND Shipment | milestone | 0d | 2026-12-08 | 2026-12-08 | DH.1400.3070 FF |  |  |  |  | -5d | 0d | finish on or after 2026-12-08 | 1200 | DH1400 | ER |  |  |
| ER.5101.3070 |  | DH1400/Electrical Room #5404 // Set Skid - SKID-F140 |  | 1d | 2026-12-08 | 2026-12-08 | DH.1300.3092, DH.1300.3072, ER.5101.3069 SS, DH.1400.3058, DH.1400.3070 |  |  |  |  | -5d | 0d |  | 1107 | DH1400 | ER | HELIX | TBD |
| ER.5101.3071 |  | DH1400/Electrical Room #5404 // Set Skid - SKID-G140 |  | 1d | 2026-12-08 | 2026-12-08 | DH.1300.3092, ER.5101.3070 SS |  |  |  |  | -5d | 0d |  | 1107 | DH1400 | ER | HELIX | TBD |
| DH.1400.3056 |  | DH1400/Electrical Room #5404 // Pull Cable Buss Feeders |  | 6d | 2026-12-09 | 2026-12-16 | DH.1400.3046, B120001.3091, DH.1400.3045, ER.5101.3074 SS |  |  |  |  | -5d | 0d |  | 1190 | DH1400 | ER | HELIX | TBD |
| ER.5101.3072 |  | DH1400/Electrical Room #5404 // Set Skid - SKID-H140 |  | 1d | 2026-12-09 | 2026-12-09 | ER.5101.3071 |  |  |  |  | -5d | 0d |  | 1107 | DH1400 | ER | HELIX | TBD |
| ER.5101.3073 |  | DH1400/Electrical Room #5404 // Set Skid - SKID-J140 |  | 1d | 2026-12-09 | 2026-12-09 | ER.5101.3072 SS |  |  |  |  | -5d | 0d |  | 1107 | DH1400 | ER | HELIX | TBD |
| ER.5101.3074 |  | DH1400/Electrical Room #5404 // Set Skid - SKID-K140 |  | 1d | 2026-12-09 | 2026-12-09 | ER.5101.3073 SS |  |  |  |  | -5d | 0d |  | 1107 | DH1400 | ER | HELIX | TBD |
| DH.1300.3064 |  | DH1400/Electrical Room #5404 // Install Cable Buss From Exterior |  | 3d | 2026-12-10 | 2026-12-14 | DH.1300.3063, ER.5101.3074 |  |  |  |  | 2d | 0d |  | 1189 | DH1400 | ER | HELIX | TBD |
| DH.1300.3065 |  | DH1400/Electrical Room #5404 // Buss Duct Tie In to Elect Gear |  | 5d | 2026-12-15 | 2026-12-21 | ER.5101.3074, DH.1300.3064, DH.1300.3063, B120001.3089, B120001.3085 |  |  |  |  | 2d | 7d |  | 1200 | DH1400 | ER | HELIX | TBD |
| DH.1400.3057 |  | DH1400/Electrical Room #5404 // Terminate Cable Buss Feeders |  | 3d | 2026-12-17 | 2026-12-21 | DH.1400.3059, DH.1400.3046, DH.1400.3056 |  |  |  |  | 2d | 7d |  | 1192 | DH1400 | ER | HELIX | TBD |
| DH.1400.3062 |  | DH1400/Electrical Room #5404 // Land and Terminate Misc Feeder and Branch Circuits |  | 10d | 2026-12-17 | 2026-12-31 | DH.1400.3060 |  |  |  |  | -5d | 0d |  | 1184 | DH1400 | ER | HELIX | TBD |
| DH.1400.3061 |  | DH1400/Electrical Room #5404 // Mechanical Equipment Pre-Start up |  | 2d | 2027-01-04 | 2027-01-05 | DH.1400.3062, DH.1400.3059, DH.1400.3053, DH.1400.3054, DH.1400.3055 |  |  |  |  | -5d | 6d |  | 1201 | DH1400 | ER |  |  |
| DH.1400.3063 |  | DH1400/Electrical Room #5404 // Final FOD Check of all Panels |  | 2d | 2027-01-04 | 2027-01-05 | DH.1300.3065, DH.1400.3062, DH.1400.3058, DH.1400.3059, DH.1400.3057 |  |  |  |  | -5d | 6d |  | 1199 | DH1400 | ER | HELIX | QC |

| ID | WBS | Activity | Type | Duration | Start | Finish | Predecessors | Complete | Remaining | Planned start | Planned finish | Total float | Free float | MSP Activity ID | QTS - Subcontractor | QTS - AREA | QTS - Resp | 05 -SUFFOLK - Building Phase | QTS - DASH |
| --- | --- | --- | --- | --- | --- | --- | --- | --- | --- | --- | --- | --- | --- | --- | --- | --- | --- | --- | --- |
|  | 3 | **Data Hall 1400** |  |  | 2026-09-09 | 2027-01-14 |  |  |  |  |  |  |  |  |  |  |  |  |  |
| DH.14006270 |  | DH 1400 // MEPF overhead layout |  | 3d | 2026-09-09 A | 2026-09-11 A | B120001.3048 | 100% |  | 2026-09-18 | 2026-09-22 |  |  | 1380 | HELIX | DH1400 | ACOO | 2 | DH |
| B120001.3165 |  | DH 1400 // Install Overhead Cable Ladder / 36" Cable Tray - TFO |  | 5d | 2026-09-14 A | 2026-10-15 | DH.14006270 | 60% | 2d | 2026-09-23 | 2026-09-29 | 3d | 0d | 1181 |  |  |  |  | DH |
| DH.14006290 |  | DH 1400 // MEPF high overhead install |  | 10d | 2026-09-30 A | 2026-10-27 | B120001.3166 FF, DH.14006270 |  | 10d | 2026-10-09 | 2026-10-23 | 0d |  | 1382 | HELIX | DH1400 | ACOO | 2 | DH |
| DH.14006300 |  | DH 1400 // Frame walls |  | 10d | 2026-10-01 A | 2026-10-15 | DH.14006270 SS | 80% | 2d | 2026-10-09 | 2026-10-23 | -1d | 0d | 1383 |  | DH1400 |  | 2 | DH |
| F.1000A.1505 |  | DH 1400 // BMS & EPMS Rough-In |  | 2d | 2026-10-01 A | 2026-10-02 A | DH.14006300 SS | 100% |  | 2026-10-26 | 2026-10-27 |  |  |  |  |  |  |  |  |
| DH.14006320 |  | DH 1400 // MEP rough in walls |  | 5d | 2026-10-07 A | 2026-10-20 | DH.14006300 FF+2d |  | 5d | 2026-10-26 | 2026-10-30 | -2d | 0d | 1386 | HELIX | DH1400 | AC | 2 | DH |
| B120001.3166 |  | DH 1400 // Install Overhead HAC - TFO |  | 5d | 2026-10-16 | 2026-10-22 | B120001.3165 |  |  |  |  | 3d |  | 1181 |  |  |  |  | DH |
| DH.140012067 |  | DH 1400 // Install 1-Side Sheet Rock (DH-Side) |  | 3d | 2026-10-21 | 2026-10-23 | DH.14006320, DH.14006300 |  |  |  |  | -2d | 0d | 1385 |  | DH1400 |  | 2 | DH |
| DH.14006360 |  | DH 1400 // Tape and finish walls |  | 15d | 2026-10-26 | 2026-11-16 | DH.14006300 SS, DH.140012067 |  |  |  |  | -2d | 0d | 1390 |  | DH1400 |  | 2 | DH |
| DH.14007800 |  | DH 1400 // Install Ceiling supports (rods/wires) no grid |  | 5d | 2026-10-28 | 2026-11-03 | DH.14006290, DH.14006300 SS |  |  |  |  | 0d |  | 1375 |  | DH1400 |  | 2 | DH |
| F.1000A.1241 |  | DH 1400 // Rough-In Security |  | 2d | 2026-10-28 | 2026-10-29 | DH.14006290 |  |  |  |  | 64d | 0d | 1156 | HELIX | DH1400 | AC |  | DH |
| F.1000A.1242 |  | DH 1400 // Pull & Test Security Cable |  | 3d | 2026-10-30 | 2026-11-03 | F.1000A.1241 |  |  |  |  | 64d | 11d | 1156 |  | DH1400 |  |  | DH |
| DH.14006220 |  | DH 1400 // Install ceiling grid system |  | 8d | 2026-11-04 | 2026-11-16 | DH.14007800 |  |  |  |  | 0d |  | 1374 |  | DH1400 |  | 2 | DH |
| DH.14006250 |  | DH 1400 // Install overhead MEP and lighting |  | 5d | 2026-11-17 | 2026-11-23 | DH.14006220 |  |  |  |  | 0d |  | 1377 | HELIX | DH1400 | AC | 2 | DH |
| DH.14006310 |  | DH 1400 // Install wall door frames |  | 3d | 2026-11-17 | 2026-11-19 | DH.14006360, DH.14006300 FF |  |  |  |  | 15d | 0d | 1385 |  | DH1400 |  | 2 | DH |
| F.1000A.1243 |  | DH 1400 // Install Security Devices |  | 2d | 2026-11-20 | 2026-11-23 | DH.14006310, F.1000A.1242 |  |  |  |  | 53d | 13d | 1156 |  | DH1400 |  |  | DH |
| DH.14006240 |  | DH 1400 // Install ceiling grid tiles |  | 3d | 2026-11-24 | 2026-11-27 | DH.14006250, DH.14006220 SS+3d |  |  |  |  | 0d |  | 1376 |  | DH1400 |  | 2 | DH |
| DH.14006260 |  | DH 1400 // Polish concrete |  | 5d | 2026-11-30 | 2026-12-04 | DH.14006240, DH.14006360 |  |  |  |  | 0d |  | 1378 |  | DH1400 |  | 2 | DH |
| DH.14006410 |  | DH 1400 // Prime and 1st coat of Paint |  | 5d | 2026-12-07 | 2026-12-11 | DH.14006260, DH.14006360 |  |  |  |  | 0d |  | 1391 |  | DH1400 |  | 2 | DH |
| DH.14007790 |  | DH 1400 // Final Paint & Touch up walls |  | 5d | 2026-12-14 | 2026-12-18 | DH.14006310, DH.14006240, DH.14006220, DH.14006410 |  |  |  |  | 0d |  | 1392 |  | DH1400 |  | 2 | DH |
| F.1000A.1244 |  | DH 1400 // Mount & Terminate Security Devices |  | 5d | 2026-12-14 | 2026-12-18 | DH.14006410, F.1000A.1243 |  |  |  |  | 40d | 10d | 1156 |  | DH1400 |  |  | DH |
| DH.14007810 |  | DH 1400 // Install MEPF Trim and Finishes |  | 5d | 2026-12-21 | 2026-12-28 | DH.14007790 |  |  |  |  | 0d |  | 1394 | HELIX | DH1400 | AC | 2 | DH |
| DH.160012150 |  | DH 1400 // Room Ready to Receive Equipment | milestone | 0d | 2026-12-28 | 2026-12-28 | DH.14007810 FF |  |  |  |  | 0d | 7d | 1394 | HELIX | DH1400 | TBD | 2 | DH |
| F.1000A.1245 |  | DH 1400 // Test Security Devices |  | 2d | 2027-01-06 | 2027-01-07 | DH.14007810 FS+5d, F.1000A.1244, F.1000A.1505 FF |  |  |  |  | 30d | 0d | 1156 |  | DH1400 |  |  | DH |
| DH.14007820 |  | DH 1400 // Suffolk Pre Punch |  | 5d | 2027-01-08 | 2027-01-14 | F.1000A.1245, DH.160012150 |  |  |  |  | 30d | 41d | 1395 |  | DH1400 |  | 2 | DH |

| ID | WBS | Activity | Type | Duration | Start | Finish | Predecessors | Complete | Remaining | Planned start | Planned finish | Total float | Free float | MSP Activity ID | QTS - AREA | 05 -SUFFOLK - Building Phase | QTS - DASH | QTS - Subcontractor | QTS - Resp | 12 - SUFFOLK - Export_to_Procore |
| --- | --- | --- | --- | --- | --- | --- | --- | --- | --- | --- | --- | --- | --- | --- | --- | --- | --- | --- | --- | --- |
|  | 15 | **PDU Gallery** |  |  | 2026-09-28 | 2026-12-01 |  |  |  |  |  |  |  |  |  |  |  |  |  |  |
| DH.14000.1040 |  | DH1400/PDU Gallery // PDU Gallery Frame walls |  | 5d | 2026-09-28 A | 2026-10-14 | DH.14006270 | 100% | 0d | 2026-10-09 | 2026-10-16 | 38d | 3d | 1401 | DH1400 | 2 | GR |  |  |  |
| DH.14000.1010 |  | DH1400/PDU Gallery // PDU Gallery MEPF overhead layout |  | 5d | 2026-10-05 A | 2026-10-20 | DH.14006270 |  | 5d | 2026-10-02 | 2026-10-08 | 18d | 0d | 1398 | DH1400 | 2 | GR | HELIX | ACOO |  |
| DH.14000.1711 |  | DH1400/PDU Gallery // PDU Gallery MEP rough in walls |  | 3d | 2026-10-05 A | 2026-10-16 | DH.14000.1040 FF |  | 3d | 2026-10-19 | 2026-10-21 | 35d | 17d | 1403 | DH1400 | 2 | GR | HELIX | AC |  |
| DH.14000.1000 |  | DH1400/PDU Gallery // PDU Gallery Seal concrete |  | 2d | 2026-10-14 | 2026-10-15 | SOG.1460 FF, SOG.1460 |  |  |  |  | -7d | 0d | 1397 | DH1400 | 2 | GR |  |  | Y |
| B120001.3167 |  | DH1400/PDU Gallery // Install Overhead Cable Ladder / 36" Cable Tray - TFO |  | 5d | 2026-10-21 | 2026-10-27 | DH.14000.1010 |  |  |  |  | 18d | 0d | 1181 | DH1400 |  | GR |  |  |  |
| B120001.3168 |  | DH1400/PDU Gallery // Install Overhead HAC - TFO |  | 5d | 2026-10-28 | 2026-11-03 | B120001.3167 |  |  |  |  | 18d | 0d | 1181 | DH1400 |  | GR |  |  |  |
| DH.14000.1030 |  | DH1400/PDU Gallery // PDU Gallery MEPF high overhead install |  | 3d | 2026-11-04 | 2026-11-06 | B120001.3168, DH.14000.1010 |  |  |  |  | 18d | 0d | 1400 | DH1400 | 2 | GR | HELIX | ACOO |  |
| DH.14000.1110 |  | DH1400/PDU Gallery // Install Cable Tray (From Elec Rm 5401 to CRAHU Gallery) |  | 2d | 2026-11-09 | 2026-11-10 | DH.14000.1030 |  |  |  |  | 18d | 0d | 1408 | DH1400 |  | GR | HELIX | OO |  |
| DH.14000.1070 |  | DH1400/PDU Gallery // PDU Gallery In wall inspection |  | 1d | 2026-11-12 | 2026-11-12 | DH.14000.1110, DH.14000.1711 |  |  |  |  | 18d | 0d | 1404 | DH1400 | 2 | GR |  |  |  |
| DH.14000.1060 |  | DH1400/PDU Gallery // PDU Gallery Install Sheetrock Top Down |  | 3d | 2026-11-13 | 2026-11-17 | DH.14000.1070, DH.14000.1030, DH.14000.1040 SS |  |  |  |  | 18d | 0d | 1403 | DH1400 | 2 | GR |  |  |  |
| DH.14000.1080 |  | DH1400/PDU Gallery // PDU Gallery Install sheetrock on walls (Balance) |  | 5d | 2026-11-18 | 2026-11-24 | DH.14000.1060, DH.14000.1070 |  |  |  |  | 18d | 0d | 1405 | DH1400 | 2 | GR |  |  |  |
| DH.14000.1090 |  | DH1400/PDU Gallery // PDU Gallery Tape and finish walls |  | 1d | 2026-11-25 | 2026-11-25 | DH.14000.1080 |  |  |  |  | 18d | 0d | 1406 | DH1400 | 2 | GR |  |  |  |
| DH.14000.1050 |  | DH1400/PDU Gallery // PDU Gallery Install wall door frames |  | 1d | 2026-11-27 | 2026-11-27 | DH.14000.1090, DH.14000.1040 |  |  |  |  | 18d | 0d | 1402 | DH1400 | 2 | GR |  |  |  |
| DH.14000.1100 |  | DH1400/PDU Gallery // PDU Gallery Paint walls |  | 2d | 2026-11-30 | 2026-12-01 | DH.14000.1050, DH.14000.1090 |  |  |  |  | 18d | 0d | 1407 | DH1400 | 2 | GR |  |  |  |
| DH.14000.1712 |  | DH1400/PDU Gallery // PDU Gallery Ready to Receive Equipment | milestone | 0d | 2026-12-01 | 2026-12-01 | DH.14000.1100 FF |  |  |  |  | 18d | 29d | 1407 | DH1400 | 2 | GR | HELIX | TBD |  |
|  | 14 | **CRAH/CDU Galleries** |  |  | 2026-09-28 | 2027-01-13 |  |  |  |  |  |  |  |  |  |  |  |  |  |  |
|  | 2 | **Gallery 1402** |  |  | 2026-09-28 | 2027-01-06 |  |  |  |  |  |  |  |  |  |  |  |  |  |  |
|  | 4 | **Architectural** |  |  | 2026-09-28 | 2026-12-15 |  |  |  |  |  |  |  |  |  |  |  |  |  |  |
| DH.1400670 |  | DH 1400/Gallery 1402 // MEPF overhead layout |  | 5d | 2026-09-28 A | 2026-10-02 A | DH.1400700 SS | 100% |  | 2026-09-30 | 2026-10-06 |  |  | 1412 | DH1400 | 2 | GR | HELIX | ACOO | Y |
| DH.1400700 |  | DH 1400/Gallery 1402 // Frame walls |  | 6d | 2026-09-28 A | 2026-10-15 | DH.1300030 FF | 67% | 2d | 2026-08-21 | 2026-08-28 | -10.12d | 0d | 1415 | DH1400 | 2 | GR |  |  |  |
| F.1000A.1515 |  | DH 1400/Gallery 1402 // BMS & EPMS Rough-In |  | 2d | 2026-10-01 A | 2026-10-02 A | DH.1400700 SS | 100% |  | 2026-11-02 | 2026-11-03 |  |  |  |  |  |  |  |  |  |
| DH.1400690 |  | DH 1400/Gallery 1402 // MEPF high overhead install |  | 10d | 2026-10-05 A | 2026-10-27 | B120001.3170 FF, DH.1400670 |  | 10d | 2026-10-15 | 2026-10-28 | -5d | 0d | 1414 | DH1400 | 2 | GR | HELIX | ACOO |  |
| DH.1400730 |  | DH 1400/Gallery 1402 // MEP rough in walls |  | 4d | 2026-10-05 A | 2026-10-19 | DH.1400700 FF+2d |  | 4d | 2026-10-08 | 2026-10-14 | -6d | 0d | 1417 | DH1400 | 2 | GR | HELIX | AC |  |
| B120001.3169 |  | DH 1400/Gallery 1402 // Install Overhead Cable Ladder / 36" Cable Tray - TFO |  | 5d | 2026-10-14 | 2026-10-20 | DH.1400670 |  |  |  |  | 0d |  | 1181 |  |  | GR |  |  |  |
| B120001.3170 |  | DH 1400/Gallery 1402 // Install Overhead HAC - TFO |  | 5d | 2026-10-14 | 2026-10-20 | B120001.3169 FF |  |  |  |  | 0d | 5d | 1181 |  |  | GR |  |  |  |
| DH.1400660 |  | DH 1400/Gallery 1402 // Seal concrete |  | 2d | 2026-10-16 | 2026-10-19 | DH.14000.1000 |  |  |  |  | -7d | 0d | 1379 | DH1400 | 2 | GR |  |  | Y |
| DH.1400740 |  | DH 1400/Gallery 1402 // In wall inspection |  | 1d | 2026-10-20 | 2026-10-20 | DH.1400730 |  |  |  |  | -6d | 0d | 1418 | DH1400 | 2 | GR |  |  |  |
| DH.1400720 |  | DH 1400/Gallery 1402 // Install Sheetrock Top Down |  | 6d | 2026-10-21 | 2026-10-28 | DH.1400740, DH.1400700 SS+3d |  |  |  |  | -6d | 0d | 1420 | DH1400 |  | GR |  |  |  |
| F.1000A.1286 |  | DH 1400/Gallery 1402 // Rough-In Security |  | 2d | 2026-10-28 | 2026-10-29 | DH.1400690 |  |  |  |  | 64d | 0d | 1156 | DH1400 |  | GR | HELIX | AC |  |
| DH.1400750 |  | DH 1400/Gallery 1402 // Install Balance of Sheetrock on walls |  | 6d | 2026-10-29 | 2026-11-05 | DH.1400720, DH.1400690 |  |  |  |  | -6d | 0d | 1419 | DH1400 | 2 | GR |  |  |  |
| F.1000A.1287 |  | DH 1400/Gallery 1402 // Pull & Test Security Cable |  | 3d | 2026-10-30 | 2026-11-03 | F.1000A.1286 |  |  |  |  | 64d | 11d | 1156 | DH1400 |  | GR |  |  |  |
| DH.1400770 |  | DH 1400/Gallery 1402 // Tape and finish walls |  | 8d | 2026-11-06 | 2026-11-18 | DH.1400750 |  |  |  |  | -6d | 0d | 1421 | DH1400 | 2 | GR |  |  |  |
| DH.1400710 |  | DH 1400/Gallery 1402 // Install wall door frames |  | 1d | 2026-11-19 | 2026-11-19 | DH.1400700 FF, DH.1400770, DH.1400740 |  |  |  |  | 53d | 0d | 1416 | DH1400 | 2 | GR |  |  |  |
| DH.1400790 |  | DH 1400/Gallery 1402 // Prime and Paint walls |  | 4d | 2026-11-19 | 2026-11-24 | DH.1400770 |  |  |  |  | -6d | 0d | 1422 | DH1400 | 2 | GR |  |  |  |
| F.1000A.1288 |  | DH 1400/Gallery 1402 // Install Security Devices |  | 2d | 2026-11-20 | 2026-11-23 | DH.1400710, F.1000A.1287 |  |  |  |  | 53d | 1d | 1156 | DH1400 |  | GR |  |  |  |
| DH.160012151 |  | DH 1400/Gallery 1402 // Ready to Receive Equipment | milestone | 0d | 2026-11-24 | 2026-11-24 | DH.1400790 FF |  |  |  |  | -6d | 0d | 1424 | DH1400 |  | GR | HELIX | TBD |  |
| DH.1400800 |  | DH 1400/Gallery 1402 // Touch up Walls and Fianl Paint |  | 5d | 2026-11-25 | 2026-12-02 | DH.1400790, DH.1400710 |  |  |  |  | 50d | 0d | 1423 | DH1400 | 2 | GR |  |  |  |
| F.1000A.1289 |  | DH 1400/Gallery 1402 // Mount & Terminate Security Devices |  | 5d | 2026-11-25 | 2026-12-02 | DH.1400790, F.1000A.1288 |  |  |  |  | 52d | 2d | 1156 | DH1400 |  | GR |  |  |  |
| DH.1400810 |  | DH 1400/Gallery 1402 // Install Trim and Devices |  | 2d | 2026-12-03 | 2026-12-04 | DH.1400800 |  |  |  |  | 50d | 0d | 1424 | DH1400 |  | GR | HELIX | AC |  |
| F.1000A.1290 |  | DH 1400/Gallery 1402 // Test Security Devices |  | 2d | 2026-12-07 | 2026-12-08 | DH.1400810, F.1000A.1289, F.1000A.1515 |  |  |  |  | 50d | 0d | 1156 | DH1400 |  | GR |  |  |  |
| DH.1400820 |  | DH 1400/Gallery 1402 // Suffolk Pre Punch |  | 5d | 2026-12-09 | 2026-12-15 | F.1000A.1290, DH.160012151 |  |  |  |  | 50d | 61d | 1425 | DH1400 |  | GR |  |  |  |

| ID | WBS | Activity | Duration | Start | Finish | Predecessors | Total float | Free float | MSP Activity ID | QTS - AREA | QTS - DASH | QTS - Subcontractor | QTS - Resp |
| --- | --- | --- | --- | --- | --- | --- | --- | --- | --- | --- | --- | --- | --- |
|  | 16 | **Raceway** |  |  |  |  |  |  |  |  |  |  |  |
|  | 3 | **Equipment Line-Ups** |  | 2026-11-25 | 2027-01-06 |  |  |  |  |  |  |  |  |
|  | 1 | **A140** |  | 2026-11-25 | 2027-01-04 |  |  |  |  |  |  |  |  |
| DH.1400A-EQP-1 |  | Gallery 1402 - A140/Line-Ups // Set CRAH-DH1400- 01 | 1d | 2026-11-25 | 2026-11-25 | DH.160012151, DH.14006360 | -6d | 0d | 1433 | DH1400 | GR |  |  |
| DH.1400A-EQP-3 |  | Gallery 1402 - A140/Line-Ups // Set CRAH-DH1400- 02 | 1d | 2026-11-25 | 2026-11-25 | DH.1400A-EQP-1 SS | -6d | 0d | 1434 | DH1400 | GR |  |  |
| DH.1400A-EQP-5 |  | Gallery 1402 - A140/Line-Ups // Set MOD-A140-01 | 1d | 2026-11-25 | 2026-11-25 | DH.1400A-EQP-3 FF | 43d | 0d | 1437 | DH1400 | GR | HELIX | TBD |
| DH.1400A-EQP-6 |  | Gallery 1402 - A140/Line-Ups // Set MOD-A140-02 | 1d | 2026-11-25 | 2026-11-25 | DH.1400A-EQP-5 SS | 43d | 0d | 1437 | DH1400 | GR | HELIX | TBD |
| DH.1400A-EQP-10 |  | Gallery 1402 - A140/Line-Ups // Pull Cable Tray Feed from MOD to CRAHU's | 5d | 2026-11-27 | 2026-12-03 | DH.14000.1110, DH.1400A-EQP-6 | 49d | 0d | 1438 | DH1400 | GR | HELIX | OO |
| DH.1400A-EQP-12 |  | Gallery 1402 - A140/Line-Ups // Mount Electrial Gear for Chiller Controls | 10d | 2026-11-27 | 2026-12-10 | DH.1400A-EQP-6 | 43d | 0d | 1443 | DH1400 | GR | HELIX | AC |
| DH.1400A-EQP-7 |  | Gallery 1402 - A140/Line-Ups // Set CDU-DH1400- 01 | 1d | 2026-11-27 | 2026-11-27 | DH.1400A-EQP-1 | 43d | 0d | 1434 | DH1400 | GR |  |  |
| DH.1400A-EQP-9 |  | Gallery 1402 - A140/Line-Ups // Pull Feeder from SWD to MOD | 1d | 2026-11-27 | 2026-11-27 | DH.1400A-EQP-6 | 59d | 9d | 1439 | DH1400 | GR | HELIX | OO |
| DH.1400A-EQP-8 |  | Gallery 1402 - A140/Line-Ups // Set CDU-DH1400- 02 | 1d | 2026-11-30 | 2026-11-30 | DH.1400A-EQP-7, DH.1400A-EQP-3 | 43d | 0d | 1434 | DH1400 | GR |  |  |
| DH.1400A-EQP-4 |  | Gallery 1402 - A140/Line-Ups // Condensate connections to Floor Drains | 10d | 2026-12-01 | 2026-12-14 | DH.1400A-EQP-3, DH.1400A-EQP-7, DH.1400A-EQP-8 | 43d | 5d | 1436 | DH1400 | GR |  |  |
| DH.1400A-EQP-11 |  | Gallery 1402 - A140/Line-Ups // Mechanical Connections to CRAHU Units | 10d | 2026-12-03 | 2026-12-16 | DH.1400A-EQP-3 SS+5d | 41d | 3d | 1448 | DH1400 | GR |  |  |
| DH.1400A-EQP-17 |  | Gallery 1402 - A140/Line-Ups // Pull Feeder and Branch circuits to MIsc equipment and Chiller controls | 10d | 2026-12-03 | 2026-12-16 | DH.1400A-EQP-12 SS+4d | 43d | 0d | 1444 | DH1400 | GR | HELIX | AC |
| DH.1400A-EQP-13 |  | Gallery 1402 - A140/Line-Ups // Pull Cable Tray Feed from MOD to CRAHU's | 5d | 2026-12-04 | 2026-12-10 | DH.1400A-EQP-10 | 49d | 0d | 1441 | DH1400 | GR | HELIX | OO |
| DH.1400A-EQP-16 |  | Gallery 1402 - A140/Line-Ups // Terminate CRAHU Electrical Connections | 5d | 2026-12-08 | 2026-12-14 | DH.1400A-EQP-13 SS+2d, DH.1400A-EQP-10 | 49d | 6d | 1442 | DH1400 | GR | HELIX | OO |
| DH.1400A-EQP-19 |  | Gallery 1402 - A140/Line-Ups // Teminate all Misc Equipment and Chiller Controls | 10d | 2026-12-09 | 2026-12-22 | DH.1400A-EQP-17 SS+4d | 43d | 0d | 1445 | DH1400 | GR |  |  |
| DH.1400A-EQP-15 |  | Gallery 1402 - A140/Line-Ups // Terminate Mod Panels | 1d | 2026-12-11 | 2026-12-11 | DH.1400A-EQP-13, DH.1400A-EQP-10, DH.1400A-EQP-9 | 50d | 7d | 1440 | DH1400 | GR | HELIX | OO |
| DH.1400A-EQP-14 |  | Gallery 1402 - A140/Line-Ups // Condensate connections to Floor Drains | 10d | 2026-12-15 | 2026-12-29 | DH.14007841, DH.140012025, DH.1400A-EQP-11 SS+5d, DH.1400A-EQP-4 SS+5d | 38d | 0d | 1449 | DH1400 | GR |  |  |
| DH.1400A-EQP-20 |  | Gallery 1402 - A140/Line-Ups // Electrical Gear FOD Inspection Pre-Start Up | 2d | 2026-12-23 | 2026-12-24 | DH.1400A-EQP-16, DH.1400A-EQP-19, DH.1400A-EQP-15 | 43d | 54d | 1446 | DH1400 | GR | HELIX | QC |
| DH.1400A-EQP-18 |  | Gallery 1402 - A140/Line-Ups // Mechanical Gear FOD Inspection Pre-Start Up | 3d | 2026-12-30 | 2027-01-04 | DH.1400A-EQP-3, DH.1400A-EQP-14, DH.1400A-EQP-4, DH.1400A-EQP-11 | 38d | 49d | 1447 | DH1400 | GR |  |  |
|  | 2 | **B140** |  | 2026-11-25 | 2027-01-05 |  |  |  |  |  |  |  |  |
| DH.1400A-EQP-21 |  | Gallery 1402 - B140/Line-Ups // Set CRAH-DH1400- 03 | 1d | 2026-11-25 | 2026-11-25 | DH.1400A-EQP-3 SS | -6d | 0d | 1433 | DH1400 | GR |  |  |
| DH.1400A-EQP-23 |  | Gallery 1402 - B140/Line-Ups // Set CRAH-DH1400- 04 | 1d | 2026-11-25 | 2026-11-25 | DH.1400A-EQP-21 SS | -6d | 0d | 1434 | DH1400 | GR |  |  |
| DH.1400A-EQP-25 |  | Gallery 1402 - B140/Line-Ups // Set MOD-B140-01 | 1d | 2026-11-25 | 2026-11-25 | DH.1400A-EQP-23 FF | 43d | 0d | 1437 | DH1400 | GR | HELIX | TBD |
| DH.1400A-EQP-26 |  | Gallery 1402 - B140/Line-Ups // Set MOD-B140-02 | 1d | 2026-11-25 | 2026-11-25 | DH.1400A-EQP-25 SS | 43d | 0d | 1437 | DH1400 | GR | HELIX | TBD |
| DH.1400A-EQP-27 |  | Gallery 1402 - B140/Line-Ups // Set CDU-DH1400- 03 | 1d | 2026-11-27 | 2026-11-27 | DH.1400A-EQP-21 | 43d | 0d | 1434 | DH1400 | GR |  |  |
| DH.1400A-EQP-29 |  | Gallery 1402 - B140/Line-Ups // Pull Feeder from SWD to MOD | 1d | 2026-11-27 | 2026-11-27 | DH.1400A-EQP-26 | 59d | 9d | 1439 | DH1400 | GR | HELIX | OO |
| DH.1400A-EQP-30 |  | Gallery 1402 - B140/Line-Ups // Pull Cable Tray Feed from MOD to CRAHU's | 5d | 2026-11-27 | 2026-12-03 | DH.1400A-EQP-26 | 49d | 0d | 1438 | DH1400 | GR | HELIX | OO |
| DH.1400A-EQP-32 |  | Gallery 1402 - B140/Line-Ups // Mount Electrial Gear for Chiller Controls | 10d | 2026-11-27 | 2026-12-10 | DH.1400A-EQP-26 | 43d | 0d | 1443 | DH1400 | GR | HELIX | AC |
| DH.1400A-EQP-28 |  | Gallery 1402 - B140/Line-Ups // Set CDU-DH1400- 04 | 1d | 2026-11-30 | 2026-11-30 | DH.1400A-EQP-27, DH.1400A-EQP-23 | 43d | 0d | 1434 | DH1400 | GR |  |  |
| DH.1400A-EQP-24 |  | Gallery 1402 - B140/Line-Ups // Condensate connections to Floor Drains | 10d | 2026-12-01 | 2026-12-14 | DH.1400A-EQP-23, DH.1400A-EQP-27, DH.1400A-EQP-28 | 43d | 6d | 1436 | DH1400 | GR |  |  |
| DH.1400A-EQP-31 |  | Gallery 1402 - B140/Line-Ups // Mechanical Connections to CRAHU Units | 10d | 2026-12-03 | 2026-12-16 | DH.1400A-EQP-23 SS+5d | 41d | 4d | 1448 | DH1400 | GR |  |  |
| DH.1400A-EQP-37 |  | Gallery 1402 - B140/Line-Ups // Pull Feeder and Branch circuits to MIsc equipment and Chiller controls | 10d | 2026-12-03 | 2026-12-16 | DH.1400A-EQP-32 SS+4d | 43d | 0d | 1444 | DH1400 | GR | HELIX | AC |
| DH.1400A-EQP-33 |  | Gallery 1402 - B140/Line-Ups // Pull Cable Tray Feed from MOD to CRAHU's | 5d | 2026-12-04 | 2026-12-10 | DH.1400A-EQP-30 | 49d | 0d | 1441 | DH1400 | GR | HELIX | OO |
| DH.1400A-EQP-36 |  | Gallery 1402 - B140/Line-Ups // Terminate CRAHU Electrical Connections | 5d | 2026-12-08 | 2026-12-14 | DH.1400A-EQP-33 SS+2d, DH.1400A-EQP-30 | 49d | 6d | 1442 | DH1400 | GR | HELIX | OO |
| DH.1400A-EQP-39 |  | Gallery 1402 - B140/Line-Ups // Teminate all Misc Equipment and Chiller Controls | 10d | 2026-12-09 | 2026-12-22 | DH.1400A-EQP-37 SS+4d | 43d | 0d | 1445 | DH1400 | GR |  |  |
| DH.1400A-EQP-35 |  | Gallery 1402 - B140/Line-Ups // Terminate Mod Panels | 1d | 2026-12-11 | 2026-12-11 | DH.1400A-EQP-33, DH.1400A-EQP-30, DH.1400A-EQP-29 | 50d | 7d | 1440 | DH1400 | GR | HELIX | OO |
| DH.1400A-EQP-34 |  | Gallery 1402 - B140/Line-Ups // Condensate connections to Floor Drains | 10d | 2026-12-16 | 2026-12-30 | DH.140012028, DH.1400A-EQP-31 SS+5d, DH.1400A-EQP-24 SS+5d | 37d | 0d | 1449 | DH1400 | GR |  |  |
| DH.1400A-EQP-40 |  | Gallery 1402 - B140/Line-Ups // Electrical Gear FOD Inspection Pre-Start Up | 2d | 2026-12-23 | 2026-12-24 | DH.1400A-EQP-36, DH.1400A-EQP-39, DH.1400A-EQP-35 | 43d | 54d | 1446 | DH1400 | GR | HELIX | QC |
| DH.1400A-EQP-38 |  | Gallery 1402 - B140/Line-Ups // Mechanical Gear FOD Inspection Pre-Start Up | 3d | 2026-12-31 | 2027-01-05 | DH.1400A-EQP-23, DH.1400A-EQP-34, DH.1400A-EQP-24, DH.1400A-EQP-31 | 37d | 48d | 1447 | DH1400 | GR |  |  |

| ID | WBS | Activity | Duration | Start | Finish | Predecessors | Total float | Free float | MSP Activity ID | QTS - AREA | QTS - DASH | QTS - Subcontractor | QTS - Resp |
| --- | --- | --- | --- | --- | --- | --- | --- | --- | --- | --- | --- | --- | --- |
|  | 3 | **C140** |  | 2026-11-25 | 2027-01-05 |  |  |  |  |  |  |  |  |
| DH.1400A-EQP-41 |  | Gallery 1402 - C140/Line-Ups // Set CRAH-DH1400- 05 | 1d | 2026-11-25 | 2026-11-25 | DH.1400A-EQP-23 SS | -6d | 0d | 1433 | DH1400 | GR |  |  |
| DH.1400A-EQP-43 |  | Gallery 1402 - C140/Line-Ups // Set CRAH-DH1400- 06 | 1d | 2026-11-25 | 2026-11-25 | DH.1400A-EQP-41 SS | -6d | 0d | 1434 | DH1400 | GR |  |  |
| DH.1400A-EQP-45 |  | Gallery 1402 - C140/Line-Ups // Set MOD-C140-01 | 1d | 2026-11-25 | 2026-11-25 | DH.1400A-EQP-43 FF | 43d | 0d | 1437 | DH1400 | GR | HELIX | TBD |
| DH.1400A-EQP-46 |  | Gallery 1402 - C140/Line-Ups // Set MOD-C140-02 | 1d | 2026-11-25 | 2026-11-25 | DH.1400A-EQP-45 SS | 43d | 0d | 1437 | DH1400 | GR | HELIX | TBD |
| DH.1400A-EQP-47 |  | Gallery 1402 - C140/Line-Ups // Set CDU-DH1400- 05 | 1d | 2026-11-27 | 2026-11-27 | DH.1400A-EQP-41 | 43d | 0d | 1434 | DH1400 | GR |  |  |
| DH.1400A-EQP-49 |  | Gallery 1402 - C140/Line-Ups // Pull Feeder from SWD to MOD | 1d | 2026-11-27 | 2026-11-27 | DH.1400A-EQP-46 | 59d | 9d | 1439 | DH1400 | GR | HELIX | OO |
| DH.1400A-EQP-50 |  | Gallery 1402 - C140/Line-Ups // Pull Cable Tray Feed from MOD to CRAHU's | 5d | 2026-11-27 | 2026-12-03 | DH.1400A-EQP-46 | 49d | 0d | 1438 | DH1400 | GR | HELIX | OO |
| DH.1400A-EQP-52 |  | Gallery 1402 - C140/Line-Ups // Mount Electrial Gear for Chiller Controls | 10d | 2026-11-27 | 2026-12-10 | DH.1400A-EQP-46 | 43d | 0d | 1443 | DH1400 | GR | HELIX | AC |
| DH.1400A-EQP-48 |  | Gallery 1402 - C140/Line-Ups // Set CDU-DH1400- 06 | 1d | 2026-11-30 | 2026-11-30 | DH.1400A-EQP-47, DH.1400A-EQP-43 | 43d | 0d | 1434 | DH1400 | GR |  |  |
| DH.1400A-EQP-44 |  | Gallery 1402 - C140/Line-Ups // Condensate connections to Floor Drains | 10d | 2026-12-01 | 2026-12-14 | DH.1400A-EQP-43, DH.1400A-EQP-47, DH.1400A-EQP-48 | 43d | 6d | 1436 | DH1400 | GR |  |  |
| DH.1400A-EQP-51 |  | Gallery 1402 - C140/Line-Ups // Mechanical Connections to CRAHU Units | 10d | 2026-12-03 | 2026-12-16 | DH.1400A-EQP-43 SS+5d | 41d | 4d | 1448 | DH1400 | GR |  |  |
| DH.1400A-EQP-57 |  | Gallery 1402 - C140/Line-Ups // Pull Feeder and Branch circuits to MIsc equipment and Chiller controls | 10d | 2026-12-03 | 2026-12-16 | DH.1400A-EQP-52 SS+4d | 43d | 0d | 1444 | DH1400 | GR | HELIX | AC |
| DH.1400A-EQP-53 |  | Gallery 1402 - C140/Line-Ups // Pull Cable Tray Feed from MOD to CRAHU's | 5d | 2026-12-04 | 2026-12-10 | DH.1400A-EQP-50 | 49d | 0d | 1441 | DH1400 | GR | HELIX | OO |
| DH.1400A-EQP-56 |  | Gallery 1402 - C140/Line-Ups // Terminate CRAHU Electrical Connections | 5d | 2026-12-08 | 2026-12-14 | DH.1400A-EQP-53 SS+2d, DH.1400A-EQP-50 | 49d | 6d | 1442 | DH1400 | GR | HELIX | OO |
| DH.1400A-EQP-59 |  | Gallery 1402 - C140/Line-Ups // Teminate all Misc Equipment and Chiller Controls | 10d | 2026-12-09 | 2026-12-22 | DH.1400A-EQP-57 SS+4d | 43d | 0d | 1445 | DH1400 | GR |  |  |
| DH.1400A-EQP-55 |  | Gallery 1402 - C140/Line-Ups // Terminate Mod Panels | 1d | 2026-12-11 | 2026-12-11 | DH.1400A-EQP-53, DH.1400A-EQP-50, DH.1400A-EQP-49 | 50d | 7d | 1440 | DH1400 | GR | HELIX | OO |
| DH.1400A-EQP-54 |  | Gallery 1402 - C140/Line-Ups // Condensate connections to Floor Drains | 10d | 2026-12-16 | 2026-12-30 | DH.140012031, DH.1400A-EQP-51 SS+5d, DH.1400A-EQP-44 SS+5d | 37d | 0d | 1449 | DH1400 | GR |  |  |
| DH.1400A-EQP-60 |  | Gallery 1402 - C140/Line-Ups // Electrical Gear FOD Inspection Pre-Start Up | 2d | 2026-12-23 | 2026-12-24 | DH.1400A-EQP-56, DH.1400A-EQP-59, DH.1400A-EQP-55 | 43d | 54d | 1446 | DH1400 | GR | HELIX | QC |
| DH.1400A-EQP-58 |  | Gallery 1402 - C140/Line-Ups // Mechanical Gear FOD Inspection Pre-Start Up | 3d | 2026-12-31 | 2027-01-05 | DH.1400A-EQP-43, DH.1400A-EQP-54, DH.1400A-EQP-44, DH.1400A-EQP-51 | 37d | 48d | 1447 | DH1400 | GR |  |  |
|  | 4 | **D140** |  | 2026-11-27 | 2027-01-05 |  |  |  |  |  |  |  |  |
| DH.1400A-EQP-61 |  | Gallery 1402 - D140/Line-Ups // Set CRAH-DH1400- 07 | 1d | 2026-11-27 | 2026-11-27 | DH.1400A-EQP-43 | -6d | 0d | 1433 | DH1400 | GR |  |  |
| DH.1400A-EQP-63 |  | Gallery 1402 - D140/Line-Ups // Set CRAH-DH1400- 08 | 1d | 2026-11-27 | 2026-11-27 | DH.1400A-EQP-61 SS | -6d | 0d | 1434 | DH1400 | GR |  |  |
| DH.1400A-EQP-65 |  | Gallery 1402 - D140/Line-Ups // Set MOD-D140-01 | 1d | 2026-11-27 | 2026-11-27 | DH.1400A-EQP-63 FF | 42d | 0d | 1437 | DH1400 | GR | HELIX | TBD |
| DH.1400A-EQP-66 |  | Gallery 1402 - D140/Line-Ups // Set MOD-D140-02 | 1d | 2026-11-27 | 2026-11-27 | DH.1400A-EQP-65 SS | 42d | 0d | 1437 | DH1400 | GR | HELIX | TBD |
| DH.1400A-EQP-67 |  | Gallery 1402 - D140/Line-Ups // Set CDU-DH1400- 07 | 1d | 2026-11-30 | 2026-11-30 | DH.1400A-EQP-61 | 42d | 0d | 1434 | DH1400 | GR |  |  |
| DH.1400A-EQP-69 |  | Gallery 1402 - D140/Line-Ups // Pull Feeder from SWD to MOD | 1d | 2026-11-30 | 2026-11-30 | DH.1400A-EQP-66 | 58d | 9d | 1439 | DH1400 | GR | HELIX | OO |
| DH.1400A-EQP-70 |  | Gallery 1402 - D140/Line-Ups // Pull Cable Tray Feed from MOD to CRAHU's | 5d | 2026-11-30 | 2026-12-04 | DH.1400A-EQP-66 | 48d | 0d | 1438 | DH1400 | GR | HELIX | OO |
| DH.1400A-EQP-72 |  | Gallery 1402 - D140/Line-Ups // Mount Electrial Gear for Chiller Controls | 10d | 2026-11-30 | 2026-12-11 | DH.1400A-EQP-66 | 42d | 0d | 1443 | DH1400 | GR | HELIX | AC |
| DH.1400A-EQP-68 |  | Gallery 1402 - D140/Line-Ups // Set CDU-DH1400- 08 | 1d | 2026-12-01 | 2026-12-01 | DH.1400A-EQP-67, DH.1400A-EQP-63 | 42d | 0d | 1434 | DH1400 | GR |  |  |
| DH.1400A-EQP-64 |  | Gallery 1402 - D140/Line-Ups // Condensate connections to Floor Drains | 10d | 2026-12-02 | 2026-12-15 | DH.1400A-EQP-63, DH.1400A-EQP-67, DH.1400A-EQP-68 | 42d | 5d | 1436 | DH1400 | GR |  |  |
| DH.1400A-EQP-71 |  | Gallery 1402 - D140/Line-Ups // Mechanical Connections to CRAHU Units | 10d | 2026-12-04 | 2026-12-17 | DH.1400A-EQP-63 SS+5d | 40d | 3d | 1448 | DH1400 | GR |  |  |
| DH.1400A-EQP-77 |  | Gallery 1402 - D140/Line-Ups // Pull Feeder and Branch circuits to MIsc equipment and Chiller controls | 10d | 2026-12-04 | 2026-12-17 | DH.1400A-EQP-72 SS+4d | 42d | 0d | 1444 | DH1400 | GR | HELIX | AC |
| DH.1400A-EQP-73 |  | Gallery 1402 - D140/Line-Ups // Pull Cable Tray Feed from MOD to CRAHU's | 5d | 2026-12-07 | 2026-12-11 | DH.1400A-EQP-70 | 48d | 0d | 1441 | DH1400 | GR | HELIX | OO |
| DH.1400A-EQP-76 |  | Gallery 1402 - D140/Line-Ups // Terminate CRAHU Electrical Connections | 5d | 2026-12-09 | 2026-12-15 | DH.1400A-EQP-73 SS+2d, DH.1400A-EQP-70 | 48d | 6d | 1442 | DH1400 | GR | HELIX | OO |
| DH.1400A-EQP-79 |  | Gallery 1402 - D140/Line-Ups // Teminate all Misc Equipment and Chiller Controls | 10d | 2026-12-10 | 2026-12-23 | DH.1400A-EQP-77 SS+4d | 42d | 0d | 1445 | DH1400 | GR |  |  |
| DH.1400A-EQP-75 |  | Gallery 1402 - D140/Line-Ups // Terminate Mod Panels | 1d | 2026-12-14 | 2026-12-14 | DH.1400A-EQP-73, DH.1400A-EQP-70, DH.1400A-EQP-69 | 49d | 7d | 1440 | DH1400 | GR | HELIX | OO |
| DH.1400A-EQP-74 |  | Gallery 1402 - D140/Line-Ups // Condensate connections to Floor Drains | 10d | 2026-12-16 | 2026-12-30 | DH.140012034, DH.1400A-EQP-71 SS+5d, DH.1400A-EQP-64 SS+5d | 37d | 0d | 1449 | DH1400 | GR |  |  |
| DH.1400A-EQP-80 |  | Gallery 1402 - D140/Line-Ups // Electrical Gear FOD Inspection Pre-Start Up | 2d | 2026-12-24 | 2026-12-28 | DH.1400A-EQP-76, DH.1400A-EQP-79, DH.1400A-EQP-75 | 42d | 53d | 1446 | DH1400 | GR | HELIX | QC |
| DH.1400A-EQP-78 |  | Gallery 1402 - D140/Line-Ups // Mechanical Gear FOD Inspection Pre-Start Up | 3d | 2026-12-31 | 2027-01-05 | DH.1400A-EQP-63, DH.1400A-EQP-74, DH.1400A-EQP-64, DH.1400A-EQP-71 | 37d | 48d | 1447 | DH1400 | GR |  |  |

| ID | WBS | Activity | Duration | Start | Finish | Predecessors | Total float | Free float | MSP Activity ID | QTS - AREA | QTS - DASH | QTS - Subcontractor | QTS - Resp |
| --- | --- | --- | --- | --- | --- | --- | --- | --- | --- | --- | --- | --- | --- |
|  | 5 | **E140** |  | 2026-11-27 | 2027-01-05 |  |  |  |  |  |  |  |  |
| DH.1400A-EQP-81 |  | Gallery 1402 - D140/Line-Ups // Set CRAH-DH1400- 09 | 1d | 2026-11-27 | 2026-11-27 | DH.1400A-EQP-63 SS | -6d | 0d | 1433 | DH1400 | GR |  |  |
| DH.1400A-EQP-83 |  | Gallery 1402 - D140/Line-Ups // Set CRAH-DH1400- 10 | 1d | 2026-11-27 | 2026-11-27 | DH.1400A-EQP-81 SS | -6d | 0d | 1434 | DH1400 | GR |  |  |
| DH.1400A-EQP-85 |  | Gallery 1402 - D140/Line-Ups // Set MOD-E140-01 | 1d | 2026-11-27 | 2026-11-27 | DH.1400A-EQP-83 FF | 42d | 0d | 1437 | DH1400 | GR | HELIX | TBD |
| DH.1400A-EQP-86 |  | Gallery 1402 - D140/Line-Ups // Set MOD-E140-02 | 1d | 2026-11-27 | 2026-11-27 | DH.1400A-EQP-85 SS | 42d | 0d | 1437 | DH1400 | GR | HELIX | TBD |
| DH.1400A-EQP-87 |  | Gallery 1402 - D140/Line-Ups // Set CDU-DH1400- 09 | 1d | 2026-11-30 | 2026-11-30 | DH.1400A-EQP-81 | 42d | 0d | 1434 | DH1400 | GR |  |  |
| DH.1400A-EQP-89 |  | Gallery 1402 - D140/Line-Ups // Pull Feeder from SWD to MOD | 1d | 2026-11-30 | 2026-11-30 | DH.1400A-EQP-86 | 58d | 9d | 1439 | DH1400 | GR | HELIX | OO |
| DH.1400A-EQP-90 |  | Gallery 1402 - D140/Line-Ups // Pull Cable Tray Feed from MOD to CRAHU's | 5d | 2026-11-30 | 2026-12-04 | DH.1400A-EQP-86 | 48d | 0d | 1438 | DH1400 | GR | HELIX | OO |
| DH.1400A-EQP-92 |  | Gallery 1402 - D140/Line-Ups // Mount Electrial Gear for Chiller Controls | 10d | 2026-11-30 | 2026-12-11 | DH.1400A-EQP-86 | 42d | 0d | 1443 | DH1400 | GR | HELIX | AC |
| DH.1400A-EQP-88 |  | Gallery 1402 - D140/Line-Ups // Set CDU-DH1400- 10 | 1d | 2026-12-01 | 2026-12-01 | DH.1400A-EQP-87, DH.1400A-EQP-83 | 42d | 0d | 1434 | DH1400 | GR |  |  |
| DH.1400A-EQP-84 |  | Gallery 1402 - D140/Line-Ups // Condensate connections to Floor Drains | 10d | 2026-12-02 | 2026-12-15 | DH.1400A-EQP-83, DH.1400A-EQP-87, DH.1400A-EQP-88 | 42d | 5d | 1436 | DH1400 | GR |  |  |
| DH.1400A-EQP-91 |  | Gallery 1402 - D140/Line-Ups // Mechanical Connections to CRAHU Units | 10d | 2026-12-04 | 2026-12-17 | DH.1400A-EQP-83 SS+5d | 40d | 3d | 1448 | DH1400 | GR |  |  |
| DH.1400A-EQP-97 |  | Gallery 1402 - D140/Line-Ups // Pull Feeder and Branch circuits to MIsc equipment and Chiller controls | 10d | 2026-12-04 | 2026-12-17 | DH.1400A-EQP-92 SS+4d | 42d | 0d | 1444 | DH1400 | GR | HELIX | AC |
| DH.1400A-EQP-93 |  | Gallery 1402 - D140/Line-Ups // Pull Cable Tray Feed from MOD to CRAHU's | 5d | 2026-12-07 | 2026-12-11 | DH.1400A-EQP-90 | 48d | 0d | 1441 | DH1400 | GR | HELIX | OO |
| DH.1400A-EQP-96 |  | Gallery 1402 - D140/Line-Ups // Terminate CRAHU Electrical Connections | 5d | 2026-12-09 | 2026-12-15 | DH.1400A-EQP-93 SS+2d, DH.1400A-EQP-90 | 48d | 6d | 1442 | DH1400 | GR | HELIX | OO |
| DH.1400A-EQP-99 |  | Gallery 1402 - D140/Line-Ups // Teminate all Misc Equipment and Chiller Controls | 10d | 2026-12-10 | 2026-12-23 | DH.1400A-EQP-97 SS+4d | 42d | 0d | 1445 | DH1400 | GR |  |  |
| DH.1400A-EQP-95 |  | Gallery 1402 - D140/Line-Ups // Terminate Mod Panels | 1d | 2026-12-14 | 2026-12-14 | DH.1400A-EQP-93, DH.1400A-EQP-90, DH.1400A-EQP-89 | 49d | 7d | 1440 | DH1400 | GR | HELIX | OO |
| DH.1400A-EQP-94 |  | Gallery 1402 - D140/Line-Ups // Condensate connections to Floor Drains | 10d | 2026-12-16 | 2026-12-30 | DH.140012037, DH.1400A-EQP-91 SS+5d, DH.1400A-EQP-84 SS+5d | 37d | 0d | 1449 | DH1400 | GR |  |  |
| DH.1400A-EQP-100 |  | Gallery 1402 - D140/Line-Ups // Electrical Gear FOD Inspection Pre-Start Up | 2d | 2026-12-24 | 2026-12-28 | DH.1400A-EQP-96, DH.1400A-EQP-99, DH.1400A-EQP-95 | 42d | 53d | 1446 | DH1400 | GR | HELIX | QC |
| DH.1400A-EQP-98 |  | Gallery 1402 - D140/Line-Ups // Mechanical Gear FOD Inspection Pre-Start Up | 3d | 2026-12-31 | 2027-01-05 | DH.1400A-EQP-83, DH.1400A-EQP-94, DH.1400A-EQP-84, DH.1400A-EQP-91 | 37d | 48d | 1447 | DH1400 | GR |  |  |
|  | 6 | **F140** |  | 2026-11-27 | 2027-01-05 |  |  |  |  |  |  |  |  |
| DH.1400A-EQP-101 |  | Gallery 1402 - F140/Line-Ups // Set CRAH-DH1400- 11 | 1d | 2026-11-27 | 2026-11-27 | DH.1400A-EQP-83 SS | -6d | 0d | 1433 | DH1400 | GR |  |  |
| DH.1400A-EQP-103 |  | Gallery 1402 - F140/Line-Ups // Set CRAH-DH1400- 12 | 1d | 2026-11-27 | 2026-11-27 | DH.1400A-EQP-101 SS | -6d | 0d | 1434 | DH1400 | GR |  |  |
| DH.1400A-EQP-105 |  | Gallery 1402 - F140/Line-Ups // Set MOD-F140-01 | 1d | 2026-11-27 | 2026-11-27 | DH.1400A-EQP-103 FF | 42d | 0d | 1437 | DH1400 | GR | HELIX | TBD |
| DH.1400A-EQP-106 |  | Gallery 1402 - F140/Line-Ups // Set MOD-F140-02 | 1d | 2026-11-27 | 2026-11-27 | DH.1400A-EQP-105 SS | 42d | 0d | 1437 | DH1400 | GR | HELIX | TBD |
| DH.1400A-EQP-107 |  | Gallery 1402 - F140/Line-Ups // Set CDU-DH1400- 11 | 1d | 2026-11-30 | 2026-11-30 | DH.1400A-EQP-101 | 42d | 0d | 1434 | DH1400 | GR |  |  |
| DH.1400A-EQP-109 |  | Gallery 1402 - F140/Line-Ups // Pull Feeder from SWD to MOD | 1d | 2026-11-30 | 2026-11-30 | DH.1400A-EQP-106 | 58d | 9d | 1439 | DH1400 | GR | HELIX | OO |
| DH.1400A-EQP-110 |  | Gallery 1402 - F140/Line-Ups // Pull Cable Tray Feed from MOD to CRAHU's | 5d | 2026-11-30 | 2026-12-04 | DH.1400A-EQP-106 | 48d | 0d | 1438 | DH1400 | GR | HELIX | OO |
| DH.1400A-EQP-112 |  | Gallery 1402 - F140/Line-Ups // Mount Electrial Gear for Chiller Controls | 10d | 2026-11-30 | 2026-12-11 | DH.1400A-EQP-106 | 42d | 0d | 1443 | DH1400 | GR | HELIX | AC |
| DH.1400A-EQP-108 |  | Gallery 1402 - F140/Line-Ups // Set CDU-DH1400- 12 | 1d | 2026-12-01 | 2026-12-01 | DH.1400A-EQP-107, DH.1400A-EQP-103 | 42d | 0d | 1434 | DH1400 | GR |  |  |
| DH.1400A-EQP-104 |  | Gallery 1402 - F140/Line-Ups // Condensate connections to Floor Drains | 10d | 2026-12-02 | 2026-12-15 | DH.1400A-EQP-103, DH.1400A-EQP-107, DH.1400A-EQP-108 | 42d | 5d | 1436 | DH1400 | GR |  |  |
| DH.1400A-EQP-111 |  | Gallery 1402 - F140/Line-Ups // Mechanical Connections to CRAHU Units | 10d | 2026-12-04 | 2026-12-17 | DH.1400A-EQP-103 SS+5d | 40d | 3d | 1448 | DH1400 | GR |  |  |
| DH.1400A-EQP-117 |  | Gallery 1402 - F140/Line-Ups // Pull Feeder and Branch circuits to MIsc equipment and Chiller controls | 10d | 2026-12-04 | 2026-12-17 | DH.1400A-EQP-112 SS+4d | 42d | 0d | 1444 | DH1400 | GR | HELIX | AC |
| DH.1400A-EQP-113 |  | Gallery 1402 - F140/Line-Ups // Pull Cable Tray Feed from MOD to CRAHU's | 5d | 2026-12-07 | 2026-12-11 | DH.1400A-EQP-110 | 48d | 0d | 1441 | DH1400 | GR | HELIX | OO |
| DH.1400A-EQP-116 |  | Gallery 1402 - F140/Line-Ups // Terminate CRAHU Electrical Connections | 5d | 2026-12-09 | 2026-12-15 | DH.1400A-EQP-113 SS+2d, DH.1400A-EQP-110 | 48d | 6d | 1442 | DH1400 | GR | HELIX | OO |
| DH.1400A-EQP-119 |  | Gallery 1402 - F140/Line-Ups // Teminate all Misc Equipment and Chiller Controls | 10d | 2026-12-10 | 2026-12-23 | DH.1400A-EQP-117 SS+4d | 42d | 0d | 1445 | DH1400 | GR |  |  |
| DH.1400A-EQP-115 |  | Gallery 1402 - F140/Line-Ups // Terminate Mod Panels | 1d | 2026-12-14 | 2026-12-14 | DH.1400A-EQP-113, DH.1400A-EQP-110, DH.1400A-EQP-109 | 49d | 7d | 1440 | DH1400 | GR | HELIX | OO |
| DH.1400A-EQP-114 |  | Gallery 1402 - F140/Line-Ups // Condensate connections to Floor Drains | 10d | 2026-12-16 | 2026-12-30 | DH.140012040, DH.1400A-EQP-111 SS+5d, DH.1400A-EQP-104 SS+5d | 37d | 0d | 1449 | DH1400 | GR |  |  |
| DH.1400A-EQP-120 |  | Gallery 1402 - F140/Line-Ups // Electrical Gear FOD Inspection Pre-Start Up | 2d | 2026-12-24 | 2026-12-28 | DH.1400A-EQP-116, DH.1400A-EQP-119, DH.1400A-EQP-115 | 42d | 53d | 1446 | DH1400 | GR | HELIX | QC |
| DH.1400A-EQP-118 |  | Gallery 1402 - F140/Line-Ups // Mechanical Gear FOD Inspection Pre-Start Up | 3d | 2026-12-31 | 2027-01-05 | DH.1400A-EQP-103, DH.1400A-EQP-114, DH.1400A-EQP-104, DH.1400A-EQP-111 | 37d | 48d | 1447 | DH1400 | GR |  |  |

| ID | WBS | Activity | Duration | Start | Finish | Predecessors | Total float | Free float | MSP Activity ID | QTS - AREA | QTS - DASH | QTS - Subcontractor | QTS - Resp |
| --- | --- | --- | --- | --- | --- | --- | --- | --- | --- | --- | --- | --- | --- |
|  | 7 | **G140** |  | 2026-11-30 | 2027-01-06 |  |  |  |  |  |  |  |  |
| DH.1400A-EQP-121 |  | Gallery 1402 - G140/Line-Ups // Set CRAH-DH1400- 13 | 1d | 2026-11-30 | 2026-11-30 | DH.1400A-EQP-103 | -6d | 0d | 1433 | DH1400 | GR |  |  |
| DH.1400A-EQP-123 |  | Gallery 1402 - G140/Line-Ups // Set CRAH-DH1400- 14 | 1d | 2026-11-30 | 2026-11-30 | DH.1400A-EQP-121 SS | -6d | 0d | 1434 | DH1400 | GR |  |  |
| DH.1400A-EQP-125 |  | Gallery 1402 - G140/Line-Ups // Set MOD-G140-01 | 1d | 2026-11-30 | 2026-11-30 | DH.1400A-EQP-123 FF | 41d | 0d | 1437 | DH1400 | GR | HELIX | TBD |
| DH.1400A-EQP-126 |  | Gallery 1402 - G140/Line-Ups // Set MOD-G140-02 | 1d | 2026-11-30 | 2026-11-30 | DH.1400A-EQP-125 SS | 41d | 0d | 1437 | DH1400 | GR | HELIX | TBD |
| DH.1400A-EQP-127 |  | Gallery 1402 - G140/Line-Ups // Set CDU-DH1400- 13 | 1d | 2026-12-01 | 2026-12-01 | DH.1400A-EQP-121 | 41d | 0d | 1434 | DH1400 | GR |  |  |
| DH.1400A-EQP-129 |  | Gallery 1402 - G140/Line-Ups // Pull Feeder from SWD to MOD | 1d | 2026-12-01 | 2026-12-01 | DH.1400A-EQP-126 | 57d | 9d | 1439 | DH1400 | GR | HELIX | OO |
| DH.1400A-EQP-130 |  | Gallery 1402 - G140/Line-Ups // Pull Cable Tray Feed from MOD to CRAHU's | 5d | 2026-12-01 | 2026-12-07 | DH.1400A-EQP-126 | 47d | 0d | 1438 | DH1400 | GR | HELIX | OO |
| DH.1400A-EQP-132 |  | Gallery 1402 - G140/Line-Ups // Mount Electrial Gear for Chiller Controls | 10d | 2026-12-01 | 2026-12-14 | DH.1400A-EQP-126 | 41d | 0d | 1443 | DH1400 | GR | HELIX | AC |
| DH.1400A-EQP-128 |  | Gallery 1402 - G140/Line-Ups // Set CDU-DH1400- 14 | 1d | 2026-12-02 | 2026-12-02 | DH.1400A-EQP-127, DH.1400A-EQP-123 | 41d | 0d | 1434 | DH1400 | GR |  |  |
| DH.1400A-EQP-124 |  | Gallery 1402 - G140/Line-Ups // Condensate connections to Floor Drains | 10d | 2026-12-03 | 2026-12-16 | DH.1400A-EQP-123, DH.1400A-EQP-127, DH.1400A-EQP-128 | 41d | 5d | 1436 | DH1400 | GR |  |  |
| DH.1400A-EQP-131 |  | Gallery 1402 - G140/Line-Ups // Mechanical Connections to CRAHU Units | 10d | 2026-12-07 | 2026-12-18 | DH.1400A-EQP-123 SS+5d | 39d | 3d | 1448 | DH1400 | GR |  |  |
| DH.1400A-EQP-137 |  | Gallery 1402 - G140/Line-Ups // Pull Feeder and Branch circuits to MIsc equipment and Chiller controls | 10d | 2026-12-07 | 2026-12-18 | DH.1400A-EQP-132 SS+4d | 41d | 0d | 1444 | DH1400 | GR | HELIX | AC |
| DH.1400A-EQP-133 |  | Gallery 1402 - G140/Line-Ups // Pull Cable Tray Feed from MOD to CRAHU's | 5d | 2026-12-08 | 2026-12-14 | DH.1400A-EQP-130 | 47d | 0d | 1441 | DH1400 | GR | HELIX | OO |
| DH.1400A-EQP-136 |  | Gallery 1402 - G140/Line-Ups // Terminate CRAHU Electrical Connections | 5d | 2026-12-10 | 2026-12-16 | DH.1400A-EQP-133 SS+2d, DH.1400A-EQP-130 | 47d | 6d | 1442 | DH1400 | GR | HELIX | OO |
| DH.1400A-EQP-139 |  | Gallery 1402 - G140/Line-Ups // Teminate all Misc Equipment and Chiller Controls | 10d | 2026-12-11 | 2026-12-24 | DH.1400A-EQP-137 SS+4d | 41d | 0d | 1445 | DH1400 | GR |  |  |
| DH.1400A-EQP-135 |  | Gallery 1402 - G140/Line-Ups // Terminate Mod Panels | 1d | 2026-12-15 | 2026-12-15 | DH.1400A-EQP-133, DH.1400A-EQP-130, DH.1400A-EQP-129 | 48d | 7d | 1440 | DH1400 | GR | HELIX | OO |
| DH.1400A-EQP-134 |  | Gallery 1402 - G140/Line-Ups // Condensate connections to Floor Drains | 10d | 2026-12-17 | 2026-12-31 | DH.140012043, DH.1400A-EQP-131 SS+5d, DH.1400A-EQP-124 SS+5d | 36d | 0d | 1449 | DH1400 | GR |  |  |
| DH.1400A-EQP-140 |  | Gallery 1402 - G140/Line-Ups // Electrical Gear FOD Inspection Pre-Start Up | 2d | 2026-12-28 | 2026-12-29 | DH.1400A-EQP-136, DH.1400A-EQP-139, DH.1400A-EQP-135 | 41d | 52d | 1446 | DH1400 | GR | HELIX | QC |
| DH.1400A-EQP-138 |  | Gallery 1402 - G140/Line-Ups // Mechanical Gear FOD Inspection Pre-Start Up | 3d | 2027-01-04 | 2027-01-06 | DH.1400A-EQP-123, DH.1400A-EQP-134, DH.1400A-EQP-124, DH.1400A-EQP-131 | 36d | 47d | 1447 | DH1400 | GR |  |  |
|  | 8 | **H140** |  | 2026-11-30 | 2027-01-06 |  |  |  |  |  |  |  |  |
| DH.1400A-EQP-141 |  | Gallery 1402 - H140/Line-Ups // Set CRAH-DH1400- 15 | 1d | 2026-11-30 | 2026-11-30 | DH.1400A-EQP-123 SS | -6d | 0d | 1433 | DH1400 | GR |  |  |
| DH.1400A-EQP-143 |  | Gallery 1402 - H140/Line-Ups // Set CRAH-DH1400- 16 | 1d | 2026-11-30 | 2026-11-30 | DH.1400A-EQP-141 SS | -6d | 0d | 1434 | DH1400 | GR |  |  |
| DH.1400A-EQP-145 |  | Gallery 1402 - H140/Line-Ups // Set MOD-H140-01 | 1d | 2026-11-30 | 2026-11-30 | DH.1400A-EQP-143 FF | 41d | 0d | 1437 | DH1400 | GR | HELIX | TBD |
| DH.1400A-EQP-146 |  | Gallery 1402 - H140/Line-Ups // Set MOD-H140-02 | 1d | 2026-11-30 | 2026-11-30 | DH.1400A-EQP-145 SS | 41d | 0d | 1437 | DH1400 | GR | HELIX | TBD |
| DH.1400A-EQP-147 |  | Gallery 1402 - H140/Line-Ups // Set CDU-DH1400- 15 | 1d | 2026-12-01 | 2026-12-01 | DH.1400A-EQP-141 | 41d | 0d | 1434 | DH1400 | GR |  |  |
| DH.1400A-EQP-149 |  | Gallery 1402 - H140/Line-Ups // Pull Feeder from SWD to MOD | 1d | 2026-12-01 | 2026-12-01 | DH.1400A-EQP-146 | 57d | 9d | 1439 | DH1400 | GR | HELIX | OO |
| DH.1400A-EQP-150 |  | Gallery 1402 - H140/Line-Ups // Pull Cable Tray Feed from MOD to CRAHU's | 5d | 2026-12-01 | 2026-12-07 | DH.1400A-EQP-146 | 47d | 0d | 1438 | DH1400 | GR | HELIX | OO |
| DH.1400A-EQP-152 |  | Gallery 1402 - H140/Line-Ups // Mount Electrial Gear for Chiller Controls | 10d | 2026-12-01 | 2026-12-14 | DH.1400A-EQP-146 | 41d | 0d | 1443 | DH1400 | GR | HELIX | AC |
| DH.1400A-EQP-148 |  | Gallery 1402 - H140/Line-Ups // Set CDU-DH1400- 16 | 1d | 2026-12-02 | 2026-12-02 | DH.1400A-EQP-147, DH.1400A-EQP-143 | 41d | 0d | 1434 | DH1400 | GR |  |  |
| DH.1400A-EQP-144 |  | Gallery 1402 - H140/Line-Ups // Condensate connections to Floor Drains | 10d | 2026-12-03 | 2026-12-16 | DH.1400A-EQP-143, DH.1400A-EQP-147, DH.1400A-EQP-148 | 41d | 5d | 1436 | DH1400 | GR |  |  |
| DH.1400A-EQP-151 |  | Gallery 1402 - H140/Line-Ups // Mechanical Connections to CRAHU Units | 10d | 2026-12-07 | 2026-12-18 | DH.1400A-EQP-143 SS+5d | 39d | 3d | 1448 | DH1400 | GR |  |  |
| DH.1400A-EQP-157 |  | Gallery 1402 - H140/Line-Ups // Pull Feeder and Branch circuits to MIsc equipment and Chiller controls | 10d | 2026-12-07 | 2026-12-18 | DH.1400A-EQP-152 SS+4d | 41d | 0d | 1444 | DH1400 | GR | HELIX | AC |
| DH.1400A-EQP-153 |  | Gallery 1402 - H140/Line-Ups // Pull Cable Tray Feed from MOD to CRAHU's | 5d | 2026-12-08 | 2026-12-14 | DH.1400A-EQP-150 | 47d | 0d | 1441 | DH1400 | GR | HELIX | OO |
| DH.1400A-EQP-156 |  | Gallery 1402 - H140/Line-Ups // Terminate CRAHU Electrical Connections | 5d | 2026-12-10 | 2026-12-16 | DH.1400A-EQP-153 SS+2d, DH.1400A-EQP-150 | 47d | 6d | 1442 | DH1400 | GR | HELIX | OO |
| DH.1400A-EQP-159 |  | Gallery 1402 - H140/Line-Ups // Teminate all Misc Equipment and Chiller Controls | 10d | 2026-12-11 | 2026-12-24 | DH.1400A-EQP-157 SS+4d | 41d | 0d | 1445 | DH1400 | GR |  |  |
| DH.1400A-EQP-155 |  | Gallery 1402 - H140/Line-Ups // Terminate Mod Panels | 1d | 2026-12-15 | 2026-12-15 | DH.1400A-EQP-153, DH.1400A-EQP-150, DH.1400A-EQP-149 | 48d | 7d | 1440 | DH1400 | GR | HELIX | OO |
| DH.1400A-EQP-154 |  | Gallery 1402 - H140/Line-Ups // Condensate connections to Floor Drains | 10d | 2026-12-17 | 2026-12-31 | DH.140012046, DH.1400A-EQP-151 SS+5d, DH.1400A-EQP-144 SS+5d | 36d | 0d | 1449 | DH1400 | GR |  |  |
| DH.1400A-EQP-160 |  | Gallery 1402 - H140/Line-Ups // Electrical Gear FOD Inspection Pre-Start Up | 2d | 2026-12-28 | 2026-12-29 | DH.1400A-EQP-156, DH.1400A-EQP-159, DH.1400A-EQP-155 | 41d | 52d | 1446 | DH1400 | GR | HELIX | QC |
| DH.1400A-EQP-158 |  | Gallery 1402 - H140/Line-Ups // Mechanical Gear FOD Inspection Pre-Start Up | 3d | 2027-01-04 | 2027-01-06 | DH.1400A-EQP-143, DH.1400A-EQP-154, DH.1400A-EQP-144, DH.1400A-EQP-151 | 36d | 47d | 1447 | DH1400 | GR |  |  |

| ID | WBS | Activity | Duration | Start | Finish | Predecessors | Total float | Free float | MSP Activity ID | QTS - AREA | QTS - DASH | QTS - Subcontractor | QTS - Resp |
| --- | --- | --- | --- | --- | --- | --- | --- | --- | --- | --- | --- | --- | --- |
|  | 9 | **J140** |  | 2026-11-30 | 2027-01-06 |  |  |  |  |  |  |  |  |
| DH.1400A-EQP-161 |  | Gallery 1402 - J140/Line-Ups // Set CRAH-DH1400- 17 | 1d | 2026-11-30 | 2026-11-30 | DH.1400A-EQP-143 SS | -6d | 0d | 1433 | DH1400 | GR |  |  |
| DH.1400A-EQP-163 |  | Gallery 1402 - J140/Line-Ups // Set CRAH-DH1400- 18 | 1d | 2026-11-30 | 2026-11-30 | DH.1400A-EQP-161 SS | -6d | 0d | 1434 | DH1400 | GR |  |  |
| DH.1400A-EQP-165 |  | Gallery 1402 - J140/Line-Ups // Set MOD-J140-01 | 1d | 2026-11-30 | 2026-11-30 | DH.1400A-EQP-163 FF | 41d | 0d | 1437 | DH1400 | GR | HELIX | TBD |
| DH.1400A-EQP-166 |  | Gallery 1402 - J140/Line-Ups // Set MOD-J140-02 | 1d | 2026-11-30 | 2026-11-30 | DH.1400A-EQP-165 SS | 41d | 0d | 1437 | DH1400 | GR | HELIX | TBD |
| DH.1400A-EQP-167 |  | Gallery 1402 - J140/Line-Ups // Set CDU-DH1400- 17 | 1d | 2026-12-01 | 2026-12-01 | DH.1400A-EQP-161 | 41d | 0d | 1434 | DH1400 | GR |  |  |
| DH.1400A-EQP-169 |  | Gallery 1402 - J140/Line-Ups // Pull Feeder from SWD to MOD | 1d | 2026-12-01 | 2026-12-01 | DH.1400A-EQP-166 | 57d | 9d | 1439 | DH1400 | GR | HELIX | OO |
| DH.1400A-EQP-170 |  | Gallery 1402 - J140/Line-Ups // Pull Cable Tray Feed from MOD to CRAHU's | 5d | 2026-12-01 | 2026-12-07 | DH.1400A-EQP-166 | 47d | 0d | 1438 | DH1400 | GR | HELIX | OO |
| DH.1400A-EQP-172 |  | Gallery 1402 - J140/Line-Ups // Mount Electrial Gear for Chiller Controls | 10d | 2026-12-01 | 2026-12-14 | DH.1400A-EQP-166 | 41d | 0d | 1443 | DH1400 | GR | HELIX | AC |
| DH.1400A-EQP-168 |  | Gallery 1402 - J140/Line-Ups // Set CDU-DH1400- 18 | 1d | 2026-12-02 | 2026-12-02 | DH.1400A-EQP-167, DH.1400A-EQP-163 | 41d | 0d | 1434 | DH1400 | GR |  |  |
| DH.1400A-EQP-164 |  | Gallery 1402 - J140/Line-Ups // Condensate connections to Floor Drains | 10d | 2026-12-03 | 2026-12-16 | DH.1400A-EQP-163, DH.1400A-EQP-167, DH.1400A-EQP-168 | 41d | 5d | 1436 | DH1400 | GR |  |  |
| DH.1400A-EQP-171 |  | Gallery 1402 - J140/Line-Ups // Mechanical Connections to CRAHU Units | 10d | 2026-12-07 | 2026-12-18 | DH.1400A-EQP-163 SS+5d | 39d | 3d | 1448 | DH1400 | GR |  |  |
| DH.1400A-EQP-177 |  | Gallery 1402 - J140/Line-Ups // Pull Feeder and Branch circuits to MIsc equipment and Chiller controls | 10d | 2026-12-07 | 2026-12-18 | DH.1400A-EQP-172 SS+4d | 41d | 0d | 1444 | DH1400 | GR | HELIX | AC |
| DH.1400A-EQP-173 |  | Gallery 1402 - J140/Line-Ups // Pull Cable Tray Feed from MOD to CRAHU's | 5d | 2026-12-08 | 2026-12-14 | DH.1400A-EQP-170 | 47d | 0d | 1441 | DH1400 | GR | HELIX | OO |
| DH.1400A-EQP-176 |  | Gallery 1402 - J140/Line-Ups // Terminate CRAHU Electrical Connections | 5d | 2026-12-10 | 2026-12-16 | DH.1400A-EQP-173 SS+2d, DH.1400A-EQP-170 | 47d | 6d | 1442 | DH1400 | GR | HELIX | OO |
| DH.1400A-EQP-179 |  | Gallery 1402 - J140/Line-Ups // Teminate all Misc Equipment and Chiller Controls | 10d | 2026-12-11 | 2026-12-24 | DH.1400A-EQP-177 SS+4d | 41d | 0d | 1445 | DH1400 | GR |  |  |
| DH.1400A-EQP-175 |  | Gallery 1402 - J140/Line-Ups // Terminate Mod Panels | 1d | 2026-12-15 | 2026-12-15 | DH.1400A-EQP-173, DH.1400A-EQP-170, DH.1400A-EQP-169 | 48d | 7d | 1440 | DH1400 | GR | HELIX | OO |
| DH.1400A-EQP-174 |  | Gallery 1402 - J140/Line-Ups // Condensate connections to Floor Drains | 10d | 2026-12-17 | 2026-12-31 | DH.140012049, DH.1400A-EQP-171 SS+5d, DH.1400A-EQP-164 SS+5d | 36d | 0d | 1449 | DH1400 | GR |  |  |
| DH.1400A-EQP-180 |  | Gallery 1402 - J140/Line-Ups // Electrical Gear FOD Inspection Pre-Start Up | 2d | 2026-12-28 | 2026-12-29 | DH.1400A-EQP-176, DH.1400A-EQP-179, DH.1400A-EQP-175 | 41d | 52d | 1446 | DH1400 | GR | HELIX | QC |
| DH.1400A-EQP-178 |  | Gallery 1402 - J140/Line-Ups // Mechanical Gear FOD Inspection Pre-Start Up | 3d | 2027-01-04 | 2027-01-06 | DH.1400A-EQP-163, DH.1400A-EQP-174, DH.1400A-EQP-164, DH.1400A-EQP-171 | 36d | 47d | 1447 | DH1400 | GR |  |  |
|  | 10 | **K140** |  | 2026-12-01 | 2027-01-06 |  |  |  |  |  |  |  |  |
| DH.1400A-EQP-181 |  | Gallery 1402 - K140/Line-Ups // Set CRAH-DH1400- 19 | 1d | 2026-12-01 | 2026-12-01 | DH.1400A-EQP-163 | -6d | 0d | 1433 | DH1400 | GR |  |  |
| DH.1400A-EQP-183 |  | Gallery 1402 - K140/Line-Ups // Set CRAH-DH1400- 20 | 1d | 2026-12-01 | 2026-12-01 | DH.1400A-EQP-181 SS | -6d | 0d | 1434 | DH1400 | GR |  |  |
| DH.1400A-EQP-185 |  | Gallery 1402 - K140/Line-Ups // Set MOD-K140-01 | 1d | 2026-12-01 | 2026-12-01 | DH.1400A-EQP-183 FF | 40d | 0d | 1437 | DH1400 | GR | HELIX | TBD |
| DH.1400A-EQP-186 |  | Gallery 1402 - K140/Line-Ups // Set MOD-K140-02 | 1d | 2026-12-01 | 2026-12-01 | DH.1400A-EQP-185 SS | 40d | 0d | 1437 | DH1400 | GR | HELIX | TBD |
| DH.1400A-EQP-187 |  | Gallery 1402 - K140/Line-Ups // Set CDU-DH1400- 19 | 1d | 2026-12-02 | 2026-12-02 | DH.1400A-EQP-181 | 40d | 0d | 1434 | DH1400 | GR |  |  |
| DH.1400A-EQP-189 |  | Gallery 1402 - K140/Line-Ups // Pull Feeder from SWD to MOD | 1d | 2026-12-02 | 2026-12-02 | DH.1400A-EQP-186 | 56d | 9d | 1439 | DH1400 | GR | HELIX | OO |
| DH.1400A-EQP-190 |  | Gallery 1402 - K140/Line-Ups // Pull Cable Tray Feed from MOD to CRAHU's | 5d | 2026-12-02 | 2026-12-08 | DH.1400A-EQP-186 | 46d | 0d | 1438 | DH1400 | GR | HELIX | OO |
| DH.1400A-EQP-192 |  | Gallery 1402 - K140/Line-Ups // Mount Electrial Gear for Chiller Controls | 10d | 2026-12-02 | 2026-12-15 | DH.1400A-EQP-186 | 40d | 0d | 1443 | DH1400 | GR | HELIX | AC |
| DH.1400A-EQP-188 |  | Gallery 1402 - K140/Line-Ups // Set CDU-DH1400- 20 | 1d | 2026-12-03 | 2026-12-03 | DH.1400A-EQP-187, DH.1400A-EQP-183 | 40d | 0d | 1434 | DH1400 | GR |  |  |
| DH.1400A-EQP-184 |  | Gallery 1402 - K140/Line-Ups // Condensate connections to Floor Drains | 10d | 2026-12-04 | 2026-12-17 | DH.1400A-EQP-183, DH.1400A-EQP-187, DH.1400A-EQP-188 | 40d | 4d | 1436 | DH1400 | GR |  |  |
| DH.1400A-EQP-191 |  | Gallery 1402 - K140/Line-Ups // Mechanical Connections to CRAHU Units | 10d | 2026-12-08 | 2026-12-21 | DH.1400A-EQP-183 SS+5d | 38d | 2d | 1448 | DH1400 | GR |  |  |
| DH.1400A-EQP-197 |  | Gallery 1402 - K140/Line-Ups // Pull Feeder and Branch circuits to MIsc equipment and Chiller controls | 10d | 2026-12-08 | 2026-12-21 | DH.1400A-EQP-192 SS+4d | 40d | 0d | 1444 | DH1400 | GR | HELIX | AC |
| DH.1400A-EQP-193 |  | Gallery 1402 - K140/Line-Ups // Pull Cable Tray Feed from MOD to CRAHU's | 5d | 2026-12-09 | 2026-12-15 | DH.1400A-EQP-190 | 46d | 0d | 1441 | DH1400 | GR | HELIX | OO |
| DH.1400A-EQP-196 |  | Gallery 1402 - K140/Line-Ups // Terminate CRAHU Electrical Connections | 5d | 2026-12-11 | 2026-12-17 | DH.1400A-EQP-193 SS+2d, DH.1400A-EQP-190 | 46d | 6d | 1442 | DH1400 | GR | HELIX | OO |
| DH.1400A-EQP-199 |  | Gallery 1402 - K140/Line-Ups // Teminate all Misc Equipment and Chiller Controls | 10d | 2026-12-14 | 2026-12-28 | DH.1400A-EQP-197 SS+4d | 40d | 0d | 1445 | DH1400 | GR |  |  |
| DH.1400A-EQP-195 |  | Gallery 1402 - K140/Line-Ups // Terminate Mod Panels | 1d | 2026-12-16 | 2026-12-16 | DH.1400A-EQP-193, DH.1400A-EQP-190, DH.1400A-EQP-189 | 47d | 7d | 1440 | DH1400 | GR | HELIX | OO |
| DH.1400A-EQP-194 |  | Gallery 1402 - K140/Line-Ups // Condensate connections to Floor Drains | 10d | 2026-12-17 | 2026-12-31 | DH.140012052, DH.1400A-EQP-191 SS+5d, DH.1400A-EQP-184 SS+5d | 36d | 0d | 1449 | DH1400 | GR |  |  |
| DH.1400A-EQP-200 |  | Gallery 1402 - K140/Line-Ups // Electrical Gear FOD Inspection Pre-Start Up | 2d | 2026-12-29 | 2026-12-30 | DH.1400A-EQP-196, DH.1400A-EQP-199, DH.1400A-EQP-195 | 40d | 51d | 1446 | DH1400 | GR | HELIX | QC |
| DH.1400A-EQP-198 |  | Gallery 1402 - K140/Line-Ups // Mechanical Gear FOD Inspection Pre-Start Up | 3d | 2027-01-04 | 2027-01-06 | DH.1400A-EQP-183, DH.1400A-EQP-194, DH.1400A-EQP-184, DH.1400A-EQP-191 | 36d | 47d | 1447 | DH1400 | GR |  |  |

| ID | WBS | Activity | Duration | Start | Finish | Predecessors | Total float | Free float | MSP Activity ID | QTS - AREA | QTS - DASH | QTS - Subcontractor | QTS - Resp | MBTA: Work Type |
| --- | --- | --- | --- | --- | --- | --- | --- | --- | --- | --- | --- | --- | --- | --- |
|  | 11 | **R140** |  | 2026-12-01 | 2027-01-06 |  |  |  |  |  |  |  |  |  |
| DH.1400A-EQP-201 |  | Gallery 1402 - R140/Line-Ups // Set CRAH-DH1400- 21 | 1d | 2026-12-01 | 2026-12-01 | DH.1400A-EQP-183 SS | -6d | 0d | 1433 | DH1400 | GR |  |  |  |
| DH.1400A-EQP-203 |  | Gallery 1402 - R140/Line-Ups // Set CRAH-DH1400- 22 | 1d | 2026-12-01 | 2026-12-01 | DH.1400A-EQP-201 SS | -6d | 0d | 1434 | DH1400 | GR |  |  |  |
| DH.1400A-EQP-205 |  | Gallery 1402 - R140/Line-Ups // Set MOD-R140-01 | 1d | 2026-12-01 | 2026-12-01 | DH.1400A-EQP-203 FF | -6d | 0d | 1437 | DH1400 | GR | HELIX | TBD |  |
| DH.1400A-EQP-206 |  | Gallery 1402 - R140/Line-Ups // Set MOD-R140-02 | 1d | 2026-12-01 | 2026-12-01 | DH.1400A-EQP-205 SS | -6d | 0d | 1437 | DH1400 | GR | HELIX | TBD |  |
| DH.1400A-EQP-207 |  | Gallery 1402 - R140/Line-Ups // Set CDU-DH1400- 21 | 1d | 2026-12-02 | 2026-12-02 | DH.1400A-EQP-201 | -2d | 0d | 1434 | DH1400 | GR |  |  |  |
| DH.1400A-EQP-210 |  | Gallery 1402 - R140/Line-Ups // Pull Cable Tray Feed from MOD to CRAHU's | 5d | 2026-12-02 | 2026-12-08 | DH.1400A-EQP-206 | 0d |  | 1438 | DH1400 | GR | HELIX | OO |  |
| DH.1400A-EQP-212 |  | Gallery 1402 - R140/Line-Ups // Mount Electrial Gear for Chiller Controls | 10d | 2026-12-02 | 2026-12-15 | DH.1400A-EQP-206 | -6d | 0d | 1443 | DH1400 | GR | HELIX | AC |  |
| DH.1400A-EQP-208 |  | Gallery 1402 - R140/Line-Ups // Set CDU-DH1400- 22 | 1d | 2026-12-03 | 2026-12-03 | DH.1400A-EQP-207, DH.1400A-EQP-203 | -2d | 0d | 1434 | DH1400 | GR |  |  |  |
| DH.1400A-EQP-204 |  | Gallery 1402 - R140/Line-Ups // Condensate connections to Floor Drains | 10d | 2026-12-04 | 2026-12-17 | DH.1400A-EQP-203, DH.1400A-EQP-207, DH.1400A-EQP-208 | -2d | 4d | 1436 | DH1400 | GR |  |  |  |
| DH.1400A-EQP-221 |  | Gallery 1402 - R140/Line-Ups // Set SWD-R140 | 1d | 2026-12-04 | 2026-12-04 | DH.1400A-EQP-208 | 9d | 0d | 1437 | DH1400 | GR |  |  |  |
| DH.1400A-EQP-222 |  | Gallery 1402 - R140/Line-Ups // Set SWD-TIE-R140 | 1d | 2026-12-07 | 2026-12-07 | DH.1400A-EQP-221 | 9d | 0d | 1437 | DH1400 | GR |  |  |  |
| DH.1400A-EQP-209 |  | Gallery 1402 - R140/Line-Ups // Pull Feeder from SWD to MOD | 1d | 2026-12-08 | 2026-12-08 | DH.1400A-EQP-222, DH.1400A-EQP-206 | 9d | 0d | 1439 | DH1400 | GR | HELIX | OO |  |
| DH.1400A-EQP-211 |  | Gallery 1402 - R140/Line-Ups // Mechanical Connections to CRAHU Units | 10d | 2026-12-08 | 2026-12-21 | DH.1400A-EQP-203 SS+5d | -4d | 2d | 1448 | DH1400 | GR |  |  |  |
| DH.1400A-EQP-217 |  | Gallery 1402 - R140/Line-Ups // Pull Feeder and Branch circuits to MIsc equipment and Chiller controls | 10d | 2026-12-08 | 2026-12-21 | DH.1400A-EQP-212 SS+4d | -6d | 0d | 1444 | DH1400 | GR | HELIX | AC |  |
| DH.1400A-EQP-213 |  | Gallery 1402 - R140/Line-Ups // Pull Cable Tray Feed from MOD to CRAHU's | 5d | 2026-12-09 | 2026-12-15 | DH.1400A-EQP-210 | 0d |  | 1441 | DH1400 | GR | HELIX | OO |  |
| DH.1400A-EQP-216 |  | Gallery 1402 - R140/Line-Ups // Terminate CRAHU Electrical Connections | 5d | 2026-12-11 | 2026-12-17 | DH.1400A-EQP-213 SS+2d, DH.1400A-EQP-210 | 4d | 6d | 1442 | DH1400 | GR | HELIX | OO |  |
| DH.1400A-EQP-219 |  | Gallery 1402 - R140/Line-Ups // Teminate all Misc Equipment and Chiller Controls | 10d | 2026-12-14 | 2026-12-28 | DH.1400A-EQP-217 SS+4d | -6d | 0d | 1445 | DH1400 | GR |  |  |  |
| DH.1400A-EQP-215 |  | Gallery 1402 - R140/Line-Ups // Terminate Mod Panels | 1d | 2026-12-16 | 2026-12-16 | DH.1400A-EQP-213, DH.1400A-EQP-210, DH.1400A-EQP-209 | 5d | 7d | 1440 | DH1400 | GR | HELIX | OO |  |
| DH.1400A-EQP-214 |  | Gallery 1402 - R140/Line-Ups // Condensate connections to Floor Drains | 10d | 2026-12-17 | 2026-12-31 | DH.140012055, DH.1400A-EQP-211 SS+5d, DH.1400A-EQP-204 SS+5d | -6d | 0d | 1449 | DH1400 | GR |  |  |  |
| DH.1400A-EQP-220 |  | Gallery 1402 - R140/Line-Ups // Electrical Gear FOD Inspection Pre-Start Up | 2d | 2026-12-29 | 2026-12-30 | DH.1400A-EQP-216, DH.1400A-EQP-219, DH.1400A-EQP-215 | -2d | 9d | 1446 | DH1400 | GR | HELIX | QC |  |
| DH.1400A-EQP-218 |  | Gallery 1402 - R140/Line-Ups // Mechanical Gear FOD Inspection Pre-Start Up | 3d | 2027-01-04 | 2027-01-06 | DH.1400A-EQP-203, DH.1400A-EQP-214, DH.1400A-EQP-204, DH.1400A-EQP-211 | -6d | 5d | 1447 | DH1400 | GR |  |  |  |
|  | 12 | **Equipment Connections** |  | 2026-12-09 | 2027-01-06 |  |  |  |  |  |  |  |  |  |
|  | 1 | **CRAH** |  | 2026-12-16 | 2026-12-28 |  |  |  |  |  |  |  |  |  |
| DH1400.MG.A110.8687 |  | Gallery 1402 // DH 1400 / Elec Room // CRAH Duct Work Termination | 2d | 2026-12-16 | 2026-12-17 | DH.1400A-EQP-213 | 0d |  | 7037 | DH1400 | GR |  |  | Con/Install |
| DH1400.MG.A110.8686 |  | Gallery 1402 // DH 1400 / Elec Room // CRAH Chilled Water | 2d | 2026-12-18 | 2026-12-21 | DH1400.MG.A110.8687 | 0d |  | 7035 | DH1400 | GR |  |  | Con/Install |
| DH1400.MG.A110.8684 |  | Gallery 1402 // DH 1400 / Elec Room // CRAH Power Connections | 2d | 2026-12-22 | 2026-12-23 | DH1400.MG.A110.8686 | 0d |  | 7034 | DH1400 | GR | HELIX | OO | Con/Install |
| DH1400.MG.A110.8685 |  | Gallery 1402 // DH 1400 / Elec Room // CRAH LV Connections | 2d | 2026-12-24 | 2026-12-28 | DH1400.MG.A110.8684 | 0d | 11d | 7036 | DH1400 | GR |  |  | Con/Install |

| ID | WBS | Activity | Type | Duration | Start | Finish | Predecessors | Complete | Remaining | Planned start | Planned finish | Total float | Free float | MSP Activity ID | QTS - AREA | MBTA: Work Type | QTS - DASH | QTS - Subcontractor | QTS - Resp | 05 -SUFFOLK - Building Phase | 12 - SUFFOLK - Export_to_Procore |
| --- | --- | --- | --- | --- | --- | --- | --- | --- | --- | --- | --- | --- | --- | --- | --- | --- | --- | --- | --- | --- | --- |
|  | 2 | **CDU** |  |  | 2026-12-29 | 2027-01-06 |  |  |  |  |  |  |  |  |  |  |  |  |  |  |  |
| DH1400.MG.A110.8690 |  | Gallery 1402 // DH 1400 / Elec Room // CDU Chilled Water Connections |  | 2d | 2026-12-29 | 2026-12-30 | DH.1400A-EQP-219 |  |  |  |  | -6d | 0d | 7040 | DH1400 | Con/Install | GR |  |  |  |  |
| DH1400.MG.A110.8688 |  | Gallery 1402 // DH 1400 /Elec Room // CDU Power Connections |  | 2d | 2026-12-31 | 2027-01-04 | DH1400.MG.A110.8690 |  |  |  |  | -6d | 0d | 7039 | DH1400 | Con/Install | GR | HELIX | OO |  |  |
| DH1400.MG.A110.8689 |  | Gallery 1402 // DH 1400 / Elec Room // CDU Controls Connections |  | 2d | 2027-01-05 | 2027-01-06 | DH1400.MG.A110.8688 |  |  |  |  | -6d | 5d | 7041 | DH1400 | Con/Install | GR |  |  |  |  |
|  | 3 | **MOD** |  |  | 2026-12-09 | 2026-12-14 |  |  |  |  |  |  |  |  |  |  |  |  |  |  |  |
| DH1400.MG.A110.8691 |  | Gallery 1402 // DH 1400 / Elec Room // MOD Power Connections |  | 2d | 2026-12-09 | 2026-12-10 | DH.1400A-EQP-209 |  |  |  |  | 9d | 0d | 7043 | DH1400 | Con/Install | GR | HELIX | OO |  |  |
| DH1400.MG.A110.8692 |  | Gallery 1402 // DH 1400 / Elec Room // MOD LV Connections |  | 2d | 2026-12-11 | 2026-12-14 | DH1400.MG.A110.8691 |  |  |  |  | 9d | 20d | 7044 | DH1400 | Con/Install | GR | HELIX | AC |  |  |
|  | 4 | **Gallery 1403** |  |  | 2026-09-28 | 2027-01-13 |  |  |  |  |  |  |  |  |  |  |  |  |  |  |  |
|  | 1 | **Architectural** |  |  | 2026-09-28 | 2026-12-18 |  |  |  |  |  |  |  |  |  |  |  |  |  |  |  |
| DH.14001040 |  | DH 1400/Gallery 1403 // Frame walls |  | 6d | 2026-09-28 A | 2026-10-14 | DH.1400700 SS | 100% | 0d | 2026-09-30 | 2026-10-07 | -6d | 0d | 1456 | DH1400 |  | GR |  |  | 2 |  |
| F.1000A.1525 |  | DH 1400/Gallery 1403 // BMS & EPMS Rough-In |  | 2d | 2026-10-01 A | 2026-10-02 A | DH.14001040 SS | 100% |  | 2026-11-09 | 2026-11-10 |  |  |  |  |  |  |  |  |  |  |
| DH.14001070 |  | DH 1400/Gallery 1403 // MEP rough in walls |  | 4d | 2026-10-05 A | 2026-10-19 | DH.14001040 FF+2d |  | 4d | 2026-10-08 | 2026-10-14 | -8d | 0d | 1458 | DH1400 |  | GR | HELIX | AC | 2 |  |
| DH.14001000 |  | DH 1400/Gallery 1403 // Seal concrete |  | 2d | 2026-10-14 | 2026-10-15 | DH.14000.1000 SS |  |  |  |  | 47d | 0d | 1452 | DH1400 |  | GR |  |  | 2 | Y |
| DH.14001010 |  | DH 1400/Gallery 1403 // MEPF overhead layout |  | 5d | 2026-10-16 | 2026-10-22 | DH.14001000 |  |  |  |  | 47d | 0d | 1453 | DH1400 |  | GR | HELIX | ACOO | 2 |  |
| DH.14001080 |  | DH 1400/Gallery 1403 // In wall inspection |  | 1d | 2026-10-20 | 2026-10-20 | DH.14001070 |  |  |  |  | -8d | 0d | 1459 | DH1400 |  | GR |  |  | 2 |  |
| DH.14001050 |  | DH 1400/Gallery 1403 // Install Sheetrock Top Down |  | 6d | 2026-10-21 | 2026-10-28 | DH.14001080, DH.14001040 SS+3d, DH.1400660 |  |  |  |  | -8d | 0d | 1461 | DH1400 |  | GR |  |  |  |  |
| B120001.3171 |  | DH 1400/Gallery 1403 // Install Overhead Cable Ladder / 36" Cable Tray - TFO |  | 5d | 2026-10-23 | 2026-10-29 | DH.14001010 |  |  |  |  | 47d | 0d | 1181 |  |  | GR |  |  |  |  |
| DH.14001090 |  | DH 1400/Gallery 1403 // Install Balance of Sheetrock on walls |  | 6d | 2026-10-29 | 2026-11-05 | DH.14001050 |  |  |  |  | -8d | 0d | 1460 | DH1400 |  | GR |  |  | 2 |  |
| B120001.3172 |  | DH 1400/Gallery 1403 // Install Overhead HAC - TFO |  | 5d | 2026-10-30 | 2026-11-05 | B120001.3171 |  |  |  |  | 47d | 0d | 1181 |  |  | GR |  |  |  |  |
| DH.14001030 |  | DH 1400/Gallery 1403 // MEPF high overhead install |  | 10d | 2026-11-06 | 2026-11-20 | B120001.3172, DH.14001010 SS |  |  |  |  | 47d | 0d | 1455 | DH1400 |  | GR | HELIX | ACOO | 2 |  |
| DH.14001100 |  | DH 1400/Gallery 1403 // Tape and finish walls |  | 8d | 2026-11-06 | 2026-11-18 | DH.14001090, DH.14001080 |  |  |  |  | -8d | 0d | 1462 | DH1400 |  | GR |  |  | 2 |  |
| DH.14001060 |  | DH 1400/Gallery 1403 // Install wall door frames |  | 2d | 2026-11-19 | 2026-11-20 | DH.14001100 |  |  |  |  | 52d | 2d | 1457 | DH1400 |  | GR |  |  | 2 |  |
| DH.14001110 |  | DH 1400/Gallery 1403 // Prime and Paint walls |  | 4d | 2026-11-19 | 2026-11-24 | DH.14001100 |  |  |  |  | -8d | 0d | 1463 | DH1400 |  | GR |  |  | 2 |  |
| F.1000A.1291 |  | DH 1400/Gallery 1403 // Rough-In Security |  | 2d | 2026-11-23 | 2026-11-24 | DH.14001030 |  |  |  |  | 47d | 0d | 1156 | DH1400 |  | GR | HELIX | AC |  |  |
| DH.160012152 |  | DH 1400/Gallery 1403 // Ready to Receive Equipment | milestone | 0d | 2026-11-24 | 2026-11-24 | DH.14001110 |  |  |  |  | -8d | 0d | 1465 | DH1400 |  | GR | HELIX | TBD |  |  |
| DH.14001120 |  | DH 1400/Gallery 1403 // Touch up Walls and Fianl Paint |  | 5d | 2026-11-25 | 2026-12-02 | DH.14001110, DH.14001060 |  |  |  |  | 52d | 0d | 1464 | DH1400 |  | GR |  |  | 2 |  |
| F.1000A.1292 |  | DH 1400/Gallery 1403 // Pull & Test Security Cable |  | 3d | 2026-11-25 | 2026-11-30 | F.1000A.1291 |  |  |  |  | 47d | 0d | 1156 | DH1400 |  | GR |  |  |  |  |
| DH.14001130 |  | DH 1400/Gallery 1403 // Install Trim and Devices |  | 2d | 2026-12-01 | 2026-12-02 | DH.14001120 FF |  |  |  |  | 52d | 5d | 1465 | DH1400 |  | GR | HELIX | AC |  |  |
| F.1000A.1293 |  | DH 1400/Gallery 1403 // Install Security Devices |  | 2d | 2026-12-01 | 2026-12-02 | DH.14001060, F.1000A.1292 |  |  |  |  | 47d | 0d | 1156 | DH1400 |  | GR |  |  |  |  |
| F.1000A.1294 |  | DH 1400/Gallery 1403 // Mount & Terminate Security Devices |  | 5d | 2026-12-03 | 2026-12-09 | DH.14001110, F.1000A.1293 |  |  |  |  | 47d | 0d | 1156 | DH1400 |  | GR |  |  |  |  |
| F.1000A.1295 |  | DH 1400/Gallery 1403 // Test Security Devices |  | 2d | 2026-12-10 | 2026-12-11 | DH.14001130, F.1000A.1294, F.1000A.1525 FF |  |  |  |  | 47d | 0d | 1156 | DH1400 |  | GR |  |  |  |  |
| DH.14001140 |  | DH 1400/Gallery 1403 // Suffolk Pre Punch |  | 5d | 2026-12-14 | 2026-12-18 | F.1000A.1295, DH.160012152 |  |  |  |  | 47d | 58d | 1466 | DH1400 |  | GR |  |  |  |  |

| ID | WBS | Activity | Duration | Start | Finish | Predecessors | Total float | Free float | MSP Activity ID | QTS - AREA | QTS - DASH | QTS - Subcontractor | QTS - Resp |
| --- | --- | --- | --- | --- | --- | --- | --- | --- | --- | --- | --- | --- | --- |
|  | 16 | **Raceway** |  |  |  |  |  |  |  |  |  |  |  |
|  | 3 | **Equipment Line-Ups** |  | 2026-11-25 | 2027-01-13 |  |  |  |  |  |  |  |  |
|  | 1 | **A140** |  | 2026-11-25 | 2026-12-29 |  |  |  |  |  |  |  |  |
| DH.1400B-EQP-1 |  | Gallery 1403 - A140/Line-Ups // Set CRAH-DH1400- 23 | 1d | 2026-11-25 | 2026-11-25 | DH.160012152, DH.14006360 | -8d | 0d | 1474 | DH1400 | GR |  |  |
| DH.1400B-EQP-4 |  | Gallery 1403 - A140/Line-Ups // Set CRAH-DH1400- 24 | 1d | 2026-11-25 | 2026-11-25 | DH.1400B-EQP-1 SS, DH.1400B-EQP-1 FF | -8d | 0d | 1475 | DH1400 | GR |  |  |
| DH.1400B-EQP-10 |  | Gallery 1403 - A140/Line-Ups // Mount Electrial Gear for Chiller Controls | 10d | 2026-11-27 | 2026-12-10 | DH.1400B-EQP-4 | 43d | 0d | 1484 | DH1400 | GR | HELIX | AC |
| DH.1400B-EQP-14 |  | Gallery 1403 - A140/Line-Ups // Terminate Electrical Connections - CRAHU | 3d | 2026-11-27 | 2026-12-01 | DH.1400B-EQP-1 | 58d | 15d | 1483 | DH1400 | GR | HELIX | OO |
| DH.1400B-EQP-199 |  | Gallery 1403 - A140/Line-Ups // Set CDU-DH1400-23 | 1d | 2026-11-27 | 2026-11-27 | DH.1400B-EQP-4 | 46d | 3d | 1478 | DH1400 | GR |  |  |
| DH.1400B-EQP-200 |  | Gallery 1403 - A140/Line-Ups // Set CDU-DH1400-24 | 1d | 2026-11-27 | 2026-11-27 | DH.1400B-EQP-4 | 46d | 3d | 1478 | DH1400 | GR |  |  |
| DH.1400B-EQP-3 |  | Gallery 1403 - A140/Line-Ups // Condensate connections to Floor Drains | 10d | 2026-11-27 | 2026-12-10 | DH.1400B-EQP-1 SS, DH.1400B-EQP-4 | 45d | 4d | 1477 | DH1400 | GR |  |  |
| DH.1400B-EQP-15 |  | Gallery 1403 - A140/Line-Ups // Pull Feeder and Branch circuits to MIsc equipment and Chiller controls | 10d | 2026-12-03 | 2026-12-16 | DH.1400B-EQP-200, DH.1400B-EQP-199, DH.1400B-EQP-10 SS+4d | 43d | 0d | 1485 | DH1400 | GR | HELIX | AC |
| DH.1400B-EQP-9 |  | Gallery 1403 - A140/Line-Ups // Mechanical Connections to CRAHU Units | 5d | 2026-12-03 | 2026-12-09 | DH.1400B-EQP-4 SS+5d | 41d | 0d | 1489 | DH1400 | GR |  |  |
| DH.1400B-EQP-17 |  | Gallery 1403 - A140/Line-Ups // Teminate all Misc Equipment and Chiller Controls | 10d | 2026-12-09 | 2026-12-22 | DH.1400B-EQP-15 SS+4d | 43d | 0d | 1486 | DH1400 | GR |  |  |
| DH.1400B-EQP-12 |  | Gallery 1403 - A140/Line-Ups // Condensate connections to Floor Drains | 10d | 2026-12-10 | 2026-12-23 | DH.1400B-EQP-9 SS+5d, DH.1400B-EQP-3 SS+5d | 41d | 0d | 1490 | DH1400 | GR |  |  |
| DH.1400B-EQP-18 |  | Gallery 1403 - A140/Line-Ups // Electrical Gear FOD Inspection Pre-Start Up | 2d | 2026-12-23 | 2026-12-24 | DH.1400B-EQP-14, DH.1400B-EQP-17 | 43d | 54d | 1487 | DH1400 | GR | HELIX | QC |
| DH.1400B-EQP-16 |  | Gallery 1403 - A140/Line-Ups // Mechanical Gear FOD Inspection Pre-Start Up | 3d | 2026-12-24 | 2026-12-29 | DH.1400B-EQP-12, DH.1400B-EQP-3, DH.1400B-EQP-9, DH.1400B-EQP-1 SS, DH.1400B-EQP-4 | 41d | 52d | 1488 | DH1400 | GR |  |  |
|  | 2 | **B140** |  | 2026-11-25 | 2027-01-06 |  |  |  |  |  |  |  |  |
| DH.1400B-EQP-19 |  | Gallery 1403 - B140/Line-Ups // Set CRAH-DH1400- 25 | 1d | 2026-11-25 | 2026-11-25 | DH.1400B-EQP-4 SS | -8d | 0d | 1474 | DH1400 | GR |  |  |
| DH.1400B-EQP-22 |  | Gallery 1403 - B140/Line-Ups // Set CRAH-DH1400- 26 | 1d | 2026-11-25 | 2026-11-25 | DH.1400B-EQP-19 SS, DH.1400B-EQP-19 FF | -8d | 0d | 1475 | DH1400 | GR |  |  |
| DH.1400B-EQP-201 |  | Gallery 1403 - B140/Line-Ups // Set CDU-DH1400-25 | 1d | 2026-11-27 | 2026-11-27 | DH.1400B-EQP-22 | 46d | 3d | 1478 | DH1400 | GR |  |  |
| DH.1400B-EQP-202 |  | Gallery 1403 - B140/Line-Ups // Set CDU-DH1400-26 | 1d | 2026-11-27 | 2026-11-27 | DH.1400B-EQP-22 | 46d | 3d | 1478 | DH1400 | GR |  |  |
| DH.1400B-EQP-28 |  | Gallery 1403 - B140/Line-Ups // Mount Electrial Gear for Chiller Controls | 10d | 2026-11-27 | 2026-12-10 | DH.1400B-EQP-22 | 43d | 0d | 1484 | DH1400 | GR | HELIX | AC |
| DH.1400B-EQP-32 |  | Gallery 1403 - B140/Line-Ups // Terminate CRAHU Electrical Connections | 5d | 2026-11-27 | 2026-12-03 | DH.1400B-EQP-19 | 56d | 13d | 1483 | DH1400 | GR | HELIX | OO |
| DH.1400B-EQP-20 |  | Gallery 1403 - B140/Line-Ups // Connect CRAH units | 10d | 2026-12-03 | 2026-12-16 | DH.1400B-EQP-19 SS+5d, DH.1400B-EQP-22 | 36d | 0d | 1476 | DH1400 | GR |  |  |
| DH.1400B-EQP-27 |  | Gallery 1403 - B140/Line-Ups // Mechanical Connections to CRAHU Units | 10d | 2026-12-03 | 2026-12-16 | DH.1400B-EQP-22 SS+5d | 41d | 5d | 1489 | DH1400 | GR |  |  |
| DH.1400B-EQP-33 |  | Gallery 1403 - B140/Line-Ups // Pull Feeder and Branch circuits to MIsc equipment and Chiller controls | 10d | 2026-12-03 | 2026-12-16 | DH.1400B-EQP-201, DH.1400B-EQP-202, DH.1400B-EQP-28 SS+4d | 43d | 0d | 1485 | DH1400 | GR | HELIX | AC |
| DH.1400B-EQP-35 |  | Gallery 1403 - B140/Line-Ups // Teminate all Misc Equipment and Chiller Controls | 10d | 2026-12-09 | 2026-12-22 | DH.1400B-EQP-33 SS+4d | 43d | 0d | 1486 | DH1400 | GR |  |  |
| DH.1400B-EQP-21 |  | Gallery 1403 - B140/Line-Ups // Condensate connections to Floor Drains | 10d | 2026-12-10 | 2026-12-23 | DH.1400B-EQP-20 SS+5d | 36d | 0d | 1477 | DH1400 | GR |  |  |
| DH.1400B-EQP-30 |  | Gallery 1403 - B140/Line-Ups // Condensate connections to Floor Drains | 10d | 2026-12-17 | 2026-12-31 | DH.1400B-EQP-27 SS+5d, DH.1400B-EQP-21 SS+5d | 36d | 0d | 1490 | DH1400 | GR |  |  |
| DH.1400B-EQP-36 |  | Gallery 1403 - B140/Line-Ups // Electrical Gear FOD Inspection Pre-Start Up | 2d | 2026-12-23 | 2026-12-24 | DH.1400B-EQP-32, DH.1400B-EQP-35 | 43d | 54d | 1487 | DH1400 | GR | HELIX | QC |
| DH.1400B-EQP-34 |  | Gallery 1403 - B140/Line-Ups // Mechanical Gear FOD Inspection Pre-Start Up | 3d | 2027-01-04 | 2027-01-06 | DH.1400B-EQP-30, DH.1400B-EQP-21, DH.1400B-EQP-27, DH.1400B-EQP-20 | 36d | 47d | 1488 | DH1400 | GR |  |  |

| ID | WBS | Activity | Duration | Start | Finish | Predecessors | Total float | Free float | MSP Activity ID | QTS - AREA | QTS - DASH | QTS - Subcontractor | QTS - Resp |
| --- | --- | --- | --- | --- | --- | --- | --- | --- | --- | --- | --- | --- | --- |
|  | 3 | **C140** |  | 2026-11-25 | 2027-01-06 |  |  |  |  |  |  |  |  |
| DH.1400B-EQP-37 |  | Gallery 1403 - C140/Line-Ups // Set CRAH-DH1400- 27 | 1d | 2026-11-25 | 2026-11-25 | DH.1400B-EQP-22 SS | -8d | 0d | 1474 | DH1400 | GR |  |  |
| DH.1400B-EQP-40 |  | Gallery 1403 - C140/Line-Ups // Set CRAH-DH1400- 28 | 1d | 2026-11-25 | 2026-11-25 | DH.1400B-EQP-37 SS, DH.1400B-EQP-37 FF | -8d | 0d | 1475 | DH1400 | GR |  |  |
| DH.1400B-EQP-203 |  | Gallery 1403 - C140/Line-Ups // Set CDU-DH1400-27 | 1d | 2026-11-27 | 2026-11-27 | DH.1400B-EQP-40 | 46d | 3d | 1478 | DH1400 | GR |  |  |
| DH.1400B-EQP-204 |  | Gallery 1403 - C140/Line-Ups // Set CDU-DH1400-28 | 1d | 2026-11-27 | 2026-11-27 | DH.1400B-EQP-40 | 46d | 3d | 1478 | DH1400 | GR |  |  |
| DH.1400B-EQP-46 |  | Gallery 1403 - C140/Line-Ups // Mount Electrial Gear for Chiller Controls | 10d | 2026-11-27 | 2026-12-10 | DH.1400B-EQP-40 | 43d | 0d | 1484 | DH1400 | GR | HELIX | AC |
| DH.1400B-EQP-50 |  | Gallery 1403 - C140/Line-Ups // Terminate CRAHU Electrical Connections | 5d | 2026-11-27 | 2026-12-03 | DH.1400B-EQP-37 | 56d | 13d | 1483 | DH1400 | GR | HELIX | OO |
| DH.1400B-EQP-38 |  | Gallery 1403 - C140/Line-Ups // Connect CRAH units | 10d | 2026-12-03 | 2026-12-16 | DH.1400B-EQP-37 SS+5d, DH.1400B-EQP-40 | 36d | 0d | 1476 | DH1400 | GR |  |  |
| DH.1400B-EQP-45 |  | Gallery 1403 - C140/Line-Ups // Mechanical Connections to CRAHU Units | 10d | 2026-12-03 | 2026-12-16 | DH.1400B-EQP-40 SS+5d | 41d | 5d | 1489 | DH1400 | GR |  |  |
| DH.1400B-EQP-51 |  | Gallery 1403 - C140/Line-Ups // Pull Feeder and Branch circuits to MIsc equipment and Chiller controls | 10d | 2026-12-03 | 2026-12-16 | DH.1400B-EQP-203, DH.1400B-EQP-204, DH.1400B-EQP-46 SS+4d | 43d | 0d | 1485 | DH1400 | GR | HELIX | AC |
| DH.1400B-EQP-53 |  | Gallery 1403 - C140/Line-Ups // Teminate all Misc Equipment and Chiller Controls | 10d | 2026-12-09 | 2026-12-22 | DH.1400B-EQP-51 SS+4d | 43d | 0d | 1486 | DH1400 | GR |  |  |
| DH.1400B-EQP-39 |  | Gallery 1403 - C140/Line-Ups // Condensate connections to Floor Drains | 10d | 2026-12-10 | 2026-12-23 | DH.1400B-EQP-38 SS+5d | 36d | 0d | 1477 | DH1400 | GR |  |  |
| DH.1400B-EQP-48 |  | Gallery 1403 - C140/Line-Ups // Condensate connections to Floor Drains | 10d | 2026-12-17 | 2026-12-31 | DH.1400B-EQP-45 SS+5d, DH.1400B-EQP-39 SS+5d | 36d | 0d | 1490 | DH1400 | GR |  |  |
| DH.1400B-EQP-54 |  | Gallery 1403 - C140/Line-Ups // Electrical Gear FOD Inspection Pre-Start Up | 2d | 2026-12-23 | 2026-12-24 | DH.1400B-EQP-50, DH.1400B-EQP-53 | 43d | 54d | 1487 | DH1400 | GR | HELIX | QC |
| DH.1400B-EQP-52 |  | Gallery 1403 - C140/Line-Ups // Mechanical Gear FOD Inspection Pre-Start Up | 3d | 2027-01-04 | 2027-01-06 | DH.1400B-EQP-48, DH.1400B-EQP-39, DH.1400B-EQP-45, DH.1400B-EQP-38 | 36d | 47d | 1488 | DH1400 | GR |  |  |
|  | 4 | **D140** |  | 2026-11-27 | 2027-01-07 |  |  |  |  |  |  |  |  |
| DH.1400B-EQP-55 |  | Gallery 1403 - D140/Line-Ups // Set CRAH-DH1400- 29 | 1d | 2026-11-27 | 2026-11-27 | DH.1400B-EQP-40 | -8d | 0d | 1474 | DH1400 | GR |  |  |
| DH.1400B-EQP-58 |  | Gallery 1403 - D140/Line-Ups // Set CRAH-DH1400-30 | 1d | 2026-11-27 | 2026-11-27 | DH.1400B-EQP-55 SS, DH.1400B-EQP-55 FF | -8d | 0d | 1475 | DH1400 | GR |  |  |
| DH.1400B-EQP-205 |  | Gallery 1403 - D140/Line-Ups // Set CDU-DH1400-29 | 1d | 2026-11-30 | 2026-11-30 | DH.1400B-EQP-58 | 45d | 3d | 1478 | DH1400 | GR |  |  |
| DH.1400B-EQP-206 |  | Gallery 1403 - D140/Line-Ups // Set CDU-DH1400-30 | 1d | 2026-11-30 | 2026-11-30 | DH.1400B-EQP-58 | 45d | 3d | 1478 | DH1400 | GR |  |  |
| DH.1400B-EQP-64 |  | Gallery 1403 - D140/Line-Ups // Mount Electrial Gear for Chiller Controls | 10d | 2026-11-30 | 2026-12-11 | DH.1400B-EQP-58 | 42d | 0d | 1484 | DH1400 | GR | HELIX | AC |
| DH.1400B-EQP-68 |  | Gallery 1403 - D140/Line-Ups // Terminate CRAHU Electrical Connections | 5d | 2026-11-30 | 2026-12-04 | DH.1400B-EQP-55 | 55d | 13d | 1483 | DH1400 | GR | HELIX | OO |
| DH.1400B-EQP-56 |  | Gallery 1403 - D140/Line-Ups // Connect CRAH units | 10d | 2026-12-04 | 2026-12-17 | DH.1400B-EQP-55 SS+5d, DH.1400B-EQP-58 | 35d | 0d | 1476 | DH1400 | GR |  |  |
| DH.1400B-EQP-63 |  | Gallery 1403 - D140/Line-Ups // Mechanical Connections to CRAHU Units | 10d | 2026-12-04 | 2026-12-17 | DH.1400B-EQP-58 SS+5d | 40d | 5d | 1489 | DH1400 | GR |  |  |
| DH.1400B-EQP-69 |  | Gallery 1403 - D140/Line-Ups // Pull Feeder and Branch circuits to MIsc equipment and Chiller controls | 10d | 2026-12-04 | 2026-12-17 | DH.1400B-EQP-205, DH.1400B-EQP-206, DH.1400B-EQP-64 SS+4d | 42d | 0d | 1485 | DH1400 | GR | HELIX | AC |
| DH.1400B-EQP-71 |  | Gallery 1403 - D140/Line-Ups // Teminate all Misc Equipment and Chiller Controls | 10d | 2026-12-10 | 2026-12-23 | DH.1400B-EQP-69 SS+4d | 42d | 0d | 1486 | DH1400 | GR |  |  |
| DH.1400B-EQP-57 |  | Gallery 1403 - D140/Line-Ups // Condensate connections to Floor Drains | 10d | 2026-12-11 | 2026-12-24 | DH.1400B-EQP-56 SS+5d | 35d | 0d | 1477 | DH1400 | GR |  |  |
| DH.1400B-EQP-66 |  | Gallery 1403 - D140/Line-Ups // Condensate connections to Floor Drains | 10d | 2026-12-18 | 2027-01-04 | DH.1400B-EQP-63 SS+5d, DH.1400B-EQP-57 SS+5d | 35d | 0d | 1490 | DH1400 | GR |  |  |
| DH.1400B-EQP-72 |  | Gallery 1403 - D140/Line-Ups // Electrical Gear FOD Inspection Pre-Start Up | 2d | 2026-12-24 | 2026-12-28 | DH.1400B-EQP-68, DH.1400B-EQP-71 | 42d | 53d | 1487 | DH1400 | GR | HELIX | QC |
| DH.1400B-EQP-70 |  | Gallery 1403 - D140/Line-Ups // Mechanical Gear FOD Inspection Pre-Start Up | 3d | 2027-01-05 | 2027-01-07 | DH.1400B-EQP-66, DH.1400B-EQP-57, DH.1400B-EQP-63, DH.1400B-EQP-56 | 35d | 46d | 1488 | DH1400 | GR |  |  |

| ID | WBS | Activity | Duration | Start | Finish | Predecessors | Total float | Free float | MSP Activity ID | QTS - AREA | QTS - DASH | QTS - Subcontractor | QTS - Resp |
| --- | --- | --- | --- | --- | --- | --- | --- | --- | --- | --- | --- | --- | --- |
|  | 5 | **E140** |  | 2026-11-27 | 2027-01-07 |  |  |  |  |  |  |  |  |
| DH.1400B-EQP-73 |  | Gallery 1403 - E140/Line-Ups // Set CRAH-DH1400- 31 | 1d | 2026-11-27 | 2026-11-27 | DH.1400B-EQP-58 SS | -8d | 0d | 1474 | DH1400 | GR |  |  |
| DH.1400B-EQP-76 |  | Gallery 1403 - E140/Line-Ups // Set CRAH-DH1400-32 | 1d | 2026-11-27 | 2026-11-27 | DH.1400B-EQP-73 SS, DH.1400B-EQP-73 FF | -8d | 0d | 1475 | DH1400 | GR |  |  |
| DH.1400B-EQP-207 |  | Gallery 1403 - E140/Line-Ups // Set CDU-DH1400-31 | 1d | 2026-11-30 | 2026-11-30 | DH.1400B-EQP-76 | 45d | 3d | 1478 | DH1400 | GR |  |  |
| DH.1400B-EQP-208 |  | Gallery 1403 - E140/Line-Ups // Set CDU-DH1400-32 | 1d | 2026-11-30 | 2026-11-30 | DH.1400B-EQP-76 | 45d | 3d | 1478 | DH1400 | GR |  |  |
| DH.1400B-EQP-82 |  | Gallery 1403 - E140/Line-Ups // Mount Electrial Gear for Chiller Controls | 10d | 2026-11-30 | 2026-12-11 | DH.1400B-EQP-76 | 42d | 0d | 1484 | DH1400 | GR | HELIX | AC |
| DH.1400B-EQP-86 |  | Gallery 1403 - E140/Line-Ups // Terminate CRAHU Electrical Connections | 5d | 2026-11-30 | 2026-12-04 | DH.1400B-EQP-73 | 55d | 13d | 1483 | DH1400 | GR | HELIX | OO |
| DH.1400B-EQP-74 |  | Gallery 1403 - E140/Line-Ups // Connect CRAH units | 10d | 2026-12-04 | 2026-12-17 | DH.1400B-EQP-73 SS+5d, DH.1400B-EQP-76 | 35d | 0d | 1476 | DH1400 | GR |  |  |
| DH.1400B-EQP-81 |  | Gallery 1403 - E140/Line-Ups // Mechanical Connections to CRAHU Units | 10d | 2026-12-04 | 2026-12-17 | DH.1400B-EQP-76 SS+5d | 40d | 5d | 1489 | DH1400 | GR |  |  |
| DH.1400B-EQP-87 |  | Gallery 1403 - E140/Line-Ups // Pull Feeder and Branch circuits to MIsc equipment and Chiller controls | 10d | 2026-12-04 | 2026-12-17 | DH.1400B-EQP-208, DH.1400B-EQP-207, DH.1400B-EQP-82 SS+4d | 42d | 0d | 1485 | DH1400 | GR | HELIX | AC |
| DH.1400B-EQP-89 |  | Gallery 1403 - E140/Line-Ups // Teminate all Misc Equipment and Chiller Controls | 10d | 2026-12-10 | 2026-12-23 | DH.1400B-EQP-87 SS+4d | 42d | 0d | 1486 | DH1400 | GR |  |  |
| DH.1400B-EQP-75 |  | Gallery 1403 - E140/Line-Ups // Condensate connections to Floor Drains | 10d | 2026-12-11 | 2026-12-24 | DH.1400B-EQP-74 SS+5d | 35d | 0d | 1477 | DH1400 | GR |  |  |
| DH.1400B-EQP-84 |  | Gallery 1403 - E140/Line-Ups // Condensate connections to Floor Drains | 10d | 2026-12-18 | 2027-01-04 | DH.1400B-EQP-81 SS+5d, DH.1400B-EQP-75 SS+5d | 35d | 0d | 1490 | DH1400 | GR |  |  |
| DH.1400B-EQP-90 |  | Gallery 1403 - E140/Line-Ups // Electrical Gear FOD Inspection Pre-Start Up | 2d | 2026-12-24 | 2026-12-28 | DH.1400B-EQP-86, DH.1400B-EQP-89 | 42d | 53d | 1487 | DH1400 | GR | HELIX | QC |
| DH.1400B-EQP-88 |  | Gallery 1403 - E140/Line-Ups // Mechanical Gear FOD Inspection Pre-Start Up | 3d | 2027-01-05 | 2027-01-07 | DH.1400B-EQP-84, DH.1400B-EQP-75, DH.1400B-EQP-81, DH.1400B-EQP-74 | 35d | 46d | 1488 | DH1400 | GR |  |  |
|  | 6 | **F140** |  | 2026-11-27 | 2027-01-07 |  |  |  |  |  |  |  |  |
| DH.1400B-EQP-91 |  | Gallery 1403 - F140/Line-Ups // Set CRAH-DH1400-33 | 1d | 2026-11-27 | 2026-11-27 | DH.1400B-EQP-76 SS | -8d | 0d | 1474 | DH1400 | GR |  |  |
| DH.1400B-EQP-94 |  | Gallery 1403 - F140/Line-Ups // Set CRAH-DH1400-34 | 1d | 2026-11-27 | 2026-11-27 | DH.1400B-EQP-91 SS, DH.1400B-EQP-91 FF | -8d | 0d | 1475 | DH1400 | GR |  |  |
| DH.1400B-EQP-100 |  | Gallery 1403 - F140/Line-Ups // Mount Electrial Gear for Chiller Controls | 10d | 2026-11-30 | 2026-12-11 | DH.1400B-EQP-94 | 42d | 0d | 1484 | DH1400 | GR | HELIX | AC |
| DH.1400B-EQP-104 |  | Gallery 1403 - F140/Line-Ups // Terminate CRAHU Electrical Connections | 5d | 2026-11-30 | 2026-12-04 | DH.1400B-EQP-91 | 55d | 13d | 1483 | DH1400 | GR | HELIX | OO |
| DH.1400B-EQP-209 |  | Gallery 1403 - F140/Line-Ups // Set CDU-DH1400-33 | 1d | 2026-11-30 | 2026-11-30 | DH.1400B-EQP-94 | 45d | 3d | 1478 | DH1400 | GR |  |  |
| DH.1400B-EQP-210 |  | Gallery 1403 - F140/Line-Ups // Set CDU-DH1400-34 | 1d | 2026-11-30 | 2026-11-30 | DH.1400B-EQP-94 | 45d | 3d | 1478 | DH1400 | GR |  |  |
| DH.1400B-EQP-105 |  | Gallery 1403 - F140/Line-Ups // Pull Feeder and Branch circuits to MIsc equipment and Chiller controls | 10d | 2026-12-04 | 2026-12-17 | DH.1400B-EQP-209, DH.1400B-EQP-210, DH.1400B-EQP-100 SS+4d | 42d | 0d | 1485 | DH1400 | GR | HELIX | AC |
| DH.1400B-EQP-92 |  | Gallery 1403 - F140/Line-Ups // Connect CRAH units | 10d | 2026-12-04 | 2026-12-17 | DH.1400B-EQP-91 SS+5d, DH.1400B-EQP-94 | 35d | 0d | 1476 | DH1400 | GR |  |  |
| DH.1400B-EQP-99 |  | Gallery 1403 - F140/Line-Ups // Mechanical Connections to CRAHU Units | 10d | 2026-12-04 | 2026-12-17 | DH.1400B-EQP-94 SS+5d | 40d | 5d | 1489 | DH1400 | GR |  |  |
| DH.1400B-EQP-107 |  | Gallery 1403 - F140/Line-Ups // Teminate all Misc Equipment and Chiller Controls | 10d | 2026-12-10 | 2026-12-23 | DH.1400B-EQP-105 SS+4d | 42d | 0d | 1486 | DH1400 | GR |  |  |
| DH.1400B-EQP-93 |  | Gallery 1403 - F140/Line-Ups // Condensate connections to Floor Drains | 10d | 2026-12-11 | 2026-12-24 | DH.1400B-EQP-92 SS+5d | 35d | 0d | 1477 | DH1400 | GR |  |  |
| DH.1400B-EQP-102 |  | Gallery 1403 - F140/Line-Ups // Condensate connections to Floor Drains | 10d | 2026-12-18 | 2027-01-04 | DH.1400B-EQP-99 SS+5d, DH.1400B-EQP-93 SS+5d | 35d | 0d | 1490 | DH1400 | GR |  |  |
| DH.1400B-EQP-108 |  | Gallery 1403 - F140/Line-Ups // Electrical Gear FOD Inspection Pre-Start Up | 2d | 2026-12-24 | 2026-12-28 | DH.1400B-EQP-104, DH.1400B-EQP-107 | 42d | 53d | 1487 | DH1400 | GR | HELIX | QC |
| DH.1400B-EQP-106 |  | Gallery 1403 - F140/Line-Ups // Mechanical Gear FOD Inspection Pre-Start Up | 3d | 2027-01-05 | 2027-01-07 | DH.1400B-EQP-102, DH.1400B-EQP-93, DH.1400B-EQP-99, DH.1400B-EQP-92 | 35d | 46d | 1488 | DH1400 | GR |  |  |

| ID | WBS | Activity | Duration | Start | Finish | Predecessors | Total float | Free float | MSP Activity ID | QTS - AREA | QTS - DASH | QTS - Subcontractor | QTS - Resp |
| --- | --- | --- | --- | --- | --- | --- | --- | --- | --- | --- | --- | --- | --- |
|  | 7 | **G140** |  | 2026-11-30 | 2027-01-08 |  |  |  |  |  |  |  |  |
| DH.1400B-EQP-109 |  | Gallery 1403 - G140/Line-Ups // Set CRAH-DH1400-35 | 1d | 2026-11-30 | 2026-11-30 | DH.1400B-EQP-94 | -8d | 0d | 1474 | DH1400 | GR |  |  |
| DH.1400B-EQP-112 |  | Gallery 1403 - G140/Line-Ups // Set CRAH-DH1400-36 | 1d | 2026-12-01 | 2026-12-01 | DH.1400B-EQP-109 | -8d | 0d | 1475 | DH1400 | GR |  |  |
| DH.1400B-EQP-122 |  | Gallery 1403 - G140/Line-Ups // Terminate CRAHU Electrical Connections | 5d | 2026-12-01 | 2026-12-07 | DH.1400B-EQP-109 | 54d | 14d | 1483 | DH1400 | GR | HELIX | OO |
| DH.1400B-EQP-118 |  | Gallery 1403 - G140/Line-Ups // Mount Electrial Gear for Chiller Controls | 10d | 2026-12-02 | 2026-12-15 | DH.1400B-EQP-112 | 40d | 0d | 1484 | DH1400 | GR | HELIX | AC |
| DH.1400B-EQP-211 |  | Gallery 1403 - G140/Line-Ups // Set CDU-DH1400-35 | 1d | 2026-12-02 | 2026-12-02 | DH.1400B-EQP-112 | 43d | 3d | 1478 | DH1400 | GR |  |  |
| DH.1400B-EQP-212 |  | Gallery 1403 - G140/Line-Ups // Set CDU-DH1400-36 | 1d | 2026-12-02 | 2026-12-02 | DH.1400B-EQP-112 | 43d | 3d | 1478 | DH1400 | GR |  |  |
| DH.1400B-EQP-110 |  | Gallery 1403 - G140/Line-Ups // Connect CRAH units | 10d | 2026-12-07 | 2026-12-18 | DH.1400B-EQP-109 SS+5d, DH.1400B-EQP-112 | 34d | 0d | 1476 | DH1400 | GR |  |  |
| DH.1400B-EQP-117 |  | Gallery 1403 - G140/Line-Ups // Mechanical Connections to CRAHU Units | 10d | 2026-12-08 | 2026-12-21 | DH.1400B-EQP-112 SS+5d | 38d | 4d | 1489 | DH1400 | GR |  |  |
| DH.1400B-EQP-123 |  | Gallery 1403 - G140/Line-Ups // Pull Feeder and Branch circuits to MIsc equipment and Chiller controls | 10d | 2026-12-08 | 2026-12-21 | DH.1400B-EQP-211, DH.1400B-EQP-212, DH.1400B-EQP-118 SS+4d | 40d | 0d | 1485 | DH1400 | GR | HELIX | AC |
| DH.1400B-EQP-111 |  | Gallery 1403 - G140/Line-Ups // Condensate connections to Floor Drains | 10d | 2026-12-14 | 2026-12-28 | DH.1400B-EQP-110 SS+5d | 34d | 0d | 1477 | DH1400 | GR |  |  |
| DH.1400B-EQP-125 |  | Gallery 1403 - G140/Line-Ups // Teminate all Misc Equipment and Chiller Controls | 10d | 2026-12-14 | 2026-12-28 | DH.1400B-EQP-123 SS+4d | 40d | 0d | 1486 | DH1400 | GR |  |  |
| DH.1400B-EQP-120 |  | Gallery 1403 - G140/Line-Ups // Condensate connections to Floor Drains | 10d | 2026-12-21 | 2027-01-05 | DH.1400B-EQP-117 SS+5d, DH.1400B-EQP-111 SS+5d | 34d | 0d | 1490 | DH1400 | GR |  |  |
| DH.1400B-EQP-126 |  | Gallery 1403 - G140/Line-Ups // Electrical Gear FOD Inspection Pre-Start Up | 2d | 2026-12-29 | 2026-12-30 | DH.1400B-EQP-122, DH.1400B-EQP-125 | 40d | 51d | 1487 | DH1400 | GR | HELIX | QC |
| DH.1400B-EQP-124 |  | Gallery 1403 - G140/Line-Ups // Mechanical Gear FOD Inspection Pre-Start Up | 3d | 2027-01-06 | 2027-01-08 | DH.1400B-EQP-120, DH.1400B-EQP-111, DH.1400B-EQP-117, DH.1400B-EQP-110 | 34d | 45d | 1488 | DH1400 | GR |  |  |
|  | 8 | **H140** |  | 2026-12-02 | 2027-01-12 |  |  |  |  |  |  |  |  |
| DH.1400B-EQP-127 |  | Gallery 1403 - H140/Line-Ups // Set CRAH-DH1400-37 | 1d | 2026-12-02 | 2026-12-02 | DH.1400B-EQP-112 | -8d | 0d | 1474 | DH1400 | GR |  |  |
| DH.1400B-EQP-130 |  | Gallery 1403 - H140/Line-Ups // Set CRAH-DH1400-38 | 1d | 2026-12-02 | 2026-12-02 | DH.1400B-EQP-127 SS, DH.1400B-EQP-127 FF | -8d | 0d | 1475 | DH1400 | GR |  |  |
| DH.1400B-EQP-136 |  | Gallery 1403 - H140/Line-Ups // Mount Electrial Gear for Chiller Controls | 10d | 2026-12-03 | 2026-12-16 | DH.1400B-EQP-130 | 39d | 0d | 1484 | DH1400 | GR | HELIX | AC |
| DH.1400B-EQP-140 |  | Gallery 1403 - H140/Line-Ups // Terminate CRAHU Electrical Connections | 5d | 2026-12-03 | 2026-12-09 | DH.1400B-EQP-127 | 52d | 13d | 1483 | DH1400 | GR | HELIX | OO |
| DH.1400B-EQP-213 |  | Gallery 1403 - H140/Line-Ups // Set CDU-DH1400-37 | 1d | 2026-12-03 | 2026-12-03 | DH.1400B-EQP-130 | 42d | 3d | 1478 | DH1400 | GR |  |  |
| DH.1400B-EQP-214 |  | Gallery 1403 - H140/Line-Ups // Set CDU-DH1400-38 | 1d | 2026-12-03 | 2026-12-03 | DH.1400B-EQP-130 | 42d | 3d | 1478 | DH1400 | GR |  |  |
| DH.1400B-EQP-128 |  | Gallery 1403 - H140/Line-Ups // Connect CRAH units | 10d | 2026-12-09 | 2026-12-22 | DH.1400B-EQP-127 SS+5d, DH.1400B-EQP-130 | 32d | 0d | 1476 | DH1400 | GR |  |  |
| DH.1400B-EQP-135 |  | Gallery 1403 - H140/Line-Ups // Mechanical Connections to CRAHU Units | 10d | 2026-12-09 | 2026-12-22 | DH.1400B-EQP-130 SS+5d | 37d | 5d | 1489 | DH1400 | GR |  |  |
| DH.1400B-EQP-141 |  | Gallery 1403 - H140/Line-Ups // Pull Feeder and Branch circuits to MIsc equipment and Chiller controls | 10d | 2026-12-09 | 2026-12-22 | DH.1400B-EQP-214, DH.1400B-EQP-213, DH.1400B-EQP-136 SS+4d | 39d | 0d | 1485 | DH1400 | GR | HELIX | AC |
| DH.1400B-EQP-143 |  | Gallery 1403 - H140/Line-Ups // Teminate all Misc Equipment and Chiller Controls | 10d | 2026-12-15 | 2026-12-29 | DH.1400B-EQP-141 SS+4d | 39d | 0d | 1486 | DH1400 | GR |  |  |
| DH.1400B-EQP-129 |  | Gallery 1403 - H140/Line-Ups // Condensate connections to Floor Drains | 10d | 2026-12-16 | 2026-12-30 | DH.1400B-EQP-128 SS+5d | 32d | 0d | 1477 | DH1400 | GR |  |  |
| DH.1400B-EQP-138 |  | Gallery 1403 - H140/Line-Ups // Condensate connections to Floor Drains | 10d | 2026-12-23 | 2027-01-07 | DH.1400B-EQP-135 SS+5d, DH.1400B-EQP-129 SS+5d | 32d | 0d | 1490 | DH1400 | GR |  |  |
| DH.1400B-EQP-144 |  | Gallery 1403 - H140/Line-Ups // Electrical Gear FOD Inspection Pre-Start Up | 2d | 2026-12-30 | 2026-12-31 | DH.1400B-EQP-140, DH.1400B-EQP-143 | 39d | 50d | 1487 | DH1400 | GR | HELIX | QC |
| DH.1400B-EQP-142 |  | Gallery 1403 - H140/Line-Ups // Mechanical Gear FOD Inspection Pre-Start Up | 3d | 2027-01-08 | 2027-01-12 | DH.1400B-EQP-138, DH.1400B-EQP-129, DH.1400B-EQP-135, DH.1400B-EQP-128 | 32d | 43d | 1488 | DH1400 | GR |  |  |

| ID | WBS | Activity | Duration | Start | Finish | Predecessors | Total float | Free float | MSP Activity ID | QTS - AREA | QTS - DASH | QTS - Subcontractor | QTS - Resp |
| --- | --- | --- | --- | --- | --- | --- | --- | --- | --- | --- | --- | --- | --- |
|  | 9 | **J140** |  | 2026-12-03 | 2027-01-13 |  |  |  |  |  |  |  |  |
| DH.1400B-EQP-145 |  | Gallery 1403 - J140/Line-Ups // Set CRAH-DH1400-39 | 1d | 2026-12-03 | 2026-12-03 | DH.1400B-EQP-130 | -8d | 0d | 1474 | DH1400 | GR |  |  |
| DH.1400B-EQP-148 |  | Gallery 1403 - J140/Line-Ups // Set CRAH-DH1400-40 | 1d | 2026-12-03 | 2026-12-03 | DH.1400B-EQP-145 SS, DH.1400B-EQP-145 FF | -7d | 0d | 1475 | DH1400 | GR |  |  |
| DH.1400B-EQP-154 |  | Gallery 1403 - J140/Line-Ups // Mount Electrial Gear for Chiller Controls | 10d | 2026-12-04 | 2026-12-17 | DH.1400B-EQP-148 | 38d | 0d | 1484 | DH1400 | GR | HELIX | AC |
| DH.1400B-EQP-158 |  | Gallery 1403 - J140/Line-Ups // Terminate CRAHU Electrical Connections | 5d | 2026-12-04 | 2026-12-10 | DH.1400B-EQP-145 | 51d | 13d | 1483 | DH1400 | GR | HELIX | OO |
| DH.1400B-EQP-215 |  | Gallery 1403 - J140/Line-Ups // Set CDU-DH1400-39 | 1d | 2026-12-04 | 2026-12-04 | DH.1400B-EQP-148 | 41d | 3d | 1478 | DH1400 | GR |  |  |
| DH.1400B-EQP-216 |  | Gallery 1403 - J140/Line-Ups // Set CDU-DH1400-40 | 1d | 2026-12-04 | 2026-12-04 | DH.1400B-EQP-148 | 41d | 3d | 1478 | DH1400 | GR |  |  |
| DH.1400B-EQP-146 |  | Gallery 1403 - J140/Line-Ups // Connect CRAH units | 10d | 2026-12-10 | 2026-12-23 | DH.1400B-EQP-145 SS+5d, DH.1400B-EQP-148 | -8d | 0d | 1476 | DH1400 | GR |  |  |
| DH.1400B-EQP-153 |  | Gallery 1403 - J140/Line-Ups // Mechanical Connections to CRAHU Units | 10d | 2026-12-10 | 2026-12-23 | DH.1400B-EQP-148 SS+5d | -3d | 5d | 1489 | DH1400 | GR |  |  |
| DH.1400B-EQP-159 |  | Gallery 1403 - J140/Line-Ups // Pull Feeder and Branch circuits to MIsc equipment and Chiller controls | 10d | 2026-12-10 | 2026-12-23 | DH.1400B-EQP-216, DH.1400B-EQP-215, DH.1400B-EQP-154 SS+4d | 38d | 0d | 1485 | DH1400 | GR | HELIX | AC |
| DH.1400B-EQP-161 |  | Gallery 1403 - J140/Line-Ups // Teminate all Misc Equipment and Chiller Controls | 10d | 2026-12-16 | 2026-12-30 | DH.1400B-EQP-159 SS+4d | 38d | 0d | 1486 | DH1400 | GR |  |  |
| DH.1400B-EQP-147 |  | Gallery 1403 - J140/Line-Ups // Condensate connections to Floor Drains | 10d | 2026-12-17 | 2026-12-31 | DH.1400B-EQP-146 SS+5d | -8d | 0d | 1477 | DH1400 | GR |  |  |
| DH.1400B-EQP-156 |  | Gallery 1403 - J140/Line-Ups // Condensate connections to Floor Drains | 10d | 2026-12-24 | 2027-01-08 | DH.1400B-EQP-153 SS+5d, DH.1400B-EQP-147 SS+5d | -8d | 0d | 1490 | DH1400 | GR |  |  |
| DH.1400B-EQP-162 |  | Gallery 1403 - J140/Line-Ups // Electrical Gear FOD Inspection Pre-Start Up | 2d | 2026-12-31 | 2027-01-04 | DH.1400B-EQP-158, DH.1400B-EQP-161 | 38d | 49d | 1487 | DH1400 | GR | HELIX | QC |
| DH.1400B-EQP-160 |  | Gallery 1403 - J140/Line-Ups // Mechanical Gear FOD Inspection Pre-Start Up | 3d | 2027-01-11 | 2027-01-13 | DH.1400B-EQP-156, DH.1400B-EQP-153, DH.1400B-EQP-147, DH.1400B-EQP-146 | 31d | 42d | 1488 | DH1400 | GR |  |  |
|  | 10 | **K140** |  | 2026-12-04 | 2027-01-07 |  |  |  |  |  |  |  |  |
| DH.1400B-EQP-163 |  | Gallery 1403 - K140/Line-Ups // Set CRAH-DH1400-41 | 1d | 2026-12-04 | 2026-12-04 | DH.1400B-EQP-148 | -7d | 0d | 1474 | DH1400 | GR |  |  |
| DH.1400B-EQP-166 |  | Gallery 1403 - K140/Line-Ups // Set CRAH-DH1400-42 | 1d | 2026-12-04 | 2026-12-04 | DH.1400B-EQP-163 SS, DH.1400B-EQP-163 FF | -7d | 0d | 1475 | DH1400 | GR |  |  |
| DH.1400B-EQP-172 |  | Gallery 1403 - K140/Line-Ups // Mount Electrial Gear for Chiller Controls | 10d | 2026-12-07 | 2026-12-18 | DH.1400B-EQP-166 | 37d | 0d | 1484 | DH1400 | GR | HELIX | AC |
| DH.1400B-EQP-176 |  | Gallery 1403 - K140/Line-Ups // Terminate CRAHU Electrical Connections | 5d | 2026-12-07 | 2026-12-11 | DH.1400B-EQP-163 | 50d | 13d | 1483 | DH1400 | GR | HELIX | OO |
| DH.1400B-EQP-164 |  | Gallery 1403 - K140/Line-Ups // Connect CRAH units | 10d | 2026-12-11 | 2026-12-24 | DH.1400B-EQP-163 SS+5d, DH.1400B-EQP-166 | 40d | 5d | 1476 | DH1400 | GR |  |  |
| DH.1400B-EQP-171 |  | Gallery 1403 - K140/Line-Ups // Mechanical Connections to CRAHU Units | 10d | 2026-12-11 | 2026-12-24 | DH.1400B-EQP-166 SS+5d | 35d | 0d | 1489 | DH1400 | GR |  |  |
| DH.1400B-EQP-177 |  | Gallery 1403 - K140/Line-Ups // Pull Feeder and Branch circuits to MIsc equipment and Chiller controls | 10d | 2026-12-11 | 2026-12-24 | DH.1400B-EQP-172 SS+4d | 37d | 0d | 1485 | DH1400 | GR | HELIX | AC |
| DH.1400B-EQP-179 |  | Gallery 1403 - K140/Line-Ups // Teminate all Misc Equipment and Chiller Controls | 10d | 2026-12-17 | 2026-12-31 | DH.1400B-EQP-177 SS+4d | 37d | 0d | 1486 | DH1400 | GR |  |  |
| DH.1400B-EQP-174 |  | Gallery 1403 - K140/Line-Ups // Condensate connections to Floor Drains | 10d | 2026-12-18 | 2027-01-04 | DH.140012052, DH.1400B-EQP-164 SS, DH.1400B-EQP-171 SS+5d | 35d | 0d | 1490 | DH1400 | GR |  |  |
| DH.1400B-EQP-180 |  | Gallery 1403 - K140/Line-Ups // Electrical Gear FOD Inspection Pre-Start Up | 2d | 2027-01-04 | 2027-01-05 | DH.1400B-EQP-176, DH.1400B-EQP-179 | 37d | 48d | 1487 | DH1400 | GR | HELIX | QC |
| DH.1400B-EQP-178 |  | Gallery 1403 - K140/Line-Ups // Mechanical Gear FOD Inspection Pre-Start Up | 3d | 2027-01-05 | 2027-01-07 | DH.1400B-EQP-164 SS, DH.1400B-EQP-174, DH.1400B-EQP-171, DH.1400B-EQP-164 | 35d | 46d | 1488 | DH1400 | GR |  |  |

| ID | WBS | Activity | Duration | Start | Finish | Predecessors | Total float | Free float | MSP Activity ID | QTS - AREA | QTS - DASH | QTS - Subcontractor | QTS - Resp | MBTA: Work Type | 12 - SUFFOLK - Export_to_Procore |
| --- | --- | --- | --- | --- | --- | --- | --- | --- | --- | --- | --- | --- | --- | --- | --- |
|  | 11 | **R140** |  | 2026-12-04 | 2027-01-07 |  |  |  |  |  |  |  |  |  |  |
| DH.1400B-EQP-181 |  | Gallery 1403 - R140/Line-Ups // Set CRAH-DH1400-43 | 1d | 2026-12-04 | 2026-12-04 | DH.1400B-EQP-166 SS | -7d | 0d | 1474 | DH1400 | GR |  |  |  |  |
| DH.1400B-EQP-184 |  | Gallery 1403 - R140/Line-Ups // Set CRAH-DH1400-44 | 1d | 2026-12-04 | 2026-12-04 | DH.1400B-EQP-181 SS, DH.1400B-EQP-181 FF | -3d | 0d | 1475 | DH1400 | GR |  |  |  |  |
| DH.1400B-EQP-190 |  | Gallery 1403 - R140/Line-Ups // Mount Electrial Gear for Chiller Controls | 10d | 2026-12-07 | 2026-12-18 | DH.1400B-EQP-184 | -1d | 0d | 1484 | DH1400 | GR | HELIX | AC |  |  |
| DH.1400B-EQP-194 |  | Gallery 1403 - R140/Line-Ups // Terminate CRAHU Electrical Connections | 5d | 2026-12-07 | 2026-12-11 | DH.1400B-EQP-181 | 8d | 14d | 1483 | DH1400 | GR | HELIX | OO |  |  |
| DH.1400B-EQP-195 |  | Gallery 1403 - R140/Line-Ups // Pull Feeder and Branch circuits to MIsc equipment and Chiller controls | 10d | 2026-12-07 | 2026-12-18 | DH.1400B-EQP-190 SS | -1d | 0d | 1485 | DH1400 | GR | HELIX | AC |  |  |
| DH.1400B-EQP-197 |  | Gallery 1403 - R140/Line-Ups // Teminate all Misc Equipment and Chiller Controls | 10d | 2026-12-07 | 2026-12-18 | DH.1400B-EQP-195 SS | -1d | 0d | 1486 | DH1400 | GR |  |  |  |  |
| DH.1400B-EQP-182 |  | Gallery 1403 - R140/Line-Ups // Connect CRAH units | 10d | 2026-12-11 | 2026-12-24 | DH.1400B-EQP-181 SS+5d, DH.1400B-EQP-184 | -7d | 0d | 1476 | DH1400 | GR |  |  |  |  |
| DH.1400B-EQP-189 |  | Gallery 1403 - R140/Line-Ups // Mechanical Connections to CRAHU Units | 10d | 2026-12-11 | 2026-12-24 | DH.1400B-EQP-184 SS+5d | -2d | 5d | 1489 | DH1400 | GR |  |  |  |  |
| DH.1400B-EQP-183 |  | Gallery 1403 - R140/Line-Ups // Condensate connections to Floor Drains | 10d | 2026-12-18 | 2027-01-04 | DH.140012055, DH.1400B-EQP-182 SS+5d | -7d | 0d | 1477 | DH1400 | GR |  |  |  |  |
| DH.1400B-EQP-196 |  | Gallery 1403 - R140/Line-Ups // Mechanical Gear FOD Inspection Pre-Start Up | 3d | 2027-01-05 | 2027-01-07 | DH.1400B-EQP-189 SS, DH.1400B-EQP-183 SS, DH.1400B-EQP-183, DH.1400B-EQP-189, DH.1400B-EQP-182 | -7d | 4d | 1488 | DH1400 | GR |  |  |  |  |
| DH.1400B-EQP-198 |  | Gallery 1403 - R140/Line-Ups // Electrical Gear FOD Inspection Pre-Start Up | 2d | 2027-01-05 | 2027-01-06 | DH.160012119, DH.1400B-EQP-194, DH.1400B-EQP-197 | -6d | 5d | 1487 | DH1400 | GR | HELIX | QC |  |  |
|  | 12 | **Equipment Connections** |  | 2026-12-07 | 2026-12-29 |  |  |  |  |  |  |  |  |  |  |
|  | 1 | **CRAH** |  | 2026-12-07 | 2026-12-16 |  |  |  |  |  |  |  |  |  |  |
| DH1400-004 |  | Gallery 1403 // DH 1400 / Elec Room // CRAH Duct Work Termination | 2d | 2026-12-07 | 2026-12-08 | DH.1400B-EQP-184 | 7d | 0d | 7037 | DH1400 | GR |  |  | Con/Install | Y |
| DH1400-003 |  | Gallery 1403 // DH 1400 / Elec Room // CRAH Chilled Water | 2d | 2026-12-09 | 2026-12-10 | DH1400-004 | 7d | 0d | 7035 | DH1400 | GR |  |  | Con/Install | Y |
| DH1400-001 |  | Gallery 1403 // DH 1400 / Elec Room // CRAH Power Connections | 2d | 2026-12-11 | 2026-12-14 | DH1400-003 | 7d | 0d | 7034 | DH1400 | GR | HELIX | OO | Con/Install | Y |
| DH1400-002 |  | Gallery 1403 // DH 1400 / Elec Room // CRAH LV Connections | 2d | 2026-12-15 | 2026-12-16 | DH1400-001 | 7d | 18d | 7036 | DH1400 | GR |  |  | Con/Install | Y |
|  | 2 | **CDU** |  | 2026-12-21 | 2026-12-29 |  |  |  |  |  |  |  |  |  |  |
| DH1400-007 |  | Gallery 1403 // DH 1400 / Elec Room // CDU Chilled Water Connections | 2d | 2026-12-21 | 2026-12-22 | DH.1400B-EQP-197 | -1d | 0d | 7040 | DH1400 | GR |  |  | Con/Install | Y |
| DH1400-005 |  | Gallery 1403 // DH 1400 /Elec Room // CDU Power Connections | 2d | 2026-12-23 | 2026-12-24 | DH1400-007 | -1d | 0d | 7039 | DH1400 | GR | HELIX | OO | Con/Install | Y |
| DH1400-006 |  | Gallery 1403 // DH 1400 / Elec Room // CDU Controls Connections | 2d | 2026-12-28 | 2026-12-29 | DH1400-005 | -1d | 10d | 7041 | DH1400 | GR |  |  | Con/Install | Y |
|  | 3 | **MOD** |  | 2026-12-17 | 2026-12-22 |  |  |  |  |  |  |  |  |  |  |
| DH1400-008 |  | Gallery 1403 // DH 1400 / Elec Room // MOD Power Connections | 2d | 2026-12-17 | 2026-12-18 | DH.1400B-EQP-195 FF | 3d | 0d | 7043 | DH1400 | GR | HELIX | OO | Con/Install | Y |
| DH1400-009 |  | Gallery 1403 // DH 1400 / Elec Room // MOD LV Connections | 2d | 2026-12-21 | 2026-12-22 | DH1400-008 | 3d | 14d | 7044 | DH1400 | GR | HELIX | OO | Con/Install | Y |

| ID | WBS | Activity | Type | Duration | Start | Finish | Predecessors | Complete | Remaining | Planned start | Planned finish | Total float | Free float | MSP Activity ID | QTS - Subcontractor | QTS - AREA | QTS - Resp | 05 -SUFFOLK - Building Phase | 12 - SUFFOLK - Export_to_Procore | QTS - DASH |
| --- | --- | --- | --- | --- | --- | --- | --- | --- | --- | --- | --- | --- | --- | --- | --- | --- | --- | --- | --- | --- |
|  | 6 | **Corridors** |  |  | 2026-09-28 | 2026-12-02 |  |  |  |  |  |  |  |  |  |  |  |  |  |  |
|  | 1 | **Corridor 1000A (DO NOT APPLY)** |  |  |  |  |  |  |  |  |  |  |  |  |  |  |  |  |  |  |
|  | 3 | **Corridor 1000** |  |  | 2026-09-28 | 2026-12-02 |  |  |  |  |  |  |  |  |  |  |  |  |  |  |
| DH.140012068 |  | DH 1400/Corridor 1000 // MEPF Overhead Hangers |  | 5d | 2026-09-28 A | 2026-10-02 A | DH.14006270 | 100% |  | 2026-10-07 | 2026-10-14 |  |  | 1495 | HELIX | DH1400 | ALOO | 2 | Y | COR |
| DH.140012069 |  | DH 1400/Corridor 1000 // Frame walls |  | 3d | 2026-09-30 A | 2026-10-16 | DH.1400700 FF |  | 3d | 2026-10-08 | 2026-10-13 | 17d | 0d | 1499 |  | DH1400 |  | 2 |  | COR |
| DH.140012071 |  | DH 1400/Corridor 1000 // MEPF high overhead install |  | 3d | 2026-10-05 A | 2026-10-16 | DH.140012068 |  | 3d | 2026-10-15 | 2026-10-19 | 46d | 29d | 1497 | HELIX | DH1400 | ALOO | 2 |  | COR |
| DH.140012072 |  | DH 1400/Corridor 1000 // MEP rough in walls |  | 3d | 2026-10-13 A | 2026-10-20 | DH.140012069 FF+2d |  | 3d | 2026-10-29 | 2026-11-02 | 17d | 0d | 1501 | HELIX | DH1400 | AC | 2 |  | COR |
| B120001.3175 |  | DH 1400/Corridor 1000 // Install Overhead Cable Ladder / 36" Cable Tray - TFO |  | 5d | 2026-10-14 | 2026-10-20 | DH.140012068 |  |  |  |  | 39d | 0d | 1181 |  |  |  |  |  | COR |
| DH.140012078 |  | DH 1400/Corridor 1000 // Seal concrete |  | 1d | 2026-10-20 | 2026-10-20 | DH.1400660 |  |  |  |  | 45d | 0d | 1494 |  | DH1400 |  | 2 | Y | COR |
| B120001.3176 |  | DH 1400/Corridor 1000 // Install Overhead HAC - TFO |  | 5d | 2026-10-21 | 2026-10-27 | B120001.3175 |  |  |  |  | 39d | 22d | 1181 |  |  |  |  |  | COR |
| DH.140012073 |  | DH 1400/Corridor 1000 // In wall inspection |  | 1d | 2026-10-21 | 2026-10-21 | DH.140012072 |  |  |  |  | 17d | 0d | 1502 |  | DH1400 |  | 2 |  | COR |
| DH.140012070 |  | DH 1400/Corridor 1000 // Install Top Down Sheetrock |  | 3d | 2026-10-22 | 2026-10-26 | DH.140012073, DH.140012069 SS+3d |  |  |  |  | 17d | 0d | 1498 |  | DH1400 |  |  |  | COR |
| DH.140012074 |  | DH 1400/Corridor 1000 // Install Balance of Sheetrock on Walls |  | 5d | 2026-10-27 | 2026-11-02 | DH.140012070 |  |  |  |  | 17d | 0d | 1503 |  | DH1400 |  | 2 |  | COR |
| DH.140012075 |  | DH 1400/Corridor 1000 // Tape and finish walls |  | 8d | 2026-11-03 | 2026-11-13 | DH.140012074 |  |  |  |  | 17d | 0d | 1504 |  | DH1400 |  | 2 |  | COR |
| DH.140012076 |  | DH 1400/Corridor 1000 // Install wall door frames |  | 3d | 2026-11-16 | 2026-11-18 | DH.140012069 SS+1d, DH.140012075 |  |  |  |  | 17d | 0d | 1500 |  | DH1400 |  | 2 |  | COR |
| DH.140012077 |  | DH 1400/Corridor 1000 // Prime and Paint first coat walls |  | 3d | 2026-11-16 | 2026-11-18 | DH.140012075 |  |  |  |  | 17d | 0d | 1493 |  | DH1400 |  | 2 |  | COR |
| DH.140012079 |  | DH 1400/Corridor 1000 // Install lights and exit signs |  | 3d | 2026-11-19 | 2026-11-23 | DH.140012077, DH.140012076 |  |  |  |  | 17d | 0d | 1492 | HELIX | DH1400 | AC | 2 |  | COR |
| DH.140012080 |  | DH 1400/Corridor 1000 // Final Coat Paint & Touchup Walls |  | 4d | 2026-11-24 | 2026-11-30 | DH.140012079 |  |  |  |  | 17d | 0d | 1506 |  | DH1400 |  | 2 |  | COR |
| DH.140012081 |  | DH 1400/Corridor 1000 // Install MEP Devices and Trim |  | 2d | 2026-12-01 | 2026-12-02 | B120001.3176, DH.140012071, DH.140012080 |  |  |  |  | 17d | 0d | 1505 | HELIX | DH1400 | AC | 2 |  | COR |
| DH.160012154 |  | DH 1400/Corridor 1000 // Ready to Receive Equipment | milestone | 0d | 2026-12-02 | 2026-12-02 | DH.140012081 FF, DH.140012078 |  |  |  |  | 17d | 28d | 1505 | HELIX | DH1400 | TBD | 2 |  | COR |
|  | 2 | **Corridor 1000E** |  |  | 2026-09-28 | 2026-12-02 |  |  |  |  |  |  |  |  |  |  |  |  |  |  |
| DH.140012082 |  | DH 1400/Corridor 1000E // MEPF Overhead Hangers |  | 5d | 2026-09-28 A | 2026-10-02 A | DH.140012068 SS | 100% |  | 2026-10-28 | 2026-11-03 |  |  | 1495 | HELIX | DH1400 | ALOO | 2 |  | COR |
| DH.140012085 |  | DH 1400/Corridor 1000E // MEPF high overhead install |  | 3d | 2026-10-05 A | 2026-10-16 | DH.140012082 |  | 3d | 2026-10-08 | 2026-10-13 | 23d | 0d | 1497 | HELIX | DH1400 | ALOO | 2 | Y | COR |
| DH.140012083 |  | DH 1400/Corridor 1000E // Frame walls |  | 3d | 2026-10-09 A | 2026-10-16 | DH.140012069 FF |  | 3d | 2026-11-04 | 2026-11-06 | 17d | 0d | 1499 |  | DH1400 |  | 2 |  | COR |
| DH.140012086 |  | DH 1400/Corridor 1000E // MEP rough in walls |  | 3d | 2026-10-12 A | 2026-10-20 | DH.140012083 FF+2d |  | 3d | 2026-11-09 | 2026-11-12 | 17d | 0d | 1501 | HELIX | DH1400 | AC | 2 |  | COR |
| B120001.3177 |  | DH 1400/Corridor 1000E // Install Overhead Cable Ladder / 36" Cable Tray - TFO |  | 5d | 2026-10-19 | 2026-10-23 | DH.140012085 |  |  |  |  | 43d | 0d | 1181 |  |  |  |  |  | COR |
| B120001.3178 |  | DH 1400/Corridor 1000E // Install Overhead HAC - TFO |  | 5d | 2026-10-19 | 2026-10-23 | B120001.3177 FF |  |  |  |  | 43d | 26d | 1181 |  |  |  |  |  | COR |
| DH.140012087 |  | DH 1400/Corridor 1000E // In wall inspection |  | 1d | 2026-10-21 | 2026-10-21 | DH.140012086 |  |  |  |  | 17d | 0d | 1502 |  | DH1400 |  | 2 |  | COR |
| DH.140012092 |  | DH 1400/Corridor 1000E // Seal concrete |  | 1d | 2026-10-21 | 2026-10-21 | DH.140012078 |  |  |  |  | 45d | 28d | 1494 |  | DH1400 |  | 2 | Y | COR |
| DH.140012084 |  | DH 1400/Corridor 1000E // Install Top Down Sheetrock |  | 3d | 2026-10-22 | 2026-10-26 | DH.140012087, DH.140012083 SS+3d |  |  |  |  | 17d | 0d | 1498 |  | DH1400 |  |  |  | COR |
| DH.140012088 |  | DH 1400/Corridor 1000E // Install Balance of Sheetrock on Walls |  | 5d | 2026-10-27 | 2026-11-02 | DH.140012084, DH.140012085, DH.140012087 |  |  |  |  | 17d | 0d | 1503 |  | DH1400 |  | 2 |  | COR |
| DH.140012089 |  | DH 1400/Corridor 1000E // Tape and finish walls |  | 8d | 2026-11-03 | 2026-11-13 | DH.140012088 |  |  |  |  | 17d | 0d | 1504 |  | DH1400 |  | 2 |  | COR |
| DH.140012090 |  | DH 1400/Corridor 1000E // Install wall door frames |  | 3d | 2026-11-16 | 2026-11-18 | DH.140012083 SS+1d, DH.140012089 |  |  |  |  | 17d | 0d | 1500 |  | DH1400 |  | 2 |  | COR |
| DH.140012091 |  | DH 1400/Corridor 1000E // Prime and Paint first coat walls |  | 3d | 2026-11-16 | 2026-11-18 | DH.140012089 |  |  |  |  | 17d | 0d | 1493 |  | DH1400 |  | 2 |  | COR |
| DH.140012093 |  | DH 1400/Corridor 1000E // Install lights and exit signs |  | 3d | 2026-11-19 | 2026-11-23 | DH.140012091, DH.140012090 |  |  |  |  | 17d | 0d | 1492 | HELIX | DH1400 | AC | 2 |  | COR |
| DH.140012094 |  | DH 1400/Corridor 1000E // Final Coat Paint & Touchup Walls |  | 4d | 2026-11-24 | 2026-11-30 | DH.140012093 |  |  |  |  | 17d | 0d | 1506 |  | DH1400 |  | 2 |  | COR |
| DH.140012095 |  | DH 1400/Corridor 1000E // Install MEP Devices and Trim |  | 2d | 2026-12-01 | 2026-12-02 | DH.140012094 |  |  |  |  | 17d | 0d | 1505 | HELIX | DH1400 | AC | 2 |  | COR |
| DH.160012155 |  | DH 1400/Corridor 1000E // Ready to Receive Equipment | milestone | 0d | 2026-12-02 | 2026-12-02 | DH.140012095 FF, DH.140012092, B120001.3178 |  |  |  |  | 17d | 28d | 1505 | HELIX | DH1400 | TBD | 2 |  | COR |

| ID | WBS | Activity | Duration | Start | Finish | Predecessors | Complete | Remaining | Planned start | Planned finish | Total float | Free float | MSP Activity ID | QTS - AREA | 05 -SUFFOLK - Building Phase | QTS - DASH | QTS - Subcontractor | QTS - Resp |
| --- | --- | --- | --- | --- | --- | --- | --- | --- | --- | --- | --- | --- | --- | --- | --- | --- | --- | --- |
|  | 10 | **Flex 1000B10 *** No Flex - Loading Dock****** |  |  |  |  |  |  |  |  |  |  |  |  |  |  |  |  |
|  | 11 | **IDF 1054 (Missing Activities)** |  |  |  |  |  |  |  |  |  |  |  |  |  |  |  |  |
|  | 12 | **Preaction 1053 (Missing Activities)** |  |  |  |  |  |  |  |  |  |  |  |  |  |  |  |  |
|  | 13 | **Restroom-Dock & Janitor** |  | 2026-09-28 | 2026-11-27 |  |  |  |  |  |  |  |  |  |  |  |  |  |
| DH.1400020 |  | DH 1400/Restroom-Dock & Janitor // RR-Doc-Jan Layout walls | 5d | 2026-09-28 A | 2026-10-02 A | DH.14006270 | 100% |  | 2026-10-19 | 2026-10-23 |  |  | 1562 | DH1400 | 2 | OR |  |  |
| DH.1400010 |  | DH 1400/Restroom-Dock & Janitor // RR-Doc-Jan MEPF overhead layout | 5d | 2026-10-07 A | 2026-10-20 | DH.14000.1010 SS+2d |  | 5d | 2026-10-09 | 2026-10-16 | 21d | 0d | 1561 | DH1400 | 2 | OR | HELIX | AC |
| DH.1400030 |  | DH 1400/Restroom-Dock & Janitor // RR-Doc-Jan Frame walls | 5d | 2026-10-08 A | 2026-10-20 | DH.1400020 |  | 5d | 2026-10-26 | 2026-10-30 | 20d | 0d | 1565 | DH1400 | 2 | OR |  |  |
| DH.1400040 |  | DH 1400/Restroom-Dock & Janitor // RR-Doc-Jan Install wall door frames | 3d | 2026-10-09 A | 2026-10-16 | DH.1400030 SS+1d |  | 3d | 2026-10-27 | 2026-10-29 | 36d | 14d | 1566 | DH1400 | 2 | OR |  |  |
| DH.1400080 |  | DH 1400/Restroom-Dock & Janitor // RR-Doc-Jan MEPF high overhead install | 3d | 2026-10-09 A | 2026-10-16 | DH.1400010 SS+2d |  | 3d | 2026-11-05 | 2026-11-09 | 21d | 1d | 1563 | DH1400 | 2 | OR | HELIX | AC |
| DH.1400060 |  | DH 1400/Restroom-Dock & Janitor // RR-Doc-Jan MEP rough in walls | 3d | 2026-10-12 A | 2026-10-16 | DH.1400030 SS+2d |  | 3d | 2026-10-30 | 2026-11-03 | 20d | 0d | 1567 | DH1400 | 2 | OR | HELIX | AC |
| DH.1400050 |  | DH 1400/Restroom-Dock & Janitor // RR-Doc-Jan Install Top Down Sheetrock | 5d | 2026-10-14 | 2026-10-20 | DH.1400030 SS+3d |  |  |  |  | 24d | 4d | 1564 | DH1400 |  | OR |  |  |
| DH.1400070 |  | DH 1400/Restroom-Dock & Janitor // RR-Doc-Jan In wall inspection | 1d | 2026-10-19 | 2026-10-19 | DH.1400060 |  |  |  |  | 20d | 0d | 1568 | DH1400 | 2 | OR |  |  |
| DH.1400090 |  | DH 1400/Restroom-Dock & Janitor // RR-Doc-Jan Install Balance of Sheetrock on Walls | 5d | 2026-10-20 | 2026-10-26 | DH.1400080, DH.1400050 SS, DH.1400070 |  |  |  |  | 20d | 0d | 1569 | DH1400 | 2 | OR |  |  |
| DH.1400100 |  | DH 1400/Restroom-Dock & Janitor // RR-Doc-Jan Tape and finish walls | 8d | 2026-10-27 | 2026-11-05 | DH.1400090 |  |  |  |  | 20d | 0d | 1570 | DH1400 | 2 | OR |  |  |
| DH.1400000 |  | DH 1400/Restroom-Dock & Janitor // RR-Doc-Jan Seal concrete | 5d | 2026-11-06 | 2026-11-13 | DH.1400100 |  |  |  |  | 20d | 0d | 1560 | DH1400 | 2 | OR |  |  |
| DH.1400110 |  | DH 1400/Restroom-Dock & Janitor // RR-Doc-Jan Prime and Paint first coat walls | 3d | 2026-11-06 | 2026-11-10 | DH.1400080, DH.1400040, DH.1400100 |  |  |  |  | 22d | 2d | 1559 | DH1400 | 2 | OR |  |  |
| DH.1400120 |  | DH 1400/Restroom-Dock & Janitor // RR-Doc-Jan Install lights and exit signs | 3d | 2026-11-16 | 2026-11-18 | DH.1400000, DH.1400110 |  |  |  |  | 20d | 0d | 1558 | DH1400 | 2 | OR | HELIX | AC |
| DH.1400130 |  | DH 1400/Restroom-Dock & Janitor // RR-Doc-Jan Final Coat Paint & Touchup Walls | 4d | 2026-11-19 | 2026-11-24 | DH.1400120 |  |  |  |  | 20d | 0d | 1572 | DH1400 | 2 | OR |  |  |
| DH.1400140 |  | DH 1400/Restroom-Dock & Janitor // RR-Doc-Jan Install MEP Devices and Trim | 2d | 2026-11-25 | 2026-11-27 | DH.1400130 |  |  |  |  | 20d | 31d | 1571 | DH1400 | 2 | OR | HELIX | AC |
|  | 4 | **1400 Energization, Start-up & Commissioning** |  | 2027-01-14 | 2027-04-22 |  |  |  |  |  |  |  |  |  |  |  |  |  |
|  | 1 | **Energization & L3 Prefunctional Testing** |  | 2027-01-14 | 2027-03-17 |  |  |  |  |  |  |  |  |  |  |  |  |  |
| DH1400.L3CX.79 |  | DH1400 L3 Start | 0d | 2027-01-14 | 2027-01-14 | DH.1400B-EQP-156, DH.1400140, DH.160012155, DH.140012095, DH.160012154, DH.140012081, DH1400-009, DH1400-006, DH1400-002, DH.1400B-EQP-196, DH.1400B-EQP-198, DH.160012152, DH1400.MG.A110.8692, DH1400.MG.A110.8689, DH1400.MG.A110.8685, DH.1400A-EQP-218, DH.1400A-EQP-220, DH.1400A-EQP-215, DH.160012151, DH.14000.1712, DH.14000.1110, DH.160012150, DH.1400.3063, DH.1400.3061, DH.1400.3062, DH.1400.3059, DH.1400.3070, DH.1400.3044, DH.1300.3063, DH.1400.1310, DH.1400.1330, DH.1400.1300, DH.1400.1240, DH.1300.3036, DH.1300.3068, DH.1400.1180, DH.1400.3069 |  |  |  |  | -11d | 0d |  | DH1400 |  |  | HELIX |  |
| DH1400.L3CX.BMS.31 |  | DH1400 L3 PTPs & SOOs – BMS | 40d | 2027-01-14 | 2027-03-12 | DH1400.L3CX.ELEC.103 SS |  |  |  |  | -11d | 0d |  | DH1400 |  |  |  |  |
| DH1400.L3CX.ELEC.103 |  | DH1400 L3 FTEs | 5d | 2027-01-14 | 2027-01-21 | DH1400.L3CX.79 SS |  |  |  |  | -11d | 0d |  | DH1400 |  |  |  |  |
| DH1400.L3CX.MECH.93 |  | DH1400 L3 Startup / Pre-Functional – MECHANICAL | 20d | 2027-01-20 | 2027-02-17 | DH1400.L3CX.ELEC.103 SS+3d |  |  |  |  | -4d | 7d |  | DH1400 |  |  |  |  |
| DH1400.L3CX.ELEC.93 |  | DH1400 L3 Startup / Pre-Functional – ELECTRICAL | 15d | 2027-01-22 | 2027-02-11 | DH1400.L3CX.ELEC.103 |  |  |  |  | 1d | 12d |  | DH1400 |  |  |  |  |
| DH1400.L3CX.MECH.103 |  | DH1400 L3 TAB (Air, Water and Reports) – MECHANICAL | 10d | 2027-03-01 | 2027-03-12 | DH1400.L3CX.MECH.93, DH1400.L3CX.BMS.31 FF |  |  |  |  | -11d | 0d |  | DH1400 |  |  |  |  |
| DH1400.L3CX.MECH.113 |  | DH1400 L3 FLS – MECHANICAL | 10d | 2027-03-03 | 2027-03-16 | DH1400.L3CX.MECH.103 FF+2d, DH1400.L3CX.MECH.93, DH1400.L3CX.ELEC.93 |  |  |  |  | -11d | 0d |  | DH1400 |  |  |  |  |
| DH1400.L3CX.69 |  | DH1400 L3 Cx Complete | 0d | 2027-03-17 | 2027-03-17 | DH1400.L3CX.MECH.103 FF, DH1400.L3CX.MECH.113 FF |  |  |  |  | -11d | 0d |  | DH1400 |  |  |  |  |

| ID | WBS | Activity | Duration | Start | Finish | Predecessors | Total float | Free float | QTS - AREA | QTS - DASH | MSP Activity ID | QTS - Subcontractor | QTS - Resp |
| --- | --- | --- | --- | --- | --- | --- | --- | --- | --- | --- | --- | --- | --- |
|  | 2 | **L4 Function Testing** |  | 2027-02-18 | 2027-03-24 |  |  |  |  |  |  |  |  |
| DH1400.L4CX.COMM.160 |  | DH1400 L4 Cx | 25d | 2027-02-18 | 2027-03-24 | DH1400.L3CX.69 FF+6d | -1d | 0d | DH1400 |  |  |  |  |
|  | 3 | **L5 Integrated System Testing (IST)** |  | 2027-03-05 | 2027-04-22 |  |  |  |  |  |  |  |  |
| DH1400.L5CX.COMM.260 |  | DH1400 L5 Integrated Systems Testing - IST | 20d | 2027-03-05 | 2027-04-01 | DH1400.L4CX.COMM.160 FF+6d | -1d | 0d | DH1400 |  |  |  |  |
| DH1400.A2110.CO |  | DH1400– Phase Closeout Period O&M / TRAINING/ CLOSEOUT DOCS | 15d | 2027-04-02 | 2027-04-22 | DH1400.L5CX.COMM.270 | 29d | 0d | DH1400 | Cx |  |  |  |
| DH1400.L5CX.COMM.270 |  | DH1400 – IST / L5 Cx Complete | 0d | 2027-04-02 | 2027-04-02 | DH1400.L5CX.COMM.260 | -1d | 0d | DH1400 |  |  |  |  |
|  | 2 | **Commissioning & Start Up** |  |  |  |  |  |  |  |  |  |  |  |
|  | 4 | **Data Hall 1600** |  | 2026-07-21 | 2027-06-17 |  |  |  |  |  |  |  |  |
|  | 10 | **Exterior Build Out** |  | 2026-07-21 | 2027-02-23 |  |  |  |  |  |  |  |  |
|  | 9 | **Electrical Yard** |  | 2026-10-30 | 2027-02-23 |  |  |  |  |  |  |  |  |
|  | 3 | **Electrical** |  | 2026-10-30 | 2027-02-23 |  |  |  |  |  |  |  |  |
|  | 1 | **Underground** |  | 2026-10-30 | 2026-12-08 |  |  |  |  |  |  |  |  |
|  | 1 | **Column Line 6.0 - 6.9** |  | 2026-10-30 | 2026-12-08 |  |  |  |  |  |  |  |  |
| DH.1600 |  | DH1600/Electrical Yard-Underground // Excavate From MVG to Transformers | 10d | 2026-10-30 | 2026-11-13 | DH.1500, B1200381, STRUCTURE.7020, FDN.1252 | 4d | 0d | DH1600 | EY | 1048 |  |  |
| B1200382 |  | DH1600/Electrical Yard-Underground // Install Raceway from MVG to Transformers | 10d | 2026-11-16 | 2026-11-30 | DH.1600 | 4d | 0d | DH1600 | EY | 1050 | HELIX | D18A |
| B1200383 |  | DH1600/Electrical Yard-Underground // Backfill Raceways from MVG to Transformers | 6d | 2026-12-01 | 2026-12-08 | B1200382 FF, B1200382 | 4d | 0d | DH1600 | EY | 1051 | HELIX | D18A |
|  | 2 | **Column-Line 6.0 - 6.9** |  |  |  |  |  |  |  |  |  |  |  |
|  | 2 | **Pads** |  | 2026-12-09 | 2027-01-21 |  |  |  |  |  |  |  |  |
| B1200397 |  | DH1600/Electrical Yard-Pads // Excavate / Form / Rebar /pour-Finish XFMR Pads | 10d | 2026-12-09 | 2026-12-22 | B1200383, B1200394 | 4d | 0d | DH1600 | EY | 1065 |  |  |
| B1200398 |  | DH1600/Electrical Yard-Pads // Pad Strip and Cure Xfmr) | 8d | 2026-12-23 | 2027-01-05 | B1200397 | 4d | 0d | DH1600 | EY | 1067 |  |  |
| B1200399 |  | DH1600/Electrical Yard-Pads // Excavate / Form / Rebar /pour-Finish Pads | 6d | 2027-01-06 | 2027-01-13 | B1200398, B1200397 | 4d | 0d | DH1600 | EY | 1066 |  |  |
| B1200400 |  | DH1600/Electrical Yard-Pads // Pad Strip and Cure XFMR Pads | 5d | 2027-01-14 | 2027-01-21 | B1200399 | 4d | 0d | DH1600 | EY | 1068 |  |  |
|  | 3 | **Equipment** |  | 2027-01-22 | 2027-02-23 |  |  |  |  |  |  |  |  |
|  | 1 | **A160** |  | 2027-01-22 | 2027-01-25 |  |  |  |  |  |  |  |  |
| DH.16001 |  | DH1600/Electrical Yard // Set XFMR - XFMR-A160a | 1d | 2027-01-22 | 2027-01-22 | B1200397, B1200398, B1200400, STRUCTURE.7020 | 4d | 0d | DH1600 | EY | 537 | HELIX | D18A |
| DH.16002 |  | DH1600/Electrical Yard // Set XFMR - XFMR-A160p | 1d | 2027-01-25 | 2027-01-25 | DH.16001 | 4d | 0d | DH1600 | EY | 537 | HELIX | D18A |

| ID | WBS | Activity | Duration | Start | Finish | Predecessors | Total float | Free float | MSP Activity ID | QTS - Subcontractor | QTS - AREA | QTS - Resp | QTS - DASH |
| --- | --- | --- | --- | --- | --- | --- | --- | --- | --- | --- | --- | --- | --- |
|  | 2 | **B160** |  | 2027-01-26 | 2027-01-27 |  |  |  |  |  |  |  |  |
| DH.16003 |  | DH1600/Electrical Yard // Set XFMR - XFMR-B160a | 1d | 2027-01-26 | 2027-01-26 | DH.16002 | 4d | 0d | 537 | HELIX | DH1600 | D18A | EY |
| DH.16004 |  | DH1600/Electrical Yard // Set XFMR - XFMR-B160p | 1d | 2027-01-27 | 2027-01-27 | DH.16003 | 4d | 0d | 537 | HELIX | DH1600 | D18A | EY |
|  | 3 | **C160** |  | 2027-01-28 | 2027-01-29 |  |  |  |  |  |  |  |  |
| DH.16005 |  | DH1600/Electrical Yard // Set XFMR - XFMR-C160a | 1d | 2027-01-28 | 2027-01-28 | DH.16004 | 4d | 0d | 537 | HELIX | DH1600 | D18A | EY |
| DH.16006 |  | DH1600/Electrical Yard // Set XFMR - XFMR-C160p | 1d | 2027-01-29 | 2027-01-29 | DH.16005 | 4d | 0d | 537 | HELIX | DH1600 | D18A | EY |
|  | 4 | **D160** |  | 2027-02-01 | 2027-02-02 |  |  |  |  |  |  |  |  |
| DH.16007 |  | DH1600/Electrical Yard // Set XFMR - XFMR-D160a | 1d | 2027-02-01 | 2027-02-01 | DH.16006 | 4d | 0d | 537 | HELIX | DH1600 | D18A | EY |
| DH.16008 |  | DH1600/Electrical Yard // Set XFMR - XFMR-D160p | 1d | 2027-02-02 | 2027-02-02 | DH.16007 | 4d | 0d | 537 | HELIX | DH1600 | D18A | EY |
|  | 5 | **E160** |  | 2027-02-03 | 2027-02-04 |  |  |  |  |  |  |  |  |
| DH.16009 |  | DH1600/Electrical Yard // Set XFMR - XFMR-E160a | 1d | 2027-02-03 | 2027-02-03 | DH.16008 | 4d | 0d | 537 | HELIX | DH1600 | D18A | EY |
| DH.16000 |  | DH1600/Electrical Yard // Set XFMR - XFMR-E160p | 1d | 2027-02-04 | 2027-02-04 | DH.16009 | 4d | 0d | 537 | HELIX | DH1600 | D18A | EY |
|  | 6 | **F160** |  | 2027-02-05 | 2027-02-08 |  |  |  |  |  |  |  |  |
| DH.160012132 |  | DH1600/Electrical Yard // Set XFMR - XFMR-F160a | 1d | 2027-02-05 | 2027-02-05 | DH.16000 | 4d | 0d | 537 | HELIX | DH1600 | D18A | EY |
| DH.160012133 |  | DH1600/Electrical Yard // Set XFMR - XFMR-F160p | 1d | 2027-02-08 | 2027-02-08 | DH.160012132 | 4d | 0d | 537 | HELIX | DH1600 | D18A | EY |
|  | 7 | **G160** |  | 2027-02-09 | 2027-02-10 |  |  |  |  |  |  |  |  |
| DH.160012134 |  | DH1600/Electrical Yard // Set XFMR - XFMR-G160a | 1d | 2027-02-09 | 2027-02-09 | DH.160012133 | 4d | 0d | 537 | HELIX | DH1600 | D18A | EY |
| DH.160012135 |  | DH1600/Electrical Yard // Set XFMR - XFMR-G160p | 1d | 2027-02-10 | 2027-02-10 | DH.160012134 | 4d | 0d | 537 | HELIX | DH1600 | D18A | EY |
|  | 8 | **H160** |  | 2027-02-11 | 2027-02-12 |  |  |  |  |  |  |  |  |
| DH.160012136 |  | DH1600/Electrical Yard // Set XFMR - XFMR-H160a | 1d | 2027-02-11 | 2027-02-11 | DH.160012135 | 4d | 0d | 537 | HELIX | DH1600 | D18A | EY |
| DH.160012137 |  | DH1600/Electrical Yard // Set XFMR - XFMR-H160p | 1d | 2027-02-12 | 2027-02-12 | DH.160012136 | 4d | 0d | 537 | HELIX | DH1600 | D18A | EY |
|  | 9 | **J160** |  | 2027-02-16 | 2027-02-17 |  |  |  |  |  |  |  |  |
| DH.160012138 |  | DH1600/Electrical Yard // Set XFMR - XFMR-J160a | 1d | 2027-02-16 | 2027-02-16 | DH.160012137 | 4d | 0d | 537 | HELIX | DH1600 | D18A | EY |
| DH.160012139 |  | DH1600/Electrical Yard // Set XFMR - XFMR-J160p | 1d | 2027-02-17 | 2027-02-17 | DH.160012138 | 4d | 0d | 537 | HELIX | DH1600 | D18A | EY |

| ID | WBS | Activity | Duration | Start | Finish | Predecessors | Complete | Planned start | Planned finish | Total float | Free float | Constraint | MSP Activity ID | QTS - Subcontractor | QTS - AREA | QTS - Resp | QTS - DASH |
| --- | --- | --- | --- | --- | --- | --- | --- | --- | --- | --- | --- | --- | --- | --- | --- | --- | --- |
|  | 10 | **K160** |  | 2027-02-18 | 2027-02-19 |  |  |  |  |  |  |  |  |  |  |  |  |
| DH.160012140 |  | DH1600/Electrical Yard // Set XFMR - XFMR-K160a | 1d | 2027-02-18 | 2027-02-18 | DH.160012139 |  |  |  | 4d | 0d |  | 537 | HELIX | DH1600 | D18A | EY |
| DH.160012141 |  | DH1600/Electrical Yard // Set XFMR - XFMR-K160p | 1d | 2027-02-19 | 2027-02-19 | DH.160012140 |  |  |  | 4d | 0d |  | 537 | HELIX | DH1600 | D18A | EY |
|  | 11 | **R160** |  | 2027-02-22 | 2027-02-23 |  |  |  |  |  |  |  |  |  |  |  |  |
| DH.160012142 |  | DH1600/Electrical Yard // Set XFMR - XFMR-R160a | 1d | 2027-02-22 | 2027-02-22 | DH.160012141 |  |  |  | 4d | 0d |  | 537 | HELIX | DH1600 | D18A | EY |
| DH.160012143 |  | DH1600/Electrical Yard // Set XFMR - XFMR-R160p | 1d | 2027-02-23 | 2027-02-23 | DH.160012142 |  |  |  | 4d | 0d |  | 537 | HELIX | DH1600 | D18A | EY |
|  | 1 | **Mechanical Yard** |  | 2026-07-21 | 2027-01-28 |  |  |  |  |  |  |  |  |  |  |  |  |
|  | 1 | **Pads** |  | 2026-07-21 | 2026-09-03 |  |  |  |  |  |  |  |  |  |  |  |  |
| A5838 |  | DH1600/Mechanical Yard-Pads // Excavate / Form / Rebar / Pour Chiller Pads | 8d | 2026-07-21 A | 2026-07-30 A | A3210, FDN.1070 SS, A3210 SS, A5796 | 100% | 2026-12-17 | 2026-12-29 |  |  |  | 1074 |  | DH1600 |  | MY |
| A5840 |  | DH1600/Mechanical Yard-Pads // Excavate / Form / Rebar / Pour Support and TES Pads (Column Lines 1 to 1.3) | 5d | 2026-08-03 A | 2026-08-26 A | A5838 | 100% | 2026-12-30 | 2027-01-06 |  |  |  | 1079 |  | DH1600 |  | MY |
| A5843 |  | DH1600/Mechanical Yard-Pads // Excavate / Form / Rebar / Pour TES Tank Pad | 8d | 2026-08-24 A | 2026-09-02 A | A5838 SS | 100% | 2026-12-30 | 2027-01-11 |  |  |  | 1077 |  | DH1600 |  | MY |
| A5841 |  | DH1600/Mechanical Yard-Pads // Excavate / Form / Rebar / Pour Support and TES Pads (Column Lines 1.3 to 1.6) | 5d | 2026-08-28 A | 2026-09-03 A | A5840 | 100% | 2027-01-07 | 2027-01-13 |  |  |  | 1080 |  | DH1600 |  | MY |
| A5842 |  | DH1600/Mechanical Yard-Pads // Excavate / Form / Rebar / Pour Support and TES Pads (Column Lines 1.6 to 1.9) | 5d | 2026-08-28 A | 2026-09-03 A | A5841 SS | 100% | 2027-01-14 | 2027-01-21 |  |  |  | 1081 |  | DH1600 |  | MY |
|  | 5 | **Equipment** |  | 2027-01-06 | 2027-01-28 |  |  |  |  |  |  |  |  |  |  |  |  |
| A5920 |  | DH1600/Mechanical Yard - OFCI Chiller Delivery Date (01/06/27 through 01/07/27) | 0d | 2027-01-06 | 2027-01-06 | A5838 |  |  |  | 65d | 0d | finish on or after 2027-01-06 |  |  |  |  |  |
|  | 1 | **A160** |  | 2027-01-06 | 2027-01-12 |  |  |  |  |  |  |  |  |  |  |  |  |
| DH.160012001 |  | DH1600/Mechanical Yard-A160 // Set Chiller - CHLR-1CY40-A160 | 1d | 2027-01-06 | 2027-01-06 | A5920, A5843, FDN.1252, STRUCTURE.7020, A5838 SS |  |  |  | 65d | 0d |  | 1083 |  | DH1600 |  | MY |
| DH.160012002 |  | DH1600/Mechanical Yard-A160 // Set TES tank - TES-1CY40-A160 | 1d | 2027-01-07 | 2027-01-07 | DH.160012001 |  |  |  | 66d | 0d |  | 1083 |  | DH1600 |  | MY |
| DH.160012023 |  | DH1600/Mechanical Yard-A160 // Install CHWP | 1d | 2027-01-08 | 2027-01-08 | DH.160012002 |  |  |  | 66d | 0d |  | 1083 |  | DH1600 |  | MY |
| DH.160012024 |  | DH1600/Mechanical Yard-A160 // Install Mechanical Piping Mains (Building -to Line) | 1d | 2027-01-11 | 2027-01-11 | DH.160012023 |  |  |  | 66d | 0d |  | 1083 |  | DH1600 |  | MY |
| DH.160012025 |  | DH1600/Mechanical Yard-A160 // Install Mechanical Chiller to Mains | 1d | 2027-01-12 | 2027-01-12 | DH.160012024 |  |  |  | 66d | 1d |  | 1083 |  | DH1600 |  | MY |
|  | 2 | **B160** |  | 2027-01-06 | 2027-01-12 |  |  |  |  |  |  |  |  |  |  |  |  |
| DH.160012003 |  | DH1600/Mechanical Yard-B160 // Set Chiller - CHLR-1CY40-B160 | 1d | 2027-01-06 | 2027-01-06 | A5920, DH.160012001 SS |  |  |  | 65d | 0d |  | 1083 |  | DH1600 |  | MY |
| DH.160012004 |  | DH1600/Mechanical Yard-B160 // Set TES tank - TES-1CY40-B160 | 1d | 2027-01-07 | 2027-01-07 | DH.160012003 |  |  |  | 66d | 0d |  | 1083 |  | DH1600 |  | MY |
| DH.160012026 |  | DH1600/Mechanical Yard-B160 // Install CHWP | 1d | 2027-01-08 | 2027-01-08 | DH.160012004 |  |  |  | 66d | 0d |  | 1083 |  | DH1600 |  | MY |
| DH.160012027 |  | DH1600/Mechanical Yard-B160 // Install Mechanical Piping Mains (Building -to Line) | 1d | 2027-01-11 | 2027-01-11 | DH.160012026 |  |  |  | 66d | 0d |  | 1083 |  | DH1600 |  | MY |
| DH.160012028 |  | DH1600/Mechanical Yard-B160 // Install Mechanical Chiller to Mains | 1d | 2027-01-12 | 2027-01-12 | DH.160012027 |  |  |  | 66d | 1d |  | 1083 |  | DH1600 |  | MY |

| ID | WBS | Activity | Duration | Start | Finish | Predecessors | Total float | Free float | MSP Activity ID | QTS - AREA | QTS - DASH |
| --- | --- | --- | --- | --- | --- | --- | --- | --- | --- | --- | --- |
|  | 3 | **C160** |  | 2027-01-06 | 2027-01-12 |  |  |  |  |  |  |
| DH.160012005 |  | DH1600/Mechanical Yard-C160 // Set Chiller - CHLR-1CY40-C160 | 1d | 2027-01-06 | 2027-01-06 | A5920, DH.160012003 SS | 65d | 0d | 1083 | DH1600 | MY |
| DH.160012006 |  | DH1600/Mechanical Yard-C160 // Set TES tank - TES-1CY40-C160 | 1d | 2027-01-07 | 2027-01-07 | DH.160012005 | 66d | 0d | 1083 | DH1600 | MY |
| DH.160012029 |  | DH1600/Mechanical Yard-C160 // Install CHWP | 1d | 2027-01-08 | 2027-01-08 | DH.160012006 | 66d | 0d | 1083 | DH1600 | MY |
| DH.160012030 |  | DH1600/Mechanical Yard-C160 // Install Mechanical Piping Mains (Building -to Line) | 1d | 2027-01-11 | 2027-01-11 | DH.160012029 | 66d | 0d | 1083 | DH1600 | MY |
| DH.160012031 |  | DH1600/Mechanical Yard-C160 // Install Mechanical Chiller to Mains | 1d | 2027-01-12 | 2027-01-12 | DH.160012030 | 66d | 1d | 1083 | DH1600 | MY |
|  | 4 | **D160** |  | 2027-01-06 | 2027-01-12 |  |  |  |  |  |  |
| DH.160012007 |  | DH1600/Mechanical Yard-D160 // Set Chiller - CHLR-1CY40-D160 | 1d | 2027-01-06 | 2027-01-06 | A5920, DH.160012005 SS | 65d | 0d | 1083 | DH1600 | MY |
| DH.160012008 |  | DH1600/Mechanical Yard-D160 // Set TES tank - TES-1CY40-D160 | 1d | 2027-01-07 | 2027-01-07 | DH.160012007 | 66d | 0d | 1083 | DH1600 | MY |
| DH.160012032 |  | DH1600/Mechanical Yard-D160 // Install CHWP | 1d | 2027-01-08 | 2027-01-08 | DH.160012008 | 66d | 0d | 1083 | DH1600 | MY |
| DH.160012033 |  | DH1600/Mechanical Yard-D160 // Install Mechanical Piping Mains (Building -to Line) | 1d | 2027-01-11 | 2027-01-11 | DH.160012032 | 66d | 0d | 1083 | DH1600 | MY |
| DH.160012034 |  | DH1600/Mechanical Yard-D160 // Install Mechanical Chiller to Mains | 1d | 2027-01-12 | 2027-01-12 | DH.160012033 | 66d | 1d | 1083 | DH1600 | MY |
|  | 5 | **E160** |  | 2027-01-06 | 2027-01-12 |  |  |  |  |  |  |
| DH.160012009 |  | DH1600/Mechanical Yard-E160 // Set Chiller - CHLR-1CY40-E160 | 1d | 2027-01-06 | 2027-01-06 | A5920, DH.160012007 SS | 65d | 0d | 1083 | DH1600 | MY |
| DH.160012010 |  | DH1600/Mechanical Yard-E160 // Set TES tank - TES-1CY40-E160 | 1d | 2027-01-07 | 2027-01-07 | DH.160012009 | 66d | 0d | 1083 | DH1600 | MY |
| DH.160012035 |  | DH1600/Mechanical Yard-E160 // Install CHWP | 1d | 2027-01-08 | 2027-01-08 | DH.160012010 | 66d | 0d | 1083 | DH1600 | MY |
| DH.160012036 |  | DH1600/Mechanical Yard-E160 // Install Mechanical Piping Mains (Building -to Line) | 1d | 2027-01-11 | 2027-01-11 | DH.160012035 | 66d | 0d | 1083 | DH1600 | MY |
| DH.160012037 |  | DH1600/Mechanical Yard-E160 // Install Mechanical Chiller to Mains | 1d | 2027-01-12 | 2027-01-12 | DH.160012036 | 66d | 1d | 1083 | DH1600 | MY |
|  | 6 | **F160** |  | 2027-01-07 | 2027-01-13 |  |  |  |  |  |  |
| DH.160012011 |  | DH1600/Mechanical Yard-F160 // Set Chiller - CHLR-1CY40-F160 | 1d | 2027-01-07 | 2027-01-07 | DH.160012009 | 65d | 0d | 1083 | DH1600 | MY |
| DH.160012012 |  | DH1600/Mechanical Yard-F160 // Set TES tank - TES-1CY40-F160 | 1d | 2027-01-08 | 2027-01-08 | DH.160012011 | 65d | 0d | 1083 | DH1600 | MY |
| DH.160012038 |  | DH1600/Mechanical Yard-F160 // Install CHWP | 1d | 2027-01-11 | 2027-01-11 | DH.160012012 | 65d | 0d | 1083 | DH1600 | MY |
| DH.160012039 |  | DH1600/Mechanical Yard-F160 // Install Mechanical Piping Mains (Building -to Line) | 1d | 2027-01-12 | 2027-01-12 | DH.160012038 | 65d | 0d | 1083 | DH1600 | MY |
| DH.160012040 |  | DH1600/Mechanical Yard-F160 // Install Mechanical Chiller to Mains | 1d | 2027-01-13 | 2027-01-13 | DH.160012039 | 65d | 0d | 1083 | DH1600 | MY |

| ID | WBS | Activity | Duration | Start | Finish | Predecessors | Total float | Free float | MSP Activity ID | QTS - AREA | QTS - DASH |
| --- | --- | --- | --- | --- | --- | --- | --- | --- | --- | --- | --- |
|  | 7 | **G160** |  | 2027-01-07 | 2027-01-13 |  |  |  |  |  |  |
| DH.160012013 |  | DH1600/Mechanical Yard-G160 // Set Chiller - CHLR-1CY40-G160 | 1d | 2027-01-07 | 2027-01-07 | DH.160012011 SS | 65d | 0d | 1083 | DH1600 | MY |
| DH.160012014 |  | DH1600/Mechanical Yard-G160 // Set TES tank - TES-1CY40-G160 | 1d | 2027-01-08 | 2027-01-08 | DH.160012013 | 65d | 0d | 1083 | DH1600 | MY |
| DH.160012041 |  | DH1600/Mechanical Yard-G160 // Install CHWP | 1d | 2027-01-11 | 2027-01-11 | DH.160012014 | 65d | 0d | 1083 | DH1600 | MY |
| DH.160012042 |  | DH1600/Mechanical Yard-G160 // Install Mechanical Piping Mains (Building -to Line) | 1d | 2027-01-12 | 2027-01-12 | DH.160012041 | 65d | 0d | 1083 | DH1600 | MY |
| DH.160012043 |  | DH1600/Mechanical Yard-G160 // Install Mechanical Chiller to Mains | 1d | 2027-01-13 | 2027-01-13 | DH.160012042 | 65d | 0d | 1083 | DH1600 | MY |
|  | 8 | **H160** |  | 2027-01-07 | 2027-01-13 |  |  |  |  |  |  |
| DH.160012015 |  | DH1600/Mechanical Yard-H160 // Set Chiller - CHLR-1CY40-H160 | 1d | 2027-01-07 | 2027-01-07 | DH.160012013 SS | 65d | 0d | 1083 | DH1600 | MY |
| DH.160012016 |  | DH1600/Mechanical Yard-H160 // Set TES tank - TES-1CY40-H160 | 1d | 2027-01-08 | 2027-01-08 | DH.160012015 | 65d | 0d | 1083 | DH1600 | MY |
| DH.160012044 |  | DH1600/Mechanical Yard-H160 // Install CHWP | 1d | 2027-01-11 | 2027-01-11 | DH.160012016 | 65d | 0d | 1083 | DH1600 | MY |
| DH.160012045 |  | DH1600/Mechanical Yard-H160 // Install Mechanical Piping Mains (Building -to Line) | 1d | 2027-01-12 | 2027-01-12 | DH.160012044 | 65d | 0d | 1083 | DH1600 | MY |
| DH.160012046 |  | DH1600/Mechanical Yard-H160 // Install Mechanical Chiller to Mains | 1d | 2027-01-13 | 2027-01-13 | DH.160012045 | 65d | 0d | 1083 | DH1600 | MY |
|  | 9 | **J160** |  | 2027-01-07 | 2027-01-13 |  |  |  |  |  |  |
| DH.160012017 |  | DH1600/Mechanical Yard-J160 // Set Chiller - CHLR-1CY40-J160 | 1d | 2027-01-07 | 2027-01-07 | DH.160012015 SS | 65d | 0d | 1083 | DH1600 | MY |
| DH.160012018 |  | DH1600/Mechanical Yard-J160 // Set TES tank - TES-1CY40-J160 | 1d | 2027-01-08 | 2027-01-08 | DH.160012017 | 65d | 0d | 1083 | DH1600 | MY |
| DH.160012047 |  | DH1600/Mechanical Yard-J160 // Install CHWP | 1d | 2027-01-11 | 2027-01-11 | DH.160012018 | 65d | 0d | 1083 | DH1600 | MY |
| DH.160012048 |  | DH1600/Mechanical Yard-J160 // Install Mechanical Piping Mains (Building -to Line) | 1d | 2027-01-12 | 2027-01-12 | DH.160012047 | 65d | 0d | 1083 | DH1600 | MY |
| DH.160012049 |  | DH1600/Mechanical Yard-J160 // Install Mechanical Chiller to Mains | 1d | 2027-01-13 | 2027-01-13 | DH.160012048 | 65d | 0d | 1083 | DH1600 | MY |
|  | 10 | **K160** |  | 2027-01-07 | 2027-01-13 |  |  |  |  |  |  |
| DH.160012019 |  | DH1600/Mechanical Yard-K160 // Set Chiller - CHLR-1CY40-K160 | 1d | 2027-01-07 | 2027-01-07 | DH.160012017 SS | 65d | 0d | 1083 | DH1600 | MY |
| DH.160012020 |  | DH1600/Mechanical Yard-K160 // Set TES tank - TES-1CY40-K160 | 1d | 2027-01-08 | 2027-01-08 | DH.160012019 | 65d | 0d | 1083 | DH1600 | MY |
| DH.160012050 |  | DH1600/Mechanical Yard-K160 // Install CHWP | 1d | 2027-01-11 | 2027-01-11 | DH.160012020 | 65d | 0d | 1083 | DH1600 | MY |
| DH.160012051 |  | DH1600/Mechanical Yard-K160 // Install Mechanical Piping Mains (Building -to Line) | 1d | 2027-01-12 | 2027-01-12 | DH.160012050 | 65d | 0d | 1083 | DH1600 | MY |
| DH.160012052 |  | DH1600/Mechanical Yard-K160 // Install Mechanical Chiller to Mains | 1d | 2027-01-13 | 2027-01-13 | DH.160012051 | 65d | 0d | 1083 | DH1600 | MY |

| ID | WBS | Activity | Duration | Start | Finish | Predecessors | Complete | Planned start | Planned finish | Total float | Free float | MSP Activity ID | QTS - AREA | QTS - DASH | QTS - Subcontractor | QTS - Resp | 05 -SUFFOLK - Building Phase |
| --- | --- | --- | --- | --- | --- | --- | --- | --- | --- | --- | --- | --- | --- | --- | --- | --- | --- |
|  | 11 | **R160** |  | 2027-01-07 | 2027-01-13 |  |  |  |  |  |  |  |  |  |  |  |  |
| DH.160012021 |  | DH1600/Mechanical Yard-R160 // Set Chiller - CHLR-1CY40-R160 | 1d | 2027-01-07 | 2027-01-07 | DH.160012019 SS |  |  |  | 65d | 0d | 1083 | DH1600 | MY |  |  |  |
| DH.160012022 |  | DH1600/Mechanical Yard-R160 // Set TES tank - TES-1CY40-R160 | 1d | 2027-01-08 | 2027-01-08 | DH.160012021 |  |  |  | 65d | 0d | 1083 | DH1600 | MY |  |  |  |
| DH.160012053 |  | DH1600/Mechanical Yard-R160 // Install CHWP | 1d | 2027-01-11 | 2027-01-11 | DH.160012022 |  |  |  | 65d | 0d | 1083 | DH1600 | MY |  |  |  |
| DH.160012054 |  | DH1600/Mechanical Yard-R160 // Install Mechanical Piping Mains (Building -to Line) | 1d | 2027-01-12 | 2027-01-12 | DH.160012053 |  |  |  | 65d | 0d | 1083 | DH1600 | MY |  |  |  |
| DH.160012055 |  | DH1600/Mechanical Yard-R160 // Install Mechanical Chiller to Mains | 1d | 2027-01-13 | 2027-01-13 | DH.160012054 |  |  |  | 65d | 0d | 1083 | DH1600 | MY |  |  |  |
|  | 12 | **Test & Flushing** |  | 2027-01-14 | 2027-01-28 |  |  |  |  |  |  |  |  |  |  |  |  |
| A5745 |  | DH1600/Mechanical Yard-Test & Flushing // Line Test & Checking | 2d | 2027-01-14 | 2027-01-15 | DH.160012040, DH.160012037, DH.160012034, DH.160012031, DH.160012028, DH.160012025, DH.160012043, DH.160012046, DH.160012049, DH.160012052, DH.160012055 |  |  |  | 65d | 0d |  | DH1600 | MY |  |  |  |
| A5747 |  | DH1600/Mechanical Yard-Test & Flushing // Electrical & Controls Testing / Checking | 3d | 2027-01-19 | 2027-01-21 | A5745 |  |  |  | 65d | 0d |  | DH1600 | MY | HELIX | TBD |  |
| A5746 |  | DH1600/Mechanical Yard-Test & Flushing // Fill, Flush & Purge | 5d | 2027-01-22 | 2027-01-28 | A5747 |  |  |  | 65d | 71d |  | DH1600 | MY |  |  |  |
|  | 2 | **Electrical & Controls** |  | 2026-10-14 | 2026-12-15 |  |  |  |  |  |  |  |  |  |  |  |  |
| A5820 |  | DH1600/Electrical & Controls // Backfill Chiller Raceways from Building to Chiller Pad | 8d | 2026-10-14 | 2026-10-23 | A5843 |  |  |  | 94d | 0d | 1075 | DH1600 | MY | HELIX | PRICE |  |
| A5821 |  | DH1600/Electrical & Controls // Excavate Raceways from Building to Chiller Pad | 8d | 2026-10-20 | 2026-10-29 | A5820 SS+4d, A5838 SS |  |  |  | 94d | 0d | 1097 | DH1600 | MY | HELIX | PRICE |  |
| A5824 |  | DH1600/Electrical & Controls // Install Raceway from Building To Chiller Pad | 8d | 2026-10-26 | 2026-11-04 | A5821 SS+4d |  |  |  | 94d | 0d | 1098 | DH1600 | MY | HELIX | PRICE |  |
| A5826 |  | DH1600/Electrical & Controls // Raceway connections to Chiller units | 6d | 2026-11-05 | 2026-11-13 | A5824, A5838, A5821, A5842 |  |  |  | 94d | 0d | 1099 | DH1600 | MY | HELIX | PRICE |  |
| A5827 |  | DH1600/Electrical & Controls // Install Panels and Raceways to CHWP | 10d | 2026-11-05 | 2026-11-19 | A5820, A5826 SS |  |  |  | 94d | 0d | 1101 | DH1600 | MY | HELIX | PRICE |  |
| A5833 |  | DH1600/Electrical & Controls // Mechanical CWP Support Caisson Footings | 10d | 2026-11-05 | 2026-11-19 | A5824 SS, A5827 SS |  |  |  | 106d | 0d | 1103 | DH1600 | MY |  | PRICE |  |
| A5831 |  | DH1600/Electrical & Controls // Pull and Terminate Feeders to Chiller units | 6d | 2026-11-16 | 2026-11-23 | A5824 SS, A5827 SS, A5826 |  |  |  | 104d | 10d | 1105 | DH1600 | MY |  | PRICE |  |
| A5830 |  | DH1600/Electrical & Controls // Install Controls conduits and wire to Chiller units | 12d | 2026-11-20 | 2026-12-08 | A5827 |  |  |  | 94d | 0d | 1104 | DH1600 | MY |  | PRICE |  |
| A5835 |  | DH1600/Electrical & Controls // Fine Grade Install Landscape Fabric & Install Rock | 5d | 2026-11-20 | 2026-11-27 | A5824 SS, A5827 SS, A5833 |  |  |  | 106d | 112d | 1103 | DH1600 | MY |  | PRICE |  |
| A5834 |  | DH1600/Electrical & Controls // Chiller units Ready to Energize | 5d | 2026-12-09 | 2026-12-15 | A5824 SS, A5827 SS, A5830, A5827, A5831 |  |  |  | 94d | 100d | 1112 | DH1600 | MY |  | PRICE |  |
|  | 2 | **Roof - RTUs** |  | 2026-08-27 | 2026-11-25 |  |  |  |  |  |  |  |  |  |  |  |  |
|  | 1 | **Column Lines 1.2 thru 2.0** |  | 2026-08-27 | 2026-11-25 |  |  |  |  |  |  |  |  |  |  |  |  |
| DH.160012058 |  | DH1600/Roof - RTUs // RTU-RT- 017 | 1d | 2026-08-27 A | 2026-08-27 A | DH.150012064 | 100% | 2026-08-20 | 2026-08-20 |  |  | 1120 | DH1600 |  |  |  | 2 |
| DH.160012057 |  | DH1600/Roof - RTUs // RTU-RT- 018 | 1d | 2026-08-31 A | 2026-08-31 A | DH.160012058 SS+2d | 100% | 2026-08-24 | 2026-08-24 |  |  | 1119 | DH1600 |  |  |  | 2 |
| DH.160012064 |  | DH1600/Roof - RTUs // RTU-RT- 019 | 1d | 2026-09-01 A | 2026-09-01 A | DH.160012057 | 100% | 2026-08-25 | 2026-08-25 |  |  | 1119 | DH1600 |  |  |  | 2 |
| DH.160012059 |  | DH1600/Roof - RTUs // Install Mechanical Piping | 15d | 2026-09-02 A | 2026-09-23 A | DH.160012058, DH.160012064 | 100% | 2026-08-26 | 2026-09-16 |  |  | 1117 | DH1600 |  |  |  | 2 |
| DH.160012056 |  | DH1600/Roof - RTUs // Install heat trace system | 15d | 2026-10-14 | 2026-11-03 | DH.160012059 |  |  |  | 94d | 0d | 1116 | DH1600 |  | HELIX | JT | 2 |
| DH.16007841 |  | DH1600/Roof - RTUs // Install Electrical Conduit and Controls Piping | 15d | 2026-11-04 | 2026-11-25 | DH.160012056, DH.160012059, DH.160012064 |  |  |  | 94d | 15d | 1118 | DH1600 |  | HELIX | JT | 2 |

| ID | WBS | Activity | Type | Duration | Start | Finish | Predecessors | Complete | Remaining | Planned start | Planned finish | Total float | Free float | Constraint | MSP Activity ID | QTS - Subcontractor | QTS - AREA | QTS - Resp | QTS - DASH |
| --- | --- | --- | --- | --- | --- | --- | --- | --- | --- | --- | --- | --- | --- | --- | --- | --- | --- | --- | --- |
|  | 1 | **Interior Build Out** |  |  | 2026-09-01 | 2027-06-17 |  |  |  |  |  |  |  |  |  |  |  |  |  |
|  | 9 | **Flex 1000F10** |  |  | 2026-09-21 | 2027-01-04 |  |  |  |  |  |  |  |  |  |  |  |  |  |
| DH.1600.1010 |  | DH1600/Flex 1000F10 // MEPF Layout of Overhead Supports |  | 2d | 2026-09-21 A | 2026-09-22 A | STRUCTURE.7540 | 100% |  | 2026-08-31 | 2026-09-01 |  |  |  | 1153 | HELIX | DH1600 | ALOO | OR |
| DH.1600.1000 |  | DH1600/Flex 1000F10 // Seal Concrete |  | 5d | 2026-09-24 A | 2026-09-29 A | SOG.1472 | 100% |  | 2026-08-24 | 2026-08-28 |  |  |  | 66 |  | DH1600 |  | OR |
| B120001.3187 |  | DH1600/Flex 1000F10 // Install Overhead Cable Ladder / 36" Cable Tray - TFO |  | 5d | 2026-10-14 | 2026-10-20 | A5690, DH.1600.1010 |  |  |  |  | 45d | 0d |  | 1181 |  | DH1600 |  | OR |
| B120001.3188 |  | DH1600/Flex 1000F10 // Install Overhead HAC - TFO |  | 5d | 2026-10-21 | 2026-10-27 | B120001.3187 |  |  |  |  | 45d | 0d |  | 1181 |  | DH1600 |  | OR |
| DH.1600.1020 |  | DH1600/Flex 1000F10 // MEPF Install High Overhead Systems |  | 6d | 2026-10-28 | 2026-11-04 | B120001.3188, DH.1600.1010 |  |  |  |  | 45d | 0d |  | 1154 | HELIX | DH1600 | ALOO | OR |
| DH.1600.1040 |  | DH1600/Flex 1000F10 // Frame Walls including Backing |  | 4d | 2026-11-05 | 2026-11-10 | DH.1600.1020, DH.1600.1010, DH.1600.1000 |  |  |  |  | 45d | 0d |  | 1155 |  | DH1600 |  | OR |
| DH.1600.1060 |  | DH1600/Flex 1000F10 // MEPF Install Rough Wall |  | 2d | 2026-11-12 | 2026-11-13 | DH.1600.1040 |  |  |  |  | 45d | 0d |  | 1156 | HELIX | DH1600 | AC | OR |
| DH.1600.1080 |  | DH1600/Flex 1000F10 // Rough Wall Inspection (Approval to Close up) |  | 1d | 2026-11-16 | 2026-11-16 | DH.1600.1060 |  |  |  |  | 45d | 0d |  | 1158 |  | DH1600 |  | OR |
| DH.1600.1070 |  | DH1600/Flex 1000F10 // Install Top Down Sheet Rock |  | 5d | 2026-11-17 | 2026-11-23 | DH.1600.1080, DH.1600.1040 SS+2d |  |  |  |  | 45d | 0d |  | 1157 |  | DH1600 |  | OR |
| DH.1600.1090 |  | DH1600/Flex 1000F10 // Install Balance of Sheetrock |  | 3d | 2026-11-24 | 2026-11-27 | DH.1600.1070 |  |  |  |  | 45d | 0d |  | 1159 |  | DH1600 |  | OR |
| DH.1600.1100 |  | DH1600/Flex 1000F10 // Tape and Finish Walls |  | 6d | 2026-11-30 | 2026-12-07 | DH.1600.1090 |  |  |  |  | 45d | 0d |  | 1160 |  | DH1600 |  | OR |
| DH.1600.1110 |  | DH1600/Flex 1000F10 // Prime and First Coat of Paint |  | 2d | 2026-12-08 | 2026-12-09 | DH.1600.1100 |  |  |  |  | 45d | 0d |  | 1162 |  | DH1600 |  | OR |
| DH.1600.1120 |  | DH1600/Flex 1000F10 // Install MEPF Overhead Ceiling Rough |  | 3d | 2026-12-10 | 2026-12-14 | DH.1600.1110 |  |  |  |  | 45d | 0d |  | 1163 | HELIX | DH1600 | AC | OR |
| DH.1600.1050 |  | DH1600/Flex 1000F10 // Install Door Frames |  | 1d | 2026-12-15 | 2026-12-15 | DH.1600.1120, DH.1600.1040 FF |  |  |  |  | 49d | 4d |  | 1161 |  | DH1600 |  | OR |
| DH.1600.1130 |  | DH1600/Flex 1000F10 // Install Lighting, Fire Alarm & Fire Protection |  | 2d | 2026-12-15 | 2026-12-16 | DH.1600.1120 |  |  |  |  | 45d | 0d |  | 1164 | HELIX | DH1600 | AC | OR |
| DH.1600.1140 |  | DH1600/Flex 1000F10 // Wall Touch up Final Coat of Paint |  | 3d | 2026-12-17 | 2026-12-21 | DH.1600.1130 |  |  |  |  | 45d | 0d |  | 1165 |  | DH1600 |  | OR |
| DH.1600.1150 |  | DH1600/Flex 1000F10 // Install Wall Base, Trim, and Devices |  | 3d | 2026-12-22 | 2026-12-24 | DH.1600.1050, DH.1600.1140 |  |  |  |  | 45d | 0d |  | 1166 |  | DH1600 |  | OR |
| DH.1600.3058 |  | DH1600/Flex 1000F10 // Ready to Receive Equipment | milestone | 0d | 2026-12-24 | 2026-12-24 | DH.1600.1150 FF |  |  |  |  | 45d | 0d |  | 1166 | HELIX | DH1600 | TBD | OR |
| DH.1600.1160 |  | DH1600/Flex 1000F10 // Suffolk Pre Punch |  | 5d | 2026-12-28 | 2027-01-04 | DH.1600.3058 |  |  |  |  | 102d | 100d |  | 1167 |  | DH1600 |  | OR |
|  | 7 | **Electrical Room #5601** |  |  | 2026-09-01 | 2027-03-10 |  |  |  |  |  |  |  |  |  |  |  |  |  |
| B120001.3066 |  | DH1600/Electrical Room #5601 // Frame Walls including Backing |  | 4d | 2026-09-01 A | 2026-10-19 | B120001.3065 |  | 4d | 2026-10-21 | 2026-10-26 | 48d | 0d |  | 1172 |  | DH1600 |  | ER |
| B120001.3065 |  | DH1600/Electrical Room #5601 // MEPF Layout of Overhead Supports |  | 2d | 2026-09-23 A | 2026-09-24 A | DH.1600.1010 | 100% |  | 2026-09-02 | 2026-09-03 |  |  |  | 1170 | HELIX | DH1600 | ALOO | ER |
| B120001.3068 |  | DH1600/Electrical Room #5601 // MEPF Install High Overhead Systems |  | 6d | 2026-10-01 A | 2026-10-21 | B120001.3065 |  | 6d | 2026-09-30 | 2026-10-07 | 51d | 0d |  | 1171 | HELIX | DH1600 | ALOO | ER |
| B120001.3189 |  | DH1600/Electrical Room #5601 // Install Overhead Cable Ladder / 36" Cable Tray - TFO |  | 5d | 2026-10-01 A | 2026-10-20 | B120001.3065 |  | 5d | 2026-09-30 | 2026-10-06 | 78d | 0d |  | 1181 |  | DH1600 |  | ER |
| DH.1400.3041 |  | DH1600/Electrical Room #5601 // Install Cable Tray |  | 3d | 2026-10-01 A | 2026-10-16 | B120001.3065 |  | 3d | 2026-10-16 | 2026-10-20 | 78d | 83d |  | 1182 | HELIX | DH1600 | OO | ER |
| B120001.3070 |  | DH1600/Electrical Room #5601 // Install Top Down Sheet Rock |  | 5d | 2026-10-12 A | 2026-10-26 | B120001.3071 FF+2d, B120001.3066 SS+2d |  | 5d | 2026-10-30 | 2026-11-05 | 48d | 0d |  | 1175 |  | DH1600 |  | ER |
| B120001.3069 |  | DH1600/Electrical Room #5601 // MEPF Install Rough Wall |  | 2d | 2026-10-20 | 2026-10-21 | B120001.3066 |  |  |  |  | 48d | 0d |  | 1174 | HELIX | DH1600 | AC | ER |
| B120001.3190 |  | DH1600/Electrical Room #5601 // Install Overhead HAC - TFO |  | 5d | 2026-10-21 | 2026-10-27 | B120001.3189 |  |  |  |  | 78d | 0d |  | 1181 |  | DH1600 |  | ER |
| B120001.3071 |  | DH1600/Electrical Room #5601 // Rough Wall Inspspection (Approval to Close up) |  | 1d | 2026-10-22 | 2026-10-22 | B120001.3069 |  |  |  |  | 48d | 0d |  | 1176 |  | DH1600 |  | ER |
| F.1000A.1261 |  | DH1600/Electrical Room #5601 // Rough-In Security |  | 2d | 2026-10-22 | 2026-10-23 | B120001.3068 |  |  |  |  | 73d | 0d |  | 1156 | HELIX | DH1600 | AC | ER |
| F.1000A.1585 |  | DH1600/Electrical Room #5601 // BMS & EPMS Rough-In |  | 2d | 2026-10-22 | 2026-10-23 | F.1000A.1261 SS, F.1000A.1261 FF |  |  |  |  | 85d | 31d |  |  |  | DH1600 |  |  |
| DH.1600.1220 |  | DH1600/Electrical Room #5601 // Pull Cable Tray Feeders (CRAHU/CDU) |  | 10d | 2026-10-23 | 2026-11-05 | B120001.3071 |  |  |  |  | 66d | 0d |  | 1191 | HELIX | DH1600 | OO | ER |
| F.1000A.1262 |  | DH1600/Electrical Room #5601 // Pull & Test Security Cable |  | 3d | 2026-10-26 | 2026-10-28 | F.1000A.1261 |  |  |  |  | 73d | 19d |  | 1156 |  | DH1600 |  | ER |
| DH.1600.1290 |  | DH1600/Electrical Room #5601 // Pull Misc Feeder and Branch Circuits |  | 10d | 2026-10-27 | 2026-11-09 | B120001.3070, B120001.3068 |  |  |  |  | 48d | 0d |  | 1198 | HELIX | DH1600 | AL | ER |
| DH.1400.3040 |  | DH1600/Electrical Room #5601 // Install Overhead Buss duct |  | 2d | 2026-10-28 | 2026-10-29 | B120001.3190, B120001.3065 |  |  |  |  | 78d | 74d |  | 1188 | HELIX | DH1600 | AL | ER |
| DH.1600.1240 |  | DH1600/Electrical Room #5601 // Land and Terminate Cabel Tray Feeders In Gear |  | 10d | 2026-11-06 | 2026-11-20 | DH.1600.1220 |  |  |  |  | 66d | 15d |  | 1193 | HELIX | DH1600 | TBD | ER |
| DH.1600.1300 |  | DH1600/Electrical Room #5601 // Land and Terminate Misc Feeder and Branch Circuits |  | 10d | 2026-11-10 | 2026-11-24 | DH.1600.1290 |  |  |  |  | 48d | 0d |  | 1184 | HELIX | DH1600 | TBD | ER |
| B120001.3067 |  | DH1600/Electrical Room #5601 // Install Door Frames |  | 1d | 2026-11-25 | 2026-11-25 | DH.1600.1300, B120001.3066 FF |  |  |  |  | 48d | 0d |  | 1179 |  | DH1600 |  | ER |
| DH.1600.3059 |  | DH1600/Electrical Room #5601 // Room Ready to Receive Equipment | milestone | 0d | 2026-11-25 | 2026-11-25 | B120001.3070 FF, B120001.3067 |  |  |  |  | 48d | 3d |  | 1189 | HELIX | DH1600 | TBD | ER |
| F.1000A.1263 |  | DH1600/Electrical Room #5601 // Install Security Devices |  | 2d | 2026-11-27 | 2026-11-30 | B120001.3067, F.1000A.1262 |  |  |  |  | 54d | 0d |  | 1156 |  | DH1600 |  | ER |
| F.1000A.1264 |  | DH1600/Electrical Room #5601 // Mount & Terminate Security Devices |  | 5d | 2026-12-01 | 2026-12-07 | B120001.3067, F.1000A.1263 |  |  |  |  | 54d | 0d |  | 1156 |  | DH1600 |  | ER |
| DH.1600.1250 |  | DH1600/Electrical Room #5601 // Set CRAH-ER5601- 01 |  | 1d | 2026-12-02 | 2026-12-02 | DH.1600.3082 |  |  |  |  | 51d | 0d |  | 1194 |  | DH1600 |  | ER |
| DH.1600.3031 |  | DH1600/Electrical Room #5601 // Set CRAH-ER5601- 02 |  | 1d | 2026-12-02 | 2026-12-02 | DH.1600.3082, DH.1600.1250 FF |  |  |  |  | 51d | 0d |  | 1194 |  | DH1600 |  | ER |
| DH.1600.3032 |  | DH1600/Electrical Room #5601 // Set CRAH-ER5601- 03 |  | 1d | 2026-12-02 | 2026-12-02 | DH.1600.3082, DH.1600.3031 FF |  |  |  |  | 51d | 0d |  | 1194 |  | DH1600 |  | ER |
| DH.1600.3033 |  | DH1600/Electrical Room #5601 // Set CRAH-ER5601- 04 |  | 1d | 2026-12-02 | 2026-12-02 | DH.1600.3082, DH.1600.3032 FF |  |  |  |  | 51d | 0d |  | 1194 |  | DH1600 |  | ER |
| DH.1600.3034 |  | DH1600/Electrical Room #5601 // Set CRAH-ER5601- 05 |  | 1d | 2026-12-02 | 2026-12-02 | DH.1600.3082, DH.1600.3033 FF |  |  |  |  | 51d | 0d |  | 1194 |  | DH1600 |  | ER |
| DH.1600.3035 |  | DH1600/Electrical Room #5601 // Set CRAH-ER5601- 06 |  | 1d | 2026-12-02 | 2026-12-02 | DH.1600.3082, DH.1600.3034 FF |  |  |  |  | 51d | 0d |  | 1194 |  | DH1600 |  | ER |
| DH.1600.3082 |  | DH1600/Electrical Room #5601 // DH1600 - OFCI CRAH-125 Delivery Date (12/02/2026) First Shipment |  | 0d | 2026-12-02 | 2026-12-02 | DH.1600.3059 |  |  |  |  | 46d | 0d | finish on or after 2026-12-02 |  |  |  |  |  |
| DH.1600.1260 |  | DH1600/Electrical Room #5601 // Mechanical Connections to CRAHU |  | 5d | 2026-12-03 | 2026-12-09 | DH.1600.3035 |  |  |  |  | 51d | 0d |  | 1195 |  | DH1600 |  | ER |
| ER.5101.3100 |  | DH1600/Electrical Room #5601 // Set PDU - PDU-R160-01 |  | 1d | 2026-12-03 | 2026-12-03 | DH.1600.3035, B120001.3070 |  |  |  |  | 54d | 0d |  | 1107 | HELIX | DH1600 | TBD | ER |
| ER.5101.3106 |  | DH1600/Electrical Room #5601 // Set UPS - UPS-R160 |  | 1d | 2026-12-04 | 2026-12-04 | ER.5101.3100 |  |  |  |  | 54d | 59d |  | 1107 | HELIX | DH1600 | TBD | ER |
| F.1000A.1265 |  | DH1600/Electrical Room #5601 // Test Security Devices |  | 2d | 2026-12-08 | 2026-12-09 | F.1000A.1264, F.1000A.1585 FF |  |  |  |  | 54d | 3d |  | 1156 |  | DH1600 |  | ER |
| DH.1600.1270 |  | DH1600/Electrical Room #5601 // Install Condensate lines from CRAHU's |  | 2d | 2026-12-10 | 2026-12-11 | DH.1600.1260 |  |  |  |  | 52d | 1d |  | 1196 |  | DH1600 |  | ER |
| DH.1600.1280 |  | DH1600/Electrical Room #5601 // Install Elec Feeders to CRAHU's |  | 3d | 2026-12-10 | 2026-12-14 | B120001.3071, DH.1600.1260 |  |  |  |  | 51d | 0d |  | 1197 | HELIX | DH1600 | OO | ER |
| DH.1600.1330 |  | DH1600/Electrical Room #5601 // Mechanical Equipment Pre-Start up |  | 2d | 2026-12-15 | 2026-12-16 | F.1000A.1265, DH.1600.1240, DH.1600.1260, DH.1600.1270, DH.1600.1280 |  |  |  |  | 51d | 57d |  | 1201 |  | DH1600 |  | ER |
| DH.1600.3061 |  | DH1600/Electrical Room #5601 // DH1600 - OFCI Skid Ship Date (02/01/2027) First Shipment | milestone | 0d | 2027-02-01 | 2027-02-01 | DH.1600.3059 FF |  |  |  |  | 5d | 0d | finish on or after 2027-02-01 | 1189 |  | DH1600 |  | ER |
| ER.5101.3085 |  | DH1600/Electrical Room #5601 // Set Skid - SKID-A160 |  | 1d | 2027-02-01 | 2027-02-01 | DH.1600.3061, DH.1600.3059, B120001.3068 |  |  |  |  | 5d | 0d |  | 1107 | HELIX | DH1600 | TBD | ER |
| ER.5101.3086 |  | DH1600/Electrical Room #5601 // Set Skid - SKID-B160 |  | 1d | 2027-02-01 | 2027-02-01 | DH.1600.3061, ER.5101.3085 SS |  |  |  |  | 5d | 0d |  | 1107 | HELIX | DH1600 | TBD | ER |
| ER.5101.3087 |  | DH1600/Electrical Room #5601 // Set Skid - SKID-C160 |  | 1d | 2027-02-01 | 2027-02-01 | DH.1600.3061, ER.5101.3086 SS |  |  |  |  | 5d | 11d |  | 1107 | HELIX | DH1600 | TBD | ER |
| DH.1600.3072 |  | DH1600/Electrical Room #5601 // DH1600 - OFCI Skid Delivery Date (02/18/2027) 2nd Shipment |  | 0d | 2027-02-18 | 2027-02-18 | DH.1600.3059 FF |  |  |  |  | -6d | 0d | finish on or after 2027-02-18 |  |  |  |  |  |
| ER.5101.3088 |  | DH1600/Electrical Room #5601 // Set Skid - SKID-D160 |  | 1d | 2027-02-18 | 2027-02-18 | DH.1600.3072, ER.5101.3087 |  |  |  |  | -6d | 0d |  | 1107 | HELIX | DH1600 | TBD | ER |
| ER.5101.3089 |  | DH1600/Electrical Room #5601 // Set Skid - SKID-E160 |  | 1d | 2027-02-18 | 2027-02-18 | DH.1600.3072, ER.5101.3088 SS |  |  |  |  | -6d | 0d |  | 1107 | HELIX | DH1600 | TBD | ER |
| DH.1600.1200 |  | DH1600/Electrical Room #5601 // Install Cable Buss From Exterior |  | 3d | 2027-02-19 | 2027-02-23 | DH.1400.3041, B120001.3071, ER.5101.3089 |  |  |  |  | -5d | 0d |  | 1189 | HELIX | DH1600 | TBD | ER |
| DH.1600.1320 |  | DH1600/Electrical Room #5601 // Buss Duct Tie In to Elect Gear |  | 3d | 2027-02-19 | 2027-02-23 | B120001.3071, ER.5101.3089, DH.1400.3040 |  |  |  |  | 4d | 9d |  | 1200 | HELIX | DH1600 | TBD | ER |
| DH.1600.1210 |  | DH1600/Electrical Room #5601 // Pull Cable Buss Feeders |  | 6d | 2027-02-24 | 2027-03-03 | DH.1600.1200 |  |  |  |  | -5d | 0d |  | 1190 | HELIX | DH1600 | TBD | ER |
| DH.1600.1230 |  | DH1600/Electrical Room #5601 // Terminate Cable Buss Feeders |  | 3d | 2027-03-04 | 2027-03-08 | ER.5101.3106, DH.1600.1210 |  |  |  |  | -5d | 0d |  | 1192 | HELIX | DH1600 | TBD | ER |
| DH.1600.1310 |  | DH1600/Electrical Room #5601 // Final FOD Check of all Panels |  | 2d | 2027-03-09 | 2027-03-10 | F.1000A.1265, B120001.3067, DH.1600.1300, DH.1600.1320, DH.1600.1240, DH.1600.1230 |  |  |  |  | -5d | 1d |  | 1199 | HELIX | DH1600 | QC | ER |

| ID | WBS | Activity | Type | Duration | Start | Finish | Predecessors | Complete | Remaining | Planned start | Planned finish | Total float | Free float | Constraint | MSP Activity ID | QTS - AREA | QTS - DASH | QTS - Subcontractor | QTS - Resp |
| --- | --- | --- | --- | --- | --- | --- | --- | --- | --- | --- | --- | --- | --- | --- | --- | --- | --- | --- | --- |
|  | 2 | **Electrcal Room #5604** |  |  | 2026-09-14 | 2027-03-11 |  |  |  |  |  |  |  |  |  |  |  |  |  |
| B120001.3106 |  | DH1600/Electrical Room #5604 // Install Top Down Sheet Rock |  | 5d | 2026-09-14 A | 2026-10-26 | B120001.3105 FF+2d, B120001.3101 SS+2d |  | 5d | 2026-10-22 | 2026-10-28 | 54d | 0d |  | 1175 | DH1600 | ER |  |  |
| B120001.3100 |  | DH1600/Electrical Room #5604 // MEPF Layout of Overhead Supports |  | 2d | 2026-09-23 A | 2026-09-25 A | B120001.3065 SS | 100% |  | 2026-09-04 | 2026-09-08 |  |  |  | 1170 | DH1600 | ER | HELIX | ALOO |
| B120001.3101 |  | DH1600/Electrical Room #5604 // Frame Walls including Backing |  | 4d | 2026-09-30 A | 2026-10-19 | B120001.3100 |  | 4d | 2026-10-13 | 2026-10-16 | 52d | 0d |  | 1172 | DH1600 | ER |  |  |
| B120001.3104 |  | DH1600/Electrical Room #5604 // MEPF Install Rough Wall |  | 2d | 2026-10-01 A | 2026-10-21 | B120001.3101 FF+2d |  | 2d | 2026-10-19 | 2026-10-20 | 52d | 0d |  | 1174 | DH1600 | ER | HELIX | AC |
| DH.1400.3068 |  | DH1600/Electrical Room #5604 // Install Cable Tray |  | 3d | 2026-10-05 A | 2026-10-16 | B120001.3100 |  | 3d | 2026-10-07 | 2026-10-09 | 60d | 8d |  | 1182 | DH1600 | ER | HELIX | OO |
| B120001.3103 |  | DH1600/Electrical Room #5604 // MEPF Install High Overhead Systems |  | 6d | 2026-10-14 | 2026-10-21 | B120001.3100 |  |  |  |  | 57d | 0d |  | 1171 | DH1600 | ER | HELIX | ALOO |
| B120001.3191 |  | DH1600/Electrical Room #5604 // Install Overhead Cable Ladder / 36" Cable Tray - TFO |  | 5d | 2026-10-14 | 2026-10-20 | B120001.3100 |  |  |  |  | 83d | 0d |  | 1181 | DH1600 | ER |  |  |
| B120001.3192 |  | DH1600/Electrical Room #5604 // Install Overhead HAC - TFO |  | 5d | 2026-10-14 | 2026-10-20 | B120001.3191 FF |  |  |  |  | 83d | 0d |  | 1181 | DH1600 | ER |  |  |
| DH.1400.3067 |  | DH1600/Electrical Room #5604 // Install Overhead Buss duct |  | 2d | 2026-10-21 | 2026-10-22 | B120001.3100, B120001.3192 |  |  |  |  | 83d |  |  | 1188 | DH1600 | ER | HELIX | AL |
| B120001.3105 |  | DH1600/Electrical Room #5604 // Rough Wall Inspspection (Approval to Close up) |  | 1d | 2026-10-22 | 2026-10-22 | B120001.3104 |  |  |  |  | 52d | 0d |  | 1176 | DH1600 | ER |  |  |
| F.1000A.1266 |  | DH1600/Electrical Room #5604 // Rough-In Security |  | 2d | 2026-10-22 | 2026-10-23 | B120001.3103 |  |  |  |  | 73d | 0d |  | 1156 | DH1600 | ER | HELIX | AC |
| F.1000A.1595 |  | DH1600/Electrical Room #5604 // BMS & EPMS Rough-In |  | 2d | 2026-10-22 | 2026-10-23 | F.1000A.1266 SS, F.1000A.1266 FF |  |  |  |  | 85d | 39d |  |  | DH1600 |  |  |  |
| DH.1600.3036 |  | DH1600/Electrical Room #5604 // Install Overhead Buss duct |  | 2d | 2026-10-23 | 2026-10-26 | B120001.3105 |  |  |  |  | 52d | 0d |  | 1188 | DH1600 | ER | HELIX | AL |
| DH.1600.3037 |  | DH1600/Electrical Room #5604 // Install Cable Tray |  | 3d | 2026-10-26 | 2026-10-28 | DH.1600.3036 SS+1d |  |  |  |  | 52d | 0d |  | 1182 | DH1600 | ER | HELIX | OO |
| F.1000A.1267 |  | DH1600/Electrical Room #5604 // Pull & Test Security Cable |  | 3d | 2026-10-26 | 2026-10-28 | F.1000A.1266 |  |  |  |  | 73d | 9d |  | 1156 | DH1600 | ER |  |  |
| DH.1600.3047 |  | DH1600/Electrical Room #5604 // Pull Misc Feeder and Branch Circuits |  | 10d | 2026-10-27 | 2026-11-09 | B120001.3106, B120001.3103 |  |  |  |  | 60d | 0d |  | 1198 | DH1600 | ER | HELIX | AL |
| DH.1600.3053 |  | DH1600/Electrical Room #5604 // Pull Cable Tray Feeders (CRAHU/CDU) |  | 10d | 2026-10-29 | 2026-11-12 | DH.1400.3068, B120001.3106, B120001.3103, DH.1600.3037 |  |  |  |  | 52d | 0d |  | 1191 | DH1600 | ER | HELIX | OO |
| B120001.3102 |  | DH1600/Electrical Room #5604 // Install Door Frames |  | 1d | 2026-11-10 | 2026-11-10 | B120001.3101 FF, DH.1600.3047 |  |  |  |  | 60d | 0d |  | 1179 | DH1600 | ER |  |  |
| DH.1600.3060 |  | DH1600/Electrical Room #5604 // Room Ready to Receive Equipment | milestone | 0d | 2026-11-10 | 2026-11-10 | B120001.3106, B120001.3102 |  |  |  |  | 60d | 58d |  | 1189 | DH1600 | ER | HELIX | TBD |
| F.1000A.1268 |  | DH1600/Electrical Room #5604 // Install Security Devices |  | 2d | 2026-11-12 | 2026-11-13 | B120001.3102, F.1000A.1267 |  |  |  |  | 64d | 0d |  | 1156 | DH1600 | ER |  |  |
| DH.1600.3055 |  | DH1600/Electrical Room #5604 // Land and Terminate Cabel Tray Feeders In Gear |  | 10d | 2026-11-13 | 2026-11-27 | DH.1600.3053 |  |  |  |  | 52d | 0d |  | 1193 | DH1600 | ER | HELIX | TBD |
| F.1000A.1269 |  | DH1600/Electrical Room #5604 // Mount & Terminate Security Devices |  | 5d | 2026-11-16 | 2026-11-20 | B120001.3102, F.1000A.1268 |  |  |  |  | 64d | 18d |  | 1156 | DH1600 | ER |  |  |
| DH.1600.3054 |  | DH1600/Electrical Room #5604 // Land and Terminate Misc Feeder and Branch Circuits |  | 10d | 2026-11-30 | 2026-12-11 | DH.1600.3047, DH.1600.3055 |  |  |  |  | 52d | 58d |  | 1184 | DH1600 | ER | HELIX | TBD |
| DH.1600.3038 |  | DH1600/Electrical Room #5604 // Set CRAH-ER5604- 01 |  | 1d | 2026-12-03 | 2026-12-03 | DH.1600.3082 FS+1d |  |  |  |  | 46d | 0d |  | 1194 | DH1600 | ER |  |  |
| DH.1600.3039 |  | DH1600/Electrical Room #5604 // Set CRAH-ER5604- 02 |  | 1d | 2026-12-03 | 2026-12-03 | DH.1600.3082 FS+1d, DH.1600.3038 FF |  |  |  |  | 46d | 0d |  | 1194 | DH1600 | ER |  |  |
| DH.1600.3041 |  | DH1600/Electrical Room #5604 // Set CRAH-ER5604- 03 |  | 1d | 2026-12-03 | 2026-12-03 | DH.1600.3082 FS+1d, DH.1600.3039 FF |  |  |  |  | 46d | 0d |  | 1194 | DH1600 | ER |  |  |
| DH.1600.3042 |  | DH1600/Electrical Room #5604 // Set CRAH-ER5604- 04 |  | 1d | 2026-12-03 | 2026-12-03 | DH.1600.3082 FS+1d, DH.1600.3041 FF |  |  |  |  | 46d | 0d |  | 1194 | DH1600 | ER |  |  |
| DH.1600.3043 |  | DH1600/Electrical Room #5604 // Set CRAH-ER5604- 05 |  | 1d | 2026-12-03 | 2026-12-03 | DH.1600.3082 FS+1d, DH.1600.3042 FF |  |  |  |  | 46d | 0d |  | 1194 | DH1600 | ER |  |  |
| DH.1600.3046 |  | DH1600/Electrical Room #5604 // Set CRAH-ER5604- 06 |  | 1d | 2026-12-03 | 2026-12-03 | DH.1600.3082 FS+1d, DH.1600.3043 FF |  |  |  |  | 46d | 0d |  | 1194 | DH1600 | ER |  |  |
| DH.1600.3048 |  | DH1600/Electrical Room #5604 // Mechanical Connections to CRAHU |  | 5d | 2026-12-04 | 2026-12-10 | DH.1600.3038, DH.1600.3046 |  |  |  |  | 46d | 0d |  | 1195 | DH1600 | ER |  |  |
| DH.1600.3050 |  | DH1600/Electrical Room #5604 // Install Condensate lines from CRAHU's |  | 2d | 2026-12-11 | 2026-12-14 | DH.1600.3048 |  |  |  |  | 47d | 1d |  | 1196 | DH1600 | ER |  |  |
| DH.1600.3051 |  | DH1600/Electrical Room #5604 // Install Elec Feeders to CRAHU's |  | 3d | 2026-12-11 | 2026-12-15 | DH.1600.3037, DH.1600.3048 |  |  |  |  | 46d | 0d |  | 1197 | DH1600 | ER | HELIX | OO |
| DH.1600.3057 |  | DH1600/Electrical Room #5604 // Mechanical Equipment Pre-Start up |  | 2d | 2026-12-16 | 2026-12-17 | DH.1600.3055, DH.1600.3048, DH.1600.3050, DH.1600.3051 |  |  |  |  | 46d | 0d |  | 1201 | DH1600 | ER |  |  |
| F.1000A.1270 |  | DH1600/Electrical Room #5604 // Test Security Devices |  | 2d | 2026-12-18 | 2026-12-21 | DH.1600.3057, F.1000A.1269, F.1000A.1595 FF |  |  |  |  | 46d | 17d |  | 1156 | DH1600 | ER |  |  |
| DH.1600.3062 |  | DH1600/Electrical Room #5604 // DH1600 - OFCI Skid Ship Date (02/06/2027) 2ND Shipment | milestone | 0d | 2027-02-08 | 2027-02-08 | DH.1600.3060 FF |  |  |  |  | 2d | 8d | finish on or after 2027-02-06 | 1189 | DH1600 | ER |  |  |
| ER.5101.3090 |  | DH1600/Electrical Room #5604 // Set Skid - SKID-F160 |  | 1d | 2027-02-18 | 2027-02-18 | DH.1600.3072, ER.5101.3089 SS |  |  |  |  | -6d | 0d |  | 1107 | DH1600 | ER | HELIX | TBD |
| ER.5101.3091 |  | DH1600/Electrical Room #5604 // Set Skid - SKID-G160 |  | 1d | 2027-02-18 | 2027-02-18 | DH.1600.3072, ER.5101.3090 SS |  |  |  |  | -6d | 0d |  | 1107 | DH1600 | ER | HELIX | TBD |
| ER.5101.3092 |  | DH1600/Electrical Room #5604 // Set Skid - SKID-H160 |  | 1d | 2027-02-19 | 2027-02-19 | DH.1600.3062, ER.5101.3091 |  |  |  |  | -6d | 0d |  | 1107 | DH1600 | ER | HELIX | TBD |
| ER.5101.3093 |  | DH1600/Electrical Room #5604 // Set Skid - SKID-J160 |  | 1d | 2027-02-19 | 2027-02-19 | DH.1600.3062, ER.5101.3092 SS |  |  |  |  | -6d | 0d |  | 1107 | DH1600 | ER | HELIX | TBD |
| ER.5101.3094 |  | DH1600/Electrical Room #5604 // Set Skid - SKID-K160 |  | 1d | 2027-02-19 | 2027-02-19 | DH.1600.3062, ER.5101.3093 SS |  |  |  |  | -6d | 0d |  | 1107 | DH1600 | ER | HELIX | TBD |
| DH.1600.3044 |  | DH1600/Electrical Room #5604 // Install Cable Buss From Exterior |  | 3d | 2027-02-22 | 2027-02-24 | DH.1600.3037, ER.5101.3094 |  |  |  |  | -6d | 0d |  | 1189 | DH1600 | ER | HELIX | TBD |
| DH.1600.3045 |  | DH1600/Electrical Room #5604 // Buss Duct Tie In to Elect Gear |  | 3d | 2027-02-25 | 2027-03-01 | DH.1600.3037, DH.1600.3036, DH.1600.3044, DH.1400.3067 |  |  |  |  | 0d | 6d |  | 1200 | DH1600 | ER | HELIX | TBD |
| DH.1600.3049 |  | DH1600/Electrical Room #5604 // Pull Cable Buss Feeders |  | 6d | 2027-02-25 | 2027-03-04 | DH.1600.3044 |  |  |  |  | -6d | 0d |  | 1190 | DH1600 | ER | HELIX | TBD |
| DH.1600.3052 |  | DH1600/Electrical Room #5604 // Terminate Cable Buss Feeders |  | 3d | 2027-03-05 | 2027-03-09 | DH.1400.3068, B120001.3106, B120001.3103, DH.1600.3037, DH.1600.3049 |  |  |  |  | -6d | 0d |  | 1192 | DH1600 | ER | HELIX | TBD |
| DH.1600.3056 |  | DH1600/Electrical Room #5604 // Final FOD Check of all Panels |  | 2d | 2027-03-10 | 2027-03-11 | F.1000A.1270, B120001.3102, DH.1600.3054, DH.1600.3045, DH.1600.3055, DH.1600.3052 |  |  |  |  | -6d | 0d |  | 1199 | DH1600 | ER | HELIX | QC |

| ID | WBS | Activity | Type | Duration | Start | Finish | Predecessors | Complete | Remaining | Planned start | Planned finish | Total float | Free float | MSP Activity ID | QTS - Subcontractor | QTS - AREA | QTS - Resp | 05 -SUFFOLK - Building Phase | 12 - SUFFOLK - Export_to_Procore | QTS - DASH |
| --- | --- | --- | --- | --- | --- | --- | --- | --- | --- | --- | --- | --- | --- | --- | --- | --- | --- | --- | --- | --- |
|  | 3 | **Data Hall 1600** |  |  | 2026-09-17 | 2027-01-13 |  |  |  |  |  |  |  |  |  |  |  |  |  |  |
| DH.16006270 |  | DH 1600 // MEPF overhead layout |  | 3d | 2026-09-17 A | 2026-09-24 A | STRUCTURE.7540 | 100% |  | 2026-07-24 | 2026-07-28 |  |  | 1380 | HELIX | DH1600 | ACOO | 2 | Y | DH |
| DH.16006300 |  | DH 1600 // Frame walls |  | 10d | 2026-09-17 A | 2026-10-23 | DH.16006270 SS | 20% | 8d | 2026-07-24 | 2026-08-06 | 11.88d | 0d | 1383 |  | DH1600 |  | 2 | Y | DH |
| DH.16006260 |  | DH 1600 // Polish concrete |  | 5d | 2026-09-28 A | 2026-10-02 A | DH.16000.1000 FF+3d | 100% |  | 2026-12-10 | 2026-12-16 |  |  | 1378 |  | DH1600 |  | 2 |  | DH |
| B120001.3193 |  | DH 1600 // Install Overhead Cable Ladder / 36" Cable Tray - TFO |  | 5d | 2026-10-01 A | 2026-10-20 | DH.16006270 |  | 5d | 2026-09-30 | 2026-10-06 | 26d | 0d | 1181 |  |  |  |  | Y | DH |
| DH.16006290 |  | DH 1600 // MEPF high overhead install |  | 10d | 2026-10-05 A | 2026-10-27 | B120001.3194 FF, DH.16006270 |  | 10d | 2026-10-15 | 2026-10-28 | 26d | 0d | 1382 | HELIX | DH1600 | ACOO | 2 | Y | DH |
| B120001.3194 |  | DH 1600 // Install Overhead HAC - TFO |  | 5d | 2026-10-21 | 2026-10-27 | B120001.3193 |  |  |  |  | 26d | 0d | 1181 |  |  |  |  | Y | DH |
| DH.16006310 |  | DH 1600 // Install wall door frames |  | 3d | 2026-10-21 | 2026-10-23 | DH.16006260, DH.16006300 FF |  |  |  |  | 135d | 40d | 1385 |  | DH1600 |  | 2 |  | DH |
| DH.16006320 |  | DH 1600 // MEP rough in walls |  | 5d | 2026-10-26 | 2026-10-30 | DH.16006300 |  |  |  |  | 33d | 7d | 1386 | HELIX | DH1600 | AC | 2 | Y | DH |
| DH.16007800 |  | DH 1600 // Install Ceiling supports (rods/wires) no grid |  | 5d | 2026-10-28 | 2026-11-03 | DH.16006290, DH.16006300 SS |  |  |  |  | 26d | 0d | 1375 |  | DH1600 |  | 2 |  | DH |
| DH.16006220 |  | DH 1600 // Install ceiling grid system |  | 8d | 2026-11-04 | 2026-11-16 | DH.16007800 |  |  |  |  | 54d | 0d | 1374 |  | DH1600 |  | 2 |  | DH |
| F.1000A.1271 |  | DH 1600 // Rough-In Security |  | 2d | 2026-11-04 | 2026-11-05 | DH.16006290, DH.16007800 |  |  |  |  | 26d | 0d | 1156 | HELIX | DH1600 | AC |  |  | DH |
| F.1000A.1605 |  | DH 1600 // BMS & EPMS Rough-In |  | 2d | 2026-11-04 | 2026-11-05 | F.1000A.1271 SS, F.1000A.1271 FF |  |  |  |  | 135d | 40d |  |  | DH1600 |  |  |  |  |
| F.1000A.1272 |  | DH 1600 // Pull & Test Security Cable |  | 3d | 2026-11-06 | 2026-11-10 | F.1000A.1271 |  |  |  |  | 26d | 0d | 1156 |  | DH1600 |  |  |  | DH |
| DH.160012067 |  | DH 1600 // Install 1-Side Sheet Rock (DH-Side) |  | 3d | 2026-11-12 | 2026-11-16 | DH.16006300, DH.16006320, F.1000A.1272 |  |  |  |  | 26d | 0d | 1385 |  | DH1600 |  | 2 | Y | DH |
| DH.16006250 |  | DH 1600 // Install overhead MEP and lighting |  | 5d | 2026-11-17 | 2026-11-23 | DH.16006220 |  |  |  |  | 54d | 0d | 1377 | HELIX | DH1600 | AC | 2 |  | DH |
| DH.16006360 |  | DH 1600 // Tape and finish walls |  | 15d | 2026-11-17 | 2026-12-08 | DH.16006300 SS, DH.160012067, DH.16006320, DH.16007800 |  |  |  |  | 26d | 0d | 1390 |  | DH1600 |  | 2 |  | DH |
| DH.16006240 |  | DH 1600 // Install ceiling grid tiles |  | 3d | 2026-11-24 | 2026-11-27 | DH.16006250, DH.16006220 SS+3d |  |  |  |  | 54d | 12d | 1376 |  | DH1600 |  | 2 |  | DH |
| DH.16006410 |  | DH 1600 // Prime and 1st coat of Paint |  | 5d | 2026-12-09 | 2026-12-15 | DH.16006360 |  |  |  |  | 42d | 0d | 1391 |  | DH1600 |  | 2 |  | DH |
| DH.16007790 |  | DH 1600 // Final Paint & Touch up walls |  | 5d | 2026-12-16 | 2026-12-22 | DH.16006260, DH.16006240, DH.16006220, DH.16006410 |  |  |  |  | 42d | 0d | 1392 |  | DH1600 |  | 2 |  | DH |
| DH.16007810 |  | DH 1600 // Install MEPF Trim and Finishes |  | 5d | 2026-12-23 | 2026-12-30 | DH.16007790 |  |  |  |  | 42d | 0d | 1394 | HELIX | DH1600 | AC | 2 |  | DH |
| F.1000A.1273 |  | DH 1600 // Install Security Devices |  | 2d | 2026-12-23 | 2026-12-24 | DH.16006310, DH.16007790, F.1000A.1272 |  |  |  |  | 95d | 0d | 1156 |  | DH1600 |  |  |  | DH |
| F.1000A.1274 |  | DH 1600 // Mount & Terminate Security Devices |  | 5d | 2026-12-28 | 2027-01-04 | DH.16006410, F.1000A.1273 |  |  |  |  | 95d | 0d | 1156 |  | DH1600 |  |  |  | DH |
| DH.160012162 |  | DH 1600 // Room Ready to Receive Equipment | milestone | 0d | 2026-12-30 | 2026-12-30 | DH.16007810 |  |  |  |  | 42d | 4d | 1394 | HELIX | DH1600 | TBD | 2 |  | DH |
| F.1000A.1275 |  | DH 1600 // Test Security Devices |  | 2d | 2027-01-05 | 2027-01-06 | DH.16007810, F.1000A.1274, F.1000A.1605 FF |  |  |  |  | 95d | 0d | 1156 |  | DH1600 |  |  |  | DH |
| DH.16007820 |  | DH 1600 // Suffolk Pre Punch |  | 5d | 2027-01-07 | 2027-01-13 | F.1000A.1275, DH.160012162 |  |  |  |  | 95d | 93d | 1395 |  | DH1600 |  | 2 |  | DH |

| ID | WBS | Activity | Type | Duration | Start | Finish | Predecessors | Complete | Remaining | Planned start | Planned finish | Total float | Free float | MSP Activity ID | QTS - AREA | 05 -SUFFOLK - Building Phase | QTS - DASH | QTS - Subcontractor | QTS - Resp |
| --- | --- | --- | --- | --- | --- | --- | --- | --- | --- | --- | --- | --- | --- | --- | --- | --- | --- | --- | --- |
|  | 15 | **PDU Gallery** |  |  | 2026-09-24 | 2026-11-05 |  |  |  |  |  |  |  |  |  |  |  |  |  |
| DH.16000.1000 |  | DH1600/PDU Gallery // Seal concrete |  | 5d | 2026-09-24 A | 2026-09-29 A | SOG.1472 | 100% |  | 2026-08-24 | 2026-08-28 |  |  | 1397 | DH1600 | 2 | GR |  |  |
| DH.16000.1010 |  | DH1600/PDU Gallery // MEPF overhead layout |  | 5d | 2026-09-29 A | 2026-10-14 | DH.16000.1000, DH.16006270 | 100% | 0d | 2026-08-31 | 2026-09-04 | 7d | 5d | 1398 | DH1600 | 2 | GR | HELIX | ACOO |
| B120001.3195 |  | DH1600/PDU Gallery // Install Overhead Cable Ladder / 36" Cable Tray - TFO |  | 5d | 2026-10-01 A | 2026-10-20 | DH.16000.1010 FF |  | 5d | 2026-09-30 | 2026-10-06 | 83d | 0d | 1181 | DH1600 |  | GR |  |  |
| DH.16000.1030 |  | DH1600/PDU Gallery // MEPF high overhead install |  | 3d | 2026-10-05 A | 2026-10-27 | B120001.3196 FF, DH.16000.1010 FF |  | 3d | 2026-10-15 | 2026-10-19 | 83d | 0d | 1400 | DH1600 | 2 | GR | HELIX | ACOO |
| DH.16000.1040 |  | DH1600/PDU Gallery // Frame walls |  | 5d | 2026-10-08 A | 2026-10-14 | DH.16006300 SS | 100% | 0d | 2026-10-22 | 2026-10-28 | 78d | 0d | 1401 | DH1600 | 2 | GR |  |  |
| DH.16000.1711 |  | DH1600/PDU Gallery // MEP rough in walls |  | 3d | 2026-10-14 | 2026-10-16 | DH.16000.1040 |  |  |  |  | 78d | 0d | 1403 | DH1600 | 2 | GR | HELIX | AC |
| DH.16000.1070 |  | DH1600/PDU Gallery // In wall inspection |  | 1d | 2026-10-19 | 2026-10-19 | DH.16000.1711 |  |  |  |  | 78d | 0d | 1404 | DH1600 | 2 | GR |  |  |
| DH.16000.1060 |  | DH1600/PDU Gallery // Install Sheetrock Top Down |  | 3d | 2026-10-20 | 2026-10-22 | DH.16000.1070 |  |  |  |  | 78d | 0d | 1403 | DH1600 | 2 | GR |  |  |
| B120001.3196 |  | DH1600/PDU Gallery // Install Overhead HAC - TFO |  | 5d | 2026-10-21 | 2026-10-27 | B120001.3195 |  |  |  |  | 83d | 0d | 1181 | DH1600 |  | GR |  |  |
| DH.16000.1080 |  | DH1600/PDU Gallery // Install sheetrock on walls |  | 5d | 2026-10-23 | 2026-10-29 | DH.16000.1060 |  |  |  |  | 78d | 0d | 1405 | DH1600 | 2 | GR |  |  |
| DH.16000.1110 |  | DH1600/PDU Gallery // Install Cable Tray (From Elec Rm 5601 to CRAHU Gallery) |  | 2d | 2026-10-28 | 2026-10-29 | DH.16000.1030 |  |  |  |  | 83d | 89d | 1408 | DH1600 |  | GR | HELIX | OO |
| DH.16000.1050 |  | DH1600/PDU Gallery // Install wall door frames |  | 1d | 2026-10-30 | 2026-10-30 | DH.16000.1080, DH.16000.1040 |  |  |  |  | 78d | 0d | 1402 | DH1600 | 2 | GR |  |  |
| DH.16000.1090 |  | DH1600/PDU Gallery // Tape and finish walls |  | 1d | 2026-10-30 | 2026-10-30 | DH.16000.1080 |  |  |  |  | 78d | 0d | 1406 | DH1600 | 2 | GR |  |  |
| DH.16000.1100 |  | DH1600/PDU Gallery // Paint walls |  | 2d | 2026-11-02 | 2026-11-03 | DH.16000.1050, DH.16000.1090 |  |  |  |  | 78d | 0d | 1407 | DH1600 | 2 | GR |  |  |
| DH.16000.1712 |  | DH1600/PDU Gallery // ready to Receive Equipment |  | 2d | 2026-11-04 | 2026-11-05 | DH.16000.1100 |  |  |  |  | 78d | 84d | 1407 | DH1600 | 2 | GR | HELIX | TBD |
|  | 14 | **CRAH/CDU Galleries** |  |  | 2026-10-01 | 2027-03-01 |  |  |  |  |  |  |  |  |  |  |  |  |  |
|  | 2 | **Gallery 1602** |  |  | 2026-10-01 | 2027-02-25 |  |  |  |  |  |  |  |  |  |  |  |  |  |
|  | 4 | **Architectural** |  |  | 2026-10-01 | 2026-12-23 |  |  |  |  |  |  |  |  |  |  |  |  |  |
| DH.1600660 |  | DH 1600/Gallery 1602 // Seal concrete |  | 2d | 2026-10-01 A | 2026-10-02 A | DH.16000.1000 | 100% |  | 2026-09-30 | 2026-10-01 |  |  | 1379 | DH1600 | 2 | GR |  |  |
| B120001.3197 |  | DH 1600/Gallery 1602 // Install Overhead Cable Ladder / 36" Cable Tray - TFO |  | 5d | 2026-10-05 A | 2026-10-20 | DH.1600670 FF |  | 5d | 2026-10-09 | 2026-10-16 | 46d | 0d | 1181 |  |  | GR |  |  |
| DH.1600670 |  | DH 1600/Gallery 1602 // MEPF overhead layout |  | 5d | 2026-10-05 A | 2026-10-20 | DH.16000.1010 FF |  | 5d | 2026-10-02 | 2026-10-08 | 2d | 0d | 1412 | DH1600 | 2 | GR | HELIX | ACOO |
| DH.1600690 |  | DH 1600/Gallery 1602 // MEPF high overhead install |  | 10d | 2026-10-07 A | 2026-10-27 | DH.1600670 SS |  | 10d | 2026-10-26 | 2026-11-06 | 32d | 0d | 1414 | DH1600 | 2 | GR | HELIX | ACOO |
| DH.1600700 |  | DH 1600/Gallery 1602 // Frame walls |  | 6d | 2026-10-09 A | 2026-10-21 | DH.1600670 SS+4d |  | 6d | 2026-10-09 | 2026-10-19 | 25d | 0d | 1415 | DH1600 | 2 | GR |  |  |
| B120001.3198 |  | DH 1600/Gallery 1602 // Install Overhead HAC - TFO |  | 5d | 2026-10-21 | 2026-10-27 | B120001.3197 |  |  |  |  | 46d | 21d | 1181 |  |  | GR |  |  |
| DH.1600730 |  | DH 1600/Gallery 1602 // MEP rough in walls |  | 4d | 2026-10-22 | 2026-10-27 | DH.1600700 |  |  |  |  | 25d | 0d | 1417 | DH1600 | 2 | GR | HELIX | AC |
| DH.1600740 |  | DH 1600/Gallery 1602 // In wall inspection |  | 1d | 2026-10-28 | 2026-10-28 | DH.1600730 |  |  |  |  | 25d | 0d | 1418 | DH1600 | 2 | GR |  |  |
| F.1000A.1306 |  | DH 1600/Gallery 1602 // Rough-In Security |  | 2d | 2026-10-28 | 2026-10-29 | DH.1600690 |  |  |  |  | 128d | 0d | 1156 | DH1600 |  | GR | HELIX | AC |
| F.1000A.1615 |  | DH 1600/Gallery 1602 // BMS & EPMS Rough-In |  | 2d | 2026-10-28 | 2026-10-29 | F.1000A.1306 SS, F.1000A.1306 FF |  |  |  |  | 140d | 32d |  | DH1600 |  |  |  |  |
| DH.1600720 |  | DH 1600/Gallery 1602 // Install Sheetrock Top Down |  | 6d | 2026-10-29 | 2026-11-05 | DH.1600740, DH.1600700 SS+3d |  |  |  |  | 25d | 0d | 1420 | DH1600 |  | GR |  |  |
| F.1000A.1307 |  | DH 1600/Gallery 1602 // Pull & Test Security Cable |  | 3d | 2026-10-30 | 2026-11-03 | F.1000A.1306 |  |  |  |  | 128d | 17d | 1156 | DH1600 |  | GR |  |  |
| DH.1600750 |  | DH 1600/Gallery 1602 // Install Balance of Sheetrock on walls |  | 6d | 2026-11-06 | 2026-11-16 | DH.1600720, DH.1600690 |  |  |  |  | 25d | 0d | 1419 | DH1600 | 2 | GR |  |  |
| DH.1600770 |  | DH 1600/Gallery 1602 // Tape and finish walls |  | 8d | 2026-11-17 | 2026-11-27 | DH.1600750 |  |  |  |  | 25d | 0d | 1421 | DH1600 | 2 | GR |  |  |
| DH.1600710 |  | DH 1600/Gallery 1602 // Install wall door frames |  | 1d | 2026-11-30 | 2026-11-30 | DH.1600700 FF, DH.1600770 |  |  |  |  | 28d | 0d | 1416 | DH1600 | 2 | GR |  |  |
| DH.1600790 |  | DH 1600/Gallery 1602 // Prime and Paint walls |  | 4d | 2026-11-30 | 2026-12-03 | B120001.3198, DH.1600770 |  |  |  |  | 25d | 0d | 1422 | DH1600 | 2 | GR |  |  |
| F.1000A.1308 |  | DH 1600/Gallery 1602 // Install Security Devices |  | 2d | 2026-12-01 | 2026-12-02 | DH.1600710, F.1000A.1307 |  |  |  |  | 111d | 1d | 1156 | DH1600 |  | GR |  |  |
| DH.1600800 |  | DH 1600/Gallery 1602 // Touch up Walls and Fianl Paint |  | 5d | 2026-12-04 | 2026-12-10 | DH.1600790, DH.1600710 |  |  |  |  | 25d | 0d | 1423 | DH1600 | 2 | GR |  |  |
| F.1000A.1309 |  | DH 1600/Gallery 1602 // Mount & Terminate Security Devices |  | 5d | 2026-12-04 | 2026-12-10 | DH.1600790, F.1000A.1308 |  |  |  |  | 110d | 2d | 1156 | DH1600 |  | GR |  |  |
| DH.1600810 |  | DH 1600/Gallery 1602 // Install Trim and Devices |  | 2d | 2026-12-11 | 2026-12-14 | DH.1600800 |  |  |  |  | 25d | 0d | 1424 | DH1600 |  | GR | HELIX | AC |
| DH.160012163 |  | DH 1600/Gallery 1602 // Ready to receive Equipment | milestone | 0d | 2026-12-14 | 2026-12-14 | DH.1600810 FF, DH.1600660 |  |  |  |  | 25d | 0d | 1424 | DH1600 |  | GR | HELIX | TBD |
| F.1000A.1310 |  | DH 1600/Gallery 1602 // Test Security Devices |  | 2d | 2026-12-15 | 2026-12-16 | DH.1600810, F.1000A.1309, F.1000A.1615 FF |  |  |  |  | 108d | 0d | 1156 | DH1600 |  | GR |  |  |
| DH.1600820 |  | DH 1600/Gallery 1602 // Suffolk Pre Punch |  | 5d | 2026-12-17 | 2026-12-23 | F.1000A.1310, DH.160012163 |  |  |  |  | 108d | 106d | 1425 | DH1600 |  | GR |  |  |

| ID | WBS | Activity | Duration | Start | Finish | Predecessors | Total float | Free float | MSP Activity ID | QTS - AREA | QTS - DASH | QTS - Subcontractor | QTS - Resp |
| --- | --- | --- | --- | --- | --- | --- | --- | --- | --- | --- | --- | --- | --- |
|  | 16 | **Raceway** |  |  |  |  |  |  |  |  |  |  |  |
|  | 3 | **Equipment Line-Ups** |  | 2026-12-15 | 2027-02-25 |  |  |  |  |  |  |  |  |
|  | 1 | **A160** |  | 2026-12-15 | 2027-01-14 |  |  |  |  |  |  |  |  |
| DH.1600A-EQP-1 |  | Gallery 1602 - A160/Line-Ups // Set CRAH-DH1600- 01 | 1d | 2026-12-15 | 2026-12-15 | DH.160012163, DH.16006360 | 25d | 0d | 1433 | DH1600 | GR |  |  |
| DH.1600A-EQP-3 |  | Gallery 1602 - A160/Line-Ups // Set CRAH-DH1600- 02 | 1d | 2026-12-15 | 2026-12-15 | DH.1600A-EQP-1 SS | 25d | 0d | 1434 | DH1600 | GR |  |  |
| DH.1600A-EQP-5 |  | Gallery 1602 - A160/Line-Ups // Set MOD-A160-01 | 1d | 2026-12-15 | 2026-12-15 | DH.1600A-EQP-3 FF | 74d | 0d | 1437 | DH1600 | GR | HELIX | TBD |
| DH.1600A-EQP-6 |  | Gallery 1602 - A160/Line-Ups // Set MOD-A160-02 | 1d | 2026-12-15 | 2026-12-15 | DH.1600A-EQP-5 SS | 74d | 0d | 1437 | DH1600 | GR | HELIX | TBD |
| DH.1600A-EQP-10 |  | Gallery 1602 - A160/Line-Ups // Pull Cable Tray Feed from MOD to CRAHU's | 5d | 2026-12-16 | 2026-12-22 | DH.1600A-EQP-6 | 80d | 0d | 1438 | DH1600 | GR | HELIX | OO |
| DH.1600A-EQP-12 |  | Gallery 1602 - A160/Line-Ups // Mount Electrial Gear for Chiller Controls | 10d | 2026-12-16 | 2026-12-30 | DH.1600A-EQP-6 | 74d | 0d | 1443 | DH1600 | GR | HELIX | AC |
| DH.1600A-EQP-7 |  | Gallery 1602 - A160/Line-Ups // Set CDU-DH1600- 01 | 1d | 2026-12-16 | 2026-12-16 | DH.1600A-EQP-1 | 79d | 0d | 1434 | DH1600 | GR |  |  |
| DH.1600A-EQP-9 |  | Gallery 1602 - A160/Line-Ups // Pull Feeder from SWD to MOD | 1d | 2026-12-16 | 2026-12-16 | DH.1600A-EQP-6 | 90d | 9d | 1439 | DH1600 | GR | HELIX | OO |
| DH.1600A-EQP-8 |  | Gallery 1602 - A160/Line-Ups // Set CDU-DH1600- 02 | 1d | 2026-12-17 | 2026-12-17 | DH.1600A-EQP-7, DH.1600A-EQP-3 | 79d | 0d | 1434 | DH1600 | GR |  |  |
| DH.1600A-EQP-4 |  | Gallery 1602 - A160/Line-Ups // Condensate connections to Floor Drains | 10d | 2026-12-18 | 2027-01-04 | DH.16007841, DH.1600A-EQP-3, DH.1600A-EQP-7, DH.1600A-EQP-8 | 79d | 2d | 1436 | DH1600 | GR |  |  |
| DH.1600A-EQP-11 |  | Gallery 1602 - A160/Line-Ups // Mechanical Connections to CRAHU Units | 10d | 2026-12-22 | 2027-01-06 | DH.1600A-EQP-3 SS+5d | 77d | 0d | 1448 | DH1600 | GR |  |  |
| DH.1600A-EQP-17 |  | Gallery 1602 - A160/Line-Ups // Pull Feeder and Branch circuits to MIsc equipment and Chiller controls | 10d | 2026-12-22 | 2027-01-06 | DH.1600A-EQP-12 SS+4d | 74d | 0d | 1444 | DH1600 | GR | HELIX | AC |
| DH.1600A-EQP-13 |  | Gallery 1602 - A160/Line-Ups // Pull Cable Tray Feed from MOD to CRAHU's | 5d | 2026-12-23 | 2026-12-30 | DH.1600A-EQP-10 | 80d | 0d | 1441 | DH1600 | GR | HELIX | OO |
| DH.1600A-EQP-16 |  | Gallery 1602 - A160/Line-Ups // Terminate CRAHU Electrical Connections | 5d | 2026-12-28 | 2027-01-04 | DH.1600A-EQP-13 SS+2d, DH.1600A-EQP-10 | 80d | 6d | 1442 | DH1600 | GR | HELIX | OO |
| DH.1600A-EQP-19 |  | Gallery 1602 - A160/Line-Ups // Teminate all Misc Equipment and Chiller Controls | 10d | 2026-12-29 | 2027-01-12 | DH.1600A-EQP-17 SS+4d | 74d | 0d | 1445 | DH1600 | GR |  |  |
| DH.1600A-EQP-15 |  | Gallery 1602 - A160/Line-Ups // Terminate Mod Panels | 1d | 2026-12-31 | 2026-12-31 | DH.1600A-EQP-13, DH.1600A-EQP-10, DH.1600A-EQP-9 | 81d | 7d | 1440 | DH1600 | GR | HELIX | OO |
| DH.1600A-EQP-18 |  | Gallery 1602 - A160/Line-Ups // Mechanical Gear FOD Inspection Pre-Start Up | 3d | 2027-01-07 | 2027-01-11 | DH.16007841, DH.1600A-EQP-11 SS, DH.1600A-EQP-4 SS, DH.1600A-EQP-3, DH.1600A-EQP-4, DH.1600A-EQP-11 | 77d | 83d | 1447 | DH1600 | GR |  |  |
| DH.1600A-EQP-20 |  | Gallery 1602 - A160/Line-Ups // Electrical Gear FOD Inspection Pre-Start Up | 2d | 2027-01-13 | 2027-01-14 | DH.1600A-EQP-16, DH.1600A-EQP-19, DH.1600A-EQP-15 | 74d | 80d | 1446 | DH1600 | GR | HELIX | QC |
|  | 2 | **B160** |  | 2026-12-15 | 2027-01-19 |  |  |  |  |  |  |  |  |
| DH.1600A-EQP-21 |  | Gallery 1602 - B160/Line-Ups // Set CRAH-DH1600- 03 | 1d | 2026-12-15 | 2026-12-15 | DH.1600A-EQP-3 SS | 25d | 0d | 1433 | DH1600 | GR |  |  |
| DH.1600A-EQP-23 |  | Gallery 1602 - B160/Line-Ups // Set CRAH-DH1600- 04 | 1d | 2026-12-15 | 2026-12-15 | DH.1600A-EQP-21 SS | 25d | 0d | 1434 | DH1600 | GR |  |  |
| DH.1600A-EQP-25 |  | Gallery 1602 - B160/Line-Ups // Set MOD-B160-01 | 1d | 2026-12-15 | 2026-12-15 | DH.1600A-EQP-23 FF | 74d | 0d | 1437 | DH1600 | GR | HELIX | TBD |
| DH.1600A-EQP-26 |  | Gallery 1602 - B160/Line-Ups // Set MOD-B160-02 | 1d | 2026-12-15 | 2026-12-15 | DH.1600A-EQP-25 SS | 74d | 0d | 1437 | DH1600 | GR | HELIX | TBD |
| DH.1600A-EQP-27 |  | Gallery 1602 - B160/Line-Ups // Set CDU-DH1600- 03 | 1d | 2026-12-16 | 2026-12-16 | DH.1600A-EQP-21 | 74d | 0d | 1434 | DH1600 | GR |  |  |
| DH.1600A-EQP-29 |  | Gallery 1602 - B160/Line-Ups // Pull Feeder from SWD to MOD | 1d | 2026-12-16 | 2026-12-16 | DH.1600A-EQP-26 | 90d | 9d | 1439 | DH1600 | GR | HELIX | OO |
| DH.1600A-EQP-30 |  | Gallery 1602 - B160/Line-Ups // Pull Cable Tray Feed from MOD to CRAHU's | 5d | 2026-12-16 | 2026-12-22 | DH.1600A-EQP-26 | 80d | 0d | 1438 | DH1600 | GR | HELIX | OO |
| DH.1600A-EQP-32 |  | Gallery 1602 - B160/Line-Ups // Mount Electrial Gear for Chiller Controls | 10d | 2026-12-16 | 2026-12-30 | DH.1600A-EQP-26 | 74d | 0d | 1443 | DH1600 | GR | HELIX | AC |
| DH.1600A-EQP-28 |  | Gallery 1602 - B160/Line-Ups // Set CDU-DH1600- 04 | 1d | 2026-12-17 | 2026-12-17 | DH.1600A-EQP-27, DH.1600A-EQP-23 | 74d | 0d | 1434 | DH1600 | GR |  |  |
| DH.1600A-EQP-24 |  | Gallery 1602 - B160/Line-Ups // Condensate connections to Floor Drains | 10d | 2026-12-18 | 2027-01-04 | DH.1600A-EQP-23, DH.1600A-EQP-27, DH.1600A-EQP-28 | 74d | 2d | 1436 | DH1600 | GR |  |  |
| DH.1600A-EQP-31 |  | Gallery 1602 - B160/Line-Ups // Mechanical Connections to CRAHU Units | 10d | 2026-12-22 | 2027-01-06 | DH.1600A-EQP-23 SS+5d | 72d | 0d | 1448 | DH1600 | GR |  |  |
| DH.1600A-EQP-37 |  | Gallery 1602 - B160/Line-Ups // Pull Feeder and Branch circuits to MIsc equipment and Chiller controls | 10d | 2026-12-22 | 2027-01-06 | DH.1600A-EQP-32 SS+4d | 74d | 0d | 1444 | DH1600 | GR | HELIX | AC |
| DH.1600A-EQP-33 |  | Gallery 1602 - B160/Line-Ups // Pull Cable Tray Feed from MOD to CRAHU's | 5d | 2026-12-23 | 2026-12-30 | DH.1600A-EQP-30 | 80d | 0d | 1441 | DH1600 | GR | HELIX | OO |
| DH.1600A-EQP-36 |  | Gallery 1602 - B160/Line-Ups // Terminate CRAHU Electrical Connections | 5d | 2026-12-28 | 2027-01-04 | DH.1600A-EQP-33 SS+2d, DH.1600A-EQP-30 | 80d | 6d | 1442 | DH1600 | GR | HELIX | OO |
| DH.1600A-EQP-39 |  | Gallery 1602 - B160/Line-Ups // Teminate all Misc Equipment and Chiller Controls | 10d | 2026-12-29 | 2027-01-12 | DH.1600A-EQP-37 SS+4d | 74d | 0d | 1445 | DH1600 | GR |  |  |
| DH.1600A-EQP-34 |  | Gallery 1602 - B160/Line-Ups // Condensate connections to Floor Drains | 10d | 2026-12-30 | 2027-01-13 | DH.1600A-EQP-31 SS+5d, DH.1600A-EQP-24 SS+5d | 72d | 0d | 1449 | DH1600 | GR |  |  |
| DH.1600A-EQP-35 |  | Gallery 1602 - B160/Line-Ups // Terminate Mod Panels | 1d | 2026-12-31 | 2026-12-31 | DH.1600A-EQP-33, DH.1600A-EQP-30, DH.1600A-EQP-29 | 81d | 7d | 1440 | DH1600 | GR | HELIX | OO |
| DH.1600A-EQP-40 |  | Gallery 1602 - B160/Line-Ups // Electrical Gear FOD Inspection Pre-Start Up | 2d | 2027-01-13 | 2027-01-14 | DH.1600A-EQP-36, DH.1600A-EQP-39, DH.1600A-EQP-35 | 74d | 80d | 1446 | DH1600 | GR | HELIX | QC |
| DH.1600A-EQP-38 |  | Gallery 1602 - B160/Line-Ups // Mechanical Gear FOD Inspection Pre-Start Up | 3d | 2027-01-14 | 2027-01-19 | DH.1600A-EQP-23, DH.1600A-EQP-34, DH.1600A-EQP-24, DH.1600A-EQP-31 | 72d | 78d | 1447 | DH1600 | GR |  |  |

| ID | WBS | Activity | Duration | Start | Finish | Predecessors | Total float | Free float | MSP Activity ID | QTS - AREA | QTS - DASH | QTS - Subcontractor | QTS - Resp |
| --- | --- | --- | --- | --- | --- | --- | --- | --- | --- | --- | --- | --- | --- |
|  | 3 | **C160** |  | 2026-12-15 | 2027-01-19 |  |  |  |  |  |  |  |  |
| DH.1600A-EQP-41 |  | Gallery 1602 - C160/Line-Ups // Set CRAH-DH1600- 05 | 1d | 2026-12-15 | 2026-12-15 | DH.1600A-EQP-23 SS | 25d | 0d | 1433 | DH1600 | GR |  |  |
| DH.1600A-EQP-43 |  | Gallery 1602 - C160/Line-Ups // Set CRAH-DH1600- 06 | 1d | 2026-12-15 | 2026-12-15 | DH.1600A-EQP-41 SS | 25d | 0d | 1434 | DH1600 | GR |  |  |
| DH.1600A-EQP-45 |  | Gallery 1602 - C160/Line-Ups // Set MOD-C160-01 | 1d | 2026-12-15 | 2026-12-15 | DH.1600A-EQP-43 FF | 74d | 0d | 1437 | DH1600 | GR | HELIX | TBD |
| DH.1600A-EQP-46 |  | Gallery 1602 - C160/Line-Ups // Set MOD-C160-02 | 1d | 2026-12-15 | 2026-12-15 | DH.1600A-EQP-45 SS | 74d | 0d | 1437 | DH1600 | GR | HELIX | TBD |
| DH.1600A-EQP-47 |  | Gallery 1602 - C160/Line-Ups // Set CDU-DH1600- 05 | 1d | 2026-12-16 | 2026-12-16 | DH.1600A-EQP-41 | 74d | 0d | 1434 | DH1600 | GR |  |  |
| DH.1600A-EQP-49 |  | Gallery 1602 - C160/Line-Ups // Pull Feeder from SWD to MOD | 1d | 2026-12-16 | 2026-12-16 | DH.1600A-EQP-46 | 90d | 9d | 1439 | DH1600 | GR | HELIX | OO |
| DH.1600A-EQP-50 |  | Gallery 1602 - C160/Line-Ups // Pull Cable Tray Feed from MOD to CRAHU's | 5d | 2026-12-16 | 2026-12-22 | DH.1600A-EQP-46 | 80d | 0d | 1438 | DH1600 | GR | HELIX | OO |
| DH.1600A-EQP-52 |  | Gallery 1602 - C160/Line-Ups // Mount Electrial Gear for Chiller Controls | 10d | 2026-12-16 | 2026-12-30 | DH.1600A-EQP-46 | 74d | 0d | 1443 | DH1600 | GR | HELIX | AC |
| DH.1600A-EQP-48 |  | Gallery 1602 - C160/Line-Ups // Set CDU-DH1600- 06 | 1d | 2026-12-17 | 2026-12-17 | DH.1600A-EQP-47, DH.1600A-EQP-43 | 74d | 0d | 1434 | DH1600 | GR |  |  |
| DH.1600A-EQP-44 |  | Gallery 1602 - C160/Line-Ups // Condensate connections to Floor Drains | 10d | 2026-12-18 | 2027-01-04 | DH.1600A-EQP-43, DH.1600A-EQP-47, DH.1600A-EQP-48 | 74d | 2d | 1436 | DH1600 | GR |  |  |
| DH.1600A-EQP-51 |  | Gallery 1602 - C160/Line-Ups // Mechanical Connections to CRAHU Units | 10d | 2026-12-22 | 2027-01-06 | DH.1600A-EQP-43 SS+5d | 72d | 0d | 1448 | DH1600 | GR |  |  |
| DH.1600A-EQP-57 |  | Gallery 1602 - C160/Line-Ups // Pull Feeder and Branch circuits to MIsc equipment and Chiller controls | 10d | 2026-12-22 | 2027-01-06 | DH.1600A-EQP-52 SS+4d | 74d | 0d | 1444 | DH1600 | GR | HELIX | AC |
| DH.1600A-EQP-53 |  | Gallery 1602 - C160/Line-Ups // Pull Cable Tray Feed from MOD to CRAHU's | 5d | 2026-12-23 | 2026-12-30 | DH.1600A-EQP-50 | 80d | 0d | 1441 | DH1600 | GR | HELIX | OO |
| DH.1600A-EQP-56 |  | Gallery 1602 - C160/Line-Ups // Terminate CRAHU Electrical Connections | 5d | 2026-12-28 | 2027-01-04 | DH.1600A-EQP-53 SS+2d, DH.1600A-EQP-50 | 80d | 6d | 1442 | DH1600 | GR | HELIX | OO |
| DH.1600A-EQP-59 |  | Gallery 1602 - C160/Line-Ups // Teminate all Misc Equipment and Chiller Controls | 10d | 2026-12-29 | 2027-01-12 | DH.1600A-EQP-57 SS+4d | 74d | 0d | 1445 | DH1600 | GR |  |  |
| DH.1600A-EQP-54 |  | Gallery 1602 - C160/Line-Ups // Condensate connections to Floor Drains | 10d | 2026-12-30 | 2027-01-13 | DH.1600A-EQP-51 SS+5d, DH.1600A-EQP-44 SS+5d | 72d | 0d | 1449 | DH1600 | GR |  |  |
| DH.1600A-EQP-55 |  | Gallery 1602 - C160/Line-Ups // Terminate Mod Panels | 1d | 2026-12-31 | 2026-12-31 | DH.1600A-EQP-53, DH.1600A-EQP-50, DH.1600A-EQP-49 | 81d | 7d | 1440 | DH1600 | GR | HELIX | OO |
| DH.1600A-EQP-60 |  | Gallery 1602 - C160/Line-Ups // Electrical Gear FOD Inspection Pre-Start Up | 2d | 2027-01-13 | 2027-01-14 | DH.1600A-EQP-56, DH.1600A-EQP-59, DH.1600A-EQP-55 | 74d | 80d | 1446 | DH1600 | GR | HELIX | QC |
| DH.1600A-EQP-58 |  | Gallery 1602 - C160/Line-Ups // Mechanical Gear FOD Inspection Pre-Start Up | 3d | 2027-01-14 | 2027-01-19 | DH.1600A-EQP-43, DH.1600A-EQP-54, DH.1600A-EQP-44, DH.1600A-EQP-51 | 72d | 78d | 1447 | DH1600 | GR |  |  |
|  | 4 | **D160** |  | 2026-12-16 | 2027-01-20 |  |  |  |  |  |  |  |  |
| DH.1600A-EQP-61 |  | Gallery 1602 - D160/Line-Ups // Set CRAH-DH1600- 07 | 1d | 2026-12-16 | 2026-12-16 | DH.1600A-EQP-43 | 25d | 0d | 1433 | DH1600 | GR |  |  |
| DH.1600A-EQP-63 |  | Gallery 1602 - D160/Line-Ups // Set CRAH-DH1600- 08 | 1d | 2026-12-16 | 2026-12-16 | DH.1600A-EQP-61 SS | 25d | 0d | 1434 | DH1600 | GR |  |  |
| DH.1600A-EQP-65 |  | Gallery 1602 - D160/Line-Ups // Set MOD-D160-01 | 1d | 2026-12-16 | 2026-12-16 | DH.1600A-EQP-63 FF | 73d | 0d | 1437 | DH1600 | GR | HELIX | TBD |
| DH.1600A-EQP-66 |  | Gallery 1602 - D160/Line-Ups // Set MOD-D160-02 | 1d | 2026-12-16 | 2026-12-16 | DH.1600A-EQP-65 SS | 73d | 0d | 1437 | DH1600 | GR | HELIX | TBD |
| DH.1600A-EQP-67 |  | Gallery 1602 - D160/Line-Ups // Set CDU-DH1600- 07 | 1d | 2026-12-17 | 2026-12-17 | DH.1600A-EQP-61 | 73d | 0d | 1434 | DH1600 | GR |  |  |
| DH.1600A-EQP-69 |  | Gallery 1602 - D160/Line-Ups // Pull Feeder from SWD to MOD | 1d | 2026-12-17 | 2026-12-17 | DH.1600A-EQP-66 | 89d | 9d | 1439 | DH1600 | GR | HELIX | OO |
| DH.1600A-EQP-70 |  | Gallery 1602 - D160/Line-Ups // Pull Cable Tray Feed from MOD to CRAHU's | 5d | 2026-12-17 | 2026-12-23 | DH.1600A-EQP-66 | 79d | 0d | 1438 | DH1600 | GR | HELIX | OO |
| DH.1600A-EQP-72 |  | Gallery 1602 - D160/Line-Ups // Mount Electrial Gear for Chiller Controls | 10d | 2026-12-17 | 2026-12-31 | DH.1600A-EQP-66 | 73d | 0d | 1443 | DH1600 | GR | HELIX | AC |
| DH.1600A-EQP-68 |  | Gallery 1602 - D160/Line-Ups // Set CDU-DH1600- 08 | 1d | 2026-12-18 | 2026-12-18 | DH.1600A-EQP-67, DH.1600A-EQP-63 | 73d | 0d | 1434 | DH1600 | GR |  |  |
| DH.1600A-EQP-64 |  | Gallery 1602 - D160/Line-Ups // Condensate connections to Floor Drains | 10d | 2026-12-21 | 2027-01-05 | DH.1600A-EQP-63, DH.1600A-EQP-67, DH.1600A-EQP-68 | 73d | 2d | 1436 | DH1600 | GR |  |  |
| DH.1600A-EQP-71 |  | Gallery 1602 - D160/Line-Ups // Mechanical Connections to CRAHU Units | 10d | 2026-12-23 | 2027-01-07 | DH.1600A-EQP-63 SS+5d | 71d | 0d | 1448 | DH1600 | GR |  |  |
| DH.1600A-EQP-77 |  | Gallery 1602 - D160/Line-Ups // Pull Feeder and Branch circuits to MIsc equipment and Chiller controls | 10d | 2026-12-23 | 2027-01-07 | DH.1600A-EQP-72 SS+4d | 73d | 0d | 1444 | DH1600 | GR | HELIX | AC |
| DH.1600A-EQP-73 |  | Gallery 1602 - D160/Line-Ups // Pull Cable Tray Feed from MOD to CRAHU's | 5d | 2026-12-24 | 2026-12-31 | DH.1600A-EQP-70 | 79d | 0d | 1441 | DH1600 | GR | HELIX | OO |
| DH.1600A-EQP-76 |  | Gallery 1602 - D160/Line-Ups // Terminate CRAHU Electrical Connections | 5d | 2026-12-29 | 2027-01-05 | DH.1600A-EQP-73 SS+2d, DH.1600A-EQP-70 | 79d | 6d | 1442 | DH1600 | GR | HELIX | OO |
| DH.1600A-EQP-79 |  | Gallery 1602 - D160/Line-Ups // Teminate all Misc Equipment and Chiller Controls | 10d | 2026-12-30 | 2027-01-13 | DH.1600A-EQP-77 SS+4d | 73d | 0d | 1445 | DH1600 | GR |  |  |
| DH.1600A-EQP-74 |  | Gallery 1602 - D160/Line-Ups // Condensate connections to Floor Drains | 10d | 2026-12-31 | 2027-01-14 | DH.1600A-EQP-71 SS+5d, DH.1600A-EQP-64 SS+5d | 71d | 0d | 1449 | DH1600 | GR |  |  |
| DH.1600A-EQP-75 |  | Gallery 1602 - D160/Line-Ups // Terminate Mod Panels | 1d | 2027-01-04 | 2027-01-04 | DH.1600A-EQP-73, DH.1600A-EQP-70, DH.1600A-EQP-69 | 80d | 7d | 1440 | DH1600 | GR | HELIX | OO |
| DH.1600A-EQP-80 |  | Gallery 1602 - D160/Line-Ups // Electrical Gear FOD Inspection Pre-Start Up | 2d | 2027-01-14 | 2027-01-15 | DH.1600A-EQP-76, DH.1600A-EQP-79, DH.1600A-EQP-75 | 73d | 79d | 1446 | DH1600 | GR | HELIX | QC |
| DH.1600A-EQP-78 |  | Gallery 1602 - D160/Line-Ups // Mechanical Gear FOD Inspection Pre-Start Up | 3d | 2027-01-15 | 2027-01-20 | DH.1600A-EQP-63, DH.1600A-EQP-74, DH.1600A-EQP-64, DH.1600A-EQP-71 | 71d | 77d | 1447 | DH1600 | GR |  |  |

| ID | WBS | Activity | Duration | Start | Finish | Predecessors | Total float | Free float | MSP Activity ID | QTS - AREA | QTS - DASH | QTS - Subcontractor | QTS - Resp |
| --- | --- | --- | --- | --- | --- | --- | --- | --- | --- | --- | --- | --- | --- |
|  | 5 | **E160** |  | 2026-12-16 | 2027-01-20 |  |  |  |  |  |  |  |  |
| DH.1600A-EQP-81 |  | Gallery 1602 - E160/Line-Ups // Set CRAH-DH1600- 09 | 1d | 2026-12-16 | 2026-12-16 | DH.1600A-EQP-63 SS | 25d | 0d | 1433 | DH1600 | GR |  |  |
| DH.1600A-EQP-83 |  | Gallery 1602 - E160/Line-Ups // Set CRAH-DH1600- 10 | 1d | 2026-12-16 | 2026-12-16 | DH.1600A-EQP-81 SS | 25d | 0d | 1434 | DH1600 | GR |  |  |
| DH.1600A-EQP-85 |  | Gallery 1602 - E160/Line-Ups // Set MOD-E160-01 | 1d | 2026-12-16 | 2026-12-16 | DH.1600A-EQP-83 FF | 73d | 0d | 1437 | DH1600 | GR | HELIX | TBD |
| DH.1600A-EQP-86 |  | Gallery 1602 - E160/Line-Ups // Set MOD-E160-02 | 1d | 2026-12-16 | 2026-12-16 | DH.1600A-EQP-85 SS | 73d | 0d | 1437 | DH1600 | GR | HELIX | TBD |
| DH.1600A-EQP-87 |  | Gallery 1602 - E160/Line-Ups // Set CDU-DH1600- 09 | 1d | 2026-12-17 | 2026-12-17 | DH.1600A-EQP-81 | 73d | 0d | 1434 | DH1600 | GR |  |  |
| DH.1600A-EQP-89 |  | Gallery 1602 - E160/Line-Ups // Pull Feeder from SWD to MOD | 1d | 2026-12-17 | 2026-12-17 | DH.1600A-EQP-86 | 89d | 9d | 1439 | DH1600 | GR | HELIX | OO |
| DH.1600A-EQP-90 |  | Gallery 1602 - E160/Line-Ups // Pull Cable Tray Feed from MOD to CRAHU's | 5d | 2026-12-17 | 2026-12-23 | DH.1600A-EQP-86 | 79d | 0d | 1438 | DH1600 | GR | HELIX | OO |
| DH.1600A-EQP-92 |  | Gallery 1602 - E160/Line-Ups // Mount Electrial Gear for Chiller Controls | 10d | 2026-12-17 | 2026-12-31 | DH.1600A-EQP-86 | 73d | 0d | 1443 | DH1600 | GR | HELIX | AC |
| DH.1600A-EQP-88 |  | Gallery 1602 - E160/Line-Ups // Set CDU-DH1600- 10 | 1d | 2026-12-18 | 2026-12-18 | DH.1600A-EQP-87, DH.1600A-EQP-83 | 73d | 0d | 1434 | DH1600 | GR |  |  |
| DH.1600A-EQP-84 |  | Gallery 1602 - E160/Line-Ups // Condensate connections to Floor Drains | 10d | 2026-12-21 | 2027-01-05 | DH.1600A-EQP-83, DH.1600A-EQP-87, DH.1600A-EQP-88 | 73d | 2d | 1436 | DH1600 | GR |  |  |
| DH.1600A-EQP-91 |  | Gallery 1602 - E160/Line-Ups // Mechanical Connections to CRAHU Units | 10d | 2026-12-23 | 2027-01-07 | DH.1600A-EQP-83 SS+5d | 71d | 0d | 1448 | DH1600 | GR |  |  |
| DH.1600A-EQP-97 |  | Gallery 1602 - E160/Line-Ups // Pull Feeder and Branch circuits to MIsc equipment and Chiller controls | 10d | 2026-12-23 | 2027-01-07 | DH.1600A-EQP-92 SS+4d | 73d | 0d | 1444 | DH1600 | GR | HELIX | AC |
| DH.1600A-EQP-93 |  | Gallery 1602 - E160/Line-Ups // Pull Cable Tray Feed from MOD to CRAHU's | 5d | 2026-12-24 | 2026-12-31 | DH.1600A-EQP-90 | 79d | 0d | 1441 | DH1600 | GR | HELIX | OO |
| DH.1600A-EQP-96 |  | Gallery 1602 - E160/Line-Ups // Terminate CRAHU Electrical Connections | 5d | 2026-12-29 | 2027-01-05 | DH.1600A-EQP-93 SS+2d, DH.1600A-EQP-90 | 79d | 6d | 1442 | DH1600 | GR | HELIX | OO |
| DH.1600A-EQP-99 |  | Gallery 1602 - E160/Line-Ups // Teminate all Misc Equipment and Chiller Controls | 10d | 2026-12-30 | 2027-01-13 | DH.1600A-EQP-97 SS+4d | 73d | 0d | 1445 | DH1600 | GR |  |  |
| DH.1600A-EQP-94 |  | Gallery 1602 - E160/Line-Ups // Condensate connections to Floor Drains | 10d | 2026-12-31 | 2027-01-14 | DH.1600A-EQP-91 SS+5d, DH.1600A-EQP-84 SS+5d | 71d | 0d | 1449 | DH1600 | GR |  |  |
| DH.1600A-EQP-95 |  | Gallery 1602 - E160/Line-Ups // Terminate Mod Panels | 1d | 2027-01-04 | 2027-01-04 | DH.1600A-EQP-93, DH.1600A-EQP-90, DH.1600A-EQP-89 | 80d | 7d | 1440 | DH1600 | GR | HELIX | OO |
| DH.1600A-EQP-100 |  | Gallery 1602 - E160/Line-Ups // Electrical Gear FOD Inspection Pre-Start Up | 2d | 2027-01-14 | 2027-01-15 | DH.1600A-EQP-96, DH.1600A-EQP-99, DH.1600A-EQP-95 | 73d | 79d | 1446 | DH1600 | GR | HELIX | QC |
| DH.1600A-EQP-98 |  | Gallery 1602 - E160/Line-Ups // Mechanical Gear FOD Inspection Pre-Start Up | 3d | 2027-01-15 | 2027-01-20 | DH.1600A-EQP-83, DH.1600A-EQP-94, DH.1600A-EQP-84, DH.1600A-EQP-91 | 71d | 77d | 1447 | DH1600 | GR |  |  |
|  | 6 | **F160** |  | 2026-12-16 | 2027-01-20 |  |  |  |  |  |  |  |  |
| DH.1600A-EQP-101 |  | Gallery 1602 - F160/Line-Ups // Set CRAH-DH1600- 11 | 1d | 2026-12-16 | 2026-12-16 | DH.1600A-EQP-83 SS | 25d | 0d | 1433 | DH1600 | GR |  |  |
| DH.1600A-EQP-103 |  | Gallery 1602 - F160/Line-Ups // Set CRAH-DH1600- 12 | 1d | 2026-12-16 | 2026-12-16 | DH.1600A-EQP-101 SS | 25d | 0d | 1434 | DH1600 | GR |  |  |
| DH.1600A-EQP-105 |  | Gallery 1602 - F160/Line-Ups // Set MOD-F160-01 | 1d | 2026-12-16 | 2026-12-16 | DH.1600A-EQP-103 FF | 73d | 0d | 1437 | DH1600 | GR | HELIX | TBD |
| DH.1600A-EQP-106 |  | Gallery 1602 - F160/Line-Ups // Set MOD-F160-02 | 1d | 2026-12-16 | 2026-12-16 | DH.1600A-EQP-105 SS | 73d | 0d | 1437 | DH1600 | GR | HELIX | TBD |
| DH.1600A-EQP-107 |  | Gallery 1602 - F160/Line-Ups // Set CDU-DH1600- 11 | 1d | 2026-12-17 | 2026-12-17 | DH.1600A-EQP-101 | 73d | 0d | 1434 | DH1600 | GR |  |  |
| DH.1600A-EQP-109 |  | Gallery 1602 - F160/Line-Ups // Pull Feeder from SWD to MOD | 1d | 2026-12-17 | 2026-12-17 | DH.1600A-EQP-106 | 89d | 9d | 1439 | DH1600 | GR | HELIX | OO |
| DH.1600A-EQP-110 |  | Gallery 1602 - F160/Line-Ups // Pull Cable Tray Feed from MOD to CRAHU's | 5d | 2026-12-17 | 2026-12-23 | DH.1600A-EQP-106 | 79d | 0d | 1438 | DH1600 | GR | HELIX | OO |
| DH.1600A-EQP-112 |  | Gallery 1602 - F160/Line-Ups // Mount Electrial Gear for Chiller Controls | 10d | 2026-12-17 | 2026-12-31 | DH.1600A-EQP-106 | 73d | 0d | 1443 | DH1600 | GR | HELIX | AC |
| DH.1600A-EQP-108 |  | Gallery 1602 - F160/Line-Ups // Set CDU-DH1600- 12 | 1d | 2026-12-18 | 2026-12-18 | DH.1600A-EQP-107, DH.1600A-EQP-103 | 73d | 0d | 1434 | DH1600 | GR |  |  |
| DH.1600A-EQP-104 |  | Gallery 1602 - F160/Line-Ups // Condensate connections to Floor Drains | 10d | 2026-12-21 | 2027-01-05 | DH.1600A-EQP-103, DH.1600A-EQP-107, DH.1600A-EQP-108 | 73d | 2d | 1436 | DH1600 | GR |  |  |
| DH.1600A-EQP-111 |  | Gallery 1602 - F160/Line-Ups // Mechanical Connections to CRAHU Units | 10d | 2026-12-23 | 2027-01-07 | DH.1600A-EQP-103 SS+5d | 71d | 0d | 1448 | DH1600 | GR |  |  |
| DH.1600A-EQP-117 |  | Gallery 1602 - F160/Line-Ups // Pull Feeder and Branch circuits to MIsc equipment and Chiller controls | 10d | 2026-12-23 | 2027-01-07 | DH.1600A-EQP-112 SS+4d | 73d | 0d | 1444 | DH1600 | GR | HELIX | AC |
| DH.1600A-EQP-113 |  | Gallery 1602 - F160/Line-Ups // Pull Cable Tray Feed from MOD to CRAHU's | 5d | 2026-12-24 | 2026-12-31 | DH.1600A-EQP-110 | 79d | 0d | 1441 | DH1600 | GR | HELIX | OO |
| DH.1600A-EQP-116 |  | Gallery 1602 - F160/Line-Ups // Terminate CRAHU Electrical Connections | 5d | 2026-12-29 | 2027-01-05 | DH.1600A-EQP-113 SS+2d, DH.1600A-EQP-110 | 79d | 6d | 1442 | DH1600 | GR | HELIX | OO |
| DH.1600A-EQP-119 |  | Gallery 1602 - F160/Line-Ups // Teminate all Misc Equipment and Chiller Controls | 10d | 2026-12-30 | 2027-01-13 | DH.1600A-EQP-117 SS+4d | 73d | 0d | 1445 | DH1600 | GR |  |  |
| DH.1600A-EQP-114 |  | Gallery 1602 - F160/Line-Ups // Condensate connections to Floor Drains | 10d | 2026-12-31 | 2027-01-14 | DH.1600A-EQP-111 SS+5d, DH.1600A-EQP-104 SS+5d | 71d | 0d | 1449 | DH1600 | GR |  |  |
| DH.1600A-EQP-115 |  | Gallery 1602 - F160/Line-Ups // Terminate Mod Panels | 1d | 2027-01-04 | 2027-01-04 | DH.1600A-EQP-113, DH.1600A-EQP-110, DH.1600A-EQP-109 | 80d | 7d | 1440 | DH1600 | GR | HELIX | OO |
| DH.1600A-EQP-120 |  | Gallery 1602 - F160/Line-Ups // Electrical Gear FOD Inspection Pre-Start Up | 2d | 2027-01-14 | 2027-01-15 | DH.1600A-EQP-116, DH.1600A-EQP-119, DH.1600A-EQP-115 | 73d | 79d | 1446 | DH1600 | GR | HELIX | QC |
| DH.1600A-EQP-118 |  | Gallery 1602 - F160/Line-Ups // Mechanical Gear FOD Inspection Pre-Start Up | 3d | 2027-01-15 | 2027-01-20 | DH.1600A-EQP-103, DH.1600A-EQP-114, DH.1600A-EQP-104, DH.1600A-EQP-111 | 71d | 77d | 1447 | DH1600 | GR |  |  |

| ID | WBS | Activity | Duration | Start | Finish | Predecessors | Total float | Free float | MSP Activity ID | QTS - AREA | QTS - DASH | QTS - Subcontractor | QTS - Resp |
| --- | --- | --- | --- | --- | --- | --- | --- | --- | --- | --- | --- | --- | --- |
|  | 7 | **G160** |  | 2026-12-17 | 2027-01-21 |  |  |  |  |  |  |  |  |
| DH.1600A-EQP-121 |  | Gallery 1602 - G160/Line-Ups // Set CRAH-DH1600- 13 | 1d | 2026-12-17 | 2026-12-17 | DH.1600A-EQP-103 | 25d | 0d | 1433 | DH1600 | GR |  |  |
| DH.1600A-EQP-123 |  | Gallery 1602 - G160/Line-Ups // Set CRAH-DH1600- 14 | 1d | 2026-12-17 | 2026-12-17 | DH.1600A-EQP-121 SS | 25d | 0d | 1434 | DH1600 | GR |  |  |
| DH.1600A-EQP-125 |  | Gallery 1602 - G160/Line-Ups // Set MOD-G160-01 | 1d | 2026-12-17 | 2026-12-17 | DH.1600A-EQP-123 FF | 72d | 0d | 1437 | DH1600 | GR | HELIX | TBD |
| DH.1600A-EQP-126 |  | Gallery 1602 - G160/Line-Ups // Set MOD-G160-02 | 1d | 2026-12-17 | 2026-12-17 | DH.1600A-EQP-125 SS | 72d | 0d | 1437 | DH1600 | GR | HELIX | TBD |
| DH.1600A-EQP-127 |  | Gallery 1602 - G160/Line-Ups // Set CDU-DH1600- 13 | 1d | 2026-12-18 | 2026-12-18 | DH.1600A-EQP-121 | 72d | 0d | 1434 | DH1600 | GR |  |  |
| DH.1600A-EQP-129 |  | Gallery 1602 - G160/Line-Ups // Pull Feeder from SWD to MOD | 1d | 2026-12-18 | 2026-12-18 | DH.1600A-EQP-126 | 88d | 9d | 1439 | DH1600 | GR | HELIX | OO |
| DH.1600A-EQP-130 |  | Gallery 1602 - G160/Line-Ups // Pull Cable Tray Feed from MOD to CRAHU's | 5d | 2026-12-18 | 2026-12-24 | DH.1600A-EQP-126 | 78d | 0d | 1438 | DH1600 | GR | HELIX | OO |
| DH.1600A-EQP-132 |  | Gallery 1602 - G160/Line-Ups // Mount Electrial Gear for Chiller Controls | 10d | 2026-12-18 | 2027-01-04 | DH.1600A-EQP-126 | 72d | 0d | 1443 | DH1600 | GR | HELIX | AC |
| DH.1600A-EQP-128 |  | Gallery 1602 - G160/Line-Ups // Set CDU-DH1600- 14 | 1d | 2026-12-21 | 2026-12-21 | DH.1600A-EQP-127, DH.1600A-EQP-123 | 72d | 0d | 1434 | DH1600 | GR |  |  |
| DH.1600A-EQP-124 |  | Gallery 1602 - G160/Line-Ups // Condensate connections to Floor Drains | 10d | 2026-12-22 | 2027-01-06 | DH.1600A-EQP-123, DH.1600A-EQP-127, DH.1600A-EQP-128 | 72d | 2d | 1436 | DH1600 | GR |  |  |
| DH.1600A-EQP-131 |  | Gallery 1602 - G160/Line-Ups // Mechanical Connections to CRAHU Units | 10d | 2026-12-24 | 2027-01-08 | DH.1600A-EQP-123 SS+5d | 70d | 0d | 1448 | DH1600 | GR |  |  |
| DH.1600A-EQP-137 |  | Gallery 1602 - G160/Line-Ups // Pull Feeder and Branch circuits to MIsc equipment and Chiller controls | 10d | 2026-12-24 | 2027-01-08 | DH.1600A-EQP-132 SS+4d | 72d | 0d | 1444 | DH1600 | GR | HELIX | AC |
| DH.1600A-EQP-133 |  | Gallery 1602 - G160/Line-Ups // Pull Cable Tray Feed from MOD to CRAHU's | 5d | 2026-12-28 | 2027-01-04 | DH.1600A-EQP-130 | 78d | 0d | 1441 | DH1600 | GR | HELIX | OO |
| DH.1600A-EQP-136 |  | Gallery 1602 - G160/Line-Ups // Terminate CRAHU Electrical Connections | 5d | 2026-12-30 | 2027-01-06 | DH.1600A-EQP-133 SS+2d, DH.1600A-EQP-130 | 78d | 6d | 1442 | DH1600 | GR | HELIX | OO |
| DH.1600A-EQP-139 |  | Gallery 1602 - G160/Line-Ups // Teminate all Misc Equipment and Chiller Controls | 10d | 2026-12-31 | 2027-01-14 | DH.1600A-EQP-137 SS+4d | 72d | 0d | 1445 | DH1600 | GR |  |  |
| DH.1600A-EQP-134 |  | Gallery 1602 - G160/Line-Ups // Condensate connections to Floor Drains | 10d | 2027-01-04 | 2027-01-15 | DH.1600A-EQP-131 SS+5d, DH.1600A-EQP-124 SS+5d | 70d | 0d | 1449 | DH1600 | GR |  |  |
| DH.1600A-EQP-135 |  | Gallery 1602 - G160/Line-Ups // Terminate Mod Panels | 1d | 2027-01-05 | 2027-01-05 | DH.1600A-EQP-133, DH.1600A-EQP-130, DH.1600A-EQP-129 | 79d | 7d | 1440 | DH1600 | GR | HELIX | OO |
| DH.1600A-EQP-140 |  | Gallery 1602 - G160/Line-Ups // Electrical Gear FOD Inspection Pre-Start Up | 2d | 2027-01-15 | 2027-01-19 | DH.1600A-EQP-136, DH.1600A-EQP-139, DH.1600A-EQP-135 | 72d | 78d | 1446 | DH1600 | GR | HELIX | QC |
| DH.1600A-EQP-138 |  | Gallery 1602 - G160/Line-Ups // Mechanical Gear FOD Inspection Pre-Start Up | 3d | 2027-01-19 | 2027-01-21 | DH.1600A-EQP-123, DH.1600A-EQP-134, DH.1600A-EQP-124, DH.1600A-EQP-131 | 70d | 76d | 1447 | DH1600 | GR |  |  |
|  | 8 | **H160** |  | 2026-12-17 | 2027-01-21 |  |  |  |  |  |  |  |  |
| DH.1600A-EQP-141 |  | Gallery 1602 - H160/Line-Ups // Set CRAH-DH1600- 15 | 1d | 2026-12-17 | 2026-12-17 | DH.1600A-EQP-123 SS | 25d | 0d | 1433 | DH1600 | GR |  |  |
| DH.1600A-EQP-143 |  | Gallery 1602 - H160/Line-Ups // Set CRAH-DH1600- 16 | 1d | 2026-12-17 | 2026-12-17 | DH.1600A-EQP-141 SS | 25d | 0d | 1434 | DH1600 | GR |  |  |
| DH.1600A-EQP-145 |  | Gallery 1602 - H160/Line-Ups // Set MOD-H160-01 | 1d | 2026-12-17 | 2026-12-17 | DH.1600A-EQP-143 FF | 72d | 0d | 1437 | DH1600 | GR | HELIX | TBD |
| DH.1600A-EQP-146 |  | Gallery 1602 - H160/Line-Ups // Set MOD-H160-02 | 1d | 2026-12-17 | 2026-12-17 | DH.1600A-EQP-145 SS | 72d | 0d | 1437 | DH1600 | GR | HELIX | TBD |
| DH.1600A-EQP-147 |  | Gallery 1602 - H160/Line-Ups // Set CDU-DH1600- 15 | 1d | 2026-12-18 | 2026-12-18 | DH.1600A-EQP-141 | 72d | 0d | 1434 | DH1600 | GR |  |  |
| DH.1600A-EQP-149 |  | Gallery 1602 - H160/Line-Ups // Pull Feeder from SWD to MOD | 1d | 2026-12-18 | 2026-12-18 | DH.1600A-EQP-146 | 88d | 9d | 1439 | DH1600 | GR | HELIX | OO |
| DH.1600A-EQP-150 |  | Gallery 1602 - H160/Line-Ups // Pull Cable Tray Feed from MOD to CRAHU's | 5d | 2026-12-18 | 2026-12-24 | DH.1600A-EQP-146 | 78d | 0d | 1438 | DH1600 | GR | HELIX | OO |
| DH.1600A-EQP-152 |  | Gallery 1602 - H160/Line-Ups // Mount Electrial Gear for Chiller Controls | 10d | 2026-12-18 | 2027-01-04 | DH.1600A-EQP-146 | 72d | 0d | 1443 | DH1600 | GR | HELIX | AC |
| DH.1600A-EQP-148 |  | Gallery 1602 - H160/Line-Ups // Set CDU-DH1600- 16 | 1d | 2026-12-21 | 2026-12-21 | DH.1600A-EQP-147, DH.1600A-EQP-143 | 72d | 0d | 1434 | DH1600 | GR |  |  |
| DH.1600A-EQP-144 |  | Gallery 1602 - H160/Line-Ups // Condensate connections to Floor Drains | 10d | 2026-12-22 | 2027-01-06 | DH.1600A-EQP-143, DH.1600A-EQP-147, DH.1600A-EQP-148 | 72d | 2d | 1436 | DH1600 | GR |  |  |
| DH.1600A-EQP-151 |  | Gallery 1602 - H160/Line-Ups // Mechanical Connections to CRAHU Units | 10d | 2026-12-24 | 2027-01-08 | DH.1600A-EQP-143 SS+5d | 70d | 0d | 1448 | DH1600 | GR |  |  |
| DH.1600A-EQP-157 |  | Gallery 1602 - H160/Line-Ups // Pull Feeder and Branch circuits to MIsc equipment and Chiller controls | 10d | 2026-12-24 | 2027-01-08 | DH.1600A-EQP-152 SS+4d | 72d | 0d | 1444 | DH1600 | GR | HELIX | AC |
| DH.1600A-EQP-153 |  | Gallery 1602 - H160/Line-Ups // Pull Cable Tray Feed from MOD to CRAHU's | 5d | 2026-12-28 | 2027-01-04 | DH.1600A-EQP-150 | 78d | 0d | 1441 | DH1600 | GR | HELIX | OO |
| DH.1600A-EQP-156 |  | Gallery 1602 - H160/Line-Ups // Terminate CRAHU Electrical Connections | 5d | 2026-12-30 | 2027-01-06 | DH.1600A-EQP-153 SS+2d, DH.1600A-EQP-150 | 78d | 6d | 1442 | DH1600 | GR | HELIX | OO |
| DH.1600A-EQP-159 |  | Gallery 1602 - H160/Line-Ups // Teminate all Misc Equipment and Chiller Controls | 10d | 2026-12-31 | 2027-01-14 | DH.1600A-EQP-157 SS+4d | 72d | 0d | 1445 | DH1600 | GR |  |  |
| DH.1600A-EQP-154 |  | Gallery 1602 - H160/Line-Ups // Condensate connections to Floor Drains | 10d | 2027-01-04 | 2027-01-15 | DH.1600A-EQP-151 SS+5d, DH.1600A-EQP-144 SS+5d | 70d | 0d | 1449 | DH1600 | GR |  |  |
| DH.1600A-EQP-155 |  | Gallery 1602 - H160/Line-Ups // Terminate Mod Panels | 1d | 2027-01-05 | 2027-01-05 | DH.1600A-EQP-153, DH.1600A-EQP-150, DH.1600A-EQP-149 | 79d | 7d | 1440 | DH1600 | GR | HELIX | OO |
| DH.1600A-EQP-160 |  | Gallery 1602 - H160/Line-Ups // Electrical Gear FOD Inspection Pre-Start Up | 2d | 2027-01-15 | 2027-01-19 | DH.1600A-EQP-156, DH.1600A-EQP-159, DH.1600A-EQP-155 | 72d | 78d | 1446 | DH1600 | GR | HELIX | QC |
| DH.1600A-EQP-158 |  | Gallery 1602 - H160/Line-Ups // Mechanical Gear FOD Inspection Pre-Start Up | 3d | 2027-01-19 | 2027-01-21 | DH.1600A-EQP-143, DH.1600A-EQP-154, DH.1600A-EQP-144, DH.1600A-EQP-151 | 70d | 76d | 1447 | DH1600 | GR |  |  |

| ID | WBS | Activity | Duration | Start | Finish | Predecessors | Total float | Free float | MSP Activity ID | QTS - AREA | QTS - DASH | QTS - Subcontractor | QTS - Resp |
| --- | --- | --- | --- | --- | --- | --- | --- | --- | --- | --- | --- | --- | --- |
|  | 9 | **J160** |  | 2026-12-17 | 2027-01-21 |  |  |  |  |  |  |  |  |
| DH.1600A-EQP-161 |  | Gallery 1602 - J160/Line-Ups // Set CRAH-DH1600- 17 | 1d | 2026-12-17 | 2026-12-17 | DH.1600A-EQP-143 SS | 25d | 0d | 1433 | DH1600 | GR |  |  |
| DH.1600A-EQP-163 |  | Gallery 1602 - J160/Line-Ups // Set CRAH-DH1600- 18 | 1d | 2026-12-17 | 2026-12-17 | DH.1600A-EQP-161 SS | 25d | 0d | 1434 | DH1600 | GR |  |  |
| DH.1600A-EQP-165 |  | Gallery 1602 - J160/Line-Ups // Set MOD-J160-01 | 1d | 2026-12-17 | 2026-12-17 | DH.1600A-EQP-163 FF | 72d | 0d | 1437 | DH1600 | GR | HELIX | TBD |
| DH.1600A-EQP-166 |  | Gallery 1602 - J160/Line-Ups // Set MOD-J160-02 | 1d | 2026-12-17 | 2026-12-17 | DH.1600A-EQP-165 SS | 72d | 0d | 1437 | DH1600 | GR | HELIX | TBD |
| DH.1600A-EQP-167 |  | Gallery 1602 - J160/Line-Ups // Set CDU-DH1600- 17 | 1d | 2026-12-18 | 2026-12-18 | DH.1600A-EQP-161 | 72d | 0d | 1434 | DH1600 | GR |  |  |
| DH.1600A-EQP-169 |  | Gallery 1602 - J160/Line-Ups // Pull Feeder from SWD to MOD | 1d | 2026-12-18 | 2026-12-18 | DH.1600A-EQP-166 | 88d | 9d | 1439 | DH1600 | GR | HELIX | OO |
| DH.1600A-EQP-170 |  | Gallery 1602 - J160/Line-Ups // Pull Cable Tray Feed from MOD to CRAHU's | 5d | 2026-12-18 | 2026-12-24 | DH.1600A-EQP-166 | 78d | 0d | 1438 | DH1600 | GR | HELIX | OO |
| DH.1600A-EQP-172 |  | Gallery 1602 - J160/Line-Ups // Mount Electrial Gear for Chiller Controls | 10d | 2026-12-18 | 2027-01-04 | DH.1600A-EQP-166 | 72d | 0d | 1443 | DH1600 | GR | HELIX | AC |
| DH.1600A-EQP-168 |  | Gallery 1602 - J160/Line-Ups // Set CDU-DH1600- 18 | 1d | 2026-12-21 | 2026-12-21 | DH.1600A-EQP-167, DH.1600A-EQP-163 | 72d | 0d | 1434 | DH1600 | GR |  |  |
| DH.1600A-EQP-164 |  | Gallery 1602 - J160/Line-Ups // Condensate connections to Floor Drains | 10d | 2026-12-22 | 2027-01-06 | DH.1600A-EQP-163, DH.1600A-EQP-167, DH.1600A-EQP-168 | 72d | 2d | 1436 | DH1600 | GR |  |  |
| DH.1600A-EQP-171 |  | Gallery 1602 - J160/Line-Ups // Mechanical Connections to CRAHU Units | 10d | 2026-12-24 | 2027-01-08 | DH.1600A-EQP-163 SS+5d | 70d | 0d | 1448 | DH1600 | GR |  |  |
| DH.1600A-EQP-177 |  | Gallery 1602 - J160/Line-Ups // Pull Feeder and Branch circuits to MIsc equipment and Chiller controls | 10d | 2026-12-24 | 2027-01-08 | DH.1600A-EQP-172 SS+4d | 72d | 0d | 1444 | DH1600 | GR | HELIX | AC |
| DH.1600A-EQP-173 |  | Gallery 1602 - J160/Line-Ups // Pull Cable Tray Feed from MOD to CRAHU's | 5d | 2026-12-28 | 2027-01-04 | DH.1600A-EQP-170 | 78d | 0d | 1441 | DH1600 | GR | HELIX | OO |
| DH.1600A-EQP-176 |  | Gallery 1602 - J160/Line-Ups // Terminate CRAHU Electrical Connections | 5d | 2026-12-30 | 2027-01-06 | DH.1600A-EQP-173 SS+2d, DH.1600A-EQP-170 | 78d | 6d | 1442 | DH1600 | GR | HELIX | OO |
| DH.1600A-EQP-179 |  | Gallery 1602 - J160/Line-Ups // Teminate all Misc Equipment and Chiller Controls | 10d | 2026-12-31 | 2027-01-14 | DH.1600A-EQP-177 SS+4d | 72d | 0d | 1445 | DH1600 | GR |  |  |
| DH.1600A-EQP-174 |  | Gallery 1602 - J160/Line-Ups // Condensate connections to Floor Drains | 10d | 2027-01-04 | 2027-01-15 | DH.1600A-EQP-171 SS+5d, DH.1600A-EQP-164 SS+5d | 70d | 0d | 1449 | DH1600 | GR |  |  |
| DH.1600A-EQP-175 |  | Gallery 1602 - J160/Line-Ups // Terminate Mod Panels | 1d | 2027-01-05 | 2027-01-05 | DH.1600A-EQP-173, DH.1600A-EQP-170, DH.1600A-EQP-169 | 79d | 7d | 1440 | DH1600 | GR | HELIX | OO |
| DH.1600A-EQP-180 |  | Gallery 1602 - J160/Line-Ups // Electrical Gear FOD Inspection Pre-Start Up | 2d | 2027-01-15 | 2027-01-19 | DH.1600A-EQP-176, DH.1600A-EQP-179, DH.1600A-EQP-175 | 72d | 78d | 1446 | DH1600 | GR | HELIX | QC |
| DH.1600A-EQP-178 |  | Gallery 1602 - J160/Line-Ups // Mechanical Gear FOD Inspection Pre-Start Up | 3d | 2027-01-19 | 2027-01-21 | DH.1600A-EQP-163, DH.1600A-EQP-174, DH.1600A-EQP-164, DH.1600A-EQP-171 | 70d | 76d | 1447 | DH1600 | GR |  |  |
|  | 10 | **K160** |  | 2026-12-18 | 2027-01-22 |  |  |  |  |  |  |  |  |
| DH.1600A-EQP-181 |  | Gallery 1602 - K160/Line-Ups // Set CRAH-DH1600- 19 | 1d | 2026-12-18 | 2026-12-18 | DH.1600A-EQP-163 | 25d | 0d | 1433 | DH1600 | GR |  |  |
| DH.1600A-EQP-183 |  | Gallery 1602 - K160/Line-Ups // Set CRAH-DH1600- 20 | 1d | 2026-12-18 | 2026-12-18 | DH.1600A-EQP-181 SS | 25d | 0d | 1434 | DH1600 | GR |  |  |
| DH.1600A-EQP-185 |  | Gallery 1602 - K160/Line-Ups // Set MOD-K160-01 | 1d | 2026-12-18 | 2026-12-18 | DH.1600A-EQP-183 FF | 71d | 0d | 1437 | DH1600 | GR | HELIX | TBD |
| DH.1600A-EQP-186 |  | Gallery 1602 - K160/Line-Ups // Set MOD-K160-02 | 1d | 2026-12-18 | 2026-12-18 | DH.1600A-EQP-185 SS | 71d | 0d | 1437 | DH1600 | GR | HELIX | TBD |
| DH.1600A-EQP-187 |  | Gallery 1602 - K160/Line-Ups // Set CDU-DH1600- 19 | 1d | 2026-12-21 | 2026-12-21 | DH.1600A-EQP-181 | 71d | 0d | 1434 | DH1600 | GR |  |  |
| DH.1600A-EQP-189 |  | Gallery 1602 - K160/Line-Ups // Pull Feeder from SWD to MOD | 1d | 2026-12-21 | 2026-12-21 | DH.1600A-EQP-186 | 87d | 9d | 1439 | DH1600 | GR | HELIX | OO |
| DH.1600A-EQP-190 |  | Gallery 1602 - K160/Line-Ups // Pull Cable Tray Feed from MOD to CRAHU's | 5d | 2026-12-21 | 2026-12-28 | DH.1600A-EQP-186 | 77d | 0d | 1438 | DH1600 | GR | HELIX | OO |
| DH.1600A-EQP-192 |  | Gallery 1602 - K160/Line-Ups // Mount Electrial Gear for Chiller Controls | 10d | 2026-12-21 | 2027-01-05 | DH.1600A-EQP-186 | 71d | 0d | 1443 | DH1600 | GR | HELIX | AC |
| DH.1600A-EQP-188 |  | Gallery 1602 - K160/Line-Ups // Set CDU-DH1600- 20 | 1d | 2026-12-22 | 2026-12-22 | DH.1600A-EQP-187, DH.1600A-EQP-183 | 71d | 0d | 1434 | DH1600 | GR |  |  |
| DH.1600A-EQP-184 |  | Gallery 1602 - K160/Line-Ups // Condensate connections to Floor Drains | 10d | 2026-12-23 | 2027-01-07 | DH.1600A-EQP-183, DH.1600A-EQP-187, DH.1600A-EQP-188 | 71d | 2d | 1436 | DH1600 | GR |  |  |
| DH.1600A-EQP-191 |  | Gallery 1602 - K160/Line-Ups // Mechanical Connections to CRAHU Units | 10d | 2026-12-28 | 2027-01-11 | DH.1600A-EQP-183 SS+5d | 69d | 0d | 1448 | DH1600 | GR |  |  |
| DH.1600A-EQP-197 |  | Gallery 1602 - K160/Line-Ups // Pull Feeder and Branch circuits to MIsc equipment and Chiller controls | 10d | 2026-12-28 | 2027-01-11 | DH.1600A-EQP-192 SS+4d | 71d | 0d | 1444 | DH1600 | GR | HELIX | AC |
| DH.1600A-EQP-193 |  | Gallery 1602 - K160/Line-Ups // Pull Cable Tray Feed from MOD to CRAHU's | 5d | 2026-12-29 | 2027-01-05 | DH.1600A-EQP-190 | 77d | 0d | 1441 | DH1600 | GR | HELIX | OO |
| DH.1600A-EQP-196 |  | Gallery 1602 - K160/Line-Ups // Terminate CRAHU Electrical Connections | 5d | 2026-12-31 | 2027-01-07 | DH.1600A-EQP-193 SS+2d, DH.1600A-EQP-190 | 77d | 6d | 1442 | DH1600 | GR | HELIX | OO |
| DH.1600A-EQP-199 |  | Gallery 1602 - K160/Line-Ups // Teminate all Misc Equipment and Chiller Controls | 10d | 2027-01-04 | 2027-01-15 | DH.1600A-EQP-197 SS+4d | 71d | 0d | 1445 | DH1600 | GR |  |  |
| DH.1600A-EQP-194 |  | Gallery 1602 - K160/Line-Ups // Condensate connections to Floor Drains | 10d | 2027-01-05 | 2027-01-19 | DH.1600A-EQP-191 SS+5d, DH.1600A-EQP-184 SS+5d | 69d | 0d | 1449 | DH1600 | GR |  |  |
| DH.1600A-EQP-195 |  | Gallery 1602 - K160/Line-Ups // Terminate Mod Panels | 1d | 2027-01-06 | 2027-01-06 | DH.1600A-EQP-193, DH.1600A-EQP-190, DH.1600A-EQP-189 | 78d | 7d | 1440 | DH1600 | GR | HELIX | OO |
| DH.1600A-EQP-200 |  | Gallery 1602 - K160/Line-Ups // Electrical Gear FOD Inspection Pre-Start Up | 2d | 2027-01-19 | 2027-01-20 | DH.1600A-EQP-196, DH.1600A-EQP-199, DH.1600A-EQP-195 | 71d | 77d | 1446 | DH1600 | GR | HELIX | QC |
| DH.1600A-EQP-198 |  | Gallery 1602 - K160/Line-Ups // Mechanical Gear FOD Inspection Pre-Start Up | 3d | 2027-01-20 | 2027-01-22 | DH.1600A-EQP-183, DH.1600A-EQP-194, DH.1600A-EQP-184, DH.1600A-EQP-191 | 69d | 75d | 1447 | DH1600 | GR |  |  |

| ID | WBS | Activity | Duration | Start | Finish | Predecessors | Total float | Free float | MSP Activity ID | QTS - AREA | QTS - DASH | QTS - Subcontractor | QTS - Resp | MBTA: Work Type |
| --- | --- | --- | --- | --- | --- | --- | --- | --- | --- | --- | --- | --- | --- | --- |
|  | 11 | **R160** |  | 2026-12-18 | 2027-02-25 |  |  |  |  |  |  |  |  |  |
| DH.1600A-EQP-201 |  | Gallery 1602 - R160/Line-Ups // Set CRAH-DH1600- 21 | 1d | 2026-12-18 | 2026-12-18 | DH.1600A-EQP-183 SS | 25d | 0d | 1433 | DH1600 | GR |  |  |  |
| DH.1600A-EQP-203 |  | Gallery 1602 - R160/Line-Ups // Set CRAH-DH1600- 22 | 1d | 2026-12-18 | 2026-12-18 | DH.1600A-EQP-201 SS | 25d | 0d | 1434 | DH1600 | GR |  |  |  |
| DH.1600A-EQP-205 |  | Gallery 1602 - R160/Line-Ups // Set MOD-R160-01 | 1d | 2026-12-18 | 2026-12-18 | DH.1600A-EQP-203 FF | 25d | 0d | 1437 | DH1600 | GR | HELIX | TBD |  |
| DH.1600A-EQP-206 |  | Gallery 1602 - R160/Line-Ups // Set MOD-R160-02 | 1d | 2026-12-18 | 2026-12-18 | DH.1600A-EQP-205 SS | 25d | 0d | 1437 | DH1600 | GR | HELIX | TBD |  |
| DH.1600A-EQP-207 |  | Gallery 1602 - R160/Line-Ups // Set CDU-DH1600- 21 | 1d | 2026-12-21 | 2026-12-21 | DH.1600A-EQP-201 | 29d | 0d | 1434 | DH1600 | GR |  |  |  |
| DH.1600A-EQP-210 |  | Gallery 1602 - R160/Line-Ups // Pull Cable Tray Feed from MOD to CRAHU's | 5d | 2026-12-21 | 2026-12-28 | DH.1600A-EQP-206 | 31d | 0d | 1438 | DH1600 | GR | HELIX | OO |  |
| DH.1600A-EQP-212 |  | Gallery 1602 - R160/Line-Ups // Mount Electrial Gear for Chiller Controls | 10d | 2026-12-21 | 2027-01-05 | DH.1600A-EQP-206 | 25d | 0d | 1443 | DH1600 | GR | HELIX | AC |  |
| DH.1600A-EQP-208 |  | Gallery 1602 - R160/Line-Ups // Set CDU-DH1600- 22 | 1d | 2026-12-22 | 2026-12-22 | DH.1600A-EQP-207, DH.1600A-EQP-203 | 29d | 0d | 1434 | DH1600 | GR |  |  |  |
| DH.1600A-EQP-204 |  | Gallery 1602 - R160/Line-Ups // Condensate connections to Floor Drains | 10d | 2026-12-23 | 2027-01-07 | DH.1600A-EQP-203, DH.1600A-EQP-207, DH.1600A-EQP-208 | 29d | 2d | 1436 | DH1600 | GR |  |  |  |
| DH.1600A-EQP-221 |  | Gallery 1602 - R160/Line-Ups // Set SWD-R160 | 1d | 2026-12-23 | 2026-12-23 | DH.1600A-EQP-208 | 40d | 0d | 1437 | DH1600 | GR |  |  |  |
| DH.1600A-EQP-222 |  | Gallery 1602 - R160/Line-Ups // Set SWD-TIE-R160 | 1d | 2026-12-24 | 2026-12-24 | DH.1600A-EQP-221 | 40d | 0d | 1437 | DH1600 | GR |  |  |  |
| DH.1600A-EQP-209 |  | Gallery 1602 - R160/Line-Ups // Pull Feeder from SWD to MOD | 1d | 2026-12-28 | 2026-12-28 | DH.1600A-EQP-222, DH.1600A-EQP-206 | 40d | 0d | 1439 | DH1600 | GR | HELIX | OO |  |
| DH.1600A-EQP-211 |  | Gallery 1602 - R160/Line-Ups // Mechanical Connections to CRAHU Units | 10d | 2026-12-28 | 2027-01-11 | DH.1600A-EQP-203 SS+5d | 27d | 0d | 1448 | DH1600 | GR |  |  |  |
| DH.1600A-EQP-217 |  | Gallery 1602 - R160/Line-Ups // Pull Feeder and Branch circuits to MIsc equipment and Chiller controls | 10d | 2026-12-28 | 2027-01-11 | DH.1600A-EQP-212 SS+4d | 25d | 0d | 1444 | DH1600 | GR | HELIX | AC |  |
| DH.1600A-EQP-213 |  | Gallery 1602 - R160/Line-Ups // Pull Cable Tray Feed from MOD to CRAHU's | 5d | 2026-12-29 | 2027-01-05 | DH.1600A-EQP-210 | 31d | 0d | 1441 | DH1600 | GR | HELIX | OO |  |
| DH.1600A-EQP-216 |  | Gallery 1602 - R160/Line-Ups // Terminate CRAHU Electrical Connections | 5d | 2026-12-31 | 2027-01-07 | DH.1600A-EQP-213 SS+2d, DH.1600A-EQP-210 | 35d | 31d | 1442 | DH1600 | GR | HELIX | OO |  |
| DH.1600A-EQP-219 |  | Gallery 1602 - R160/Line-Ups // Teminate all Misc Equipment and Chiller Controls | 10d | 2027-01-04 | 2027-01-15 | DH.1600A-EQP-217 SS+4d | 25d | 0d | 1445 | DH1600 | GR |  |  |  |
| DH.1600A-EQP-214 |  | Gallery 1602 - R160/Line-Ups // Condensate connections to Floor Drains | 10d | 2027-01-05 | 2027-01-19 | DH.1600A-EQP-211 SS+5d, DH.1600A-EQP-204 SS+5d | 27d | 0d | 1449 | DH1600 | GR |  |  |  |
| DH.1600A-EQP-215 |  | Gallery 1602 - R160/Line-Ups // Terminate Mod Panels | 1d | 2027-01-06 | 2027-01-06 | DH.1600A-EQP-213, DH.1600A-EQP-210, DH.1600A-EQP-209 | 36d | 32d | 1440 | DH1600 | GR | HELIX | OO |  |
| DH.1600A-EQP-218 |  | Gallery 1602 - R160/Line-Ups // Mechanical Gear FOD Inspection Pre-Start Up | 3d | 2027-01-20 | 2027-01-22 | DH.1600A-EQP-203, DH.1600A-EQP-214, DH.1600A-EQP-204, DH.1600A-EQP-211 | 27d | 33d | 1447 | DH1600 | GR |  |  |  |
| DH.1600A-EQP-220 |  | Gallery 1602 - R160/Line-Ups // Electrical Gear FOD Inspection Pre-Start Up | 2d | 2027-02-24 | 2027-02-25 | DH.160012143, DH.1600A-EQP-216, DH.1600A-EQP-219, DH.1600A-EQP-215 | 4d | 10d | 1446 | DH1600 | GR | HELIX | QC |  |
|  | 12 | **Equipment Connections** |  | 2026-12-29 | 2027-01-26 |  |  |  |  |  |  |  |  |  |
|  | 1 | **CRAH** |  | 2027-01-06 | 2027-01-15 |  |  |  |  |  |  |  |  |  |
| DH1600.MG.A110.8687 |  | Gallery 1602 // DH 1600 / Elec Room // CRAH Duct Work Termination | 2d | 2027-01-06 | 2027-01-07 | DH.1600A-EQP-213 | 31d | 0d | 7037 | DH1600 | GR |  |  | Con/Install |
| DH1600.MG.A110.8686 |  | Gallery 1602 // DH 1600 / Elec Room // CRAH Chilled Water | 2d | 2027-01-08 | 2027-01-11 | DH1600.MG.A110.8687 | 31d | 0d | 7035 | DH1600 | GR |  |  | Con/Install |
| DH1600.MG.A110.8684 |  | Gallery 1602 // DH 1600 / Elec Room // CRAH Power Connections | 2d | 2027-01-12 | 2027-01-13 | DH1600.MG.A110.8686 | 31d | 0d | 7034 | DH1600 | GR | HELIX | OO | Con/Install |
| DH1600.MG.A110.8685 |  | Gallery 1602 // DH 1600 / Elec Room // CRAH LV Connections | 2d | 2027-01-14 | 2027-01-15 | DH1600.MG.A110.8684 | 31d | 37d | 7036 | DH1600 | GR |  |  | Con/Install |

| ID | WBS | Activity | Type | Duration | Start | Finish | Predecessors | Complete | Remaining | Planned start | Planned finish | Total float | Free float | MSP Activity ID | QTS - AREA | MBTA: Work Type | QTS - DASH | QTS - Subcontractor | QTS - Resp | 05 -SUFFOLK - Building Phase |
| --- | --- | --- | --- | --- | --- | --- | --- | --- | --- | --- | --- | --- | --- | --- | --- | --- | --- | --- | --- | --- |
|  | 2 | **CDU** |  |  | 2027-01-19 | 2027-01-26 |  |  |  |  |  |  |  |  |  |  |  |  |  |  |
| DH1600.MG.A110.8690 |  | Gallery 1602 // DH 1600 / Elec Room // CDU Chilled Water Connections |  | 2d | 2027-01-19 | 2027-01-20 | DH.1600A-EQP-219 |  |  |  |  | 25d | 0d | 7040 | DH1600 | Con/Install | GR |  |  |  |
| DH1600.MG.A110.8688 |  | Gallery 1602 // DH 1600 /Elec Room // CDU Power Connections |  | 2d | 2027-01-21 | 2027-01-22 | DH1600.MG.A110.8690 |  |  |  |  | 25d | 0d | 7039 | DH1600 | Con/Install | GR | HELIX | OO |  |
| DH1600.MG.A110.8689 |  | Gallery 1602 // DH 1600 / Elec Room // CDU Controls Connections |  | 2d | 2027-01-25 | 2027-01-26 | DH1600.MG.A110.8688 |  |  |  |  | 25d | 31d | 7041 | DH1600 | Con/Install | GR |  |  |  |
|  | 3 | **MOD** |  |  | 2026-12-29 | 2027-01-04 |  |  |  |  |  |  |  |  |  |  |  |  |  |  |
| DH1600.MG.A110.8691 |  | Gallery 1602 // DH 1600 / Elec Room // MOD Power Connections |  | 2d | 2026-12-29 | 2026-12-30 | DH.1600A-EQP-209 |  |  |  |  | 40d | 0d | 7043 | DH1600 | Con/Install | GR | HELIX | OO |  |
| DH1600.MG.A110.8692 |  | Gallery 1602 // DH 1600 / Elec Room // MOD LV Connections |  | 2d | 2026-12-31 | 2027-01-04 | DH1600.MG.A110.8691 |  |  |  |  | 40d | 46d | 7044 | DH1600 | Con/Install | GR | HELIX | AC |  |
|  | 4 | **Gallery 1603** |  |  | 2026-10-05 | 2027-03-01 |  |  |  |  |  |  |  |  |  |  |  |  |  |  |
|  | 1 | **Architectural** |  |  | 2026-10-05 | 2027-01-25 |  |  |  |  |  |  |  |  |  |  |  |  |  |  |
| B120001.3199 |  | DH 1600/Gallery 1603 // Install Overhead Cable Ladder / 36" Cable Tray - TFO |  | 5d | 2026-10-05 A | 2026-10-20 | DH.16001010 FF |  | 5d | 2026-10-14 | 2026-10-20 | 2d | 0d | 1181 |  |  | GR |  |  |  |
| DH.16001000 |  | DH 1600/Gallery 1603 // Seal concrete |  | 2d | 2026-10-05 A | 2026-10-06 A | DH.1600660 FF | 100% |  | 2026-10-02 | 2026-10-05 |  |  | 1452 | DH1600 |  | GR |  |  | 2 |
| DH.16001010 |  | DH 1600/Gallery 1603 // MEPF overhead layout |  | 5d | 2026-10-05 A | 2026-10-20 | DH.1600670 SS, DH.16000.1010 FF |  | 5d | 2026-10-06 | 2026-10-13 | 2d | 0d | 1453 | DH1600 |  | GR | HELIX | ACOO | 2 |
| B120001.3200 |  | DH 1600/Gallery 1603 // Install Overhead HAC - TFO |  | 5d | 2026-10-21 | 2026-10-27 | B120001.3199 |  |  |  |  | 2d | 0d | 1181 |  |  | GR |  |  |  |
| DH.16001030 |  | DH 1600/Gallery 1603 // MEPF high overhead install |  | 10d | 2026-10-28 | 2026-11-10 | B120001.3200, DH.16001010 SS |  |  |  |  | 2d | 0d | 1455 | DH1600 |  | GR | HELIX | ACOO | 2 |
| DH.16001040 |  | DH 1600/Gallery 1603 // Frame walls |  | 6d | 2026-11-12 | 2026-11-19 | DH.16001030, DH.16001010 |  |  |  |  | 2d | 0d | 1456 | DH1600 |  | GR |  |  | 2 |
| F.1000A.1311 |  | DH 1600/Gallery 1603 // Rough-In Security |  | 2d | 2026-11-12 | 2026-11-13 | DH.16001030 |  |  |  |  | 118d | 0d | 1156 | DH1600 |  | GR | HELIX | AC |  |
| F.1000A.1625 |  | DH 1600/Gallery 1603 // BMS & EPMS Rough-In |  | 2d | 2026-11-12 | 2026-11-13 | F.1000A.1311 SS, F.1000A.1311 FF |  |  |  |  | 130d | 42d |  | DH1600 |  |  |  |  |  |
| F.1000A.1312 |  | DH 1600/Gallery 1603 // Pull & Test Security Cable |  | 3d | 2026-11-16 | 2026-11-18 | F.1000A.1311 |  |  |  |  | 118d | 28d | 1156 | DH1600 |  | GR |  |  |  |
| DH.16001070 |  | DH 1600/Gallery 1603 // MEP rough in walls |  | 4d | 2026-11-20 | 2026-11-25 | DH.16001040 |  |  |  |  | 2d | 0d | 1458 | DH1600 |  | GR | HELIX | AC | 2 |
| DH.16001080 |  | DH 1600/Gallery 1603 // In wall inspection |  | 1d | 2026-11-27 | 2026-11-27 | DH.16001070 |  |  |  |  | 2d | 0d | 1459 | DH1600 |  | GR |  |  | 2 |
| DH.16001050 |  | DH 1600/Gallery 1603 // Install Sheetrock Top Down |  | 6d | 2026-11-30 | 2026-12-07 | DH.16001080, DH.16001040 SS+3d |  |  |  |  | 2d | 0d | 1461 | DH1600 |  | GR |  |  |  |
| DH.16001090 |  | DH 1600/Gallery 1603 // Install Balance of Sheetrock on walls |  | 6d | 2026-12-08 | 2026-12-15 | DH.16001050, DH.16001030 |  |  |  |  | 2d | 0d | 1460 | DH1600 |  | GR |  |  | 2 |
| DH.16001100 |  | DH 1600/Gallery 1603 // Tape and finish walls |  | 8d | 2026-12-16 | 2026-12-28 | DH.16001090 |  |  |  |  | 2d | 0d | 1462 | DH1600 |  | GR |  |  | 2 |
| DH.16001060 |  | DH 1600/Gallery 1603 // Install wall door frames |  | 2d | 2026-12-29 | 2026-12-30 | DH.16001100 |  |  |  |  | 4d | 0d | 1457 | DH1600 |  | GR |  |  | 2 |
| DH.16001110 |  | DH 1600/Gallery 1603 // Prime and Paint walls |  | 4d | 2026-12-29 | 2027-01-04 | DH.16001100 |  |  |  |  | 2d | 0d | 1463 | DH1600 |  | GR |  |  | 2 |
| F.1000A.1313 |  | DH 1600/Gallery 1603 // Install Security Devices |  | 2d | 2026-12-31 | 2027-01-04 | DH.16001060, F.1000A.1312 |  |  |  |  | 90d | 0d | 1156 | DH1600 |  | GR |  |  |  |
| DH.16001120 |  | DH 1600/Gallery 1603 // Touch up Walls and Fianl Paint |  | 5d | 2027-01-05 | 2027-01-11 | DH.16001110, DH.16001060 |  |  |  |  | 2d | 0d | 1464 | DH1600 |  | GR |  |  | 2 |
| F.1000A.1314 |  | DH 1600/Gallery 1603 // Mount & Terminate Security Devices |  | 5d | 2027-01-05 | 2027-01-11 | DH.16001110, F.1000A.1313 |  |  |  |  | 90d | 2d | 1156 | DH1600 |  | GR |  |  |  |
| DH.16001130 |  | DH 1600/Gallery 1603 // Install Trim and Devices |  | 2d | 2027-01-12 | 2027-01-13 | DH.16001120 |  |  |  |  | 2d | 0d | 1465 | DH1600 |  | GR | HELIX | AC |  |
| DH.160012164 |  | DH 1600/Gallery 1603 // Ready to Receive Equipment | milestone | 0d | 2027-01-13 | 2027-01-13 | DH.16001130 FF, DH.16001000 |  |  |  |  | 2d | 0d | 1465 | DH1600 |  | GR | HELIX | TBD |  |
| F.1000A.1315 |  | DH 1600/Gallery 1603 // Test Security Devices |  | 2d | 2027-01-14 | 2027-01-15 | DH.16001130, F.1000A.1314, F.1000A.1625 FF |  |  |  |  | 88d | 0d | 1156 | DH1600 |  | GR |  |  |  |
| DH.16001140 |  | DH 1600/Gallery 1603 // Suffolk Pre Punch |  | 5d | 2027-01-19 | 2027-01-25 | F.1000A.1315, DH.160012164 |  |  |  |  | 88d | 86d | 1466 | DH1600 |  | GR |  |  |  |

| ID | WBS | Activity | Duration | Start | Finish | Predecessors | Total float | Free float | MSP Activity ID | QTS - AREA | QTS - DASH | QTS - Subcontractor | QTS - Resp |
| --- | --- | --- | --- | --- | --- | --- | --- | --- | --- | --- | --- | --- | --- |
|  | 16 | **Raceway** |  |  |  |  |  |  |  |  |  |  |  |
|  | 3 | **Equipment Line-Ups** |  | 2027-01-14 | 2027-03-01 |  |  |  |  |  |  |  |  |
|  | 1 | **A160** |  | 2027-01-14 | 2027-02-17 |  |  |  |  |  |  |  |  |
| DH.1600B-EQP-1 |  | Gallery 1603 - A160/Line-Ups // Set CRAH-DH1600- 23 | 1d | 2027-01-14 | 2027-01-14 | DH.160012164, DH.16006360 | 2d | 0d | 1474 | DH1600 | GR |  |  |
| DH.1600B-EQP-4 |  | Gallery 1603 - A160/Line-Ups // Set CRAH-DH1600- 24 | 1d | 2027-01-14 | 2027-01-14 | DH.1600B-EQP-1 SS, DH.1600B-EQP-1 FF | 2d | 0d | 1475 | DH1600 | GR |  |  |
| DH.1600B-EQP-10 |  | Gallery 1603 - A160/Line-Ups // Mount Electrial Gear for Chiller Controls | 10d | 2027-01-15 | 2027-01-29 | DH.1600B-EQP-4 | 54d | 0d | 1484 | DH1600 | GR | HELIX | AC |
| DH.1600B-EQP-14 |  | Gallery 1603 - A160/Line-Ups // Terminate Electrical Connections - CRAHU | 3d | 2027-01-15 | 2027-01-20 | DH.1600B-EQP-1 | 69d | 15d | 1483 | DH1600 | GR | HELIX | OO |
| DH.1600B-EQP-199 |  | Gallery 1603 - A160/Line-Ups // Set CDU-DH1600-23 | 1d | 2027-01-15 | 2027-01-15 | DH.1600B-EQP-4 | 57d | 3d | 1478 | DH1600 | GR |  |  |
| DH.1600B-EQP-200 |  | Gallery 1603 - A160/Line-Ups // Set CDU-DH1600-24 | 1d | 2027-01-15 | 2027-01-15 | DH.1600B-EQP-4 | 57d | 3d | 1478 | DH1600 | GR |  |  |
| DH.1600B-EQP-3 |  | Gallery 1603 - A160/Line-Ups // Condensate connections to Floor Drains | 10d | 2027-01-15 | 2027-01-29 | DH.1600B-EQP-1 SS, DH.1600B-EQP-4 | 56d | 4d | 1477 | DH1600 | GR |  |  |
| DH.1600B-EQP-15 |  | Gallery 1603 - A160/Line-Ups // Pull Feeder and Branch circuits to MIsc equipment and Chiller controls | 10d | 2027-01-22 | 2027-02-04 | DH.1600B-EQP-199, DH.1600B-EQP-200, DH.1600B-EQP-10 SS+4d | 54d | 0d | 1485 | DH1600 | GR | HELIX | AC |
| DH.1600B-EQP-9 |  | Gallery 1603 - A160/Line-Ups // Mechanical Connections to CRAHU Units | 5d | 2027-01-22 | 2027-01-28 | DH.1600B-EQP-4 SS+5d | 52d | 0d | 1489 | DH1600 | GR |  |  |
| DH.1600B-EQP-17 |  | Gallery 1603 - A160/Line-Ups // Teminate all Misc Equipment and Chiller Controls | 10d | 2027-01-28 | 2027-02-10 | DH.1600B-EQP-15 SS+4d | 54d | 0d | 1486 | DH1600 | GR |  |  |
| DH.1600B-EQP-12 |  | Gallery 1603 - A160/Line-Ups // Condensate connections to Floor Drains | 10d | 2027-01-29 | 2027-02-11 | DH.1600B-EQP-9 SS+5d, DH.1600B-EQP-3 SS+5d | 52d | 0d | 1490 | DH1600 | GR |  |  |
| DH.1600B-EQP-18 |  | Gallery 1603 - A160/Line-Ups // Electrical Gear FOD Inspection Pre-Start Up | 2d | 2027-02-11 | 2027-02-12 | DH.1600B-EQP-14, DH.1600B-EQP-17 | 54d | 60d | 1487 | DH1600 | GR | HELIX | QC |
| DH.1600B-EQP-16 |  | Gallery 1603 - A160/Line-Ups // Mechanical Gear FOD Inspection Pre-Start Up | 3d | 2027-02-12 | 2027-02-17 | DH.1600B-EQP-12, DH.1600B-EQP-3, DH.1600B-EQP-9, DH.1600B-EQP-1 SS, DH.1600B-EQP-4 | 52d | 58d | 1488 | DH1600 | GR |  |  |
|  | 2 | **B160** |  | 2027-01-14 | 2027-02-24 |  |  |  |  |  |  |  |  |
| DH.1600B-EQP-19 |  | Gallery 1603 - B160/Line-Ups // Set CRAH-DH1600- 25 | 1d | 2027-01-14 | 2027-01-14 | DH.1600B-EQP-4 SS | 2d | 0d | 1474 | DH1600 | GR |  |  |
| DH.1600B-EQP-22 |  | Gallery 1603 - B160/Line-Ups // Set CRAH-DH1600- 26 | 1d | 2027-01-14 | 2027-01-14 | DH.1600B-EQP-19 SS, DH.1600B-EQP-19 FF | 2d | 0d | 1475 | DH1600 | GR |  |  |
| DH.1600B-EQP-201 |  | Gallery 1603 - B160/Line-Ups // Set CDU-DH1600-25 | 1d | 2027-01-15 | 2027-01-15 | DH.1600B-EQP-22 | 57d | 3d | 1478 | DH1600 | GR |  |  |
| DH.1600B-EQP-202 |  | Gallery 1603 - B160/Line-Ups // Set CDU-DH1600-26 | 1d | 2027-01-15 | 2027-01-15 | DH.1600B-EQP-22 | 57d | 3d | 1478 | DH1600 | GR |  |  |
| DH.1600B-EQP-28 |  | Gallery 1603 - B160/Line-Ups // Mount Electrial Gear for Chiller Controls | 10d | 2027-01-15 | 2027-01-29 | DH.1600B-EQP-22 | 54d | 0d | 1484 | DH1600 | GR | HELIX | AC |
| DH.1600B-EQP-32 |  | Gallery 1603 - B160/Line-Ups // Terminate CRAHU Electrical Connections | 5d | 2027-01-15 | 2027-01-22 | DH.1600B-EQP-19 | 67d | 13d | 1483 | DH1600 | GR | HELIX | OO |
| DH.1600B-EQP-20 |  | Gallery 1603 - B160/Line-Ups // Connect CRAH units | 10d | 2027-01-22 | 2027-02-04 | DH.1600B-EQP-19 SS+5d, DH.1600B-EQP-22 | 47d | 0d | 1476 | DH1600 | GR |  |  |
| DH.1600B-EQP-27 |  | Gallery 1603 - B160/Line-Ups // Mechanical Connections to CRAHU Units | 10d | 2027-01-22 | 2027-02-04 | DH.1600B-EQP-22 SS+5d | 52d | 5d | 1489 | DH1600 | GR |  |  |
| DH.1600B-EQP-33 |  | Gallery 1603 - B160/Line-Ups // Pull Feeder and Branch circuits to MIsc equipment and Chiller controls | 10d | 2027-01-22 | 2027-02-04 | DH.1600B-EQP-202, DH.1600B-EQP-201, DH.1600B-EQP-28 SS+4d | 54d | 0d | 1485 | DH1600 | GR | HELIX | AC |
| DH.1600B-EQP-35 |  | Gallery 1603 - B160/Line-Ups // Teminate all Misc Equipment and Chiller Controls | 10d | 2027-01-28 | 2027-02-10 | DH.1600B-EQP-33 SS+4d | 54d | 0d | 1486 | DH1600 | GR |  |  |
| DH.1600B-EQP-21 |  | Gallery 1603 - B160/Line-Ups // Condensate connections to Floor Drains | 10d | 2027-01-29 | 2027-02-11 | DH.1600B-EQP-20 SS+5d | 47d | 0d | 1477 | DH1600 | GR |  |  |
| DH.1600B-EQP-30 |  | Gallery 1603 - B160/Line-Ups // Condensate connections to Floor Drains | 10d | 2027-02-05 | 2027-02-19 | DH.1600B-EQP-27 SS+5d, DH.1600B-EQP-21 SS+5d | 47d | 0d | 1490 | DH1600 | GR |  |  |
| DH.1600B-EQP-36 |  | Gallery 1603 - B160/Line-Ups // Electrical Gear FOD Inspection Pre-Start Up | 2d | 2027-02-11 | 2027-02-12 | DH.1600B-EQP-32, DH.1600B-EQP-35 | 54d | 60d | 1487 | DH1600 | GR | HELIX | QC |
| DH.1600B-EQP-34 |  | Gallery 1603 - B160/Line-Ups // Mechanical Gear FOD Inspection Pre-Start Up | 3d | 2027-02-22 | 2027-02-24 | DH.1600B-EQP-30, DH.1600B-EQP-21, DH.1600B-EQP-27, DH.1600B-EQP-20 | 47d | 53d | 1488 | DH1600 | GR |  |  |

| ID | WBS | Activity | Duration | Start | Finish | Predecessors | Total float | Free float | MSP Activity ID | QTS - AREA | QTS - DASH | QTS - Subcontractor | QTS - Resp |
| --- | --- | --- | --- | --- | --- | --- | --- | --- | --- | --- | --- | --- | --- |
|  | 3 | **C160** |  | 2027-01-14 | 2027-02-24 |  |  |  |  |  |  |  |  |
| DH.1600B-EQP-37 |  | Gallery 1603 - C160/Line-Ups // Set CRAH-DH1600- 27 | 1d | 2027-01-14 | 2027-01-14 | DH.1600B-EQP-22 SS | 2d | 0d | 1474 | DH1600 | GR |  |  |
| DH.1600B-EQP-40 |  | Gallery 1603 - C160/Line-Ups // Set CRAH-DH1600- 28 | 1d | 2027-01-14 | 2027-01-14 | DH.1600B-EQP-37 SS, DH.1600B-EQP-37 FF | 2d | 0d | 1475 | DH1600 | GR |  |  |
| DH.1600B-EQP-203 |  | Gallery 1603 - C160/Line-Ups // Set CDU-DH1600-27 | 1d | 2027-01-15 | 2027-01-15 | DH.1600B-EQP-40 | 57d | 3d | 1478 | DH1600 | GR |  |  |
| DH.1600B-EQP-204 |  | Gallery 1603 - C160/Line-Ups // Set CDU-DH1600-28 | 1d | 2027-01-15 | 2027-01-15 | DH.1600B-EQP-40 | 57d | 3d | 1478 | DH1600 | GR |  |  |
| DH.1600B-EQP-46 |  | Gallery 1603 - C160/Line-Ups // Mount Electrial Gear for Chiller Controls | 10d | 2027-01-15 | 2027-01-29 | DH.1600B-EQP-40 | 54d | 0d | 1484 | DH1600 | GR | HELIX | AC |
| DH.1600B-EQP-50 |  | Gallery 1603 - C160/Line-Ups // Terminate CRAHU Electrical Connections | 5d | 2027-01-15 | 2027-01-22 | DH.1600B-EQP-37 | 67d | 13d | 1483 | DH1600 | GR | HELIX | OO |
| DH.1600B-EQP-38 |  | Gallery 1603 - C160/Line-Ups // Connect CRAH units | 10d | 2027-01-22 | 2027-02-04 | DH.1600B-EQP-37 SS+5d, DH.1600B-EQP-40 | 47d | 0d | 1476 | DH1600 | GR |  |  |
| DH.1600B-EQP-45 |  | Gallery 1603 - C160/Line-Ups // Mechanical Connections to CRAHU Units | 10d | 2027-01-22 | 2027-02-04 | DH.1600B-EQP-40 SS+5d | 52d | 5d | 1489 | DH1600 | GR |  |  |
| DH.1600B-EQP-51 |  | Gallery 1603 - C160/Line-Ups // Pull Feeder and Branch circuits to MIsc equipment and Chiller controls | 10d | 2027-01-22 | 2027-02-04 | DH.1600B-EQP-204, DH.1600B-EQP-203, DH.1600B-EQP-46 SS+4d | 54d | 0d | 1485 | DH1600 | GR | HELIX | AC |
| DH.1600B-EQP-53 |  | Gallery 1603 - C160/Line-Ups // Teminate all Misc Equipment and Chiller Controls | 10d | 2027-01-28 | 2027-02-10 | DH.1600B-EQP-51 SS+4d | 54d | 0d | 1486 | DH1600 | GR |  |  |
| DH.1600B-EQP-39 |  | Gallery 1603 - C160/Line-Ups // Condensate connections to Floor Drains | 10d | 2027-01-29 | 2027-02-11 | DH.1600B-EQP-38 SS+5d | 47d | 0d | 1477 | DH1600 | GR |  |  |
| DH.1600B-EQP-48 |  | Gallery 1603 - C160/Line-Ups // Condensate connections to Floor Drains | 10d | 2027-02-05 | 2027-02-19 | DH.1600B-EQP-45 SS+5d, DH.1600B-EQP-39 SS+5d | 47d | 0d | 1490 | DH1600 | GR |  |  |
| DH.1600B-EQP-54 |  | Gallery 1603 - C160/Line-Ups // Electrical Gear FOD Inspection Pre-Start Up | 2d | 2027-02-11 | 2027-02-12 | DH.1600B-EQP-50, DH.1600B-EQP-53 | 54d | 60d | 1487 | DH1600 | GR | HELIX | QC |
| DH.1600B-EQP-52 |  | Gallery 1603 - C160/Line-Ups // Mechanical Gear FOD Inspection Pre-Start Up | 3d | 2027-02-22 | 2027-02-24 | DH.1600B-EQP-48, DH.1600B-EQP-39, DH.1600B-EQP-45, DH.1600B-EQP-38 | 47d | 53d | 1488 | DH1600 | GR |  |  |
|  | 4 | **D160** |  | 2027-01-15 | 2027-02-25 |  |  |  |  |  |  |  |  |
| DH.1600B-EQP-55 |  | Gallery 1603 - D160/Line-Ups // Set CRAH-DH1600- 29 | 1d | 2027-01-15 | 2027-01-15 | DH.1600B-EQP-40 | 2d | 0d | 1474 | DH1600 | GR |  |  |
| DH.1600B-EQP-58 |  | Gallery 1603 - D160/Line-Ups // Set CRAH-DH1600-30 | 1d | 2027-01-15 | 2027-01-15 | DH.1600B-EQP-55 SS, DH.1600B-EQP-55 FF | 2d | 0d | 1475 | DH1600 | GR |  |  |
| DH.1600B-EQP-205 |  | Gallery 1603 - D160/Line-Ups // Set CDU-DH1600-29 | 1d | 2027-01-19 | 2027-01-19 | DH.1600B-EQP-58 | 56d | 3d | 1478 | DH1600 | GR |  |  |
| DH.1600B-EQP-206 |  | Gallery 1603 - D160/Line-Ups // Set CDU-DH1600-30 | 1d | 2027-01-19 | 2027-01-19 | DH.1600B-EQP-58 | 56d | 3d | 1478 | DH1600 | GR |  |  |
| DH.1600B-EQP-64 |  | Gallery 1603 - D160/Line-Ups // Mount Electrial Gear for Chiller Controls | 10d | 2027-01-19 | 2027-02-01 | DH.1600B-EQP-58 | 53d | 0d | 1484 | DH1600 | GR | HELIX | AC |
| DH.1600B-EQP-68 |  | Gallery 1603 - D160/Line-Ups // Terminate CRAHU Electrical Connections | 5d | 2027-01-19 | 2027-01-25 | DH.1600B-EQP-55 | 66d | 13d | 1483 | DH1600 | GR | HELIX | OO |
| DH.1600B-EQP-56 |  | Gallery 1603 - D160/Line-Ups // Connect CRAH units | 10d | 2027-01-25 | 2027-02-05 | DH.1600B-EQP-55 SS+5d, DH.1600B-EQP-58 | 46d | 0d | 1476 | DH1600 | GR |  |  |
| DH.1600B-EQP-63 |  | Gallery 1603 - D160/Line-Ups // Mechanical Connections to CRAHU Units | 10d | 2027-01-25 | 2027-02-05 | DH.1600B-EQP-58 SS+5d | 51d | 5d | 1489 | DH1600 | GR |  |  |
| DH.1600B-EQP-69 |  | Gallery 1603 - D160/Line-Ups // Pull Feeder and Branch circuits to MIsc equipment and Chiller controls | 10d | 2027-01-25 | 2027-02-05 | DH.1600B-EQP-206, DH.1600B-EQP-205, DH.1600B-EQP-64 SS+4d | 53d | 0d | 1485 | DH1600 | GR | HELIX | AC |
| DH.1600B-EQP-71 |  | Gallery 1603 - D160/Line-Ups // Teminate all Misc Equipment and Chiller Controls | 10d | 2027-01-29 | 2027-02-11 | DH.1600B-EQP-69 SS+4d | 53d | 0d | 1486 | DH1600 | GR |  |  |
| DH.1600B-EQP-57 |  | Gallery 1603 - D160/Line-Ups // Condensate connections to Floor Drains | 10d | 2027-02-01 | 2027-02-12 | DH.1600B-EQP-56 SS+5d | 46d | 0d | 1477 | DH1600 | GR |  |  |
| DH.1600B-EQP-66 |  | Gallery 1603 - D160/Line-Ups // Condensate connections to Floor Drains | 10d | 2027-02-08 | 2027-02-22 | DH.1600B-EQP-63 SS+5d, DH.1600B-EQP-57 SS+5d | 46d | 0d | 1490 | DH1600 | GR |  |  |
| DH.1600B-EQP-72 |  | Gallery 1603 - D160/Line-Ups // Electrical Gear FOD Inspection Pre-Start Up | 2d | 2027-02-12 | 2027-02-16 | DH.1600B-EQP-68, DH.1600B-EQP-71 | 53d | 59d | 1487 | DH1600 | GR | HELIX | QC |
| DH.1600B-EQP-70 |  | Gallery 1603 - D160/Line-Ups // Mechanical Gear FOD Inspection Pre-Start Up | 3d | 2027-02-23 | 2027-02-25 | DH.1600B-EQP-66, DH.1600B-EQP-57, DH.1600B-EQP-63, DH.1600B-EQP-56 | 46d | 52d | 1488 | DH1600 | GR |  |  |

| ID | WBS | Activity | Duration | Start | Finish | Predecessors | Total float | Free float | MSP Activity ID | QTS - AREA | QTS - DASH | QTS - Subcontractor | QTS - Resp |
| --- | --- | --- | --- | --- | --- | --- | --- | --- | --- | --- | --- | --- | --- |
|  | 5 | **E160** |  | 2027-01-15 | 2027-02-25 |  |  |  |  |  |  |  |  |
| DH.1600B-EQP-73 |  | Gallery 1603 - E160/Line-Ups // Set CRAH-DH1600- 31 | 1d | 2027-01-15 | 2027-01-15 | DH.1600B-EQP-58 SS | 2d | 0d | 1474 | DH1600 | GR |  |  |
| DH.1600B-EQP-76 |  | Gallery 1603 - E160/Line-Ups // Set CRAH-DH1600-32 | 1d | 2027-01-15 | 2027-01-15 | DH.1600B-EQP-73 SS, DH.1600B-EQP-73 FF | 2d | 0d | 1475 | DH1600 | GR |  |  |
| DH.1600B-EQP-207 |  | Gallery 1603 - E160/Line-Ups // Set CDU-DH1600-31 | 1d | 2027-01-19 | 2027-01-19 | DH.1600B-EQP-76 | 56d | 3d | 1478 | DH1600 | GR |  |  |
| DH.1600B-EQP-208 |  | Gallery 1603 - E160/Line-Ups // Set CDU-DH1600-32 | 1d | 2027-01-19 | 2027-01-19 | DH.1600B-EQP-76 | 56d | 3d | 1478 | DH1600 | GR |  |  |
| DH.1600B-EQP-82 |  | Gallery 1603 - E160/Line-Ups // Mount Electrial Gear for Chiller Controls | 10d | 2027-01-19 | 2027-02-01 | DH.1600B-EQP-76 | 53d | 0d | 1484 | DH1600 | GR | HELIX | AC |
| DH.1600B-EQP-86 |  | Gallery 1603 - E160/Line-Ups // Terminate CRAHU Electrical Connections | 5d | 2027-01-19 | 2027-01-25 | DH.1600B-EQP-73 | 66d | 13d | 1483 | DH1600 | GR | HELIX | OO |
| DH.1600B-EQP-74 |  | Gallery 1603 - E160/Line-Ups // Connect CRAH units | 10d | 2027-01-25 | 2027-02-05 | DH.1600B-EQP-73 SS+5d, DH.1600B-EQP-76 | 46d | 0d | 1476 | DH1600 | GR |  |  |
| DH.1600B-EQP-81 |  | Gallery 1603 - E160/Line-Ups // Mechanical Connections to CRAHU Units | 10d | 2027-01-25 | 2027-02-05 | DH.1600B-EQP-76 SS+5d | 51d | 5d | 1489 | DH1600 | GR |  |  |
| DH.1600B-EQP-87 |  | Gallery 1603 - E160/Line-Ups // Pull Feeder and Branch circuits to MIsc equipment and Chiller controls | 10d | 2027-01-25 | 2027-02-05 | DH.1600B-EQP-208, DH.1600B-EQP-207, DH.1600B-EQP-82 SS+4d | 53d | 0d | 1485 | DH1600 | GR | HELIX | AC |
| DH.1600B-EQP-89 |  | Gallery 1603 - E160/Line-Ups // Teminate all Misc Equipment and Chiller Controls | 10d | 2027-01-29 | 2027-02-11 | DH.1600B-EQP-87 SS+4d | 53d | 0d | 1486 | DH1600 | GR |  |  |
| DH.1600B-EQP-75 |  | Gallery 1603 - E160/Line-Ups // Condensate connections to Floor Drains | 10d | 2027-02-01 | 2027-02-12 | DH.1600B-EQP-74 SS+5d | 46d | 0d | 1477 | DH1600 | GR |  |  |
| DH.1600B-EQP-84 |  | Gallery 1603 - E160/Line-Ups // Condensate connections to Floor Drains | 10d | 2027-02-08 | 2027-02-22 | DH.1600B-EQP-81 SS+5d, DH.1600B-EQP-75 SS+5d | 46d | 0d | 1490 | DH1600 | GR |  |  |
| DH.1600B-EQP-90 |  | Gallery 1603 - E160/Line-Ups // Electrical Gear FOD Inspection Pre-Start Up | 2d | 2027-02-12 | 2027-02-16 | DH.1600B-EQP-86, DH.1600B-EQP-89 | 53d | 59d | 1487 | DH1600 | GR | HELIX | QC |
| DH.1600B-EQP-88 |  | Gallery 1603 - E160/Line-Ups // Mechanical Gear FOD Inspection Pre-Start Up | 3d | 2027-02-23 | 2027-02-25 | DH.1600B-EQP-84, DH.1600B-EQP-75, DH.1600B-EQP-81, DH.1600B-EQP-74 | 46d | 52d | 1488 | DH1600 | GR |  |  |
|  | 6 | **F160** |  | 2027-01-15 | 2027-02-25 |  |  |  |  |  |  |  |  |
| DH.1600B-EQP-91 |  | Gallery 1603 - F160/Line-Ups // Set CRAH-DH1600-33 | 1d | 2027-01-15 | 2027-01-15 | DH.1600B-EQP-76 SS | 2d | 0d | 1474 | DH1600 | GR |  |  |
| DH.1600B-EQP-94 |  | Gallery 1603 - F160/Line-Ups // Set CRAH-DH1600-34 | 1d | 2027-01-15 | 2027-01-15 | DH.1600B-EQP-91 SS, DH.1600B-EQP-91 FF | 2d | 0d | 1475 | DH1600 | GR |  |  |
| DH.1600B-EQP-100 |  | Gallery 1603 - F160/Line-Ups // Mount Electrial Gear for Chiller Controls | 10d | 2027-01-19 | 2027-02-01 | DH.1600B-EQP-94 | 53d | 0d | 1484 | DH1600 | GR | HELIX | AC |
| DH.1600B-EQP-104 |  | Gallery 1603 - F160/Line-Ups // Terminate CRAHU Electrical Connections | 5d | 2027-01-19 | 2027-01-25 | DH.1600B-EQP-91 | 66d | 13d | 1483 | DH1600 | GR | HELIX | OO |
| DH.1600B-EQP-209 |  | Gallery 1603 - F160/Line-Ups // Set CDU-DH1600-33 | 1d | 2027-01-19 | 2027-01-19 | DH.1600B-EQP-94 | 56d | 3d | 1478 | DH1600 | GR |  |  |
| DH.1600B-EQP-210 |  | Gallery 1603 - F160/Line-Ups // Set CDU-DH1600-34 | 1d | 2027-01-19 | 2027-01-19 | DH.1600B-EQP-94 | 56d | 3d | 1478 | DH1600 | GR |  |  |
| DH.1600B-EQP-105 |  | Gallery 1603 - F160/Line-Ups // Pull Feeder and Branch circuits to MIsc equipment and Chiller controls | 10d | 2027-01-25 | 2027-02-05 | DH.1600B-EQP-209, DH.1600B-EQP-210, DH.1600B-EQP-100 SS+4d | 53d | 0d | 1485 | DH1600 | GR | HELIX | AC |
| DH.1600B-EQP-92 |  | Gallery 1603 - F160/Line-Ups // Connect CRAH units | 10d | 2027-01-25 | 2027-02-05 | DH.1600B-EQP-91 SS+5d, DH.1600B-EQP-94 | 46d | 0d | 1476 | DH1600 | GR |  |  |
| DH.1600B-EQP-99 |  | Gallery 1603 - F160/Line-Ups // Mechanical Connections to CRAHU Units | 10d | 2027-01-25 | 2027-02-05 | DH.1600B-EQP-94 SS+5d | 51d | 5d | 1489 | DH1600 | GR |  |  |
| DH.1600B-EQP-107 |  | Gallery 1603 - F160/Line-Ups // Teminate all Misc Equipment and Chiller Controls | 10d | 2027-01-29 | 2027-02-11 | DH.1600B-EQP-105 SS+4d | 53d | 0d | 1486 | DH1600 | GR |  |  |
| DH.1600B-EQP-93 |  | Gallery 1603 - F160/Line-Ups // Condensate connections to Floor Drains | 10d | 2027-02-01 | 2027-02-12 | DH.1600B-EQP-92 SS+5d | 46d | 0d | 1477 | DH1600 | GR |  |  |
| DH.1600B-EQP-102 |  | Gallery 1603 - F160/Line-Ups // Condensate connections to Floor Drains | 10d | 2027-02-08 | 2027-02-22 | DH.1600B-EQP-99 SS+5d, DH.1600B-EQP-93 SS+5d | 46d | 0d | 1490 | DH1600 | GR |  |  |
| DH.1600B-EQP-108 |  | Gallery 1603 - F160/Line-Ups // Electrical Gear FOD Inspection Pre-Start Up | 2d | 2027-02-12 | 2027-02-16 | DH.1600B-EQP-104, DH.1600B-EQP-107 | 53d | 59d | 1487 | DH1600 | GR | HELIX | QC |
| DH.1600B-EQP-106 |  | Gallery 1603 - F160/Line-Ups // Mechanical Gear FOD Inspection Pre-Start Up | 3d | 2027-02-23 | 2027-02-25 | DH.1600B-EQP-102, DH.1600B-EQP-93, DH.1600B-EQP-99, DH.1600B-EQP-92 | 46d | 52d | 1488 | DH1600 | GR |  |  |

| ID | WBS | Activity | Duration | Start | Finish | Predecessors | Total float | Free float | MSP Activity ID | QTS - AREA | QTS - DASH | QTS - Subcontractor | QTS - Resp |
| --- | --- | --- | --- | --- | --- | --- | --- | --- | --- | --- | --- | --- | --- |
|  | 7 | **G160** |  | 2027-01-19 | 2027-02-26 |  |  |  |  |  |  |  |  |
| DH.1600B-EQP-109 |  | Gallery 1603 - G160/Line-Ups // Set CRAH-DH1600-35 | 1d | 2027-01-19 | 2027-01-19 | DH.1600B-EQP-94 | 2d | 0d | 1474 | DH1600 | GR |  |  |
| DH.1600B-EQP-112 |  | Gallery 1603 - G160/Line-Ups // Set CRAH-DH1600-36 | 1d | 2027-01-19 | 2027-01-19 | DH.1600B-EQP-109 SS, DH.1600B-EQP-109 FF | 2d | 0d | 1475 | DH1600 | GR |  |  |
| DH.1600B-EQP-118 |  | Gallery 1603 - G160/Line-Ups // Mount Electrial Gear for Chiller Controls | 10d | 2027-01-20 | 2027-02-02 | DH.1600B-EQP-112 | 52d | 0d | 1484 | DH1600 | GR | HELIX | AC |
| DH.1600B-EQP-122 |  | Gallery 1603 - G160/Line-Ups // Terminate CRAHU Electrical Connections | 5d | 2027-01-20 | 2027-01-26 | DH.1600B-EQP-109 | 65d | 13d | 1483 | DH1600 | GR | HELIX | OO |
| DH.1600B-EQP-211 |  | Gallery 1603 - G160/Line-Ups // Set CDU-DH1600-35 | 1d | 2027-01-20 | 2027-01-20 | DH.1600B-EQP-112 | 55d | 3d | 1478 | DH1600 | GR |  |  |
| DH.1600B-EQP-212 |  | Gallery 1603 - G160/Line-Ups // Set CDU-DH1600-36 | 1d | 2027-01-20 | 2027-01-20 | DH.1600B-EQP-112 | 55d | 3d | 1478 | DH1600 | GR |  |  |
| DH.1600B-EQP-110 |  | Gallery 1603 - G160/Line-Ups // Connect CRAH units | 10d | 2027-01-26 | 2027-02-08 | DH.1600B-EQP-109 SS+5d, DH.1600B-EQP-112 | 45d | 0d | 1476 | DH1600 | GR |  |  |
| DH.1600B-EQP-117 |  | Gallery 1603 - G160/Line-Ups // Mechanical Connections to CRAHU Units | 10d | 2027-01-26 | 2027-02-08 | DH.1600B-EQP-112 SS+5d | 50d | 5d | 1489 | DH1600 | GR |  |  |
| DH.1600B-EQP-123 |  | Gallery 1603 - G160/Line-Ups // Pull Feeder and Branch circuits to MIsc equipment and Chiller controls | 10d | 2027-01-26 | 2027-02-08 | DH.1600B-EQP-212, DH.1600B-EQP-211, DH.1600B-EQP-118 SS+4d | 52d | 0d | 1485 | DH1600 | GR | HELIX | AC |
| DH.1600B-EQP-125 |  | Gallery 1603 - G160/Line-Ups // Teminate all Misc Equipment and Chiller Controls | 10d | 2027-02-01 | 2027-02-12 | DH.1600B-EQP-123 SS+4d | 52d | 0d | 1486 | DH1600 | GR |  |  |
| DH.1600B-EQP-111 |  | Gallery 1603 - G160/Line-Ups // Condensate connections to Floor Drains | 10d | 2027-02-02 | 2027-02-16 | DH.1600B-EQP-110 SS+5d | 45d | 0d | 1477 | DH1600 | GR |  |  |
| DH.1600B-EQP-120 |  | Gallery 1603 - G160/Line-Ups // Condensate connections to Floor Drains | 10d | 2027-02-09 | 2027-02-23 | DH.1600B-EQP-117 SS+5d, DH.1600B-EQP-111 SS+5d | 45d | 0d | 1490 | DH1600 | GR |  |  |
| DH.1600B-EQP-126 |  | Gallery 1603 - G160/Line-Ups // Electrical Gear FOD Inspection Pre-Start Up | 2d | 2027-02-16 | 2027-02-17 | DH.1600B-EQP-122, DH.1600B-EQP-125 | 52d | 58d | 1487 | DH1600 | GR | HELIX | QC |
| DH.1600B-EQP-124 |  | Gallery 1603 - G160/Line-Ups // Mechanical Gear FOD Inspection Pre-Start Up | 3d | 2027-02-24 | 2027-02-26 | DH.1600B-EQP-120, DH.1600B-EQP-111, DH.1600B-EQP-117, DH.1600B-EQP-110 | 45d | 51d | 1488 | DH1600 | GR |  |  |
|  | 8 | **H160** |  | 2027-01-19 | 2027-02-26 |  |  |  |  |  |  |  |  |
| DH.1600B-EQP-127 |  | Gallery 1603 - H160/Line-Ups // Set CRAH-DH1600-37 | 1d | 2027-01-19 | 2027-01-19 | DH.1600B-EQP-112 SS | 2d | 0d | 1474 | DH1600 | GR |  |  |
| DH.1600B-EQP-130 |  | Gallery 1603 - H160/Line-Ups // Set CRAH-DH1600-38 | 1d | 2027-01-19 | 2027-01-19 | DH.1600B-EQP-127 SS, DH.1600B-EQP-127 FF | 2d | 0d | 1475 | DH1600 | GR |  |  |
| DH.1600B-EQP-136 |  | Gallery 1603 - H160/Line-Ups // Mount Electrial Gear for Chiller Controls | 10d | 2027-01-20 | 2027-02-02 | DH.1600B-EQP-130 | 52d | 0d | 1484 | DH1600 | GR | HELIX | AC |
| DH.1600B-EQP-140 |  | Gallery 1603 - H160/Line-Ups // Terminate CRAHU Electrical Connections | 5d | 2027-01-20 | 2027-01-26 | DH.1600B-EQP-127 | 65d | 13d | 1483 | DH1600 | GR | HELIX | OO |
| DH.1600B-EQP-213 |  | Gallery 1603 - H160/Line-Ups // Set CDU-DH1600-37 | 1d | 2027-01-20 | 2027-01-20 | DH.1600B-EQP-130 | 55d | 3d | 1478 | DH1600 | GR |  |  |
| DH.1600B-EQP-214 |  | Gallery 1603 - H160/Line-Ups // Set CDU-DH1600-38 | 1d | 2027-01-20 | 2027-01-20 | DH.1600B-EQP-130 | 55d | 3d | 1478 | DH1600 | GR |  |  |
| DH.1600B-EQP-128 |  | Gallery 1603 - H160/Line-Ups // Connect CRAH units | 10d | 2027-01-26 | 2027-02-08 | DH.1600B-EQP-127 SS+5d, DH.1600B-EQP-130 | 45d | 0d | 1476 | DH1600 | GR |  |  |
| DH.1600B-EQP-135 |  | Gallery 1603 - H160/Line-Ups // Mechanical Connections to CRAHU Units | 10d | 2027-01-26 | 2027-02-08 | DH.1600B-EQP-130 SS+5d | 50d | 5d | 1489 | DH1600 | GR |  |  |
| DH.1600B-EQP-141 |  | Gallery 1603 - H160/Line-Ups // Pull Feeder and Branch circuits to MIsc equipment and Chiller controls | 10d | 2027-01-26 | 2027-02-08 | DH.1600B-EQP-214, DH.1600B-EQP-213, DH.1600B-EQP-136 SS+4d | 52d | 0d | 1485 | DH1600 | GR | HELIX | AC |
| DH.1600B-EQP-143 |  | Gallery 1603 - H160/Line-Ups // Teminate all Misc Equipment and Chiller Controls | 10d | 2027-02-01 | 2027-02-12 | DH.1600B-EQP-141 SS+4d | 52d | 0d | 1486 | DH1600 | GR |  |  |
| DH.1600B-EQP-129 |  | Gallery 1603 - H160/Line-Ups // Condensate connections to Floor Drains | 10d | 2027-02-02 | 2027-02-16 | DH.1600B-EQP-128 SS+5d | 45d | 0d | 1477 | DH1600 | GR |  |  |
| DH.1600B-EQP-138 |  | Gallery 1603 - H160/Line-Ups // Condensate connections to Floor Drains | 10d | 2027-02-09 | 2027-02-23 | DH.1600B-EQP-135 SS+5d, DH.1600B-EQP-129 SS+5d | 45d | 0d | 1490 | DH1600 | GR |  |  |
| DH.1600B-EQP-144 |  | Gallery 1603 - H160/Line-Ups // Electrical Gear FOD Inspection Pre-Start Up | 2d | 2027-02-16 | 2027-02-17 | DH.1600B-EQP-140, DH.1600B-EQP-143 | 52d | 58d | 1487 | DH1600 | GR | HELIX | QC |
| DH.1600B-EQP-142 |  | Gallery 1603 - H160/Line-Ups // Mechanical Gear FOD Inspection Pre-Start Up | 3d | 2027-02-24 | 2027-02-26 | DH.1600B-EQP-138, DH.1600B-EQP-129, DH.1600B-EQP-135, DH.1600B-EQP-128 | 45d | 51d | 1488 | DH1600 | GR |  |  |

| ID | WBS | Activity | Duration | Start | Finish | Predecessors | Total float | Free float | MSP Activity ID | QTS - AREA | QTS - DASH | QTS - Subcontractor | QTS - Resp |
| --- | --- | --- | --- | --- | --- | --- | --- | --- | --- | --- | --- | --- | --- |
|  | 9 | **J160** |  | 2027-01-19 | 2027-02-26 |  |  |  |  |  |  |  |  |
| DH.1600B-EQP-145 |  | Gallery 1603 - J160/Line-Ups // Set CRAH-DH1600-39 | 1d | 2027-01-19 | 2027-01-19 | DH.1600B-EQP-130 SS | 2d | 0d | 1474 | DH1600 | GR |  |  |
| DH.1600B-EQP-148 |  | Gallery 1603 - J160/Line-Ups // Set CRAH-DH1600-40 | 1d | 2027-01-19 | 2027-01-19 | DH.1600B-EQP-145 SS, DH.1600B-EQP-145 FF | 2d | 0d | 1475 | DH1600 | GR |  |  |
| DH.1600B-EQP-154 |  | Gallery 1603 - J160/Line-Ups // Mount Electrial Gear for Chiller Controls | 10d | 2027-01-20 | 2027-02-02 | DH.1600B-EQP-148 | 52d | 0d | 1484 | DH1600 | GR | HELIX | AC |
| DH.1600B-EQP-158 |  | Gallery 1603 - J160/Line-Ups // Terminate CRAHU Electrical Connections | 5d | 2027-01-20 | 2027-01-26 | DH.1600B-EQP-145 | 65d | 13d | 1483 | DH1600 | GR | HELIX | OO |
| DH.1600B-EQP-215 |  | Gallery 1603 - J160/Line-Ups // Set CDU-DH1600-39 | 1d | 2027-01-20 | 2027-01-20 | DH.1600B-EQP-148 | 55d | 3d | 1478 | DH1600 | GR |  |  |
| DH.1600B-EQP-216 |  | Gallery 1603 - J160/Line-Ups // Set CDU-DH1600-40 | 1d | 2027-01-20 | 2027-01-20 | DH.1600B-EQP-148 | 55d | 3d | 1478 | DH1600 | GR |  |  |
| DH.1600B-EQP-146 |  | Gallery 1603 - J160/Line-Ups // Connect CRAH units | 10d | 2027-01-26 | 2027-02-08 | DH.1600B-EQP-145 SS+5d, DH.1600B-EQP-148 | 45d | 0d | 1476 | DH1600 | GR |  |  |
| DH.1600B-EQP-153 |  | Gallery 1603 - J160/Line-Ups // Mechanical Connections to CRAHU Units | 10d | 2027-01-26 | 2027-02-08 | DH.1600B-EQP-148 SS+5d | 50d | 5d | 1489 | DH1600 | GR |  |  |
| DH.1600B-EQP-159 |  | Gallery 1603 - J160/Line-Ups // Pull Feeder and Branch circuits to MIsc equipment and Chiller controls | 10d | 2027-01-26 | 2027-02-08 | DH.1600B-EQP-216, DH.1600B-EQP-215, DH.1600B-EQP-154 SS+4d | 52d | 0d | 1485 | DH1600 | GR | HELIX | AC |
| DH.1600B-EQP-161 |  | Gallery 1603 - J160/Line-Ups // Teminate all Misc Equipment and Chiller Controls | 10d | 2027-02-01 | 2027-02-12 | DH.1600B-EQP-159 SS+4d | 52d | 0d | 1486 | DH1600 | GR |  |  |
| DH.1600B-EQP-147 |  | Gallery 1603 - J160/Line-Ups // Condensate connections to Floor Drains | 10d | 2027-02-02 | 2027-02-16 | DH.1600B-EQP-146 SS+5d | 45d | 0d | 1477 | DH1600 | GR |  |  |
| DH.1600B-EQP-156 |  | Gallery 1603 - J160/Line-Ups // Condensate connections to Floor Drains | 10d | 2027-02-09 | 2027-02-23 | DH.1600B-EQP-153 SS+5d, DH.1600B-EQP-147 SS+5d | 45d | 0d | 1490 | DH1600 | GR |  |  |
| DH.1600B-EQP-162 |  | Gallery 1603 - J160/Line-Ups // Electrical Gear FOD Inspection Pre-Start Up | 2d | 2027-02-16 | 2027-02-17 | DH.1600B-EQP-158, DH.1600B-EQP-161 | 52d | 58d | 1487 | DH1600 | GR | HELIX | QC |
| DH.1600B-EQP-160 |  | Gallery 1603 - J160/Line-Ups // Mechanical Gear FOD Inspection Pre-Start Up | 3d | 2027-02-24 | 2027-02-26 | DH.1600B-EQP-156, DH.1600B-EQP-147, DH.1600B-EQP-153, DH.1600B-EQP-146 | 45d | 51d | 1488 | DH1600 | GR |  |  |
|  | 10 | **K160** |  | 2027-01-20 | 2027-03-01 |  |  |  |  |  |  |  |  |
| DH.1600B-EQP-163 |  | Gallery 1603 - K160/Line-Ups // Set CRAH-DH1600-41 | 1d | 2027-01-20 | 2027-01-20 | DH.1600B-EQP-148 | 2d | 0d | 1474 | DH1600 | GR |  |  |
| DH.1600B-EQP-166 |  | Gallery 1603 - K160/Line-Ups // Set CRAH-DH1600-42 | 1d | 2027-01-20 | 2027-01-20 | DH.1600B-EQP-163 SS, DH.1600B-EQP-163 FF | 2d | 0d | 1475 | DH1600 | GR |  |  |
| DH.1600B-EQP-172 |  | Gallery 1603 - K160/Line-Ups // Mount Electrial Gear for Chiller Controls | 10d | 2027-01-21 | 2027-02-03 | DH.1600B-EQP-166 | 51d | 0d | 1484 | DH1600 | GR | HELIX | AC |
| DH.1600B-EQP-176 |  | Gallery 1603 - K160/Line-Ups // Terminate CRAHU Electrical Connections | 5d | 2027-01-21 | 2027-01-27 | DH.1600B-EQP-163 | 64d | 13d | 1483 | DH1600 | GR | HELIX | OO |
| DH.1600B-EQP-164 |  | Gallery 1603 - K160/Line-Ups // Connect CRAH units | 10d | 2027-01-27 | 2027-02-09 | DH.1600B-EQP-163 SS+5d, DH.1600B-EQP-166 | 44d | 0d | 1476 | DH1600 | GR |  |  |
| DH.1600B-EQP-171 |  | Gallery 1603 - K160/Line-Ups // Mechanical Connections to CRAHU Units | 10d | 2027-01-27 | 2027-02-09 | DH.1600B-EQP-166 SS+5d | 49d | 5d | 1489 | DH1600 | GR |  |  |
| DH.1600B-EQP-177 |  | Gallery 1603 - K160/Line-Ups // Pull Feeder and Branch circuits to MIsc equipment and Chiller controls | 10d | 2027-01-27 | 2027-02-09 | DH.1600B-EQP-172 SS+4d | 51d | 0d | 1485 | DH1600 | GR | HELIX | AC |
| DH.1600B-EQP-179 |  | Gallery 1603 - K160/Line-Ups // Teminate all Misc Equipment and Chiller Controls | 10d | 2027-02-02 | 2027-02-16 | DH.1600B-EQP-177 SS+4d | 51d | 0d | 1486 | DH1600 | GR |  |  |
| DH.1600B-EQP-165 |  | Gallery 1603 - K160/Line-Ups // Condensate connections to Floor Drains | 10d | 2027-02-03 | 2027-02-17 | DH.1600B-EQP-164 SS+5d | 44d | 0d | 1477 | DH1600 | GR |  |  |
| DH.1600B-EQP-174 |  | Gallery 1603 - K160/Line-Ups // Condensate connections to Floor Drains | 10d | 2027-02-10 | 2027-02-24 | DH.1600B-EQP-171 SS+5d, DH.1600B-EQP-165 SS+5d | 44d | 0d | 1490 | DH1600 | GR |  |  |
| DH.1600B-EQP-180 |  | Gallery 1603 - K160/Line-Ups // Electrical Gear FOD Inspection Pre-Start Up | 2d | 2027-02-17 | 2027-02-18 | DH.1600B-EQP-176, DH.1600B-EQP-179 | 51d | 57d | 1487 | DH1600 | GR | HELIX | QC |
| DH.1600B-EQP-178 |  | Gallery 1603 - K160/Line-Ups // Mechanical Gear FOD Inspection Pre-Start Up | 3d | 2027-02-25 | 2027-03-01 | DH.1600B-EQP-174, DH.1600B-EQP-165, DH.1600B-EQP-171, DH.1600B-EQP-164 | 44d | 50d | 1488 | DH1600 | GR |  |  |

| ID | WBS | Activity | Duration | Start | Finish | Predecessors | Total float | Free float | MSP Activity ID | QTS - AREA | QTS - DASH | QTS - Subcontractor | QTS - Resp | MBTA: Work Type |
| --- | --- | --- | --- | --- | --- | --- | --- | --- | --- | --- | --- | --- | --- | --- |
|  | 11 | **R160** |  | 2027-01-20 | 2027-03-01 |  |  |  |  |  |  |  |  |  |
| DH.1600B-EQP-181 |  | Gallery 1603 - R160/Line-Ups // Set CRAH-DH1600-43 | 1d | 2027-01-20 | 2027-01-20 | DH.1600B-EQP-166 SS | 2d | 0d | 1474 | DH1600 | GR |  |  |  |
| DH.1600B-EQP-184 |  | Gallery 1603 - R160/Line-Ups // Set CRAH-DH1600-44 | 1d | 2027-01-20 | 2027-01-20 | DH.1600B-EQP-181 SS, DH.1600B-EQP-181 FF | 6d | 0d | 1475 | DH1600 | GR |  |  |  |
| DH.1600B-EQP-190 |  | Gallery 1603 - R160/Line-Ups // Mount Electrial Gear for Chiller Controls | 10d | 2027-01-21 | 2027-02-03 | DH.1600B-EQP-184 | 13d | 0d | 1484 | DH1600 | GR | HELIX | AC |  |
| DH.1600B-EQP-194 |  | Gallery 1603 - R160/Line-Ups // Terminate CRAHU Electrical Connections | 5d | 2027-01-21 | 2027-01-27 | DH.1600B-EQP-181 | 22d | 5d | 1483 | DH1600 | GR | HELIX | OO |  |
| DH.1600B-EQP-195 |  | Gallery 1603 - R160/Line-Ups // Pull Feeder and Branch circuits to Misc equipment and Chiller controls | 10d | 2027-01-21 | 2027-02-03 | DH.1600B-EQP-190 SS | 13d | 0d | 1485 | DH1600 | GR | HELIX | AC |  |
| DH.1600B-EQP-197 |  | Gallery 1603 - R160/Line-Ups // Teminate all Misc Equipment and Chiller Controls | 10d | 2027-01-21 | 2027-02-03 | DH.1600B-EQP-195 SS | 17d | 0d | 1486 | DH1600 | GR |  |  |  |
| DH.1600B-EQP-182 |  | Gallery 1603 - R160/Line-Ups // Connect CRAH units | 10d | 2027-01-27 | 2027-02-09 | DH.1600B-EQP-181 SS+5d, DH.1600B-EQP-184 | 2d | 0d | 1476 | DH1600 | GR |  |  |  |
| DH.1600B-EQP-189 |  | Gallery 1603 - R160/Line-Ups // Mechanical Connections to CRAHU Units | 10d | 2027-01-27 | 2027-02-09 | DH.1600B-EQP-184 SS+5d | 7d | 5d | 1489 | DH1600 | GR |  |  |  |
| DH.1600B-EQP-183 |  | Gallery 1603 - R160/Line-Ups // Condensate connections to Floor Drains | 10d | 2027-02-03 | 2027-02-17 | DH.1600B-EQP-182 SS+5d | 2d | 0d | 1477 | DH1600 | GR |  |  |  |
| DH.1600B-EQP-198 |  | Gallery 1603 - R160/Line-Ups // Electrical Gear FOD Inspection Pre-Start Up | 2d | 2027-02-04 | 2027-02-05 | DH.1600B-EQP-194, DH.1600B-EQP-197 | 17d | 23d | 1487 | DH1600 | GR | HELIX | QC |  |
| DH.1600B-EQP-192 |  | Gallery 1603 - R160/Line-Ups // Condensate connections to Floor Drains | 10d | 2027-02-10 | 2027-02-24 | DH.1600B-EQP-189 SS+5d, DH.1600B-EQP-183 SS+5d | 2d | 0d | 1490 | DH1600 | GR |  |  |  |
| DH.1600B-EQP-196 |  | Gallery 1603 - R160/Line-Ups // Mechanical Gear FOD Inspection Pre-Start Up | 3d | 2027-02-25 | 2027-03-01 | DH.1600B-EQP-192, DH.1600B-EQP-183, DH.1600B-EQP-189, DH.1600B-EQP-182 | 2d | 8d | 1488 | DH1600 | GR |  |  |  |
|  | 12 | **Equipment Connections** |  | 2027-01-21 | 2027-02-11 |  |  |  |  |  |  |  |  |  |
|  | 1 | **CRAH** |  | 2027-01-21 | 2027-02-01 |  |  |  |  |  |  |  |  |  |
| DH1600-004 |  | Gallery 1603 // DH 1600 / Elec Room // CRAH Duct Work Termination | 2d | 2027-01-21 | 2027-01-22 | DH.1600B-EQP-184 | 21d | 0d | 7037 | DH1600 | GR |  |  | Con/Install |
| DH1600-003 |  | Gallery 1603 // DH 1600 / Elec Room // CRAH Chilled Water | 2d | 2027-01-25 | 2027-01-26 | DH1600-004 | 21d | 0d | 7035 | DH1600 | GR |  |  | Con/Install |
| DH1600-001 |  | Gallery 1603 // DH 1600 / Elec Room // CRAH Power Connections | 2d | 2027-01-27 | 2027-01-28 | DH1600-003 | 21d | 0d | 7034 | DH1600 | GR | HELIX | OO | Con/Install |
| DH1600-002 |  | Gallery 1603 // DH 1600 / Elec Room // CRAH LV Connections | 2d | 2027-01-29 | 2027-02-01 | DH1600-001 | 21d | 27d | 7036 | DH1600 | GR |  |  | Con/Install |
|  | 2 | **CDU** |  | 2027-02-04 | 2027-02-11 |  |  |  |  |  |  |  |  |  |
| DH1600-007 |  | Gallery 1603 // DH 1600 / Elec Room // CDU Chilled Water Connections | 2d | 2027-02-04 | 2027-02-05 | DH.1600B-EQP-195 | 13d | 0d | 7040 | DH1600 | GR |  |  | Con/Install |
| DH1600-005 |  | Gallery 1603 // DH 1600 /Elec Room // CDU Power Connections | 2d | 2027-02-08 | 2027-02-09 | DH1600-007 | 13d | 0d | 7039 | DH1600 | GR | HELIX | OO | Con/Install |
| DH1600-006 |  | Gallery 1603 // DH 1600 / Elec Room // CDU Controls Connections | 2d | 2027-02-10 | 2027-02-11 | DH1600-005 | 13d | 19d | 7041 | DH1600 | GR |  |  | Con/Install |
|  | 3 | **MOD** |  | 2027-02-04 | 2027-02-09 |  |  |  |  |  |  |  |  |  |
| DH1600-008 |  | Gallery 1603 // DH 1600 / Elec Room // MOD Power Connections | 2d | 2027-02-04 | 2027-02-05 | DH.1600B-EQP-195 | 15d | 0d | 7043 | DH1600 | GR | HELIX | OO | Con/Install |
| DH1600-009 |  | Gallery 1603 // DH 1600 / Elec Room // MOD LV Connections | 2d | 2027-02-08 | 2027-02-09 | DH1600-008 | 15d | 21d | 7044 | DH1600 | GR | HELIX | OO | Con/Install |

| ID | WBS | Activity | Type | Duration | Start | Finish | Predecessors | Complete | Planned start | Planned finish | Total float | Free float | MSP Activity ID | QTS - AREA | 05 -SUFFOLK - Building Phase | QTS - DASH | QTS - Subcontractor | QTS - Resp |
| --- | --- | --- | --- | --- | --- | --- | --- | --- | --- | --- | --- | --- | --- | --- | --- | --- | --- | --- |
|  | 6 | **Corridors** |  |  | 2026-09-30 | 2027-01-12 |  |  |  |  |  |  |  |  |  |  |  |  |
|  | 1 | **Corridor 1000A (DO NOT APPLY)** |  |  |  |  |  |  |  |  |  |  |  |  |  |  |  |  |
|  | 3 | **Corridor 1000** |  |  | 2026-09-30 | 2027-01-12 |  |  |  |  |  |  |  |  |  |  |  |  |
| DH.160012078 |  | DH 1600/Corridor 1000 // Seal concrete |  | 1d | 2026-09-30 A | 2026-09-30 A | DH.16001000 FF | 100% | 2026-10-06 | 2026-10-06 |  |  | 1494 | DH1600 | 2 | COR |  |  |
| DH.160012068 |  | DH 1600/Corridor 1000 // MEPF Overhead Hangers |  | 5d | 2026-10-05 A | 2026-10-09 A | DH.16006270 | 100% | 2026-10-07 | 2026-10-14 |  |  | 1495 | DH1600 | 2 | COR | HELIX | ALOO |
| B120001.3203 |  | DH 1600/Corridor 1000 // Install Overhead Cable Ladder / 36" Cable Tray - TFO |  | 5d | 2026-10-14 | 2026-10-20 | DH.160012068 |  |  |  | 50d | 0d | 1181 |  |  | COR |  |  |
| B120001.3204 |  | DH 1600/Corridor 1000 // Install Overhead HAC - TFO |  | 5d | 2026-10-21 | 2026-10-27 | B120001.3203 |  |  |  | 50d | 0d | 1181 |  |  | COR |  |  |
| DH.160012071 |  | DH 1600/Corridor 1000 // MEPF high overhead install |  | 3d | 2026-10-28 | 2026-10-30 | B120001.3204, DH.160012068 |  |  |  | 50d | 16d | 1497 | DH1600 | 2 | COR | HELIX | ALOO |
| DH.160012069 |  | DH 1600/Corridor 1000 // Frame walls |  | 3d | 2026-11-20 | 2026-11-24 | DH.16001040 |  |  |  | 34d | 0d | 1499 | DH1600 | 2 | COR |  |  |
| DH.160012072 |  | DH 1600/Corridor 1000 // MEP rough in walls |  | 3d | 2026-11-25 | 2026-11-30 | DH.160012069, DH.160012071 |  |  |  | 34d | 0d | 1501 | DH1600 | 2 | COR | HELIX | AC |
| DH.160012073 |  | DH 1600/Corridor 1000 // In wall inspection |  | 1d | 2026-12-01 | 2026-12-01 | DH.160012072 |  |  |  | 34d | 0d | 1502 | DH1600 | 2 | COR |  |  |
| DH.160012070 |  | DH 1600/Corridor 1000 // Install Top Down Sheetrock |  | 3d | 2026-12-02 | 2026-12-04 | DH.160012073 |  |  |  | 34d | 0d | 1498 | DH1600 |  | COR |  |  |
| DH.160012074 |  | DH 1600/Corridor 1000 // Install Balance of Sheetrock on Walls |  | 5d | 2026-12-07 | 2026-12-11 | DH.160012070, DH.160012071 |  |  |  | 34d | 0d | 1503 | DH1600 | 2 | COR |  |  |
| DH.160012075 |  | DH 1600/Corridor 1000 // Tape and finish walls |  | 8d | 2026-12-14 | 2026-12-23 | DH.160012074 |  |  |  | 34d | 0d | 1504 | DH1600 | 2 | COR |  |  |
| DH.160012076 |  | DH 1600/Corridor 1000 // Install wall door frames |  | 3d | 2026-12-24 | 2026-12-29 | DH.160012069 SS+1d, DH.160012075 |  |  |  | 34d | 0d | 1500 | DH1600 | 2 | COR |  |  |
| DH.160012077 |  | DH 1600/Corridor 1000 // Prime and Paint first coat walls |  | 3d | 2026-12-24 | 2026-12-29 | DH.160012075 |  |  |  | 34d | 0d | 1493 | DH1600 | 2 | COR |  |  |
| DH.160012079 |  | DH 1600/Corridor 1000 // Install lights and exit signs |  | 3d | 2026-12-30 | 2027-01-04 | DH.160012077, DH.160012076 |  |  |  | 34d | 0d | 1492 | DH1600 | 2 | COR | HELIX | AC |
| DH.160012080 |  | DH 1600/Corridor 1000 // Final Coat Paint & Touchup Walls |  | 4d | 2027-01-05 | 2027-01-08 | DH.160012079 |  |  |  | 34d | 0d | 1506 | DH1600 | 2 | COR |  |  |
| DH.160012081 |  | DH 1600/Corridor 1000 // Install MEP Devices and Trim |  | 2d | 2027-01-11 | 2027-01-12 | DH.160012080 |  |  |  | 34d | 0d | 1505 | DH1600 | 2 | COR | HELIX | AC |
| DH.160012166 |  | DH 1600/Corridor 1000 // Ready to Receive Equipment | milestone | 0d | 2027-01-12 | 2027-01-12 | DH.160012081 FF, DH.160012078 |  |  |  | 34d | 40d | 1505 | DH1600 | 2 | COR | HELIX | TBD |
|  | 2 | **Corridor 1000G** |  |  | 2026-09-30 | 2026-12-22 |  |  |  |  |  |  |  |  |  |  |  |  |
| DH.160012092 |  | DH 1600/Corridor 1000G // Seal concrete |  | 1d | 2026-09-30 A | 2026-09-30 A | DH.160012078 FF | 100% | 2026-10-07 | 2026-10-07 |  |  | 1494 | DH1600 | 2 | COR |  |  |
| DH.160012082 |  | DH 1600/Corridor 1000G // MEPF Overhead Hangers |  | 5d | 2026-10-05 A | 2026-10-09 A | DH.16006270 | 100% | 2026-10-15 | 2026-10-21 |  |  | 1495 | DH1600 | 2 | COR | HELIX | ALOO |
| B120001.3205 |  | DH 1600/Corridor 1000G // Install Overhead Cable Ladder / 36" Cable Tray - TFO |  | 5d | 2026-10-14 | 2026-10-20 | DH.160012092 |  |  |  | 47d | 0d | 1181 |  |  | COR |  |  |
| B120001.3206 |  | DH 1600/Corridor 1000G // Install Overhead HAC - TFO |  | 5d | 2026-10-21 | 2026-10-27 | B120001.3205 |  |  |  | 47d | 0d | 1181 |  |  | COR |  |  |
| DH.160012085 |  | DH 1600/Corridor 1000G // MEPF high overhead install |  | 3d | 2026-10-28 | 2026-10-30 | B120001.3206 |  |  |  | 47d | 0d | 1497 | DH1600 | 2 | COR | HELIX | ALOO |
| DH.160012083 |  | DH 1600/Corridor 1000G // Frame walls |  | 3d | 2026-11-02 | 2026-11-04 | DH.160012082, DH.160012085 |  |  |  | 47d | 0d | 1499 | DH1600 | 2 | COR |  |  |
| DH.160012086 |  | DH 1600/Corridor 1000G // MEP rough in walls |  | 3d | 2026-11-05 | 2026-11-09 | DH.160012083 |  |  |  | 47d | 0d | 1501 | DH1600 | 2 | COR | HELIX | AC |
| DH.160012087 |  | DH 1600/Corridor 1000G // In wall inspection |  | 1d | 2026-11-10 | 2026-11-10 | DH.160012086 |  |  |  | 47d | 0d | 1502 | DH1600 | 2 | COR |  |  |
| DH.160012084 |  | DH 1600/Corridor 1000G// Install Top Down Sheetrock |  | 3d | 2026-11-12 | 2026-11-16 | DH.160012087 |  |  |  | 47d | 0d | 1498 | DH1600 |  | COR |  |  |
| DH.160012088 |  | DH 1600/Corridor 1000G// Install Balance of Sheetrock on Walls |  | 5d | 2026-11-17 | 2026-11-23 | DH.160012084 |  |  |  | 47d | 0d | 1503 | DH1600 | 2 | COR |  |  |
| DH.160012089 |  | DH 1600/Corridor 1000G // Tape and finish walls |  | 8d | 2026-11-24 | 2026-12-04 | DH.160012088 |  |  |  | 47d | 0d | 1504 | DH1600 | 2 | COR |  |  |
| DH.160012090 |  | DH 1600/Corridor 1000G) // Install wall door frames |  | 3d | 2026-12-07 | 2026-12-09 | DH.160012083 SS+1d, DH.160012089 |  |  |  | 47d | 0d | 1500 | DH1600 | 2 | COR |  |  |
| DH.160012091 |  | DH 1600/Corridor 1000G // Prime and Paint first coat walls |  | 3d | 2026-12-07 | 2026-12-09 | DH.160012089 |  |  |  | 47d | 0d | 1493 | DH1600 | 2 | COR |  |  |
| DH.160012093 |  | DH 1600/Corridor 1000G // Install lights and exit signs |  | 3d | 2026-12-10 | 2026-12-14 | DH.160012091, DH.160012090 |  |  |  | 47d | 0d | 1492 | DH1600 | 2 | COR | HELIX | AC |
| DH.160012094 |  | DH 1600/Corridor 1000G // Final Coat Paint & Touchup Walls |  | 4d | 2026-12-15 | 2026-12-18 | DH.160012093 |  |  |  | 47d | 0d | 1506 | DH1600 | 2 | COR |  |  |
| DH.160012095 |  | DH 1600/Corridor 1000G // Install MEP Devices and Trim |  | 2d | 2026-12-21 | 2026-12-22 | DH.160012094 |  |  |  | 47d | 0d | 1505 | DH1600 | 2 | COR | HELIX | AC |
| DH.160012167 |  | DH 1600/Corridor 1000G // Ready to Receive Equipment | milestone | 0d | 2026-12-22 | 2026-12-22 | DH.160012095 FF, DH.160012092 |  |  |  | 47d | 53d | 1505 | DH1600 | 2 | COR | HELIX | TBD |

| ID | WBS | Activity | Type | Duration | Start | Finish | Predecessors | Complete | Remaining | Planned start | Planned finish | Total float | Free float | MSP Activity ID | QTS - AREA | QTS - DASH | QTS - Subcontractor | QTS - Resp | 05 -SUFFOLK - Building Phase |
| --- | --- | --- | --- | --- | --- | --- | --- | --- | --- | --- | --- | --- | --- | --- | --- | --- | --- | --- | --- |
|  | 10 | **Flex 1000G1** |  |  | 2026-10-01 | 2026-12-21 |  |  |  |  |  |  |  |  |  |  |  |  |  |
| DH.1600..1000 |  | DH 1600/Flex 1000G1 // Seal Concrete |  | 2d | 2026-10-01 A | 2026-10-02 A | DH.160012092 | 100% |  | 2026-10-08 | 2026-10-09 |  |  | 1508 | DH1600 | OR |  |  |  |
| DH.1600..1010 |  | DH 1600/Flex 1000G1 // MEPF Layout of Overhead Supports |  | 2d | 2026-10-14 | 2026-10-15 | DH.1600..1000, DH.160012082 |  |  |  |  | 53d | 0d | 1509 | DH1600 | OR | HELIX | AC |  |
| DH.1600..1020 |  | DH 1600/Flex 1000G1 // MEPF Install High Overhead Systems |  | 6d | 2026-10-16 | 2026-10-23 | DH.1600..1010 |  |  |  |  | 53d | 0d | 1510 | DH1600 | OR | HELIX | AC |  |
| DH.1600..1040 |  | DH 1600/Flex 1000G1 // Frame Walls including Backing |  | 4d | 2026-10-26 | 2026-10-29 | DH.1600..1020, DH.1600..1010 |  |  |  |  | 53d | 0d | 1511 | DH1600 | OR |  |  |  |
| DH.1600..1060 |  | DH 1600/Flex 1000G1 // MEPF Install Rough Wall |  | 2d | 2026-10-30 | 2026-11-02 | DH.1600..1020, DH.1600..1040 |  |  |  |  | 53d | 0d | 1513 | DH1600 | OR | HELIX | AC |  |
| DH.1600..1080 |  | DH 1600/Flex 1000G1 // Rough Wall Inspection (Approval to Close up) |  | 1d | 2026-11-03 | 2026-11-03 | DH.1600..1060 |  |  |  |  | 53d | 0d | 1515 | DH1600 | OR |  |  |  |
| DH.1600..1070 |  | DH 1600/Flex 1000G1 // Install Top Down Sheet Rock |  | 5d | 2026-11-04 | 2026-11-10 | DH.1600..1080, DH.1600..1040 |  |  |  |  | 53d | 0d | 1514 | DH1600 | OR |  |  |  |
| DH.1600..1090 |  | DH 1600/Flex 1000G1 // Install Balance of Sheetrock |  | 3d | 2026-11-12 | 2026-11-16 | DH.1600..1070 |  |  |  |  | 53d | 0d | 1516 | DH1600 | OR |  |  |  |
| DH.1600..1100 |  | DH 1600/Flex 1000G1 // Tape and Finish Walls |  | 6d | 2026-11-17 | 2026-11-24 | DH.1600..1090 |  |  |  |  | 53d | 0d | 1517 | DH1600 | OR |  |  |  |
| DH.1600..1110 |  | DH 1600/Flex 1000G1 // Prime and First Coat of Paint |  | 2d | 2026-11-25 | 2026-11-27 | DH.1600..1100 |  |  |  |  | 53d | 0d | 1519 | DH1600 | OR |  |  |  |
| DH.1600..1120 |  | DH 1600/Flex 1000G1 // Install MEPF Overhead Ceiling Rough |  | 3d | 2026-11-30 | 2026-12-02 | DH.1600..1110 |  |  |  |  | 53d | 0d | 1520 | DH1600 | OR | HELIX | AC |  |
| DH.1600..1130 |  | DH 1600/Flex 1000G1 // Install Lighting, Fire Alarm & Fire Protection |  | 2d | 2026-12-03 | 2026-12-04 | DH.1600..1120 |  |  |  |  | 53d | 0d | 1521 | DH1600 | OR | HELIX | AC |  |
| DH.1600..1140 |  | DH 1600/Flex 1000G1 // Wall Touch up Final Coat of Paint |  | 3d | 2026-12-07 | 2026-12-09 | DH.1600..1130 |  |  |  |  | 53d | 0d | 1522 | DH1600 | OR |  |  |  |
| DH.1600..1050 |  | DH 1600/Flex 1000G1 // Install Door Frames |  | 1d | 2026-12-10 | 2026-12-10 | DH.1600..1140, DH.1600..1040 FF |  |  |  |  | 92d | 2d | 1518 | DH1600 | OR |  |  |  |
| DH.1600..1150 |  | DH 1600/Flex 1000G1 // Install Wall Base, Trim, and Devices |  | 3d | 2026-12-10 | 2026-12-14 | DH.1600..1140 |  |  |  |  | 53d | 0d | 1523 | DH1600 | OR |  |  |  |
| DH.1600..1161 |  | DH 1600/Flex 1000G1 // Ready to Receive Equipment | milestone | 0d | 2026-12-14 | 2026-12-14 | DH.1600..1150 FF |  |  |  |  | 53d | 0d | 1523 | DH1600 | OR | HELIX | TBD |  |
| DH.1600..1160 |  | DH 1600/Flex 1000G1 // Suffolk Pre Punch |  | 5d | 2026-12-15 | 2026-12-21 | DH.1600..1161, DH.1600..1050 |  |  |  |  | 90d | 96d | 1524 | DH1600 | OR |  |  |  |
|  | 11 | **IDF 1000G2 (Missing Activitities)** |  |  |  |  |  |  |  |  |  |  |  |  |  |  |  |  |  |
|  | 12 | **Preaction 1000G3 (Missing Activities)** |  |  |  |  |  |  |  |  |  |  |  |  |  |  |  |  |  |
|  | 13 | **Restroom-Dock & Janitor** |  |  | 2026-09-17 | 2026-11-19 |  |  |  |  |  |  |  |  |  |  |  |  |  |
| DH.1600020 |  | DH 1600/Restroom-Dock & Janitor // Layout walls |  | 5d | 2026-09-17 A | 2026-09-23 A | ADMIN.5562 | 100% |  | 2026-10-07 | 2026-10-14 |  |  | 1562 | DH1600 | OR |  |  | 2 |
| DH.1600030 |  | DH 1600/Restroom-Dock & Janitor // Frame walls |  | 5d | 2026-09-24 A | 2026-09-30 A | DH.1600020, ADMIN.5562 | 100% |  | 2026-10-15 | 2026-10-21 |  |  | 1565 | DH1600 | OR |  |  | 2 |
| DH.1600000 |  | DH 1600/Restroom-Dock & Janitor // Seal concrete |  | 5d | 2026-09-30 A | 2026-10-06 A | DH.1600..1000 | 100% |  | 2026-11-20 | 2026-11-27 |  |  | 1560 | DH1600 | OR |  |  | 2 |
| DH.1600050 |  | DH 1600/Restroom-Dock & Janitor // Install Top Down Sheetrock |  | 5d | 2026-10-01 A | 2026-10-14 | DH.1600030 SS+3d | 80% | 1d | 2026-10-20 | 2026-10-26 | 70d | 1d | 1564 | DH1600 | OR |  |  |  |
| DH.1600040 |  | DH 1600/Restroom-Dock & Janitor // Install wall door frames |  | 3d | 2026-10-02 A | 2026-10-16 | DH.1600030 SS+1d |  | 3d | 2026-11-25 | 2026-11-30 | 86d | 17d | 1566 | DH1600 | OR |  |  | 2 |
| DH.1600010 |  | DH 1600/Restroom-Dock & Janitor // MEPF overhead layout |  | 5d | 2026-10-08 A | 2026-10-20 | DH.16000.1010 FF |  | 5d | 2026-09-30 | 2026-10-06 | 81d | 0d | 1561 | DH1600 | OR | HELIX | AC | 2 |
| DH.1600090 |  | DH 1600/Restroom-Dock & Janitor // Install Balance of Sheetrock on Walls |  | 5d | 2026-10-12 A | 2026-10-21 | DH.1600050 SS, DH.1600070 FF+2d |  | 5d | 2026-11-02 | 2026-11-06 | 69d | 0d | 1569 | DH1600 | OR |  |  | 2 |
| DH.1600060 |  | DH 1600/Restroom-Dock & Janitor // MEP rough in walls |  | 3d | 2026-10-13 A | 2026-10-16 | DH.1600030 |  | 3d | 2026-10-27 | 2026-10-29 | 69d | 0d | 1567 | DH1600 | OR | HELIX | AC | 2 |
| DH.1600070 |  | DH 1600/Restroom-Dock & Janitor // In wall inspection |  | 1d | 2026-10-19 | 2026-10-19 | DH.1600060 |  |  |  |  | 69d | 0d | 1568 | DH1600 | OR |  |  | 2 |
| DH.1600080 |  | DH 1600/Restroom-Dock & Janitor // MEPF high overhead install |  | 3d | 2026-10-21 | 2026-10-23 | DH.1600050, DH.1600010 |  |  |  |  | 81d | 12d | 1563 | DH1600 | OR | HELIX | AC | 2 |
| DH.1600100 |  | DH 1600/Restroom-Dock & Janitor // Tape and finish walls |  | 8d | 2026-10-22 | 2026-11-02 | DH.1600090 |  |  |  |  | 69d | 0d | 1570 | DH1600 | OR |  |  | 2 |
| DH.1600110 |  | DH 1600/Restroom-Dock & Janitor // Prime and Paint first coat walls |  | 3d | 2026-11-03 | 2026-11-05 | DH.1600100 |  |  |  |  | 69d | 0d | 1559 | DH1600 | OR |  |  | 2 |
| DH.1600120 |  | DH 1600/Restroom-Dock & Janitor // Install lights and exit signs |  | 3d | 2026-11-06 | 2026-11-10 | DH.1600000, DH.1600110 |  |  |  |  | 69d | 0d | 1558 | DH1600 | OR | HELIX | AC | 2 |
| DH.1600130 |  | DH 1600/Restroom-Dock & Janitor // Final Coat Paint & Touchup Walls |  | 4d | 2026-11-12 | 2026-11-17 | DH.1600080, DH.1600040, DH.1600120 |  |  |  |  | 69d | 0d | 1572 | DH1600 | OR |  |  | 2 |
| DH.1600140 |  | DH 1600/Restroom-Dock & Janitor // Install MEP Devices and Trim |  | 2d | 2026-11-18 | 2026-11-19 | DH.1600130 |  |  |  |  | 69d | 75d | 1571 | DH1600 | OR | HELIX | AC | 2 |

| ID | WBS | Activity | Duration | Start | Finish | Predecessors | Total float | Free float | QTS - Subcontractor | QTS - AREA | QTS - DASH |
| --- | --- | --- | --- | --- | --- | --- | --- | --- | --- | --- | --- |
|  | 1 | **1600 Energization, Start-up & Commissioning** |  | 2027-03-12 | 2027-06-17 |  |  |  |  |  |  |
|  | 1 | **Energization & L3 Prefunctional Testing** |  | 2027-03-12 | 2027-05-11 |  |  |  |  |  |  |
| DH1600.L3CX.19 |  | DH1600 L3 Start | 0d | 2027-03-12 | 2027-03-12 | DH.160012163, DH.16000.1712, DH.16000.1110, DH.160012162, DH.1600.3056, DH.1600.3057, DH.1600.3055, DH.1600.3054, DH.1600.3060, DH.1400.3068, DH.1600.3037, DH.1600.1310, DH.1600.1330, DH.1600.1300, DH.1600.1240, DH.1600.3059, DH.1400.3041, DH.1600.3058, DH.160012164, DH1600.MG.A110.8692, DH1600.MG.A110.8689, DH1600.MG.A110.8685, DH.1600A-EQP-220, DH.1600A-EQP-218, DH.1600A-EQP-215, DH.1600140, DH.1600..1161, DH.160012167, DH.160012095, DH.160012166, DH.160012081, DH1600-009, DH1600-006, DH1600-002, DH.1600B-EQP-196, DH.1600B-EQP-198 | -6d | 0d | HELIX | DH1600 |  |
| DH1600.L3CX.BMS.1 |  | DH1600 L3 PTPs & SOOs – BMS | 40d | 2027-03-12 | 2027-05-06 | DH1600.L3CX.ELEC.43 SS | -6d | 0d |  | DH1600 |  |
| DH1600.L3CX.ELEC.43 |  | DH1600 L3 FTEs | 5d | 2027-03-12 | 2027-03-18 | DH1600.L3CX.19 SS | -6d | 0d |  | DH1600 |  |
| DH1600.L3CX.MECH.3 |  | DH1600 L3 Startup / Pre-Functional – MECHANICAL | 20d | 2027-03-17 | 2027-04-13 | DH1600.L3CX.ELEC.43 SS+3d | 1d | 7d |  | DH1600 |  |
| DH1600.L3CX.ELEC.33 |  | DH1600 L3 Startup / Pre-Functional – ELECTRICAL | 15d | 2027-03-19 | 2027-04-08 | DH1600.L3CX.ELEC.43 | 6d | 12d |  | DH1600 |  |
| DH1600.L3CX.MECH.13 |  | DH1600 L3 TAB (Air, Water and Reports) – MECHANICAL | 10d | 2027-04-23 | 2027-05-06 | DH1600.L3CX.MECH.3, DH1600.L3CX.BMS.1 FF | -6d | 0d |  | DH1600 |  |
| DH1600.L3CX.MECH.23 |  | DH1600 L3 FLS – MECHANICAL | 10d | 2027-04-27 | 2027-05-10 | DH1600.L3CX.MECH.13 FF+2d, DH1600.L3CX.MECH.3, DH1600.L3CX.ELEC.33 | -6d | 0d |  | DH1600 |  |
| DH1600.L3CX.9 |  | DH1600 L3 Cx Complete | 0d | 2027-05-11 | 2027-05-11 | DH1600.L3CX.MECH.13 FF, DH1600.L3CX.MECH.23 FF | -6d | 0d |  | DH1600 |  |
|  | 2 | **L4 Function Testing** |  | 2027-04-14 | 2027-05-18 |  |  |  |  |  |  |
| DH1600.L4CX.COMM.130 |  | DH1600 L4 Cx | 25d | 2027-04-14 | 2027-05-18 | DH1600.L3CX.9 FF+6d | 2d | 0d |  | DH1600 |  |
|  | 3 | **L5 Integrated System Testing (IST)** |  | 2027-04-29 | 2027-06-17 |  |  |  |  |  |  |
| DH1600.L5CX.COMM.200 |  | DH1600 L5 Integrated Systems Testing - IST | 20d | 2027-04-29 | 2027-05-26 | DH1600.L4CX.COMM.130 FF+6d | 2d | 0d |  | DH1600 |  |
| DH1600.A2110.CO |  | DH1600– Phase Closeout Period O&M / TRAINING/ CLOSEOUT DOCS | 15d | 2027-05-27 | 2027-06-17 | DH1600.L5CX.COMM.210 | 9d | 0d |  | DH1600 | Cx |
| DH1600.L5CX.COMM.210 |  | DH1600 – IST / L5 Cx Complete | 0d | 2027-05-27 | 2027-05-27 | DH1600.L5CX.COMM.200 | 2d | 0d |  | DH1600 |  |
|  | 2 | **Commissioning & Start Up** |  |  |  |  |  |  |  |  |  |
|  | 6 | **Archived (Deleted) Activities** |  |  |  |  |  |  |  |  |  |
|  | 7 | **Owner Furnished Contractor Installed (OFCI)** |  |  |  |  |  |  |  |  |  |
|  | 1 | **DH1200 OFCI Procurement** |  |  |  |  |  |  |  |  |  |
|  | 1 | **Skidded** |  |  |  |  |  |  |  |  |  |
|  | 2 | **Non-Skidded** |  |  |  |  |  |  |  |  |  |
|  | 2 | **DH1100 OFCI Procurement** |  |  |  |  |  |  |  |  |  |
|  | 1 | **Skidded** |  |  |  |  |  |  |  |  |  |
|  | 2 | **Non-Skidded** |  |  |  |  |  |  |  |  |  |
|  | 3 | **DH1300 OFCI Procurement** |  |  |  |  |  |  |  |  |  |
|  | 1 | **Skidded** |  |  |  |  |  |  |  |  |  |
|  | 2 | **Non-Skidded** |  |  |  |  |  |  |  |  |  |
|  | 6 | **DH1400 OFCI Procurement** |  |  |  |  |  |  |  |  |  |
|  | 1 | **Skidded** |  |  |  |  |  |  |  |  |  |
|  | 2 | **Non-Skidded** |  |  |  |  |  |  |  |  |  |
|  | 5 | **DH1500 OFCI Procurement** |  |  |  |  |  |  |  |  |  |
|  | 1 | **Skidded** |  |  |  |  |  |  |  |  |  |
|  | 2 | **Non-Skidded** |  |  |  |  |  |  |  |  |  |
|  | 4 | **DH1600 OFCI Procurement** |  |  |  |  |  |  |  |  |  |
|  | 1 | **Skidded** |  |  |  |  |  |  |  |  |  |
|  | 2 | **Non-Skidded** |  |  |  |  |  |  |  |  |  |
|  | 8 | **Commissioning & Start Up** |  |  |  |  |  |  |  |  |  |
|  | 5 | **Data Hall IST Readiness** |  |  |  |  |  |  |  |  |  |
|  | 5 | **Level 6 — Enclosure Gate** |  |  |  |  |  |  |  |  |  |
|  | 2 | **Level 5 — Construction Complete (White Space)** |  |  |  |  |  |  |  |  |  |
|  | 3 | **Level 4 — Equipment Installed & Available** |  |  |  |  |  |  |  |  |  |
|  | 6 | **Level 3 — Startup / Pre-Functional Testing** |  |  |  |  |  |  |  |  |  |
|  | 1 | **Level 2 — Readiness Gate** |  |  |  |  |  |  |  |  |  |
|  | 4 | **Level 1 — IST Target** |  |  |  |  |  |  |  |  |  |
|  | 1 | **Energization & L3 Prefunctional Testing** |  |  |  |  |  |  |  |  |  |
|  | 2 | **L4 Function Testing** |  |  |  |  |  |  |  |  |  |
|  | 3 | **L5 Integrated System Testing (IST)** |  |  |  |  |  |  |  |  |  |
|  | ` | **Commissioning & Start Up-1** |  |  |  |  |  |  |  |  |  |
|  | 5 | **Data Hall IST Readiness** |  |  |  |  |  |  |  |  |  |
|  | 5 | **Level 6 — Enclosure Gate** |  |  |  |  |  |  |  |  |  |
|  | 2 | **Level 5 — Construction Complete (White Space)** |  |  |  |  |  |  |  |  |  |
|  | 3 | **Level 4 — Equipment Installed & Available** |  |  |  |  |  |  |  |  |  |
|  | 6 | **Level 3 — Startup / Pre-Functional Testing** |  |  |  |  |  |  |  |  |  |
|  | 1 | **Level 2 — Readiness Gate** |  |  |  |  |  |  |  |  |  |
|  | 4 | **Level 1 — IST Target** |  |  |  |  |  |  |  |  |  |
|  | 1 | **Energization & L3 Prefunctional Testing** |  |  |  |  |  |  |  |  |  |
|  | 2 | **L4 Function Testing** |  |  |  |  |  |  |  |  |  |
|  | 3 | **L5 Integrated System Testing (IST)** |  |  |  |  |  |  |  |  |  |
|  | 1 | **Commissioning & Start Up-2** |  |  |  |  |  |  |  |  |  |
|  | 5 | **Data Hall IST Readiness** |  |  |  |  |  |  |  |  |  |
|  | 5 | **Level 6 — Enclosure Gate** |  |  |  |  |  |  |  |  |  |
|  | 2 | **Level 5 — Construction Complete (White Space)** |  |  |  |  |  |  |  |  |  |
|  | 3 | **Level 4 — Equipment Installed & Available** |  |  |  |  |  |  |  |  |  |
|  | 6 | **Level 3 — Startup / Pre-Functional Testing** |  |  |  |  |  |  |  |  |  |
|  | 1 | **Level 2 — Readiness Gate** |  |  |  |  |  |  |  |  |  |
|  | 4 | **Level 1 — IST Target** |  |  |  |  |  |  |  |  |  |
|  | 1 | **Energization & L3 Prefunctional Testing** |  |  |  |  |  |  |  |  |  |
|  | 2 | **L4 Function Testing** |  |  |  |  |  |  |  |  |  |
|  | 3 | **L5 Integrated System Testing (IST)** |  |  |  |  |  |  |  |  |  |

| WBS | Activity |
| --- | --- |
| 2 | **Commissioning & Start Up-3** |
| 5 | **Data Hall IST Readiness** |
| 5 | **Level 6 — Enclosure Gate** |
| 2 | **Level 5 — Construction Complete (White Space)** |
| 3 | **Level 4 — Equipment Installed & Available** |
| 6 | **Level 3 — Startup / Pre-Functional Testing** |
| 1 | **Level 2 — Readiness Gate** |
| 4 | **Level 1 — IST Target** |
| 1 | **Energization & L3 Prefunctional Testing** |
| 2 | **L4 Function Testing** |
| 3 | **L5 Integrated System Testing (IST)** |
| 3 | **Commissioning & Start Up-4** |
| 5 | **Data Hall IST Readiness** |
| 5 | **Level 6 — Enclosure Gate** |
| 2 | **Level 5 — Construction Complete (White Space)** |
| 3 | **Level 4 — Equipment Installed & Available** |
| 6 | **Level 3 — Startup / Pre-Functional Testing** |
| 1 | **Level 2 — Readiness Gate** |
| 4 | **Level 1 — IST Target** |
| 1 | **Energization & L3 Prefunctional Testing** |
| 2 | **L4 Function Testing** |
| 3 | **L5 Integrated System Testing (IST)** |
| 4 | **Commissioning & Start Up-5** |
| 5 | **Data Hall IST Readiness** |
| 5 | **Level 6 — Enclosure Gate** |
| 2 | **Level 5 — Construction Complete (White Space)** |
| 3 | **Level 4 — Equipment Installed & Available** |
| 6 | **Level 3 — Startup / Pre-Functional Testing** |
| 1 | **Level 2 — Readiness Gate** |
| 4 | **Level 1 — IST Target** |
| 1 | **Energization & L3 Prefunctional Testing** |
| 2 | **L4 Function Testing** |
| 3 | **L5 Integrated System Testing (IST)** |

## Activity codes

| Code | Value | Meaning |
| --- | --- | --- |
| 05 -SUFFOLK - Building Phase | 0 | Phase 0 |
| 05 -SUFFOLK - Building Phase | 1 | Phase 1 |
| 05 -SUFFOLK - Building Phase | 2 | Phase 2 |
| 05 -SUFFOLK - Building Phase | 3 | Phase 3 |
| 05 -SUFFOLK - Building Phase | 4 | Phase 4 |
| 05 -SUFFOLK - Building Phase | 5 | Phase 5 |
| 05 -SUFFOLK - Building Phase | 6 | Phase 6 |
| 12 - SUFFOLK - Export_to_Procore | Y | Export to Procore |
| 13 -SUFFOLK - MC (Systems of Work) | H2C | (04) Hand off to CX/Substantial Comp/L4 |
| 13 -SUFFOLK - MC (Systems of Work) | NEA | (03) Network Early Access/L3 |
| 13 -SUFFOLK - MC (Systems of Work) | PFHO | (05) PFHO or Final Completion/L5 |
| MBTA: Work Type | Con/Install | Construction/Installation |
| QTS - AREA | BOH | Back of the House |
| QTS - AREA | Bldg | General Building |
| QTS - AREA | DH1100 | Data Hall 1100 |
| QTS - AREA | DH1200 | Data Hall 1200 |
| QTS - AREA | DH1300 | Data Hall 1300 |
| QTS - AREA | DH1400 | Data Hall 1400 |
| QTS - AREA | DH1500 | Data Hall 1500 |
| QTS - AREA | DH1600 | Data Hall 1600 |
| QTS - AREA | FOH | Front of the House |
| QTS - DASH | COR | Corridors |
| QTS - DASH | Cx | Commissining & Start-Up |
| QTS - DASH | DH | Data Hall |
| QTS - DASH | ER | Electrical Rooms |
| QTS - DASH | EY | Electrical Yard |
| QTS - DASH | GR | Gallery Rooms |
| QTS - DASH | MY | Mechanical Yard |
| QTS - DASH | OR | Other Rooms |
| QTS - DASH | PRI | Priority Rooms |
| QTS - Resp | AC | Antelmo de Cruz |
| QTS - Resp | ACOO | Antelmo C. / Orrin O. |
| QTS - Resp | AL | Abrahan de Leon |
| QTS - Resp | ALOO | Abrahan L. / Orrin O. |
| QTS - Resp | D18A | Dept.18/Allen |
| QTS - Resp | JT | Justin Turner |
| QTS - Resp | OO | Orrin O. |
| QTS - Resp | PRICE | Price Elec/Justin Turner |
| QTS - Resp | SM | Stephan M. |
| QTS - Resp | W | Waldinger |
| QTS - Resp | WAC | Waldinger / Antelmo C. |
| QTS - Subcontractor | HELIX | Helix Electric |
